# DUKHAN HOUSING PROJECT PHASE IX 6th update

How a schedule from Primavera P6 changed from version to version. A marks actual dates.

## Version 1 (data date 2013-04-27, saved 2026-11-12, file dukhan-ph9-update-06.xer)

Note of the change: Add the Dukhan sample files and an MPXJ cross-check

| ID | WBS | Task | Duration | Start | Finish | Predecessors | Complete | Total float | Constraint |
| --- | --- | --- | --- | --- | --- | --- | --- | --- | --- |
|  | K10 | **KEY DATES & MILESTONES** |  | 2012-11-01 | 2015-04-28 |  |  |  |  |
|  | L10 | **GENERAL** |  | 2012-11-01 | 2015-04-28 |  |  |  |  |
| DUKHKYDGEN0000001000 |  | Project Commencement | 0d | 2012-11-01 A | 2012-11-01 A |  | 100% |  |  |
| DUKHKYDGEN0000002000 |  | Project Completion Date | 0d | 2015-04-28 | 2015-04-28 | DUKHKYDP030000003000 FF, DUKHKYDP010000001000 FF, DUKHKYDP020000002000 FF |  | -24d |  |
|  | L15 | **PACKAGE-1** |  | 2015-04-28 | 2015-04-28 |  |  |  |  |
| DUKHKYDP010000001000 |  | Package -1 (Milestone -1) -29 Months | 0d | 2015-04-28 | 2015-04-28 | DUKHMOBGEN0000003025 FF, DUKHHANP1BGNDM009020 FF, DUKHHANP1AGNDM009020 FF |  | -24d |  |
|  | L30 | **PACKAGE-2** |  | 2014-12-23 | 2014-12-23 |  |  |  |  |
| DUKHKYDP020000002000 |  | Package -2 (Milestone-2) -23 Months | 0d | 2014-12-23 | 2014-12-23 | DUKHHANP2BGNDM009020 FF, DUKHHANP2AGNDM009020 FF |  | -69d | finish on or before 2014-09-30 |
|  | L45 | **PACKAGE-3** |  | 2015-01-01 | 2015-01-01 |  |  |  |  |
| DUKHKYDP030000003000 |  | Package -3 (Milestone -3) -25 Months | 0d | 2015-01-01 | 2015-01-01 | DUKHHANP03GNDM009020 |  | -27d | finish on or before 2014-11-30 |
|  | K15 | **MOBILIZATION** |  | 2012-11-01 | 2015-03-31 |  |  |  |  |
|  | L05 | **PROVISIONAL SUM** |  | 2012-11-26 | 2014-12-10 |  |  |  |  |
|  | 05 | **PACKAGE 1A - VILLA** |  | 2012-11-26 | 2014-12-10 |  |  |  |  |
| DUKHMOBP1APS00002000 |  | Receiving of Site Instruction | 0d | 2012-11-26 A | 2012-11-26 A | DUKHKYDGEN0000001000 SS+25d | 100% |  |  |
| DUKHMOBP1APS00002005 |  | Finalization of Subcontractor | 21d | 2012-11-26 A | 2012-12-20 A | DUKHMOBP1APS00002000 | 100% |  |  |
| DUKHMOBP1APS00002010 |  | Submission of Cost Proposal | 7d | 2012-12-20 A | 2012-12-29 A | DUKHMOBP1APS00002005 | 100% |  |  |
| DUKHMOBP1APS00002015 |  | Approval of Cost Proposal | 30d | 2012-12-29 A | 2013-02-01 A | DUKHMOBP1APS00002010 | 100% |  |  |
| DUKHMOBP1APS00002020 |  | Receiving of Variation Order | 0d | 2013-02-02 A | 2013-02-02 A | DUKHMOBP1APS00002015 | 100% |  |  |
| DUKHMOBP1APS00002025 |  | Engineering & Procurement | 190d | 2013-02-02 A | 2013-09-15 | DUKHMOBP1APS00002020 | 37% | 91d |  |
| DUKHMOBP1APS00002030 |  | Commencement of Construction Work | 290d | 2013-12-31 | 2014-12-10 | DUKHMOBP1APS00002025, DUKHCONP1AZ1MSEX5000 SS |  | 3d |  |
|  | 10 | **PACKAGE 1A - INFRASTRUCTURE** |  | 2012-11-26 | 2014-11-13 |  |  |  |  |
| DUKHMOBI1APS00002035 |  | Receiving of Site Instruction | 0d | 2012-11-26 A | 2012-11-26 A | DUKHMOBP1APS00002000 SS | 100% |  |  |
| DUKHMOBI1APS00002040 |  | Finalization of Subcontractor | 21d | 2012-11-26 A | 2012-12-19 A | DUKHMOBI1APS00002035 | 100% |  |  |
| DUKHMOBI1APS00001000 |  | Submission of New Site Design Layout | 14d | 2012-12-01 A | 2012-12-16 A | DUKHCONP1AGNSP001000 SS | 100% |  |  |
| DUKHMOBI1APS00002043 |  | Submission & Approval of General Site Layout | 21d | 2012-12-04 A | 2012-12-29 A | DUKHMOBI1APS00002040 SS+7d | 100% |  |  |
| DUKHMOBI1APS00001200 |  | Approval of New Site Design Layout | 21d | 2012-12-17 A | 2013-01-10 A | DUKHMOBI1APS00001000 | 100% |  |  |
| DUKHMOBI1APS00002045 |  | Submission of Cost Proposal | 7d | 2012-12-30 A | 2013-01-06 A | DUKHMOBI1APS00002043 | 100% |  |  |
| DUKHMOBI1APS00001225 |  | Submission of Finished Floor Level | 7d | 2013-01-12 A | 2013-01-19 A | DUKHMOBI1APS00001200 | 100% |  |  |
| DUKHMOBI1APS00001300 |  | Submission of New Site Design MEP Services Layout | 14d | 2013-01-12 A | 2013-01-27 A | DUKHMOBI1APS00001200 | 100% |  |  |
| DUKHMOBI1APS00001250 |  | Approval of Finished Floor Level | 21d | 2013-01-20 A | 2013-02-13 A | DUKHMOBI1APS00001225 | 100% |  |  |
| DUKHMOBI1APS00001400 |  | Approval of New Site Design MEP Services Layout | 16.38d | 2013-01-28 A | 2013-02-21 A | DUKHMOBI1APS00001300 | 100% |  |  |
| DUKHMOBI1APS00002050 |  | Approval of Cost Proposal | 45d | 2013-02-02 A | 2013-03-26 A | DUKHMOBI1APS00002045 | 100% |  |  |
| DUKHMOBI1APS00002055 |  | Receiving of Variation Order | 0d | 2013-03-26 A | 2013-03-26 A | DUKHMOBI1APS00002050 | 100% |  |  |
| DUKHMOBI1APS00002060 |  | Engineering & Procurement | 180d | 2013-03-27 A | 2013-10-28 | DUKHMOBI1APS00002055 | 14% | 26d |  |
| DUKHMOBI1APS00002065 |  | Commencement of Construction Work | 320d | 2013-10-29 | 2014-11-13 | DUKHCONI1AZ1DRGL5115 SS, DUKHMOBI1APS00002060 |  | 26d |  |
|  | 15 | **PACKAGE 1B - VILLA** |  | 2012-11-26 | 2014-12-02 |  |  |  |  |
| DUKHMOBP1BPS00002070 |  | Receiving of Site Instruction | 0d | 2012-11-26 A | 2012-11-26 A | DUKHKYDGEN0000001000 SS+25d | 100% |  |  |
| DUKHMOBP1BPS00002075 |  | Finalization of Subcontractor | 21d | 2012-11-26 A | 2012-12-19 A | DUKHMOBP1BPS00002070 | 100% |  |  |
| DUKHMOBP1BPS00002080 |  | Submission of Cost Proposal | 7d | 2012-12-20 A | 2012-12-29 A | DUKHMOBP1BPS00002075 | 100% |  |  |
| DUKHMOBP1BPS00002085 |  | Approval of Cost Proposal | 31d | 2012-12-29 A | 2013-02-01 A | DUKHMOBP1BPS00002080 | 100% |  |  |
| DUKHMOBP1BPS00002090 |  | Receiving of Variation Order | 0d | 2013-02-02 A | 2013-02-02 A | DUKHMOBP1BPS00002085 | 100% |  |  |
| DUKHMOBP1BPS00002095 |  | Engineering & Procurement | 187d | 2013-03-02 A | 2013-10-08 | DUKHMOBP1BPS00002090 | 26% | 81d |  |
| DUKHMOBP1BPS00002100 |  | Commencement of Construction Work | 280d | 2014-01-04 | 2014-12-02 | DUKHCONP1BZ1MSEX5000 SS, DUKHMOBP1BPS00002095 |  | 10d |  |
|  | 20 | **PACKAGE 1B -INFRASTRUCTURE** |  | 2012-12-01 | 2014-11-06 |  |  |  |  |
| DUKHMOBI1BPS00001000 |  | Submission of New Site Design Layout | 14d | 2012-12-01 A | 2012-12-16 A | DUKHCONP1BGNSP001000 SS | 100% |  |  |
| DUKHMOBI1BPS00002105 |  | Receiving of Site Instruction | 0d | 2012-12-01 A | 2012-12-01 A | DUKHMOBP1BPS00002070 SS | 100% |  |  |
| DUKHMOBI1BPS00002110 |  | Finalization of Subcontractor | 16d | 2012-12-01 A | 2012-12-19 A | DUKHMOBI1BPS00002105 | 100% |  |  |
| DUKHMOBI1BPS00002113 |  | Submission & Approval of General Site Layout | 21d | 2012-12-09 A | 2012-12-28 A | DUKHMOBI1BPS00002110 SS+7d | 100% |  |  |
| DUKHMOBI1BPS00001200 |  | Approval of New Site Design Layout | 21d | 2012-12-17 A | 2012-12-29 A | DUKHMOBI1BPS00001000 | 100% |  |  |
| DUKHMOBI1BPS00001225 |  | Submission of Finished Floor Level | 7d | 2012-12-29 A | 2013-01-05 A | DUKHMOBI1BPS00001200 | 100% |  |  |
| DUKHMOBI1BPS00001300 |  | Submission of New Site Design MEP Services Layout | 14d | 2012-12-29 A | 2013-01-13 A | DUKHMOBI1BPS00001200 | 100% |  |  |
| DUKHMOBI1BPS00002115 |  | Submission of Cost Proposal | 7d | 2012-12-29 A | 2013-01-05 A | DUKHMOBI1BPS00002113 | 100% |  |  |
| DUKHMOBI1BPS00001250 |  | Approval of Finished Floor Level | 21d | 2013-01-06 A | 2013-01-29 A | DUKHMOBI1BPS00001225 | 100% |  |  |
| DUKHMOBI1BPS00002120 |  | Approval of Cost Proposal | 30d | 2013-01-06 A | 2013-02-09 A | DUKHMOBI1BPS00002115 | 100% |  |  |
| DUKHMOBI1BPS00001400 |  | Approval of New Site Design MEP Services Layout | 21d | 2013-01-14 A | 2013-02-06 A | DUKHMOBI1BPS00001300 | 100% |  |  |
| DUKHMOBI1BPS00002125 |  | Receiving of Variation Order | 0d | 2013-02-09 A | 2013-02-09 A | DUKHMOBI1BPS00002120 | 100% |  |  |
| DUKHMOBI1BPS00002130 |  | Engineering & Procurement | 204d | 2013-03-02 A | 2013-10-30 | DUKHMOBI1BPS00002125 | 24% | 64d |  |
| DUKHMOBI1BPS00002135 |  | Commencement of Construction Work | 280d | 2013-12-08 | 2014-11-06 | DUKHMOBI1BPS00002130, DUKHCONI1BZ1DRGL5115 SS |  | 32d |  |
|  | 25 | **PACKAGE 2A - VILLA** |  | 2012-12-01 | 2014-07-05 |  |  |  |  |
| DUKHMOBP2APS00002140 |  | Receiving of Site Instruction | 0d | 2012-12-01 A | 2012-12-01 A | DUKHKYDGEN0000001000 SS+25d | 100% |  |  |
| DUKHMOBP2APS00002145 |  | Finalization of Subcontractor | 16d | 2012-12-01 A | 2012-12-19 A | DUKHMOBP2APS00002140 | 100% |  |  |
| DUKHMOBP2APS00002150 |  | Submission of Cost Proposal | 7d | 2012-12-20 A | 2012-12-27 A | DUKHMOBP2APS00002145 | 100% |  |  |
| DUKHMOBP2APS00002155 |  | Approval of Cost Proposal | 30d | 2012-12-29 A | 2013-01-31 A | DUKHMOBP2APS00002150 | 100% |  |  |
| DUKHMOBP2APS00002160 |  | Receiving of Variation Order | 0d | 2013-01-31 A | 2013-01-31 A | DUKHMOBP2APS00002155 | 100% |  |  |
| DUKHMOBP2APS00002165 |  | Engineering & Procurement | 121d | 2013-03-02 A | 2013-07-20 | DUKHMOBP2APS00002160 | 40% | 95d |  |
| DUKHMOBP2APS00002170 |  | Commencement of Construction Work | 180d | 2013-12-05 | 2014-07-05 | DUKHCONP2AZ1MSEX5020 SS, DUKHMOBP2APS00002165 |  | -18d |  |
|  | 30 | **PACKAGE 2A- INFRASTRUCTURE** |  | 2012-12-01 | 2014-07-16 |  |  |  |  |
| DUKHMOBI2APS00002175 |  | Receiving of Site Instruction | 0d | 2012-12-01 A | 2012-12-01 A | DUKHMOBP2APS00002140 SS | 100% |  |  |
| DUKHMOBI2APS00002180 |  | Finalization of Subcontractor | 16d | 2012-12-01 A | 2012-12-19 A | DUKHMOBI2APS00002175 | 100% |  |  |
| DUKHMOBI2APS00002185 |  | Submission of Cost Proposal | 7d | 2012-12-20 A | 2012-12-27 A | DUKHMOBI2APS00002180 | 100% |  |  |

| ID | WBS | Task | Duration | Start | Finish | Predecessors | Complete | Total float |
| --- | --- | --- | --- | --- | --- | --- | --- | --- |
| DUKHMOBI2APS00002190 |  | Approval of Cost Proposal | 60d | 2012-12-29 A | 2013-03-09 A | DUKHMOBI2APS00002185 | 100% |  |
| DUKHMOBI2APS00002195 |  | Receiving of Variation Order | 0d | 2013-03-09 A | 2013-03-09 A | DUKHMOBI2APS00002190 | 100% |  |
| DUKHMOBI2APS00002200 |  | Engineering & Procurement | 120d | 2013-03-10 A | 2013-09-28 | DUKHMOBI2APS00002195 |  | 8d |
| DUKHMOBI2APS00002205 |  | Commencement of Construction Work | 210d | 2013-11-12 | 2014-07-16 | DUKHMOBI2APS00002200, DUKHCONI2AZ1DRGL5115 SS |  | -28d |
|  | 35 | **PACKAGE 2B - VILLA** |  | 2012-12-01 | 2014-07-17 |  |  |  |
| DUKHMOBP2BPS00002210 |  | Receiving of Site Instruction | 0d | 2012-12-01 A | 2012-12-01 A | DUKHKYDGEN0000001000 SS+25d | 100% |  |
| DUKHMOBP2BPS00002215 |  | Finalization of Subcontractor | 16d | 2012-12-01 A | 2012-12-19 A | DUKHMOBP2BPS00002210 | 100% |  |
| DUKHMOBP2BPS00002220 |  | Submission of Cost Proposal | 7d | 2012-12-20 A | 2012-12-27 A | DUKHMOBP2BPS00002215 | 100% |  |
| DUKHMOBP2BPS00002225 |  | Approval of Cost Proposal | 30d | 2012-12-29 A | 2013-02-01 A | DUKHMOBP2BPS00002220 | 100% |  |
| DUKHMOBP2BPS00002230 |  | Receiving of Variation Order | 0d | 2013-02-02 A | 2013-02-02 A | DUKHMOBP2BPS00002225 | 100% |  |
| DUKHMOBP2BPS00002235 |  | Engineering & Procurement | 150d | 2013-02-02 A | 2013-07-27 | DUKHMOBP2BPS00002230 | 47% | 89d |
| DUKHMOBP2BPS00002240 |  | Commencement of Construction Work | 180d | 2013-12-19 | 2014-07-17 | DUKHMOBP2BPS00002235, DUKHCONP2BZ3MSEX5000 SS |  | -29d |
|  | 40 | **PACKAGE 2B - INFRASTRUCTURE** |  | 2012-12-01 | 2014-09-06 |  |  |  |
| DUKHMOBI2BPS00002245 |  | Receiving of Site Instruction | 0d | 2012-12-01 A | 2012-12-01 A | DUKHMOBP2BPS00002210 SS | 100% |  |
| DUKHMOBI2BPS00002250 |  | Finalization of Subcontractor | 16d | 2012-12-01 A | 2012-12-19 A | DUKHMOBI2BPS00002245 | 100% |  |
| DUKHMOBI2BPS00002255 |  | Submission of Cost Proposal | 7d | 2012-12-20 A | 2012-12-27 A | DUKHMOBI2BPS00002250 | 100% |  |
| DUKHMOBI2BPS00002260 |  | Approval of Cost Proposal | 45d | 2012-12-29 A | 2013-02-19 A | DUKHMOBI2BPS00002255 | 100% |  |
| DUKHMOBI2BPS00002265 |  | Receiving of Variation Order | 0d | 2013-02-19 A | 2013-02-19 A | DUKHMOBI2BPS00002260 | 100% |  |
| DUKHMOBI2BPS00002270 |  | Engineering & Procurement | 235d | 2013-03-02 A | 2013-12-05 | DUKHMOBI2BPS00002265 | 20% | -69d |
| DUKHMOBI2BPS00002275 |  | Commencement of Construction Work | 230d | 2013-12-07 | 2014-09-06 | DUKHMOBI2BPS00002270, DUKHCONI2BZ1DRGL5115 SS |  | -69d |
|  | 45 | **PACKAGE 3 - APARTMENT** |  | 2012-11-26 | 2014-05-14 |  |  |  |
| DUKHMOBP03PS00002280 |  | Receiving of Site Instruction | 0d | 2012-11-26 A | 2012-11-26 A | DUKHKYDGEN0000001000 SS+25d | 100% |  |
| DUKHMOBP03PS00002285 |  | Finalization of Subcontractor | 21d | 2012-11-26 A | 2012-12-19 A | DUKHMOBP03PS00002280 | 100% |  |
| DUKHMOBP03PS00002290 |  | Submission of Cost Proposal | 7d | 2012-12-20 A | 2012-12-27 A | DUKHMOBP03PS00002285 | 100% |  |
| DUKHMOBP03PS00002295 |  | Approval of Cost Proposal | 30d | 2012-12-29 A | 2013-02-01 A | DUKHMOBP03PS00002290 | 100% |  |
| DUKHMOBP03PS00002300 |  | Receiving of Variation Order | 0d | 2013-02-02 A | 2013-02-02 A | DUKHMOBP03PS00002295 | 100% |  |
| DUKHMOBP03PS00002305 |  | Engineering & Procurement | 150d | 2013-02-02 A | 2013-07-27 | DUKHMOBP03PS00002300 | 47% | 99d |
| DUKHMOBP03PS00002310 |  | Commencement of Construction Work | 120d | 2013-12-25 | 2014-05-14 | DUKHMOBP03PS00002305, DUKHCONP03Z1MSEX5000 SS |  | -24d |
|  | 50 | **PACKAGE 3 - INFRASTRUCTURE** |  | 2012-11-26 | 2014-05-12 |  |  |  |
| DUKHMOBI03PS00002315 |  | Receiving of Site Instruction | 0d | 2012-11-26 A | 2012-11-26 A | DUKHMOBP03PS00002280 SS | 100% |  |
| DUKHMOBI03PS00002320 |  | Finalization of Subcontractor | 30d | 2012-11-26 A | 2012-12-30 A | DUKHMOBI03PS00002315 | 100% |  |
| DUKHMOBI03PS00002325 |  | Submission of Cost Proposal | 7d | 2012-12-31 A | 2013-01-03 A | DUKHMOBI03PS00002320 | 100% |  |
| DUKHMOBI03PS00002330 |  | Approval of Cost Proposal | 30d | 2013-01-05 A | 2013-02-07 A | DUKHMOBI03PS00002325 | 100% |  |
| DUKHMOBI03PS00002335 |  | Receiving of Variation Order | 0d | 2013-02-07 A | 2013-02-07 A | DUKHMOBI03PS00002330 | 100% |  |
| DUKHMOBI03PS00002340 |  | Engineering & Procurement | 120d | 2013-02-09 A | 2013-06-29 | DUKHMOBI03PS00002335 | 54% | 43d |
| DUKHMOBI03PS00002345 |  | Commencement of Construction Work | 200d | 2013-09-17 | 2014-05-12 | DUKHCONI03Z1DRGL5115 SS, DUKHMOBI03PS00002340 |  | -22d |
|  | L10 | **GENERAL** |  | 2012-11-01 | 2015-03-31 |  |  |  |
| DUKHMOBGEN0000003000 |  | Performance Bond (Clause 10) | 30d | 2012-11-01 A | 2012-12-05 A | DUKHKYDGEN0000001000 SS | 100% |  |
| DUKHMOBGEN0000003005 |  | Setting Out (Clause 17) | 30d | 2012-11-01 A | 2012-12-05 A | DUKHKYDGEN0000001000 SS | 100% |  |
| DUKHMOBGEN0000003010 |  | Insurance of works (Clause 21-23) | 30d | 2012-11-01 A | 2012-12-05 A | DUKHKYDGEN0000001000 SS | 100% |  |
| DUKHMOBGEN0000003015 |  | Commencement of works (Clause 41) | 30d | 2012-11-01 A | 2012-12-05 A | DUKHKYDGEN0000001000 SS | 100% |  |
| DUKHMOBGEN0000003020 |  | Construction of plant,Temporary works & material | 30d | 2012-11-01 A | 2012-12-05 A | DUKHKYDGEN0000001000 SS | 100% |  |
| DUKHMOBGEN0000003025 |  | Construction Running Cost | 881d | 2012-11-01 A | 2015-03-31 | DUKHKYDGEN0000001000 SS | 20% | 0d |
| DUKHMOBGEN0000003030 |  | Sub & App -Key Personnel CVs | 60d | 2012-11-06 A | 2013-01-15 A | DUKHKYDGEN0000001000 SS+5d | 100% |  |
| DUKHMOBGEN0000003035 |  | Sub & App -HSE plan | 60d | 2012-11-12 A | 2013-01-21 A | DUKHMOBGEN0000003030 SS+5d | 100% |  |
| DUKHMOBGEN0000003040 |  | Sub & App -Quality plan | 60d | 2012-11-18 A | 2013-01-27 A | DUKHMOBGEN0000003035 SS+5d | 100% |  |
|  | L15 | **PACKAGE-1** |  | 2012-11-01 | 2013-02-13 |  |  |  |
| DUKHMOBP010000004000 |  | Securing Gate Passes/Access Permit & Courses | 25d | 2012-11-01 A | 2012-11-29 A | DUKHKYDGEN0000001000 | 100% |  |
| DUKHMOBP010000004010 |  | Sub & Approval of Site Logistic Plan | 30d | 2012-11-08 A | 2012-12-12 A | DUKHMOBP010000004000 SS+6d | 100% |  |
| DUKHMOBP010000004020 |  | Sub & App of Method Statement-Temporary Struct. | 30d | 2012-12-06 A | 2012-12-31 A | DUKHMOBGEN0000003000 FF, DUKHMOBP010000004000 SS+2d, DUKHMOBP010000004010 SS+5d, DUKHMOBGEN0000003010 FF, DUKHMOBGEN0000003020, DUKHMOBGEN0000003005 FF | 100% |  |
| DUKHMOBP010000004030 |  | Sub & App of Layout Drawings-Temporary Struct. | 30d | 2012-12-12 A | 2013-01-16 A | DUKHMOBGEN0000003015, DUKHMOBP010000004020 SS+5d, DUKHMOBP010000004000 SS+2d | 100% |  |
| DUKHMOBP010000004040 |  | Securing Permit To Work | 20d | 2012-12-13 A | 2013-01-20 A | DUKHMOBP010000004010 | 100% |  |
| DUKHMOBP010000004050 |  | Site Cleaning & Leveling Works | 25d | 2012-12-26 A | 2013-01-23 A | DUKHMOBP010000004040 SS+10d | 100% |  |
| DUKHMOBP010000004060 |  | Establishment of Security Fences & Gates | 20d | 2013-01-21 A | 2013-02-13 A | DUKHMOBP010000004000 SS+1d, DUKHMOBP010000004040, DUKHMOBGEN0000003040 SS+14d, DUKHMOBP010000004010 | 100% |  |
| DUKHMOBP010000004070 |  | Establishment of Site offices | 20d | 2013-01-21 A | 2013-02-13 A | DUKHMOBP010000004030, DUKHMOBP010000004040, DUKHMOBP010000004010 | 100% |  |
| DUKHMOBP010000004080 |  | Establishment of Labour Mess & Toilets | 20d | 2013-01-21 A | 2013-02-13 A | DUKHMOBP010000004040 | 100% |  |
| DUKHMOBP010000004090 |  | Establishment of Stores & Workshops | 20d | 2013-01-21 A | 2013-02-13 A | DUKHMOBP010000004040 | 100% |  |
|  | L30 | **PACKAGE-2** |  | 2012-11-01 | 2013-04-11 |  |  |  |
| DUKHMOBP020000004000 |  | Securing Gate Passes/Access Permit & Courses | 25d | 2012-11-01 A | 2012-11-29 A | DUKHKYDGEN0000001000 | 100% |  |
| DUKHMOBP020000004010 |  | Sub & Approval of Site Logistic Plan | 30d | 2012-11-14 A | 2012-12-19 A | DUKHMOBP020000004000 SS+11d | 100% |  |
| DUKHMOBP020000004020 |  | Sub & App of Method Statement-Temporary Struct. | 30d | 2012-11-20 A | 2012-12-25 A | DUKHMOBP020000004000 SS+2d, DUKHMOBP020000004010 SS+5d | 100% |  |
| DUKHMOBP020000004040 |  | Securing Permit To Work | 15d | 2012-12-02 A | 2012-12-19 A | DUKHMOBP020000004010 FF | 100% |  |
| DUKHMOBP020000004050 |  | Site Cleaning & Leveling Works | 25d | 2012-12-13 A | 2013-01-12 A | DUKHMOBP020000004040 SS+10d | 100% |  |
| DUKHMOBP020000004070 |  | Establishment of Site offices | 20d | 2012-12-20 A | 2013-01-12 A | DUKHMOBP020000004040, DUKHMOBP020000004010 | 100% |  |
| DUKHMOBP020000004080 |  | Establishment of Labour Mess & Toilets | 20d | 2012-12-20 A | 2013-01-12 A | DUKHMOBP020000004040 | 100% |  |
| DUKHMOBP020000004090 |  | Establishment of Stores & Workshops | 20d | 2012-12-20 A | 2013-01-12 A | DUKHMOBP020000004040 | 100% |  |
| DUKHMOBP020000004030 |  | Sub & App of Layout Drawings-Temporary Struct. | 30d | 2012-12-26 A | 2013-01-30 A | DUKHMOBP020000004020, DUKHMOBP020000004000 SS+2d | 100% |  |
| DUKHMOBP020000004060 |  | Establishment of Security Fences & Gates | 20d | 2013-01-30 A | 2013-04-11 A | DUKHMOBP020000004010, DUKHMOBP020000004040, DUKHMOBP020000004030, DUKHMOBP020000004000 SS+1d | 100% |  |
|  | L45 | **PACKAGE-3** |  | 2012-11-01 | 2013-03-01 |  |  |  |
| DUKHMOBP030000004000 |  | Securing Gate Passes/Access Permit & Courses | 25d | 2012-11-01 A | 2012-11-29 A | DUKHKYDGEN0000001000 | 100% |  |

| ID | WBS | Task | Duration | Start | Finish | Predecessors | Complete | Total float |
| --- | --- | --- | --- | --- | --- | --- | --- | --- |
| DUKHMOBP030000004010 |  | Sub & Approval of Site Logistic Plan | 30d | 2012-11-10 A | 2012-12-13 A | DUKHMOBP030000004000 SS+7d | 100% |  |
| DUKHMOBP030000004020 |  | Sub & App of Method Statement-Temporary Struct. | 30d | 2012-11-17 A | 2012-12-22 A | DUKHMOBP030000004000 SS+2d, DUKHMOBP030000004010 SS+6d | 100% |  |
| DUKHMOBP030000004030 |  | Sub & App of Layout Drawings-Temporary Struct. | 30d | 2012-11-17 A | 2012-12-22 A | DUKHMOBP030000004000 SS+2d, DUKHMOBP030000004020 SS | 100% |  |
| DUKHMOBP030000004040 |  | Securing Permit To Work | 20d | 2012-12-15 A | 2013-01-07 A | DUKHMOBP030000004010 | 100% |  |
| DUKHMOBP030000004050 |  | Site Cleaning & Leveling Works | 25d | 2012-12-20 A | 2013-01-17 A | DUKHMOBP030000004040 SS+4d | 100% |  |
| DUKHMOBP030000004070 |  | Establishment of Site offices | 20d | 2013-01-08 A | 2013-01-30 A | DUKHMOBP030000004040, DUKHMOBP030000004010, DUKHMOBP030000004030 | 100% |  |
| DUKHMOBP030000004080 |  | Establishment of Labour Mess & Toilets | 20d | 2013-01-08 A | 2013-01-30 A | DUKHMOBP030000004040 | 100% |  |
| DUKHMOBP030000004090 |  | Establishment of Stores & Workshops | 20d | 2013-01-08 A | 2013-01-30 A | DUKHMOBP030000004040 | 100% |  |
| DUKHMOBP030000004060 |  | Establishment of Security Fences & Gates | 59d | 2013-02-02 A | 2013-03-01 A | DUKHMOBP030000004010, DUKHMOBP030000004000 SS+1d, DUKHMOBP030000004040 | 100% |  |
|  | K20 | **ENGINEERING** |  | 2012-11-26 | 2013-09-07 |  |  |  |
|  | L20 | **PACKAGE-1A** |  | 2012-12-01 | 2013-08-27 |  |  |  |
|  | E05 | **SHOP DRAWINGS SUBMISSION & APPROVAL** |  | 2012-12-01 | 2013-08-27 |  |  |  |
|  | H05 | **STRUCTURAL DRAWINGS** |  | 2012-12-01 | 2013-03-01 |  |  |  |
|  | G10 | **SUBMISSION OF DRAWINGS** |  | 2012-12-01 | 2013-01-28 |  |  |  |
| DUKHENGP1ADWSTSM4000 |  | Footing Drawings-Sub | 10d | 2012-12-01 A | 2012-12-11 A | DUKHMOBP010000004000 | 100% |  |
| DUKHENGP1ADWSTSM4010 |  | Grade Beam & Slab Drawings-Sub | 15d | 2012-12-06 A | 2012-12-24 A | DUKHENGP1ADWSTSM4000 SS+5d | 100% |  |
| DUKHENGP1ADWSTSM4020 |  | Column Drawings-Sub | 15d | 2012-12-12 A | 2012-12-30 A | DUKHENGP1ADWSTSM4010 SS+5d | 100% |  |
| DUKHENGP1ADWSTSM4030 |  | GF Beams & Slabs Drawings-Sub | 15d | 2012-12-25 A | 2013-01-10 A | DUKHENGP1ADWSTSM4020 SS+10d | 100% |  |
| DUKHENGP1ADWSTSM4040 |  | FF Beams & Slabs Drawings-Sub | 15d | 2013-01-12 A | 2013-01-28 A | DUKHENGP1ADWSTSM4030 | 100% |  |
|  | G20 | **APPROVAL OF DRAWINGS** |  | 2012-12-12 | 2013-03-01 |  |  |  |
| DUKHENGP1ADWSTAP4000 |  | Footing Drawings-App | 25d | 2012-12-12 A | 2012-12-28 A | DUKHENGP1ADWSTSM4000 | 100% |  |
| DUKHENGP1ADWSTAP4010 |  | Grade Beam & Slab Drawings-App | 30d | 2012-12-25 A | 2013-01-28 A | DUKHENGP1ADWSTSM4010 | 100% |  |
| DUKHENGP1ADWSTAP4020 |  | Column Drawings-App | 32d | 2012-12-29 A | 2013-02-01 A | DUKHENGP1ADWSTSM4020 | 100% |  |
| DUKHENGP1ADWSTAP4030 |  | GF Beams & Slabs Drawings-App | 12d | 2013-02-02 A | 2013-02-16 A | DUKHENGP1ADWSTSM4030 | 100% |  |
| DUKHENGP1ADWSTAP4040 |  | FF Beams & Slabs Drawings-App | 27d | 2013-02-02 A | 2013-03-01 A | DUKHENGP1ADWSTSM4040 | 100% |  |
|  | H10 | **ARCHITECTURAL DRAWINGS** |  | 2013-01-29 | 2013-05-27 |  |  |  |
|  | G10 | **SUBMISSION OF DRAWINGS** |  | 2013-01-29 | 2013-04-22 |  |  |  |
| DUKHENGP1ADWARSM4050 |  | Ground Floor Plan-Sub | 15d | 2013-01-29 A | 2013-02-16 A | DUKHENGP1ADWSTSM4040 | 100% |  |
| DUKHENGP1ADWARSM4060 |  | First Floor Plan-Sub | 15d | 2013-02-11 A | 2013-02-28 A | DUKHENGP1ADWARSM4050 SS+11d | 100% |  |
| DUKHENGP1ADWARSM4070 |  | Roof Floor Plan-Sub | 15d | 2013-02-20 A | 2013-03-07 A | DUKHENGP1ADWARSM4060 SS+7d | 100% |  |
| DUKHENGP1ADWARSM4080 |  | Ceramic Flooring & Wall Drawings-Sub | 15d | 2013-03-02 A | 2013-03-18 A | DUKHENGP1ADWARSM4050, DUKHENGP1ADWARSM4060, DUKHENGP1ADWARSM4070 SS+3d | 100% |  |
| DUKHENGP1ADWARSM4090 |  | Porcelain Floor Drawings-Sub | 15d | 2013-03-02 A | 2013-03-18 A | DUKHENGP1ADWARSM4080 SS | 100% |  |
| DUKHENGP1ADWARSM4100 |  | Cobble & Slate Flooring Drawings-Sub | 15d | 2013-03-02 A | 2013-03-18 A | DUKHENGP1ADWARSM4090 SS | 100% |  |
| DUKHENGP1ADWARSM4110 |  | Gypsum False Ceiling Drawings-Sub | 15d | 2013-03-10 A | 2013-03-26 A | DUKHPROGEN00PQAP2050, DUKHPROGEN00PQAP1050 | 100% |  |
| DUKHENGP1ADWARSM4120 |  | Aluminum False Ceiling Drawings-Sub | 15d | 2013-03-10 A | 2013-03-26 A | DUKHPROGEN00PQAP1050, DUKHPROGEN00PQAP2050 | 100% |  |
| DUKHENGP1ADWARSM4130 |  | Doors & window Drawings-Sub | 15d | 2013-03-20 A | 2013-03-30 A | DUKHPROGEN00PQAP1080, DUKHENGP1ADWARSM4050, DUKHPROGEN00PQAP2080 | 100% |  |
| DUKHENGP1ADWARSM4140 |  | Carpentry & Joinery Drawings-Sub | 15d | 2013-04-06 A | 2013-04-22 A | DUKHENGP1ADWARSM4050, DUKHPROGEN00PQAP1150, DUKHPROGEN00PQAP2150 | 100% |  |
|  | G20 | **APPROVAL OF DRAWINGS** |  | 2013-02-17 | 2013-05-27 |  |  |  |
| DUKHENGP1ADWARAP4050 |  | Ground Floor Plan-App | 30d | 2013-02-17 A | 2013-03-23 A | DUKHENGP1ADWARSM4050 | 100% |  |
| DUKHENGP1ADWARAP4060 |  | First Floor Plan-App | 30d | 2013-03-02 A | 2013-03-30 A | DUKHENGP1ADWARSM4060 | 100% |  |
| DUKHENGP1ADWARAP4070 |  | Roof Floor Plan-App | 30d | 2013-03-09 A | 2013-04-11 A | DUKHENGP1ADWARSM4070 | 100% |  |
| DUKHENGP1ADWARAP4080 |  | Ceramic Flooring & Wall Drawings-App | 30d | 2013-03-19 A | 2013-04-22 A | DUKHENGP1ADWARSM4080 | 100% |  |
| DUKHENGP1ADWARAP4090 |  | Porcelain Floor Drawings-App | 30d | 2013-03-19 A | 2013-04-22 A | DUKHENGP1ADWARSM4090 | 100% |  |
| DUKHENGP1ADWARAP4100 |  | Cobble & Slate Flooring Drawings-App | 30d | 2013-03-19 A | 2013-04-22 A | DUKHENGP1ADWARSM4100 | 100% |  |
| DUKHENGP1ADWARAP4110 |  | Gypsum False Ceiling Drawings-App | 28d | 2013-03-30 A | 2013-04-30 | DUKHENGP1ADWARSM4110 | 86% | 71d |
| DUKHENGP1ADWARAP4120 |  | Aluminum False Ceiling Drawings-App | 28d | 2013-03-30 A | 2013-04-30 | DUKHENGP1ADWARSM4120 | 86% | 86d |
| DUKHENGP1ADWARAP4130 |  | Doors & Window Drawings-App | 30d | 2013-04-13 A | 2013-05-16 | DUKHENGP1ADWARAP4060, DUKHENGP1ADWARSM4130, DUKHENGP1ADWARAP4070 | 40% | 56d |
| DUKHENGP1ADWARAP4140 |  | Carpentry & Joinery Drawings-App | 27d | 2013-04-27 | 2013-05-27 | DUKHENGP1ADWARSM4140 |  | 84d |
|  | H20 | **ELECTRICAL DRAWINGS** |  | 2013-02-17 | 2013-06-06 |  |  |  |
|  | G10 | **SUBMISSION OF DRAWINGS** |  | 2013-02-17 | 2013-05-02 |  |  |  |
| DUKHENGP1ADWELSM4150 |  | Single Line Diagram-Sub | 15d | 2013-02-17 A | 2013-03-01 A | DUKHPROGEN00PQAP1040, DUKHPROGEN00PQAP2040 | 100% |  |
| DUKHENGP1ADWELSM4160 |  | Lighting Layout Drawings-Sub | 15d | 2013-02-17 A | 2013-03-01 A | DUKHENGP1ADWELSM4150 SS | 100% |  |
| DUKHENGP1ADWELSM4170 |  | Power Layout Drawings-Sub | 14d | 2013-03-02 A | 2013-03-17 A | DUKHENGP1ADWELSM4150 SS+10d, DUKHENGP1ADWELSM4160 SS | 100% |  |
| DUKHENGP1ADWELSM4180 |  | Central Alarm Monitoring System Drawings-Sub | 15d | 2013-03-18 A | 2013-03-30 A | DUKHENGP1ADWELSM4170 | 100% |  |
| DUKHENGP1ADWELSM4190 |  | Audio Video Intercom System Drawings-Sub | 15d | 2013-03-30 A | 2013-04-15 A | DUKHENGP1ADWELSM4180 | 100% |  |
| DUKHENGP1ADWELSM4200 |  | Telephone & TV System Drawings-Sub | 15d | 2013-04-16 A | 2013-05-02 | DUKHENGP1ADWELSM4190 | 60% | 79d |
|  | G20 | **APPROVAL OF DRAWINGS** |  | 2013-03-02 | 2013-06-06 |  |  |  |
| DUKHENGP1ADWELAP4150 |  | Single Line Diagram-App | 30d | 2013-03-02 A | 2013-04-04 A | DUKHENGP1ADWELSM4150 | 100% |  |
| DUKHENGP1ADWELAP4160 |  | Lighting Layout Drawings-App | 30d | 2013-03-02 A | 2013-04-04 A | DUKHENGP1ADWELSM4160 | 100% |  |
| DUKHENGP1ADWELAP4170 |  | Power Layout Drawings-App | 30d | 2013-03-18 A | 2013-04-21 A | DUKHENGP1ADWELSM4170 | 100% |  |
| DUKHENGP1ADWELAP4180 |  | Central Alarm Monitoring System Drawings-App | 30d | 2013-03-30 A | 2013-05-02 | DUKHENGP1ADWELSM4180 | 80% | 103d |
| DUKHENGP1ADWELAP4190 |  | Audio Video Intercom System Drawings-App | 30d | 2013-04-16 A | 2013-05-20 | DUKHENGP1ADWELSM4190 | 30% | 94d |
| DUKHENGP1ADWELAP4200 |  | Telephone & TV System Drawings-App | 30d | 2013-05-04 | 2013-06-06 | DUKHENGP1ADWELSM4200 |  | 79d |
|  | H30 | **PLUMBING,DRAINAGE,FIREFIGHTING & AC DRAWINGS** |  | 2013-02-17 | 2013-05-30 |  |  |  |
|  | G10 | **SUBMISSION OF DRAWINGS** |  | 2013-02-17 | 2013-03-29 |  |  |  |
| DUKHENGP1ADWMESM4210 |  | Plumbing Layout & Details Drawings-Sub | 15d | 2013-02-17 A | 2013-03-05 A | DUKHPROGEN00PQAP2040, DUKHPROGEN00PQAP1040 | 100% |  |
| DUKHENGP1ADWMESM4220 |  | Drainage Layout & Details Drawings-Sub | 15d | 2013-02-17 A | 2013-03-05 A | DUKHPROGEN00PQAP2040, DUKHPROGEN00PQAP1040 | 100% |  |
| DUKHENGP1ADWMESM4230 |  | Fire Fighting Layout & Details Drawings-Sub | 15d | 2013-03-06 A | 2013-03-23 A | DUKHPROGEN00PQAP2040, DUKHPROGEN00PQAP1040, DUKHENGP1ADWMESM4220 | 100% |  |
| DUKHENGP1ADWMESM4240 |  | AC Layout & Details Drawings-Sub | 15d | 2013-03-24 A | 2013-03-29 A | DUKHPROGEN00PQAP1040, DUKHENGP1ADWMESM4230, DUKHPROGEN00PQAP2040 | 100% |  |
|  | G20 | **APPROVAL OF DRAWINGS** |  | 2013-03-30 | 2013-05-30 |  |  |  |

| ID | WBS | Task | Duration | Start | Finish | Predecessors | Complete | Total float |
| --- | --- | --- | --- | --- | --- | --- | --- | --- |
| DUKHENGP1ADWMEAP4210 |  | Plumbing Layout & Details Drawings-App | 10d | 2013-03-30 A | 2013-04-09 A | DUKHENGP1ADWMESM4210 | 100% |  |
| DUKHENGP1ADWMEAP4220 |  | Drainage Layout & Details Drawings-App | 10d | 2013-03-30 A | 2013-04-09 A | DUKHENGP1ADWMESM4210, DUKHENGP1ADWMESM4220 | 100% |  |
| DUKHENGP1ADWMEAP4230 |  | Fire Fighting Layout & Details Drawings-App | 25d | 2013-03-30 A | 2013-04-27 | DUKHENGP1ADWMESM4230 | 100% | 150d |
| DUKHENGP1ADWMEAP4240 |  | AC Layout & Details Drawings-App | 30d | 2013-04-27 | 2013-05-30 | DUKHENGP1ADWMESM4240 |  | 54d |
|  | H40 | **INFRA DRAWINGS** |  | 2013-03-30 | 2013-08-27 |  |  |  |
|  | G10 | **SUBMISSION OF DRAWINGS** |  | 2013-03-30 | 2013-07-02 |  |  |  |
| DUKHENGI1ADWDRSM4250 |  | Drainage Line Layout & Details-Sub | 15d | 2013-03-30 A | 2013-04-15 A | DUKHMOBI1APS00001400, DUKHPROGEN00PQAP2040, DUKHPROGEN00PQAP1040, DUKHENGP1ADWMESM4240 | 100% |  |
| DUKHENGI1ADWFFSM4260 |  | Fire Fighting Line Layout & Details-Sub | 15d | 2013-03-30 A | 2013-04-15 A | DUKHENGI1ADWWSSM4270 SS | 100% |  |
| DUKHENGI1ADWWSSM4270 |  | Water Supply Line Layout & Details-Sub | 15d | 2013-03-30 A | 2013-04-15 A | DUKHENGI1ADWDRSM4250 SS | 100% |  |
| DUKHENGI1ADWELSM4280 |  | Electrical Line Layout & Details-Sub | 15d | 2013-04-16 A | 2013-05-02 | DUKHENGI1ADWFFSM4260, DUKHPROGEN00PQAP1040, DUKHPROGEN00PQAP2040 | 60% | 63d |
| DUKHENGI1ADWSTSM4290 |  | Street Lighting Layout & details -Sub | 15d | 2013-04-16 A | 2013-05-02 | DUKHENGI1ADWELSM4280 SS | 60% | 63d |
| DUKHENGI1ADWTCSM4300 |  | Telecommunication Line Layout & Details-Sub | 15d | 2013-04-16 A | 2013-05-02 | DUKHENGI1ADWSTSM4290 SS | 60% | 63d |
| DUKHENGI1ADWBWSM4330 |  | Boundary Wall Layout & Details-Sub | 15d | 2013-05-04 | 2013-05-20 | DUKHENGI1ADWSLSM4320 SS |  | 63d |
| DUKHENGI1ADWIRSM4310 |  | Irrigation Layout & Details-Sub | 15d | 2013-05-04 | 2013-05-20 | DUKHENGI1ADWTCSM4300, DUKHENGI1ADWWSSM4270 |  | 63d |
| DUKHENGI1ADWSLSM4320 |  | Soft & HardLandscaping Layout & Detail-Sub | 15d | 2013-05-04 | 2013-05-20 | DUKHENGI1ADWIRSM4310 SS |  | 63d |
| DUKHENGI1ADWIWSM4360 |  | Irrigation Water Tank & Pump Room Details- Sub | 15d | 2013-05-12 | 2013-05-28 | DUKHENGI1ADWRWSM4350 SS |  | 63d |
| DUKHENGI1ADWPSSM4340 |  | Parking Shed Layout & Details Drawings-Sub | 15d | 2013-05-12 | 2013-05-28 | DUKHENGI1ADWBWSM4330 SS+7d |  | 63d |
| DUKHENGI1ADWRWSM4350 |  | Road Layout & Details-Sub | 15d | 2013-05-12 | 2013-05-28 | DUKHENGI1ADWPSSM4340 SS |  | 63d |
| DUKHENGI1ADWTRSM4370 |  | Telephone Room Details-Sub | 15d | 2013-05-29 | 2013-06-15 | DUKHENGI1ADWIWSM4360 |  | 74d |
| DUKHENGI1ADWGHSM4390 |  | Guard House Plan & Details-Sub | 15d | 2013-06-16 | 2013-07-02 | DUKHENGI1ADWTRSM4370 |  | 301d |
| DUKHENGI1ADWGZSM4380 |  | Gazebo Plan & Details-Sub | 15d | 2013-06-16 | 2013-07-02 | DUKHENGI1ADWTRSM4370 |  | 89d |
|  | G20 | **APPROVAL OF DRAWINGS** |  | 2013-04-27 | 2013-08-27 |  |  |  |
| DUKHENGI1ADWDRAP4250 |  | Drainage Line Layout & Details-App | 21d | 2013-04-27 | 2013-05-20 | DUKHENGI1ADWDRSM4250 |  | 98d |
| DUKHENGI1ADWFFAP4260 |  | Fire Fighting Line Layout & Details-App | 21d | 2013-04-27 | 2013-05-20 | DUKHENGI1ADWFFSM4260 |  | 59d |
| DUKHENGI1ADWWSAP4270 |  | Water Supply Line Layout & Details-App | 21d | 2013-04-27 | 2013-05-20 | DUKHENGI1ADWWSSM4270 |  | 100d |
| DUKHENGI1ADWELAP4280 |  | Electrical Line Layout & Details-App | 30d | 2013-05-04 | 2013-06-06 | DUKHENGI1ADWELSM4280 |  | 74d |
| DUKHENGI1ADWBWAP4330 |  | Boundary Wall Layout & Details-App | 30d | 2013-05-21 | 2013-06-24 | DUKHENGI1ADWBWSM4330 |  | 99d |
| DUKHENGI1ADWIRAP4310 |  | Irrigation Layout & Details-App | 30d | 2013-05-21 | 2013-06-24 | DUKHENGI1ADWIRSM4310 |  | 105d |
| DUKHENGI1ADWSLAP4320 |  | Soft & HardLandscaping Layout & Detail-App | 30d | 2013-05-21 | 2013-06-24 | DUKHENGI1ADWSLSM4320 |  | 81d |
| DUKHENGI1ADWIWAP4360 |  | Irrigation Water Tank & Pump Room Details-App | 30d | 2013-05-29 | 2013-07-02 | DUKHENGI1ADWIWSM4360 |  | 63d |
| DUKHENGI1ADWPSAP4340 |  | Parking Shed Layout & Details Drawings-App | 30d | 2013-05-29 | 2013-07-02 | DUKHENGI1ADWPSSM4340 |  | 164d |
| DUKHENGI1ADWRWAP4350 |  | Road Layout & Details-App | 30d | 2013-05-29 | 2013-07-02 | DUKHENGI1ADWRWSM4350 |  | 163d |
| DUKHENGI1ADWSTAP4290 |  | Street Lighting Layout & details -App | 30d | 2013-06-08 | 2013-07-11 | DUKHENGI1ADWSTSM4290, DUKHENGI1ADWELAP4280 |  | 74d |
| DUKHENGI1ADWTRAP4370 |  | Telephone Room Details-App | 30d | 2013-06-16 | 2013-07-20 | DUKHENGI1ADWTRSM4370 |  | 74d |
| DUKHENGI1ADWTCAP4300 |  | Telecommunication Line Layout & Details-App | 30d | 2013-07-13 | 2013-08-19 | DUKHENGI1ADWTCSM4300, DUKHENGI1ADWSTAP4290 |  | 74d |
| DUKHENGI1ADWGHAP4390 |  | Guard House Plan & Details-App | 30d | 2013-07-21 | 2013-08-27 | DUKHENGI1ADWGHSM4390, DUKHENGI1ADWTRAP4370 |  | 286d |
| DUKHENGI1ADWGZAP4380 |  | Gazebo Plan & Details-App | 30d | 2013-07-21 | 2013-08-27 | DUKHENGI1ADWGZSM4380, DUKHENGI1ADWTRAP4370 |  | 74d |
|  | L30 | **PACKAGE-1B** |  | 2012-12-12 | 2013-08-26 |  |  |  |
|  | E05 | **SHOP DRAWINGS SUBMISSION & APPROVAL** |  | 2012-12-12 | 2013-08-26 |  |  |  |
|  | H05 | **STRUCTURAL DRAWINGS** |  | 2012-12-12 | 2013-03-17 |  |  |  |
|  | G10 | **SUBMISSION OF DRAWINGS** |  | 2012-12-12 | 2013-02-09 |  |  |  |
| DUKHENGP1BDWSTSM4400 |  | Footing Drawings-Sub | 15d | 2012-12-12 A | 2012-12-30 A | DUKHMOBP010000004020 SS+5d | 100% |  |
| DUKHENGP1BDWSTSM4410 |  | Grade Beam & Slab Drawings-Sub | 15d | 2012-12-19 A | 2013-01-05 A | DUKHENGP1BDWSTSM4400 SS+5d | 100% |  |
| DUKHENGP1BDWSTSM4420 |  | Column Drawings-Sub | 15d | 2012-12-25 A | 2013-01-10 A | DUKHENGP1BDWSTSM4410 SS+5d | 100% |  |
| DUKHENGP1BDWSTSM4430 |  | GF Beams & Slabs Drawings-Sub | 15d | 2013-01-06 A | 2013-01-22 A | DUKHENGP1BDWSTSM4420 SS+10d | 100% |  |
| DUKHENGP1BDWSTSM4440 |  | FF Beams & Slabs Drawings-Sub | 15d | 2013-01-23 A | 2013-02-09 A | DUKHENGP1BDWSTSM4430 | 100% |  |
|  | G20 | **APPROVAL OF DRAWINGS** |  | 2012-12-29 | 2013-03-17 |  |  |  |
| DUKHENGP1BDWSTAP4400 |  | Footing Drawings-App | 32d | 2012-12-29 A | 2013-02-01 A | DUKHENGP1BDWSTSM4400 | 100% |  |
| DUKHENGP1BDWSTAP4410 |  | Grade Beam & Slab Drawings-App | 30d | 2013-01-06 A | 2013-02-09 A | DUKHENGP1BDWSTSM4410 | 100% |  |
| DUKHENGP1BDWSTAP4420 |  | Column Drawings-App | 12d | 2013-02-02 A | 2013-02-16 A | DUKHENGP1BDWSTSM4420 | 100% |  |
| DUKHENGP1BDWSTAP4430 |  | GF Beams & Slabs Drawings-App | 22d | 2013-02-02 A | 2013-02-27 A | DUKHENGP1BDWSTSM4430 | 100% |  |
| DUKHENGP1BDWSTAP4440 |  | FF Beams & Slabs Drawings-App | 30d | 2013-02-10 A | 2013-03-17 A | DUKHENGP1BDWSTSM4440 | 100% |  |
|  | H10 | **ARCHITECTURAL DRAWINGS** |  | 2013-02-10 | 2013-05-27 |  |  |  |
|  | G10 | **SUBMISSION OF DRAWINGS** |  | 2013-02-10 | 2013-04-22 |  |  |  |
| DUKHENGP1BDWARSM4450 |  | Ground Floor Plan-Sub | 15d | 2013-02-10 A | 2013-02-27 A | DUKHENGP1BDWSTSM4440 | 100% |  |
| DUKHENGP1BDWARSM4460 |  | First Floor Plan-Sub | 15d | 2013-02-19 A | 2013-03-07 A | DUKHENGP1BDWARSM4450 SS+7d | 100% |  |
| DUKHENGP1BDWARSM4470 |  | Roof Floor Plan-Sub | 15d | 2013-02-27 A | 2013-03-16 A | DUKHENGP1BDWARSM4460 SS+7d | 100% |  |
| DUKHENGP1BDWARSM4500 |  | Ceramic Flooring & Wall Drawings-Sub | 15d | 2013-03-09 A | 2013-03-25 A | DUKHENGP1BDWARSM4460, DUKHENGP1BDWARSM4450, DUKHENGP1BDWARSM4470 SS+3d | 100% |  |
| DUKHENGP1BDWARSM4510 |  | Porcelain Floor Drawings-Sub | 15d | 2013-03-09 A | 2013-03-25 A | DUKHENGP1BDWARSM4500 SS | 100% |  |
| DUKHENGP1BDWARSM4520 |  | Cobble & Slate Flooring Drawings-Sub | 15d | 2013-03-09 A | 2013-03-25 A | DUKHENGP1BDWARSM4510 SS | 100% |  |
| DUKHENGP1BDWARSM4480 |  | Gypsum False Ceiling Drawings-Sub | 15d | 2013-03-10 A | 2013-03-26 A | DUKHPROGEN00PQAP1050, DUKHPROGEN00PQAP2050 | 100% |  |
| DUKHENGP1BDWARSM4490 |  | Aluminum False Ceiling Drawings-Sub | 15d | 2013-03-10 A | 2013-03-26 A | DUKHPROGEN00PQAP1050, DUKHPROGEN00PQAP2050 | 100% |  |
| DUKHENGP1BDWARSM4530 |  | Doors & window Drawings-Sub | 15d | 2013-03-20 A | 2013-04-06 A | DUKHPROGEN00PQAP1080, DUKHENGP1BDWARSM4450, DUKHPROGEN00PQAP2080 | 100% |  |
| DUKHENGP1BDWARSM4540 |  | Carpentry & Joinery Drawings-Sub | 15d | 2013-04-06 A | 2013-04-22 A | DUKHENGP1BDWARSM4450, DUKHPROGEN00PQAP2150, DUKHPROGEN00PQAP1150 | 100% |  |
|  | G20 | **APPROVAL OF DRAWINGS** |  | 2013-03-02 | 2013-05-27 |  |  |  |
| DUKHENGP1BDWARAP4450 |  | Ground Floor Plan-App | 29d | 2013-03-02 A | 2013-04-03 A | DUKHENGP1BDWARSM4450 | 100% |  |
| DUKHENGP1BDWARAP4460 |  | First Floor Plan-App | 12d | 2013-03-30 A | 2013-04-11 A | DUKHENGP1BDWARSM4460 | 100% |  |
| DUKHENGP1BDWARAP4470 |  | Roof Floor Plan-App | 19d | 2013-03-30 A | 2013-04-20 A | DUKHENGP1BDWARSM4470 | 100% |  |
| DUKHENGP1BDWARAP4480 |  | Gypsum False Ceiling Drawings-App | 28d | 2013-03-30 A | 2013-04-30 | DUKHENGP1BDWARSM4480 | 86% | 71d |
| DUKHENGP1BDWARAP4490 |  | Aluminum False Ceiling Drawings-App | 28d | 2013-03-30 A | 2013-04-30 | DUKHENGP1BDWARSM4490 | 86% | 86d |

| ID | WBS | Task | Duration | Start | Finish | Predecessors | Complete | Total float |
| --- | --- | --- | --- | --- | --- | --- | --- | --- |
| DUKHENGP1BDWARAP4500 |  | Ceramic Flooring & Wall Drawings-App | 27d | 2013-03-30 A | 2013-04-29 | DUKHENGP1BDWARSM4500 | 89% | 42d |
| DUKHENGP1BDWARAP4510 |  | Porcelain Floor Drawings-App | 27d | 2013-03-30 A | 2013-04-29 | DUKHENGP1BDWARSM4510 | 89% | 51d |
| DUKHENGP1BDWARAP4520 |  | Cobble & Slate Flooring Drawings-App | 27d | 2013-03-30 A | 2013-04-29 | DUKHENGP1BDWARSM4520 | 89% | 82d |
| DUKHENGP1BDWARAP4530 |  | Doors & Window Drawings-App | 30d | 2013-04-21 A | 2013-05-25 | DUKHENGP1BDWARAP4460, DUKHENGP1BDWARAP4470, DUKHENGP1BDWARSM4530 | 17% | 49d |
| DUKHENGP1BDWARAP4540 |  | Carpentry & Joinery Drawings-App | 27d | 2013-04-27 | 2013-05-27 | DUKHENGP1BDWARSM4540 |  | 84d |
|  | H20 | **ELECTRICAL DRAWINGS** |  | 2013-02-17 | 2013-05-30 |  |  |  |
|  | G10 | **SUBMISSION OF DRAWINGS** |  | 2013-02-17 | 2013-04-26 |  |  |  |
| DUKHENGP1BDWELSM4550 |  | Single Line Diagram-Sub | 15d | 2013-02-17 A | 2013-03-01 A | DUKHPROGEN00PQAP2040, DUKHPROGEN00PQAP1040 | 100% |  |
| DUKHENGP1BDWELSM4560 |  | Lighting Layout Drawings-Sub | 15d | 2013-03-02 A | 2013-03-18 A | DUKHENGP1BDWELSM4550 | 100% |  |
| DUKHENGP1BDWELSM4570 |  | Power Layout Drawings-Sub | 15d | 2013-03-06 A | 2013-03-23 A | DUKHENGP1BDWELSM4550, DUKHENGP1BDWELSM4560 SS+4d | 100% |  |
| DUKHENGP1BDWELSM4580 |  | Central Alarm Monitoring System Drawings-Sub | 15d | 2013-03-14 A | 2013-03-31 A | DUKHENGP1BDWELSM4570 SS+7d | 100% |  |
| DUKHENGP1BDWELSM4590 |  | Audio Video Intercom System Drawings-Sub | 15d | 2013-03-30 A | 2013-04-15 A | DUKHENGP1BDWELSM4580 | 100% |  |
| DUKHENGP1BDWELSM4600 |  | Telephone & TV System Drawings-Sub | 15d | 2013-04-16 A | 2013-04-26 A | DUKHENGP1BDWELSM4590 | 100% |  |
|  | G20 | **APPROVAL OF DRAWINGS** |  | 2013-03-02 | 2013-05-30 |  |  |  |
| DUKHENGP1BDWELAP4550 |  | Single Line Diagram-App | 30d | 2013-03-02 A | 2013-04-04 A | DUKHENGP1BDWELSM4550 | 100% |  |
| DUKHENGP1BDWELAP4560 |  | Lighting Layout Drawings-App | 30d | 2013-03-19 A | 2013-04-22 A | DUKHENGP1BDWELSM4560 | 100% |  |
| DUKHENGP1BDWELAP4570 |  | Power Layout Drawings-App | 30d | 2013-03-24 A | 2013-04-27 | DUKHENGP1BDWELSM4570 | 97% | 104d |
| DUKHENGP1BDWELAP4580 |  | Central Alarm Monitoring System Drawings-App | 30d | 2013-03-30 A | 2013-04-26 A | DUKHENGP1BDWELSM4580 | 100% |  |
| DUKHENGP1BDWELAP4590 |  | Audio Video Intercom System Drawings-App | 30d | 2013-04-16 A | 2013-05-13 | DUKHENGP1BDWELSM4590 | 50% | 100d |
| DUKHENGP1BDWELAP4600 |  | Telephone & TV System Drawings-App | 30d | 2013-04-27 | 2013-05-30 | DUKHENGP1BDWELSM4600 |  | 85d |
|  | H30 | **PLUMBING,DRAINAGE,FIREFIGHTING & AC DRAWINGS** |  | 2013-02-17 | 2013-05-09 |  |  |  |
|  | G10 | **SUBMISSION OF DRAWINGS** |  | 2013-02-17 | 2013-04-04 |  |  |  |
| DUKHENGP1BDWMESM4610 |  | Plumbing Layout & Details Drawings-Sub | 15d | 2013-02-17 A | 2013-03-01 A | DUKHPROGEN00PQAP1040, DUKHPROGEN00PQAP2040 | 100% |  |
| DUKHENGP1BDWMESM4620 |  | Drainage Layout & Details Drawings-Sub | 15d | 2013-02-17 A | 2013-03-01 A | DUKHPROGEN00PQAP2040, DUKHPROGEN00PQAP1040 | 100% |  |
| DUKHENGP1BDWMESM4630 |  | Fire Fighting Layout & Details Drawings-Sub | 15d | 2013-03-02 A | 2013-03-18 A | DUKHPROGEN00PQAP1040, DUKHPROGEN00PQAP2040, DUKHENGP1BDWMESM4620 | 100% |  |
| DUKHENGP1BDWMESM4640 |  | AC Layout & Details Drawings-Sub | 15d | 2013-03-19 A | 2013-04-04 A | DUKHENGP1BDWMESM4630, DUKHPROGEN00PQAP1040, DUKHPROGEN00PQAP2040 | 100% |  |
|  | G20 | **APPROVAL OF DRAWINGS** |  | 2013-03-02 | 2013-05-09 |  |  |  |
| DUKHENGP1BDWMEAP4610 |  | Plumbing Layout & Details Drawings-App | 30d | 2013-03-02 A | 2013-04-04 A | DUKHENGP1BDWMESM4610 | 100% |  |
| DUKHENGP1BDWMEAP4620 |  | Drainage Layout & Details Drawings-App | 30d | 2013-03-02 A | 2013-04-04 A | DUKHENGP1BDWMESM4610, DUKHENGP1BDWMESM4620 | 100% |  |
| DUKHENGP1BDWMEAP4630 |  | Fire Fighting Layout & Details Drawings-App | 30d | 2013-03-19 A | 2013-04-22 A | DUKHENGP1BDWMESM4630 | 100% |  |
| DUKHENGP1BDWMEAP4640 |  | AC Layout & Details Drawings-App | 30d | 2013-04-06 A | 2013-05-09 | DUKHENGP1BDWMESM4640 | 60% | 72d |
|  | H40 | **INFRA DRAWINGS** |  | 2013-04-06 | 2013-08-26 |  |  |  |
|  | G10 | **SUBMISSION OF DRAWINGS** |  | 2013-04-06 | 2013-06-22 |  |  |  |
| DUKHENGI1BDWDRSM4650 |  | Drainage Line Layout & Details-Sub | 15d | 2013-04-06 A | 2013-04-22 A | DUKHENGP1BDWMESM4640, DUKHMOBI1BPS00001400, DUKHPROGEN00PQAP2040, DUKHPROGEN00PQAP1040 | 100% |  |
| DUKHENGI1BDWFFSM4660 |  | Fire Fighting Line Layout & Details-Sub | 15d | 2013-04-06 A | 2013-04-22 A | DUKHENGI1BDWWSSM4670 SS | 100% |  |
| DUKHENGI1BDWWSSM4670 |  | Water Supply Line Layout & Details-Sub | 15d | 2013-04-06 A | 2013-04-22 A | DUKHENGI1BDWDRSM4650 SS | 100% |  |
| DUKHENGI1BDWELSM4680 |  | Electrical Line Layout & Details-Sub | 15d | 2013-04-23 A | 2013-05-09 | DUKHPROGEN00PQAP1040, DUKHENGI1BDWFFSM4660, DUKHPROGEN00PQAP2040 | 20% | 57d |
| DUKHENGI1BDWSTSM4690 |  | Street Lighting Layout & details -Sub | 15d | 2013-04-23 A | 2013-05-09 | DUKHENGI1BDWELSM4680 SS | 20% | 57d |
| DUKHENGI1BDWTCSM4700 |  | Telecommunication Line Layout & Details-Sub | 15d | 2013-04-23 A | 2013-05-09 | DUKHENGI1BDWSTSM4690 SS | 20% | 57d |
| DUKHENGI1BDWBWSM4730 |  | Boundary Wall Layout & Details-Sub | 15d | 2013-05-11 | 2013-05-27 | DUKHENGI1BDWSLSM4720 SS |  | 57d |
| DUKHENGI1BDWIRSM4710 |  | Irrigation Layout & Details-Sub | 15d | 2013-05-11 | 2013-05-27 | DUKHENGI1BDWTCSM4700, DUKHENGI1BDWWSSM4670 |  | 57d |
| DUKHENGI1BDWSLSM4720 |  | Soft & HardLandscaping Layout & Detail-Sub | 15d | 2013-05-11 | 2013-05-27 | DUKHENGI1BDWIRSM4710 SS |  | 57d |
| DUKHENGI1BDWIWSM4760 |  | Irrigation Water Tank & Pump Room Details- Sub | 15d | 2013-05-19 | 2013-06-04 | DUKHENGI1BDWRWSM4750 SS |  | 57d |
| DUKHENGI1BDWPSSM4740 |  | Parking Shed Layout & Details Drawings-Sub | 15d | 2013-05-19 | 2013-06-04 | DUKHENGI1BDWBWSM4730 SS+7d |  | 57d |
| DUKHENGI1BDWRWSM4750 |  | Road Layout & Details-Sub | 15d | 2013-05-19 | 2013-06-04 | DUKHENGI1BDWPSSM4740 SS |  | 57d |
| DUKHENGI1BDWTRSM4770 |  | Telephone Room Details-Sub | 15d | 2013-05-19 | 2013-06-04 | DUKHENGI1BDWIWSM4760 SS |  | 83d |
| DUKHENGI1BDWGHSM4790 |  | Guard House Plan & Details-Sub | 15d | 2013-06-05 | 2013-06-22 | DUKHENGI1BDWTRSM4770 |  | 310d |
| DUKHENGI1BDWGZSM4780 |  | Gazebo Plan & Details-Sub | 15d | 2013-06-05 | 2013-06-22 | DUKHENGI1BDWTRSM4770 |  | 98d |
|  | G20 | **APPROVAL OF DRAWINGS** |  | 2013-04-27 | 2013-08-26 |  |  |  |
| DUKHENGI1BDWDRAP4650 |  | Drainage Line Layout & Details-App | 27d | 2013-04-27 | 2013-05-27 | DUKHENGI1BDWDRSM4650 |  | 94d |
| DUKHENGI1BDWFFAP4660 |  | Fire Fighting Line Layout & Details-App | 27d | 2013-04-27 | 2013-05-27 | DUKHENGI1BDWFFSM4660 |  | 53d |
| DUKHENGI1BDWWSAP4670 |  | Water Supply Line Layout & Details-App | 27d | 2013-04-27 | 2013-05-27 | DUKHENGI1BDWWSSM4670 |  | 94d |
| DUKHENGI1BDWELAP4680 |  | Electrical Line Layout & Details-App | 30d | 2013-05-11 | 2013-06-13 | DUKHENGI1BDWELSM4680 |  | 68d |
| DUKHENGI1BDWBWAP4730 |  | Boundary Wall Layout & Details-App | 30d | 2013-05-28 | 2013-07-01 | DUKHENGI1BDWBWSM4730 |  | 93d |
| DUKHENGI1BDWIRAP4710 |  | Irrigation Layout & Details-App | 30d | 2013-05-28 | 2013-07-01 | DUKHENGI1BDWIRSM4710 |  | 99d |
| DUKHENGI1BDWSLAP4720 |  | Soft & HardLandscaping Layout & Detail-App | 30d | 2013-05-28 | 2013-07-01 | DUKHENGI1BDWSLSM4720 |  | 75d |
| DUKHENGI1BDWIWAP4760 |  | Irrigation Water Tank & Pump Room Details-App | 30d | 2013-06-05 | 2013-07-09 | DUKHENGI1BDWIWSM4760 |  | 57d |
| DUKHENGI1BDWPSAP4740 |  | Parking Shed Layout & Details Drawings-App | 30d | 2013-06-05 | 2013-07-09 | DUKHENGI1BDWPSSM4740 |  | 158d |
| DUKHENGI1BDWRWAP4750 |  | Road Layout & Details-App | 30d | 2013-06-05 | 2013-07-09 | DUKHENGI1BDWRWSM4750 |  | 157d |
| DUKHENGI1BDWTRAP4770 |  | Telephone Room Details-App | 30d | 2013-06-05 | 2013-07-09 | DUKHENGI1BDWTRSM4770 |  | 83d |
| DUKHENGI1BDWSTAP4690 |  | Street Lighting Layout & details -App | 30d | 2013-06-15 | 2013-07-18 | DUKHENGI1BDWSTSM4690, DUKHENGI1BDWELAP4680 |  | 68d |
| DUKHENGI1BDWGHAP4790 |  | Guard House Plan & Details-App | 30d | 2013-07-10 | 2013-08-17 | DUKHENGI1BDWTRAP4770, DUKHENGI1BDWGHSM4790 |  | 295d |
| DUKHENGI1BDWGZAP4780 |  | Gazebo Plan & Details-App | 30d | 2013-07-10 | 2013-08-17 | DUKHENGI1BDWGZSM4780, DUKHENGI1BDWTRAP4770 |  | 83d |
| DUKHENGI1BDWTCAP4700 |  | Telecommunication Line Layout & Details-App | 30d | 2013-07-20 | 2013-08-26 | DUKHENGI1BDWTCSM4700, DUKHENGI1BDWSTAP4690 |  | 68d |
|  | L40 | **PACKAGE-2A** |  | 2012-11-26 | 2013-07-27 |  |  |  |
|  | E05 | **SHOP DRAWINGS SUBMISSION & APPROVAL** |  | 2012-11-26 | 2013-07-27 |  |  |  |
|  | H05 | **STRUCTURAL DRAWINGS** |  | 2012-11-26 | 2013-02-01 |  |  |  |
|  | G10 | **SUBMISSION OF DRAWINGS** |  | 2012-11-26 | 2013-01-06 |  |  |  |
| DUKHENGP2ADWSTSM4800 |  | Footing Drawings-Sub | 10d | 2012-11-26 A | 2012-12-05 A | DUKHMOBP020000004020 SS+5d | 100% |  |
| DUKHENGP2ADWSTSM4810 |  | Grade Beam & Slab Drawings-Sub | 15d | 2012-12-02 A | 2012-12-19 A | DUKHENGP2ADWSTSM4800 SS+5d | 100% |  |

| ID | WBS | Task | Duration | Start | Finish | Predecessors | Complete | Total float |
| --- | --- | --- | --- | --- | --- | --- | --- | --- |
| DUKHENGP2ADWSTSM4820 |  | Column Drawings-Sub | 15d | 2012-12-08 A | 2012-12-25 A | DUKHENGP2ADWSTSM4810 SS+5d | 100% |  |
| DUKHENGP2ADWSTSM4830 |  | GF Beams & Slabs Drawings-Sub | 8d | 2012-12-29 A | 2013-01-06 A | DUKHENGP2ADWSTSM4820 SS+10d | 100% |  |
|  | G20 | **APPROVAL OF DRAWINGS** |  | 2012-12-06 | 2013-02-01 |  |  |  |
| DUKHENGP2ADWSTAP4800 |  | Footing Drawings-App | 25d | 2012-12-06 A | 2012-12-31 A | DUKHENGP2ADWSTSM4800 | 100% |  |
| DUKHENGP2ADWSTAP4810 |  | Grade Beam & Slab Drawings-App | 30d | 2012-12-20 A | 2013-01-23 A | DUKHENGP2ADWSTSM4810 | 100% |  |
| DUKHENGP2ADWSTAP4820 |  | Column Drawings-App | 30d | 2012-12-26 A | 2013-01-29 A | DUKHENGP2ADWSTSM4820 | 100% |  |
| DUKHENGP2ADWSTAP4830 |  | GF Beams & Slabs Drawings-App | 30d | 2013-01-07 A | 2013-02-01 A | DUKHENGP2ADWSTSM4830 | 100% |  |
|  | H10 | **ARCHITECTURAL DRAWINGS** |  | 2013-01-07 | 2013-05-27 |  |  |  |
|  | G10 | **SUBMISSION OF DRAWINGS** |  | 2013-01-07 | 2013-04-22 |  |  |  |
| DUKHENGP2ADWARSM4850 |  | Ground Floor Plan-Sub | 15d | 2013-01-07 A | 2013-01-23 A | DUKHENGP2ADWSTSM4830 | 100% |  |
| DUKHENGP2ADWARSM4870 |  | Roof Floor Plan-Sub | 15d | 2013-01-15 A | 2013-01-31 A | DUKHENGP2ADWARSM4850 SS+7d | 100% |  |
| DUKHENGP2ADWARSM4880 |  | Ceramic Flooring & Wall Drawings-Sub | 15d | 2013-01-24 A | 2013-02-10 A | DUKHENGP2ADWARSM4850, DUKHENGP2ADWARSM4870 SS+3d | 100% |  |
| DUKHENGP2ADWARSM4890 |  | Porcelain Floor Drawings-Sub | 15d | 2013-01-24 A | 2013-02-10 A | DUKHENGP2ADWARSM4880 SS | 100% |  |
| DUKHENGP2ADWARSM4900 |  | Cobble & Slate Flooring Drawings-Sub | 15d | 2013-02-02 A | 2013-02-19 A | DUKHENGP2ADWARSM4890 SS | 100% |  |
| DUKHENGP2ADWARSM4910 |  | Gypsum False Ceiling Drawings-Sub | 15d | 2013-03-10 A | 2013-03-26 A | DUKHPROGEN00PQAP2050, DUKHPROGEN00PQAP1050 | 100% |  |
| DUKHENGP2ADWARSM4930 |  | Doors & window Drawings-Sub | 15d | 2013-03-20 A | 2013-04-06 A | DUKHENGP2ADWARSM4850, DUKHPROGEN00PQAP2080, DUKHPROGEN00PQAP1080 | 100% |  |
| DUKHENGP2ADWARSM4940 |  | Carpentry & Joinery Drawings-Sub | 15d | 2013-04-06 A | 2013-04-22 A | DUKHPROGEN00PQAP1150, DUKHPROGEN00PQAP2150, DUKHENGP2ADWARSM4850 | 100% |  |
|  | G20 | **APPROVAL OF DRAWINGS** |  | 2013-01-24 | 2013-05-27 |  |  |  |
| DUKHENGP2ADWARAP4850 |  | Ground Floor Plan-App | 30d | 2013-01-24 A | 2013-02-28 A | DUKHENGP2ADWARSM4850 | 100% |  |
| DUKHENGP2ADWARAP4870 |  | Roof Floor Plan-App | 7d | 2013-03-02 A | 2013-03-09 A | DUKHENGP2ADWARSM4870 | 100% |  |
| DUKHENGP2ADWARAP4880 |  | Ceramic Flooring & Wall Drawings-App | 7d | 2013-03-02 A | 2013-03-09 A | DUKHENGP2ADWARSM4880 | 100% |  |
| DUKHENGP2ADWARAP4890 |  | Porcelain Floor Drawings-App | 7d | 2013-03-02 A | 2013-03-09 A | DUKHENGP2ADWARSM4890 | 100% |  |
| DUKHENGP2ADWARAP4900 |  | Cobble & Slate Flooring Drawings-App | 7d | 2013-03-02 A | 2013-03-09 A | DUKHENGP2ADWARSM4900 FF | 100% |  |
| DUKHENGP2ADWARAP4910 |  | Gypsum False Ceiling Drawings-App | 30d | 2013-03-27 A | 2013-04-30 | DUKHENGP2ADWARSM4910 | 87% | 71d |
| DUKHENGP2ADWARAP4930 |  | Doors & Window Drawings-App | 30d | 2013-04-07 A | 2013-05-11 | DUKHENGP2ADWARSM4930, DUKHENGP2ADWARAP4870 | 57% | 61d |
| DUKHENGP2ADWARAP4940 |  | Carpentry & Joinery Drawings-App | 30d | 2013-04-23 A | 2013-05-27 | DUKHENGP2ADWARSM4940 | 10% | 84d |
|  | H20 | **ELECTRICAL DRAWINGS** |  | 2013-02-17 | 2013-06-04 |  |  |  |
|  | G10 | **SUBMISSION OF DRAWINGS** |  | 2013-02-17 | 2013-04-30 |  |  |  |
| DUKHENGP2ADWELSM4950 |  | Single Line Diagram-Sub | 15d | 2013-02-17 A | 2013-03-01 A | DUKHPROGEN00PQAP2040, DUKHPROGEN00PQAP1040 | 100% |  |
| DUKHENGP2ADWELSM4960 |  | Lighting Layout Drawings-Sub | 7d | 2013-03-02 A | 2013-03-09 A | DUKHENGP2ADWELSM4950 SS+5d | 100% |  |
| DUKHENGP2ADWELSM4970 |  | Power Layout Drawings-Sub | 7d | 2013-03-02 A | 2013-03-09 A | DUKHENGP2ADWELSM4960 SS, DUKHENGP2ADWELSM4950 SS+5d | 100% |  |
| DUKHENGP2ADWELSM4980 |  | Central Alarm Monitoring System Drawings-Sub | 15d | 2013-03-10 A | 2013-03-26 A | DUKHENGP2ADWELSM4970 | 100% |  |
| DUKHENGP2ADWELSM4990 |  | Audio Video Intercom System Drawings-Sub | 15d | 2013-03-27 A | 2013-04-13 A | DUKHENGP2ADWELSM4980 | 100% |  |
| DUKHENGP2ADWELSM5000 |  | Telephone & TV System Drawings-Sub | 15d | 2013-04-14 A | 2013-04-30 | DUKHENGP2ADWELSM4990 | 73% | 81d |
|  | G20 | **APPROVAL OF DRAWINGS** |  | 2013-03-02 | 2013-06-04 |  |  |  |
| DUKHENGP2ADWELAP4950 |  | Single Line Diagram-App | 30d | 2013-03-02 A | 2013-04-04 A | DUKHENGP2ADWELSM4950 | 100% |  |
| DUKHENGP2ADWELAP4960 |  | Lighting Layout Drawings-App | 30d | 2013-03-10 A | 2013-04-13 A | DUKHENGP2ADWELSM4960 | 100% |  |
| DUKHENGP2ADWELAP4970 |  | Power Layout Drawings-App | 30d | 2013-03-10 A | 2013-04-13 A | DUKHENGP2ADWELSM4970 | 100% |  |
| DUKHENGP2ADWELAP4980 |  | Central Alarm Monitoring System Drawings-App | 28d | 2013-03-30 A | 2013-04-30 | DUKHENGP2ADWELSM4980 | 86% | 105d |
| DUKHENGP2ADWELAP4990 |  | Audio Video Intercom System Drawings-App | 30d | 2013-04-14 A | 2013-05-18 | DUKHENGP2ADWELSM4990 | 37% | 96d |
| DUKHENGP2ADWELAP5000 |  | Telephone & TV System Drawings-App | 30d | 2013-05-01 | 2013-06-04 | DUKHENGP2ADWELSM5000 |  | 81d |
|  | H30 | **PLUMBING,DRAINAGE,FIREFIGHTING & AC DRAWINGS** |  | 2013-02-17 | 2013-05-09 |  |  |  |
|  | G10 | **SUBMISSION OF DRAWINGS** |  | 2013-02-17 | 2013-04-04 |  |  |  |
| DUKHENGP2ADWMESM5010 |  | Plumbing Layout & Details Drawings-Sub | 15d | 2013-02-17 A | 2013-03-01 A | DUKHPROGEN00PQAP2040, DUKHPROGEN00PQAP1040 | 100% |  |
| DUKHENGP2ADWMESM5020 |  | Drainage Layout & Details Drawings-Sub | 15d | 2013-02-17 A | 2013-03-01 A | DUKHPROGEN00PQAP2040, DUKHPROGEN00PQAP1040 | 100% |  |
| DUKHENGP2ADWMESM5030 |  | Fire Fighting Layout & Details Drawings-Sub | 15d | 2013-03-02 A | 2013-03-18 A | DUKHPROGEN00PQAP2040, DUKHENGP2ADWMESM5020, DUKHPROGEN00PQAP1040 | 100% |  |
| DUKHENGP2ADWMESM5040 |  | AC Layout & Details Drawings-Sub | 15d | 2013-03-19 A | 2013-04-04 A | DUKHPROGEN00PQAP1040, DUKHPROGEN00PQAP2040, DUKHENGP2ADWMESM5030 | 100% |  |
|  | G20 | **APPROVAL OF DRAWINGS** |  | 2013-03-02 | 2013-05-09 |  |  |  |
| DUKHENGP2ADWMEAP5010 |  | Plumbing Layout & Details Drawings-App | 30d | 2013-03-02 A | 2013-04-04 A | DUKHENGP2ADWMESM5010 | 100% |  |
| DUKHENGP2ADWMEAP5020 |  | Drainage Layout & Details Drawings-App | 30d | 2013-03-02 A | 2013-04-04 A | DUKHENGP2ADWMESM5010, DUKHENGP2ADWMESM5020 | 100% |  |
| DUKHENGP2ADWMEAP5030 |  | Fire Fighting Layout & Details Drawings-App | 30d | 2013-03-19 A | 2013-04-22 A | DUKHENGP2ADWMESM5030 | 100% |  |
| DUKHENGP2ADWMEAP5040 |  | AC Layout & Details Drawings-App | 30d | 2013-04-06 A | 2013-05-09 | DUKHENGP2ADWMESM5040 | 60% | 72d |
|  | H40 | **INFRA DRAWINGS** |  | 2013-04-06 | 2013-07-27 |  |  |  |
|  | G10 | **SUBMISSION OF DRAWINGS** |  | 2013-04-06 | 2013-06-22 |  |  |  |
| DUKHENGI2ADWDRSM5050 |  | Drainage Line Layout & Details-Sub | 15d | 2013-04-06 A | 2013-04-22 A | DUKHENGP2ADWMESM5040, DUKHPROGEN00PQAP1040, DUKHPROGEN00PQAP2040 | 100% |  |
| DUKHENGI2ADWFFSM5060 |  | Fire Fighting Line Layout & Details-Sub | 15d | 2013-04-06 A | 2013-04-22 A | DUKHENGI2ADWWSSM5070 SS | 100% |  |
| DUKHENGI2ADWWSSM5070 |  | Water Supply Line Layout & Details-Sub | 15d | 2013-04-06 A | 2013-04-22 A | DUKHENGI2ADWDRSM5050 SS | 100% |  |
| DUKHENGI2ADWELSM5080 |  | Electrical Line Layout & Details-Sub | 15d | 2013-04-23 A | 2013-05-09 | DUKHENGI2ADWFFSM5060, DUKHPROGEN00PQAP1040, DUKHPROGEN00PQAP2040 | 20% | 57d |
| DUKHENGI2ADWSTSM5090 |  | Street Lighting Layout & details -Sub | 15d | 2013-04-23 A | 2013-05-09 | DUKHENGI2ADWELSM5080 SS | 20% | 57d |
| DUKHENGI2ADWTCSM5100 |  | Telecommunication Line Layout & Details-Sub | 15d | 2013-04-23 A | 2013-05-09 | DUKHENGI2ADWSTSM5090 SS | 20% | 57d |
| DUKHENGI2ADWBWSM5130 |  | Boundary Wall Layout & Details-Sub | 15d | 2013-05-11 | 2013-05-27 | DUKHENGI2ADWSLSM5120 SS |  | 57d |
| DUKHENGI2ADWIRSM5110 |  | Irrigation Layout & Details-Sub | 15d | 2013-05-11 | 2013-05-27 | DUKHENGI2ADWTCSM5100, DUKHENGI2ADWWSSM5070 |  | 57d |
| DUKHENGI2ADWSLSM5120 |  | Soft & HardLandscaping Layout & Detail-Sub | 15d | 2013-05-11 | 2013-05-27 | DUKHENGI2ADWIRSM5110 SS |  | 57d |
| DUKHENGI2ADWIWSM5160 |  | Irrigation Water Tank & Pump Room Details- Sub | 15d | 2013-05-19 | 2013-06-04 | DUKHENGI2ADWRWSM5150 SS |  | 57d |
| DUKHENGI2ADWPSSM5140 |  | Parking Shed Layout & Details Drawings-Sub | 15d | 2013-05-19 | 2013-06-04 | DUKHENGI2ADWBWSM5130 SS+7d |  | 57d |
| DUKHENGI2ADWRWSM5150 |  | Road Layout & Details-Sub | 15d | 2013-05-19 | 2013-06-04 | DUKHENGI2ADWPSSM5140 SS |  | 57d |
| DUKHENGI2ADWGZSM5170 |  | Gazebo Plan & Details-Sub | 15d | 2013-06-05 | 2013-06-22 | DUKHENGI2ADWIWSM5160 |  | 98d |
|  | G20 | **APPROVAL OF DRAWINGS** |  | 2013-04-27 | 2013-07-27 |  |  |  |
| DUKHENGI2ADWDRAP5050 |  | Drainage Line Layout & Details-App | 27d | 2013-04-27 | 2013-05-27 | DUKHENGI2ADWDRSM5050 |  | 76d |
| DUKHENGI2ADWFFAP5060 |  | Fire Fighting Line Layout & Details-App | 27d | 2013-04-27 | 2013-05-27 | DUKHENGI2ADWFFSM5060 |  | 53d |

| ID | WBS | Task | Duration | Start | Finish | Predecessors | Complete | Total float |
| --- | --- | --- | --- | --- | --- | --- | --- | --- |
| DUKHENGI2ADWWSAP5070 |  | Water Supply Line Layout & Details-App | 27d | 2013-04-27 | 2013-05-27 | DUKHENGI2ADWWSSM5070 |  | 94d |
| DUKHENGI2ADWELAP5080 |  | Electrical Line Layout & Details-App | 30d | 2013-05-11 | 2013-06-13 | DUKHENGI2ADWELSM5080 |  | 128d |
| DUKHENGI2ADWSTAP5090 |  | Street Lighting Layout & details -App | 30d | 2013-05-11 | 2013-06-13 | DUKHENGI2ADWSTSM5090 |  | 128d |
| DUKHENGI2ADWTCAP5100 |  | Telecommunication Line Layout & Details-App | 30d | 2013-05-11 | 2013-06-13 | DUKHENGI2ADWTCSM5100 |  | 128d |
| DUKHENGI2ADWBWAP5130 |  | Boundary Wall Layout & Details-App | 30d | 2013-05-28 | 2013-07-01 | DUKHENGI2ADWBWSM5130 |  | 93d |
| DUKHENGI2ADWIRAP5110 |  | Irrigation Layout & Details-App | 30d | 2013-05-28 | 2013-07-01 | DUKHENGI2ADWIRSM5110 |  | 99d |
| DUKHENGI2ADWSLAP5120 |  | Soft & HardLandscaping Layout & Detail-App | 30d | 2013-05-28 | 2013-07-01 | DUKHENGI2ADWSLSM5120 |  | 75d |
| DUKHENGI2ADWIWAP5160 |  | Irrigation Water Tank & Pump Room Details-App | 30d | 2013-06-05 | 2013-07-09 | DUKHENGI2ADWIWSM5160 |  | 57d |
| DUKHENGI2ADWPSAP5140 |  | Parking Shed Layout & Details Drawings-App | 30d | 2013-06-05 | 2013-07-09 | DUKHENGI2ADWPSSM5140 |  | 158d |
| DUKHENGI2ADWRWAP5150 |  | Road Layout & Details-App | 30d | 2013-06-05 | 2013-07-09 | DUKHENGI2ADWRWSM5150 |  | 157d |
| DUKHENGI2ADWGZAP5170 |  | Gazebo Plan & Details-App | 30d | 2013-06-23 | 2013-07-27 | DUKHENGI2ADWGZSM5170 |  | 98d |
|  | L50 | **PACKAGE-2B** |  | 2012-11-26 | 2013-07-27 |  |  |  |
|  | E05 | **SHOP DRAWINGS SUBMISSION & APPROVAL** |  | 2012-11-26 | 2013-07-27 |  |  |  |
|  | H05 | **STRUCTURAL DRAWINGS** |  | 2012-11-26 | 2013-02-10 |  |  |  |
|  | G10 | **SUBMISSION OF DRAWINGS** |  | 2012-11-26 | 2013-01-06 |  |  |  |
| DUKHENGP2BDWSTSM5180 |  | Footing Drawings-Sub | 10d | 2012-11-26 A | 2012-12-05 A | DUKHMOBP020000004020 SS+5d | 100% |  |
| DUKHENGP2BDWSTSM5190 |  | Grade Beam & Slab Drawings-Sub | 15d | 2012-12-02 A | 2012-12-19 A | DUKHENGP2BDWSTSM5180 SS+5d | 100% |  |
| DUKHENGP2BDWSTSM5200 |  | Column Drawings-Sub | 15d | 2012-12-08 A | 2012-12-25 A | DUKHENGP2BDWSTSM5190 SS+5d | 100% |  |
| DUKHENGP2BDWSTSM5210 |  | GF Beams & Slabs Drawings-Sub | 15d | 2012-12-20 A | 2013-01-06 A | DUKHENGP2BDWSTSM5200 SS+10d | 100% |  |
|  | G20 | **APPROVAL OF DRAWINGS** |  | 2012-12-06 | 2013-02-10 |  |  |  |
| DUKHENGP2BDWSTAP5180 |  | Footing Drawings-App | 25d | 2012-12-06 A | 2012-12-31 A | DUKHENGP2BDWSTSM5180 | 100% |  |
| DUKHENGP2BDWSTAP5190 |  | Grade Beam & Slab Drawings-App | 30d | 2012-12-20 A | 2013-01-23 A | DUKHENGP2BDWSTSM5190 | 100% |  |
| DUKHENGP2BDWSTAP5200 |  | Column Drawings-App | 30d | 2012-12-26 A | 2013-01-29 A | DUKHENGP2BDWSTSM5200 | 100% |  |
| DUKHENGP2BDWSTAP5210 |  | GF Beams & Slabs Drawings-App | 30d | 2013-01-07 A | 2013-02-10 A | DUKHENGP2BDWSTSM5210 | 100% |  |
|  | H10 | **ARCHITECTURAL DRAWINGS** |  | 2013-01-07 | 2013-05-27 |  |  |  |
|  | G10 | **SUBMISSION OF DRAWINGS** |  | 2013-01-07 | 2013-04-22 |  |  |  |
| DUKHENGP2BDWARSM5230 |  | Ground Floor Plan-Sub | 15d | 2013-01-07 A | 2013-01-23 A | DUKHENGP2BDWSTSM5210 | 100% |  |
| DUKHENGP2BDWARSM5250 |  | Roof Floor Plan-Sub | 8d | 2013-02-02 A | 2013-02-10 A | DUKHENGP2BDWARSM5230 | 100% |  |
| DUKHENGP2BDWARSM5260 |  | Ceramic Flooring & Wall Drawings-Sub | 8d | 2013-02-05 A | 2013-02-14 A | DUKHENGP2BDWARSM5250 SS+3d, DUKHENGP2BDWARSM5230 | 100% |  |
| DUKHENGP2BDWARSM5270 |  | Porcelain Floor Drawings-Sub | 8d | 2013-02-05 A | 2013-02-14 A | DUKHENGP2BDWARSM5260 SS | 100% |  |
| DUKHENGP2BDWARSM5280 |  | Cobble & Slate Flooring Drawings-Sub | 8d | 2013-02-05 A | 2013-02-14 A | DUKHENGP2BDWARSM5270 SS | 100% |  |
| DUKHENGP2BDWARSM5290 |  | Gypsum False Ceiling Drawings-Sub | 15d | 2013-03-10 A | 2013-03-26 A | DUKHPROGEN00PQAP2050, DUKHPROGEN00PQAP1050 | 100% |  |
| DUKHENGP2BDWARSM5310 |  | Doors & window Drawings-Sub | 15d | 2013-03-20 A | 2013-04-06 A | DUKHPROGEN00PQAP1080, DUKHENGP2BDWARSM5230, DUKHPROGEN00PQAP2080 | 100% |  |
| DUKHENGP2BDWARSM5320 |  | Carpentry & Joinery Drawings-Sub | 15d | 2013-04-06 A | 2013-04-22 A | DUKHENGP2BDWARSM5230, DUKHPROGEN00PQAP2150, DUKHPROGEN00PQAP1150 | 100% |  |
|  | G20 | **APPROVAL OF DRAWINGS** |  | 2013-01-24 | 2013-05-27 |  |  |  |
| DUKHENGP2BDWARAP5230 |  | Ground Floor Plan-App | 30d | 2013-01-24 A | 2013-02-28 A | DUKHENGP2BDWARSM5230 | 100% |  |
| DUKHENGP2BDWARAP5250 |  | Roof Floor Plan-App | 30d | 2013-02-11 A | 2013-03-18 A | DUKHENGP2BDWARSM5250 | 100% |  |
| DUKHENGP2BDWARAP5260 |  | Ceramic Flooring & Wall Drawings-App | 30d | 2013-02-16 A | 2013-03-21 A | DUKHENGP2BDWARSM5260 | 100% |  |
| DUKHENGP2BDWARAP5270 |  | Porcelain Floor Drawings-App | 30d | 2013-02-16 A | 2013-03-21 A | DUKHENGP2BDWARSM5270 | 100% |  |
| DUKHENGP2BDWARAP5280 |  | Cobble & Slate Flooring Drawings-App | 30d | 2013-02-16 A | 2013-03-21 A | DUKHENGP2BDWARSM5280 | 100% |  |
| DUKHENGP2BDWARAP5290 |  | Gypsum False Ceiling Drawings-App | 30d | 2013-03-27 A | 2013-04-30 | DUKHENGP2BDWARSM5290 | 87% | 71d |
| DUKHENGP2BDWARAP5310 |  | Doors & Window Drawings-App | 30d | 2013-04-07 A | 2013-05-11 | DUKHENGP2BDWARAP5250, DUKHENGP2BDWARSM5310 | 57% | 61d |
| DUKHENGP2BDWARAP5320 |  | Carpentry & Joinery Drawings-App | 30d | 2013-04-23 A | 2013-05-27 | DUKHENGP2BDWARSM5320 | 10% | 84d |
|  | H20 | **ELECTRICAL DRAWINGS** |  | 2013-02-17 | 2013-06-06 |  |  |  |
|  | G10 | **SUBMISSION OF DRAWINGS** |  | 2013-02-17 | 2013-05-02 |  |  |  |
| DUKHENGP2BDWELSM5330 |  | Single Line Diagram-Sub | 15d | 2013-02-17 A | 2013-03-01 A | DUKHPROGEN00PQAP1040, DUKHPROGEN00PQAP2040 | 100% |  |
| DUKHENGP2BDWELSM5340 |  | Lighting Layout Drawings-Sub | 15d | 2013-02-23 A | 2013-03-11 A | DUKHENGP2BDWELSM5330 SS+5d | 100% |  |
| DUKHENGP2BDWELSM5350 |  | Power Layout Drawings-Sub | 15d | 2013-02-23 A | 2013-03-11 A | DUKHENGP2BDWELSM5330 SS+5d, DUKHENGP2BDWELSM5340 SS | 100% |  |
| DUKHENGP2BDWELSM5360 |  | Central Alarm Monitoring System Drawings-Sub | 15d | 2013-03-12 A | 2013-03-28 A | DUKHENGP2BDWELSM5350 | 100% |  |
| DUKHENGP2BDWELSM5370 |  | Audio Video Intercom System Drawings-Sub | 15d | 2013-03-30 A | 2013-04-15 A | DUKHENGP2BDWELSM5360 | 100% |  |
| DUKHENGP2BDWELSM5380 |  | Telephone & TV System Drawings-Sub | 15d | 2013-04-16 A | 2013-05-02 | DUKHENGP2BDWELSM5370 | 60% | 79d |
|  | G20 | **APPROVAL OF DRAWINGS** |  | 2013-03-02 | 2013-06-06 |  |  |  |
| DUKHENGP2BDWELAP5330 |  | Single Line Diagram-App | 30d | 2013-03-02 A | 2013-04-04 A | DUKHENGP2BDWELSM5330 | 100% |  |
| DUKHENGP2BDWELAP5340 |  | Lighting Layout Drawings-App | 30d | 2013-03-12 A | 2013-04-15 A | DUKHENGP2BDWELSM5340 | 100% |  |
| DUKHENGP2BDWELAP5350 |  | Power Layout Drawings-App | 30d | 2013-03-12 A | 2013-04-15 A | DUKHENGP2BDWELSM5350 | 100% |  |
| DUKHENGP2BDWELAP5360 |  | Central Alarm Monitoring System Drawings-App | 30d | 2013-03-30 A | 2013-05-02 | DUKHENGP2BDWELSM5360 | 80% | 103d |
| DUKHENGP2BDWELAP5370 |  | Audio Video Intercom System Drawings-App | 30d | 2013-04-16 A | 2013-05-20 | DUKHENGP2BDWELSM5370 | 30% | 94d |
| DUKHENGP2BDWELAP5380 |  | Telephone & TV System Drawings-App | 30d | 2013-05-04 | 2013-06-06 | DUKHENGP2BDWELSM5380 |  | 79d |
|  | H30 | **PLUMBING,DRAINAGE,FIREFIGHTING & AC DRAWINGS** |  | 2013-02-17 | 2013-05-09 |  |  |  |
|  | G10 | **SUBMISSION OF DRAWINGS** |  | 2013-02-17 | 2013-04-04 |  |  |  |
| DUKHENGP2BDWMESM5390 |  | Plumbing Layout & Details Drawings-Sub | 15d | 2013-02-17 A | 2013-03-01 A | DUKHPROGEN00PQAP1040, DUKHPROGEN00PQAP2040 | 100% |  |
| DUKHENGP2BDWMESM5400 |  | Drainage Layout & Details Drawings-Sub | 15d | 2013-02-17 A | 2013-03-01 A | DUKHPROGEN00PQAP2040, DUKHPROGEN00PQAP1040 | 100% |  |
| DUKHENGP2BDWMESM5410 |  | Fire Fighting Layout & Details Drawings-Sub | 15d | 2013-03-02 A | 2013-03-18 A | DUKHPROGEN00PQAP1040, DUKHPROGEN00PQAP2040, DUKHENGP2BDWMESM5400 | 100% |  |
| DUKHENGP2BDWMESM5420 |  | AC Layout & Details Drawings-Sub | 15d | 2013-03-19 A | 2013-04-04 A | DUKHENGP2BDWMESM5410, DUKHPROGEN00PQAP1040, DUKHPROGEN00PQAP2040 | 100% |  |
|  | G20 | **APPROVAL OF DRAWINGS** |  | 2013-03-02 | 2013-05-09 |  |  |  |
| DUKHENGP2BDWMEAP5390 |  | Plumbing Layout & Details Drawings-App | 30d | 2013-03-02 A | 2013-04-04 A | DUKHENGP2BDWMESM5390 | 100% |  |
| DUKHENGP2BDWMEAP5400 |  | Drainage Layout & Details Drawings-App | 30d | 2013-03-02 A | 2013-04-04 A | DUKHENGP2BDWMESM5390, DUKHENGP2BDWMESM5400 | 100% |  |
| DUKHENGP2BDWMEAP5410 |  | Fire Fighting Layout & Details Drawings-App | 30d | 2013-03-19 A | 2013-04-22 A | DUKHENGP2BDWMESM5410 | 100% |  |
| DUKHENGP2BDWMEAP5420 |  | AC Layout & Details Drawings-App | 30d | 2013-04-06 A | 2013-05-09 | DUKHENGP2BDWMESM5420 | 60% | 72d |
|  | H40 | **INFRA DRAWINGS** |  | 2013-04-06 | 2013-07-27 |  |  |  |

| ID | WBS | Task | Duration | Start | Finish | Predecessors | Complete | Total float |
| --- | --- | --- | --- | --- | --- | --- | --- | --- |
|  | G10 | **SUBMISSION OF DRAWINGS** |  | 2013-04-06 | 2013-06-22 |  |  |  |
| DUKHENGI2BDWDRSM5430 |  | Drainage Line Layout & Details-Sub | 15d | 2013-04-06 A | 2013-04-22 A | DUKHENGP2BDWMESM5420, DUKHPROGEN00PQAP2040, DUKHPROGEN00PQAP1040 | 100% |  |
| DUKHENGI2BDWFFSM5440 |  | Fire Fighting Line Layout & Details-Sub | 15d | 2013-04-06 A | 2013-04-22 A | DUKHENGI2BDWWSSM5450 SS | 100% |  |
| DUKHENGI2BDWWSSM5450 |  | Water Supply Line Layout & Details-Sub | 15d | 2013-04-06 A | 2013-04-22 A | DUKHENGI2BDWDRSM5430 SS | 100% |  |
| DUKHENGI2BDWELSM5460 |  | Electrical Line Layout & Details-Sub | 15d | 2013-04-23 A | 2013-05-09 | DUKHENGI2BDWFFSM5440, DUKHPROGEN00PQAP2040, DUKHPROGEN00PQAP1040 | 20% | 57d |
| DUKHENGI2BDWSTSM5470 |  | Street Lighting Layout & details -Sub | 15d | 2013-04-23 A | 2013-05-09 | DUKHENGI2BDWELSM5460 SS | 20% | 57d |
| DUKHENGI2BDWTCSM5480 |  | Telecommunication Line Layout & Details-Sub | 15d | 2013-04-23 A | 2013-05-09 | DUKHENGI2BDWSTSM5470 SS | 20% | 57d |
| DUKHENGI2BDWBWSM5510 |  | Boundary Wall Layout & Details-Sub | 15d | 2013-05-11 | 2013-05-27 | DUKHENGI2BDWSLSM5500 SS |  | 57d |
| DUKHENGI2BDWIRSM5490 |  | Irrigation Layout & Details-Sub | 15d | 2013-05-11 | 2013-05-27 | DUKHENGI2BDWTCSM5480, DUKHENGI2BDWWSSM5450 |  | 57d |
| DUKHENGI2BDWSLSM5500 |  | Soft & HardLandscaping Layout & Detail-Sub | 15d | 2013-05-11 | 2013-05-27 | DUKHENGI2BDWIRSM5490 SS |  | 57d |
| DUKHENGI2BDWIWSM5540 |  | Irrigation Water Tank & Pump Room Details- Sub | 15d | 2013-05-19 | 2013-06-04 | DUKHENGI2BDWRWSM5530 SS |  | 57d |
| DUKHENGI2BDWPSSM5520 |  | Parking Shed Layout & Details Drawings-Sub | 15d | 2013-05-19 | 2013-06-04 | DUKHENGI2BDWBWSM5510 SS+7d |  | 57d |
| DUKHENGI2BDWRWSM5530 |  | Road Layout & Details-Sub | 15d | 2013-05-19 | 2013-06-04 | DUKHENGI2BDWPSSM5520 SS |  | 57d |
| DUKHENGI2BDWGZSM5550 |  | Gazebo Plan & Details-Sub | 15d | 2013-06-05 | 2013-06-22 | DUKHENGI2BDWIWSM5540 |  | 98d |
|  | G20 | **APPROVAL OF DRAWINGS** |  | 2013-04-27 | 2013-07-27 |  |  |  |
| DUKHENGI2BDWDRAP5430 |  | Drainage Line Layout & Details-App | 27d | 2013-04-27 | 2013-05-27 | DUKHENGI2BDWDRSM5430 |  | 72d |
| DUKHENGI2BDWFFAP5440 |  | Fire Fighting Line Layout & Details-App | 27d | 2013-04-27 | 2013-05-27 | DUKHENGI2BDWFFSM5440 |  | 53d |
| DUKHENGI2BDWWSAP5450 |  | Water Supply Line Layout & Details-App | 27d | 2013-04-27 | 2013-05-27 | DUKHENGI2BDWWSSM5450 |  | 94d |
| DUKHENGI2BDWELAP5460 |  | Electrical Line Layout & Details-App | 30d | 2013-05-11 | 2013-06-13 | DUKHENGI2BDWELSM5460 |  | 128d |
| DUKHENGI2BDWSTAP5470 |  | Street Lighting Layout & details -App | 30d | 2013-05-11 | 2013-06-13 | DUKHENGI2BDWSTSM5470 |  | 128d |
| DUKHENGI2BDWTCAP5480 |  | Telecommunication Line Layout & Details-App | 30d | 2013-05-11 | 2013-06-13 | DUKHENGI2BDWTCSM5480 |  | 128d |
| DUKHENGI2BDWBWAP5510 |  | Boundary Wall Layout & Details-App | 30d | 2013-05-28 | 2013-07-01 | DUKHENGI2BDWBWSM5510 |  | 93d |
| DUKHENGI2BDWIRAP5490 |  | Irrigation Layout & Details-App | 30d | 2013-05-28 | 2013-07-01 | DUKHENGI2BDWIRSM5490 |  | 99d |
| DUKHENGI2BDWSLAP5500 |  | Soft & HardLandscaping Layout & Detail-App | 30d | 2013-05-28 | 2013-07-01 | DUKHENGI2BDWSLSM5500 |  | 75d |
| DUKHENGI2BDWIWAP5540 |  | Irrigation Water Tank & Pump Room Details-App | 30d | 2013-06-05 | 2013-07-09 | DUKHENGI2BDWIWSM5540 |  | 57d |
| DUKHENGI2BDWPSAP5520 |  | Parking Shed Layout & Details Drawings-App | 30d | 2013-06-05 | 2013-07-09 | DUKHENGI2BDWPSSM5520 |  | 158d |
| DUKHENGI2BDWRWAP5530 |  | Road Layout & Details-App | 30d | 2013-06-05 | 2013-07-09 | DUKHENGI2BDWRWSM5530 |  | 157d |
| DUKHENGI2BDWGZAP5550 |  | Gazebo Plan & Details-App | 30d | 2013-06-23 | 2013-07-27 | DUKHENGI2BDWGZSM5550 |  | 98d |
|  | L60 | **PACKAGE-3** |  | 2012-12-01 | 2013-09-07 |  |  |  |
|  | E05 | **SHOP DRAWINGS SUBMISSION & APPROVAL** |  | 2012-12-01 | 2013-09-07 |  |  |  |
|  | H05 | **STRUCTURAL DRAWINGS** |  | 2012-12-01 | 2013-03-07 |  |  |  |
|  | G10 | **SUBMISSION OF DRAWINGS** |  | 2012-12-01 | 2013-02-02 |  |  |  |
| DUKHENGP03DWSTSM5560 |  | Footing Drawings-Sub | 10d | 2012-12-01 A | 2012-12-11 A | DUKHMOBP030000004000 | 100% |  |
| DUKHENGP03DWSTSM5570 |  | Grade Beam & Slab Drawings-Sub | 15d | 2012-12-08 A | 2012-12-25 A | DUKHENGP03DWSTSM5560 SS+6d | 100% |  |
| DUKHENGP03DWSTSM5580 |  | Column Drawings-Sub | 15d | 2012-12-15 A | 2012-12-31 A | DUKHENGP03DWSTSM5570 SS+6d | 100% |  |
| DUKHENGP03DWSTSM5590 |  | GF Beams & Slabs Drawings-Sub | 15d | 2012-12-27 A | 2013-02-02 A | DUKHENGP03DWSTSM5580 SS+10d | 100% |  |
| DUKHENGP03DWSTSM5600 |  | FF Beams & Slabs Drawings-Sub | 15d | 2013-01-14 A | 2013-01-30 A | DUKHENGP03DWSTSM5590 | 100% |  |
|  | G20 | **APPROVAL OF DRAWINGS** |  | 2012-12-12 | 2013-03-07 |  |  |  |
| DUKHENGP03DWSTAP5560 |  | Footing Drawings-App | 25d | 2012-12-12 A | 2012-12-29 A | DUKHENGP03DWSTSM5560 | 100% |  |
| DUKHENGP03DWSTAP5570 |  | Grade Beam & Slab Drawings-App | 30d | 2012-12-26 A | 2013-01-29 A | DUKHENGP03DWSTSM5570 | 100% |  |
| DUKHENGP03DWSTAP5580 |  | Column Drawings-App | 30d | 2012-12-29 A | 2013-01-31 A | DUKHENGP03DWSTSM5580 | 100% |  |
| DUKHENGP03DWSTAP5590 |  | GF Beams & Slabs Drawings-App | 30d | 2013-01-14 A | 2013-02-18 A | DUKHENGP03DWSTSM5590 | 100% |  |
| DUKHENGP03DWSTAP5600 |  | FF Beams & Slabs Drawings-App | 29d | 2013-02-02 A | 2013-03-07 A | DUKHENGP03DWSTSM5600 | 100% |  |
|  | H10 | **ARCHITECTURAL DRAWINGS** |  | 2013-02-02 | 2013-05-27 |  |  |  |
|  | G10 | **SUBMISSION OF DRAWINGS** |  | 2013-02-02 | 2013-04-22 |  |  |  |
| DUKHENGP03DWARSM5610 |  | Ground Floor Plan-Sub | 14d | 2013-02-02 A | 2013-02-18 A | DUKHENGP03DWSTSM5600 | 100% |  |
| DUKHENGP03DWARSM5620 |  | First Floor Plan-Sub | 15d | 2013-02-13 A | 2013-03-01 A | DUKHENGP03DWARSM5610 SS+9d | 100% |  |
| DUKHENGP03DWARSM5630 |  | Roof Floor Plan-Sub | 15d | 2013-02-21 A | 2013-03-10 A | DUKHENGP03DWARSM5620 SS+7d | 100% |  |
| DUKHENGP03DWARSM5640 |  | Ceramic Flooring & Wall Drawings-Sub | 15d | 2013-03-02 A | 2013-03-18 A | DUKHENGP03DWARSM5630 SS+3d, DUKHENGP03DWARSM5620, DUKHENGP03DWARSM5610 | 100% |  |
| DUKHENGP03DWARSM5650 |  | Porcelain Floor Drawings-Sub | 15d | 2013-03-02 A | 2013-03-18 A | DUKHENGP03DWARSM5640 SS | 100% |  |
| DUKHENGP03DWARSM5660 |  | Cobble & Slate Flooring Drawings-Sub | 15d | 2013-03-02 A | 2013-03-18 A | DUKHENGP03DWARSM5650 SS | 100% |  |
| DUKHENGP03DWARSM5670 |  | Gypsum False Ceiling Drawings-Sub | 15d | 2013-03-10 A | 2013-03-26 A | DUKHPROGEN00PQAP2050, DUKHPROGEN00PQAP1050 | 100% |  |
| DUKHENGP03DWARSM5680 |  | Aluminum False Ceiling Drawings-Sub | 15d | 2013-03-10 A | 2013-03-26 A | DUKHPROGEN00PQAP1050, DUKHPROGEN00PQAP2050 | 100% |  |
| DUKHENGP03DWARSM5690 |  | Doors & window Drawings-Sub | 15d | 2013-03-20 A | 2013-04-06 A | DUKHENGP03DWARSM5610, DUKHPROGEN00PQAP2080, DUKHPROGEN00PQAP1080 | 100% |  |
| DUKHENGP03DWARSM5700 |  | Carpentry & Joinery Drawings-Sub | 15d | 2013-04-06 A | 2013-04-22 A | DUKHENGP03DWARSM5610, DUKHPROGEN00PQAP1150, DUKHPROGEN00PQAP2150 | 100% |  |
|  | G20 | **APPROVAL OF DRAWINGS** |  | 2013-02-19 | 2013-05-27 |  |  |  |
| DUKHENGP03DWARAP5610 |  | Ground Floor Plan-App | 30d | 2013-02-19 A | 2013-03-25 A | DUKHENGP03DWARSM5610 | 100% |  |
| DUKHENGP03DWARAP5620 |  | First Floor Plan-App | 30d | 2013-03-02 A | 2013-04-04 A | DUKHENGP03DWARSM5620 | 100% |  |
| DUKHENGP03DWARAP5630 |  | Roof Floor Plan-App | 30d | 2013-03-11 A | 2013-04-14 A | DUKHENGP03DWARSM5630 | 100% |  |
| DUKHENGP03DWARAP5640 |  | Ceramic Flooring & Wall Drawings-App | 30d | 2013-03-19 A | 2013-04-22 A | DUKHENGP03DWARSM5640 | 100% |  |
| DUKHENGP03DWARAP5650 |  | Porcelain Floor Drawings-App | 30d | 2013-03-19 A | 2013-04-22 A | DUKHENGP03DWARSM5650 | 100% |  |
| DUKHENGP03DWARAP5660 |  | Cobble & Slate Flooring Drawings-App | 30d | 2013-03-19 A | 2013-04-22 A | DUKHENGP03DWARSM5660 | 100% |  |
| DUKHENGP03DWARAP5670 |  | Gypsum False Ceiling Drawings-App | 30d | 2013-03-27 A | 2013-04-30 | DUKHENGP03DWARSM5670 | 87% | 71d |
| DUKHENGP03DWARAP5680 |  | Aluminum False Ceiling Drawings-App | 30d | 2013-03-27 A | 2013-04-30 | DUKHENGP03DWARSM5680 | 87% | 86d |
| DUKHENGP03DWARAP5690 |  | Doors & Window Drawings-App | 30d | 2013-04-15 A | 2013-05-19 | DUKHENGP03DWARSM5690, DUKHENGP03DWARAP5630, DUKHENGP03DWARAP5620 | 33% | 54d |
| DUKHENGP03DWARAP5700 |  | Carpentry & Joinery Drawings-App | 30d | 2013-04-23 A | 2013-05-27 | DUKHENGP03DWARSM5700 | 10% | 84d |
|  | H20 | **ELECTRICAL DRAWINGS** |  | 2013-02-17 | 2013-05-30 |  |  |  |
|  | G10 | **SUBMISSION OF DRAWINGS** |  | 2013-02-17 | 2013-04-26 |  |  |  |
| DUKHENGP03DWELSM5710 |  | Single Line Diagram-Sub | 15d | 2013-02-17 A | 2013-03-05 A | DUKHPROGEN00PQAP2040, DUKHPROGEN00PQAP1040 | 100% |  |
| DUKHENGP03DWELSM5720 |  | Lighting Layout Drawings-Sub | 15d | 2013-02-23 A | 2013-03-11 A | DUKHENGP03DWELSM5710 SS+5d | 100% |  |

| ID | WBS | Task | Duration | Start | Finish | Predecessors | Complete | Total float |
| --- | --- | --- | --- | --- | --- | --- | --- | --- |
| DUKHENGP03DWELSM5730 |  | Power Layout Drawings-Sub | 15d | 2013-02-23 A | 2013-03-11 A | DUKHENGP03DWELSM5710 SS+5d, DUKHENGP03DWELSM5720 SS | 100% |  |
| DUKHENGP03DWELSM5740 |  | Central Alarm Monitoring System Drawings-Sub | 15d | 2013-03-12 A | 2013-03-28 A | DUKHENGP03DWELSM5730 | 100% |  |
| DUKHENGP03DWELSM5750 |  | Audio Video Intercom System Drawings-Sub | 15d | 2013-03-30 A | 2013-04-15 A | DUKHENGP03DWELSM5740 | 100% |  |
| DUKHENGP03DWELSM5760 |  | Telephone & TV System Drawings-Sub | 15d | 2013-04-16 A | 2013-04-26 A | DUKHENGP03DWELSM5750 | 100% |  |
|  | G20 | **APPROVAL OF DRAWINGS** |  | 2013-03-06 | 2013-05-30 |  |  |  |
| DUKHENGP03DWELAP5710 |  | Single Line Diagram-App | 30d | 2013-03-06 A | 2013-04-09 A | DUKHENGP03DWELSM5710 | 100% |  |
| DUKHENGP03DWELAP5720 |  | Lighting Layout Drawings-App | 30d | 2013-03-12 A | 2013-04-30 | DUKHENGP03DWELSM5720 | 87% | 50d |
| DUKHENGP03DWELAP5730 |  | Power Layout Drawings-App | 30d | 2013-03-12 A | 2013-04-30 | DUKHENGP03DWELSM5730 | 87% | 101d |
| DUKHENGP03DWELAP5740 |  | Central Alarm Monitoring System Drawings-App | 30d | 2013-03-30 A | 2013-05-02 | DUKHENGP03DWELSM5740 | 80% | 103d |
| DUKHENGP03DWELAP5750 |  | Audio Video Intercom System Drawings-App | 30d | 2013-04-16 A | 2013-05-20 | DUKHENGP03DWELSM5750 | 30% | 94d |
| DUKHENGP03DWELAP5760 |  | Telephone & TV System Drawings-App | 30d | 2013-04-27 | 2013-05-30 | DUKHENGP03DWELSM5760 |  | 85d |
|  | H30 | **PLUMBING,DRAINAGE,FIREFIGHTING & AC DRAWINGS** |  | 2013-02-17 | 2013-05-14 |  |  |  |
|  | G10 | **SUBMISSION OF DRAWINGS** |  | 2013-02-17 | 2013-04-09 |  |  |  |
| DUKHENGP03DWMESM5770 |  | Plumbing Layout & Details Drawings-Sub | 15d | 2013-02-17 A | 2013-03-05 A | DUKHPROGEN00PQAP1040, DUKHPROGEN00PQAP2040 | 100% |  |
| DUKHENGP03DWMESM5780 |  | Drainage Layout & Details Drawings-Sub | 15d | 2013-02-17 A | 2013-03-05 A | DUKHPROGEN00PQAP1040, DUKHPROGEN00PQAP2040 | 100% |  |
| DUKHENGP03DWMESM5790 |  | Fire Fighting Layout & Details Drawings-Sub | 15d | 2013-03-06 A | 2013-03-23 A | DUKHPROGEN00PQAP2040, DUKHPROGEN00PQAP1040, DUKHENGP03DWMESM5780 | 100% |  |
| DUKHENGP03DWMESM5800 |  | AC Layout & Details Drawings-Sub | 15d | 2013-03-24 A | 2013-04-09 A | DUKHENGP03DWMESM5790, DUKHPROGEN00PQAP1040, DUKHPROGEN00PQAP2040 | 100% |  |
|  | G20 | **APPROVAL OF DRAWINGS** |  | 2013-03-06 | 2013-05-14 |  |  |  |
| DUKHENGP03DWMEAP5780 |  | Drainage Layout & Details Drawings-App | 30d | 2013-03-06 A | 2013-04-09 A | DUKHENGP03DWMESM5770, DUKHENGP03DWMESM5780 | 100% |  |
| DUKHENGP03DWMEAP5770 |  | Plumbing Layout & Details Drawings-App | 10d | 2013-03-30 A | 2013-04-09 A | DUKHENGP03DWMESM5770 | 100% |  |
| DUKHENGP03DWMEAP5790 |  | Fire Fighting Layout & Details Drawings-App | 25d | 2013-03-30 A | 2013-04-27 A | DUKHENGP03DWMESM5790 | 100% |  |
| DUKHENGP03DWMEAP5800 |  | AC Layout & Details Drawings-App | 30d | 2013-04-10 A | 2013-05-14 | DUKHENGP03DWMESM5800 | 47% | 68d |
|  | H40 | **INFRA DRAWINGS** |  | 2013-04-10 | 2013-09-07 |  |  |  |
|  | G10 | **SUBMISSION OF DRAWINGS** |  | 2013-04-10 | 2013-07-13 |  |  |  |
| DUKHENGI03DWDRSM5810 |  | Drainage Line Layout & Details-Sub | 15d | 2013-04-10 A | 2013-04-28 A | DUKHPROGEN00PQAP1040, DUKHENGP03DWMESM5800, DUKHPROGEN00PQAP2040 | 100% |  |
| DUKHENGI03DWFFSM5820 |  | Fire Fighting Line Layout & Details-Sub | 15d | 2013-04-10 A | 2013-04-27 A | DUKHENGI03DWWSSM5830 SS | 100% |  |
| DUKHENGI03DWWSSM5830 |  | Water Supply Line Layout & Details-Sub | 15d | 2013-04-10 A | 2013-04-27 A | DUKHENGI03DWDRSM5810 SS | 100% |  |
| DUKHENGI03DWELSM5840 |  | Electrical Line Layout & Details-Sub | 15d | 2013-04-27 | 2013-05-13 | DUKHPROGEN00PQAP1040, DUKHENGI03DWFFSM5820, DUKHPROGEN00PQAP2040 |  | 54d |
| DUKHENGI03DWSTSM5850 |  | Street Lighting Layout & details -Sub | 15d | 2013-04-27 | 2013-05-13 | DUKHENGI03DWELSM5840 SS |  | 54d |
| DUKHENGI03DWTCSM5860 |  | Telecommunication Line Layout & Details-Sub | 15d | 2013-04-27 | 2013-05-13 | DUKHENGI03DWSTSM5850 SS |  | 54d |
| DUKHENGI03DWBWSM5890 |  | Boundary Wall Layout & Details-Sub | 15d | 2013-05-14 | 2013-05-30 | DUKHENGI03DWSLSM5880 SS |  | 54d |
| DUKHENGI03DWIRSM5870 |  | Irrigation Layout & Details-Sub | 15d | 2013-05-14 | 2013-05-30 | DUKHENGI03DWWSSM5830, DUKHENGI03DWTCSM5860 |  | 54d |
| DUKHENGI03DWSLSM5880 |  | Soft & HardLandscaping Layout & Detail-Sub | 15d | 2013-05-14 | 2013-05-30 | DUKHENGI03DWIRSM5870 SS |  | 54d |
| DUKHENGI03DWIWSM5920 |  | Irrigation Water Tank & Pump Room Details- Sub | 15d | 2013-05-22 | 2013-06-08 | DUKHENGI03DWRWSM5910 SS |  | 54d |
| DUKHENGI03DWPSSM5900 |  | Parking Shed Layout & Details Drawings-Sub | 15d | 2013-05-22 | 2013-06-08 | DUKHENGI03DWBWSM5890 SS+7d |  | 54d |
| DUKHENGI03DWRWSM5910 |  | Road Layout & Details-Sub | 15d | 2013-05-22 | 2013-06-08 | DUKHENGI03DWPSSM5900 SS |  | 54d |
| DUKHENGI03DWTRSM5930 |  | Telephone Room Details-Sub | 15d | 2013-06-09 | 2013-06-25 | DUKHENGI03DWIWSM5920 |  | 65d |
| DUKHENGI03DWGHSM5950 |  | Guard House Plan & Details-Sub | 15d | 2013-06-26 | 2013-07-13 | DUKHENGI03DWTRSM5930 |  | 190d |
| DUKHENGI03DWGZSM5940 |  | Gazebo Plan & Details-Sub | 15d | 2013-06-26 | 2013-07-13 | DUKHENGI03DWTRSM5930 |  | 80d |
|  | G20 | **APPROVAL OF DRAWINGS** |  | 2013-04-27 | 2013-09-07 |  |  |  |
| DUKHENGI03DWDRAP5810 |  | Drainage Line Layout & Details-App | 30d | 2013-04-27 | 2013-05-30 | DUKHENGI03DWDRSM5810 |  | 68d |
| DUKHENGI03DWFFAP5820 |  | Fire Fighting Line Layout & Details-App | 30d | 2013-04-27 | 2013-05-30 | DUKHENGI03DWFFSM5820 |  | 50d |
| DUKHENGI03DWWSAP5830 |  | Water Supply Line Layout & Details-App | 30d | 2013-04-27 | 2013-05-30 | DUKHENGI03DWWSSM5830 |  | 91d |
| DUKHENGI03DWELAP5840 |  | Electrical Line Layout & Details-App | 30d | 2013-05-14 | 2013-06-17 | DUKHENGI03DWELSM5840 |  | 65d |
| DUKHENGI03DWBWAP5890 |  | Boundary Wall Layout & Details-App | 30d | 2013-06-01 | 2013-07-04 | DUKHENGI03DWBWSM5890 |  | 90d |
| DUKHENGI03DWIRAP5870 |  | Irrigation Layout & Details-App | 30d | 2013-06-01 | 2013-07-04 | DUKHENGI03DWIRSM5870 |  | 96d |
| DUKHENGI03DWSLAP5880 |  | Soft & HardLandscaping Layout & Detail-App | 30d | 2013-06-01 | 2013-07-04 | DUKHENGI03DWSLSM5880 |  | 72d |
| DUKHENGI03DWIWAP5920 |  | Irrigation Water Tank & Pump Room Details-App | 30d | 2013-06-09 | 2013-07-13 | DUKHENGI03DWIWSM5920 |  | 54d |
| DUKHENGI03DWPSAP5900 |  | Parking Shed Layout & Details Drawings-App | 30d | 2013-06-09 | 2013-07-13 | DUKHENGI03DWPSSM5900 |  | 155d |
| DUKHENGI03DWRWAP5910 |  | Road Layout & Details-App | 30d | 2013-06-09 | 2013-07-13 | DUKHENGI03DWRWSM5910 |  | 154d |
| DUKHENGI03DWSTAP5850 |  | Street Lighting Layout & details -App | 30d | 2013-06-18 | 2013-07-22 | DUKHENGI03DWSTSM5850, DUKHENGI03DWELAP5840 |  | 65d |
| DUKHENGI03DWTRAP5930 |  | Telephone Room Details-App | 30d | 2013-06-26 | 2013-07-30 | DUKHENGI03DWTRSM5930 |  | 65d |
| DUKHENGI03DWTCAP5860 |  | Telecommunication Line Layout & Details-App | 30d | 2013-07-23 | 2013-08-29 | DUKHENGI03DWSTAP5850, DUKHENGI03DWTCSM5860 |  | 65d |
| DUKHENGI03DWGHAP5950 |  | Guard House Plan & Details-App | 30d | 2013-07-31 | 2013-09-07 | DUKHENGI03DWTRAP5930, DUKHENGI03DWGHSM5950 |  | 175d |
| DUKHENGI03DWGZAP5940 |  | Gazebo Plan & Details-App | 30d | 2013-07-31 | 2013-09-07 | DUKHENGI03DWGZSM5940, DUKHENGI03DWTRAP5930 |  | 65d |
|  | K25 | **PROCUREMENT** |  | 2012-11-01 | 2014-02-14 |  |  |  |
|  | L15 | **PREQUALIFICATION, SUBMITTAL AND APPROVAL** |  | 2012-11-01 | 2013-05-02 |  |  |  |
|  | 10 | **1ST SUBMISSION OF PREQUALIFICATION** |  | 2012-11-01 | 2013-02-14 |  |  |  |
| DUKHPROGEN00PQSM1000 |  | Anti Termite Treatment_Prequa. 1st Sub. | 7d | 2012-11-01 A | 2012-11-08 A | DUKHKYDGEN0000001000 | 100% |  |
| DUKHPROGEN00PQSM1010 |  | Concrete_Prequa. 1st Sub. | 8d | 2012-11-01 A | 2012-11-10 A | DUKHPROGEN00PQSM1000 SS | 100% |  |
| DUKHPROGEN00PQSM1020 |  | Waterproofing -Wet Area _Prequa. 1st Sub. | 14d | 2012-11-11 A | 2012-12-10 A | DUKHPROGEN00PQSM1010 | 100% |  |
| DUKHPROGEN00PQSM1030 |  | Waterproofing -Roof_Prequa. 1st Sub. | 14d | 2012-11-11 A | 2012-11-26 A | DUKHPROGEN00PQSM1020 SS | 100% |  |
| DUKHPROGEN00PQSM1040 |  | MEPD_Prequa. 1st Sub. | 14d | 2012-11-11 A | 2012-11-26 A | DUKHPROGEN00PQSM1010 | 100% |  |
| DUKHPROGEN00PQSM1050 |  | Ceiling Works_Prequa. 1st Sub. | 16d | 2012-11-27 A | 2012-12-13 A | DUKHPROGEN00PQSM1030 SS+14d | 100% |  |
| DUKHPROGEN00PQSM1060 |  | GRC Panels_Prequa. 1st Sub. | 15d | 2012-11-27 A | 2012-12-12 A | DUKHPROGEN00PQSM1040 | 100% |  |
| DUKHPROGEN00PQSM1100 |  | Roller Shutter_Prequa. 1st Sub. | 15d | 2012-12-05 A | 2012-12-23 A | DUKHPROGEN00PQSM1060 SS+7d | 100% |  |
| DUKHPROGEN00PQSM1070 |  | Wooden Doors_Prequa. 1st Sub. | 15d | 2012-12-09 A | 2012-12-26 A | DUKHPROGEN00PQSM1080 SS | 100% |  |
| DUKHPROGEN00PQSM1080 |  | Aluminum Doors & Windows_Prequa. 1st Sub. | 15d | 2012-12-09 A | 2012-12-26 A | DUKHPROGEN00PQSM1050 SS+10d | 100% |  |
| DUKHPROGEN00PQSM1090 |  | Granite_Prequa. 1st Sub. | 15d | 2012-12-09 A | 2012-12-26 A | DUKHPROGEN00PQSM1080 SS | 100% |  |
| DUKHPROGEN00PQSM1110 |  | Structural Steel works_Prequa. 1st Sub. | 11d | 2012-12-29 A | 2013-01-09 A | DUKHPROGEN00PQSM1100 | 100% |  |

| ID | WBS | Task | Duration | Start | Finish | Predecessors | Complete | Total float |
| --- | --- | --- | --- | --- | --- | --- | --- | --- |
| DUKHPROGEN00PQSM1120 |  | Car Parking Shed_Prequa. 1st Sub. | 11d | 2012-12-29 A | 2013-01-09 A | DUKHPROGEN00PQSM1110 SS | 100% |  |
| DUKHPROGEN00PQSM1130 |  | Steel Door_Prequa. 1st Sub. | 11d | 2012-12-29 A | 2013-01-09 A | DUKHPROGEN00PQSM1110 SS, DUKHPROGEN00PQSM1100 SS | 100% |  |
| DUKHPROGEN00PQSM1140 |  | PVC Tent_Prequa. 1st Sub. | 11d | 2012-12-29 A | 2013-01-09 A | DUKHPROGEN00PQSM1110 SS | 100% |  |
| DUKHPROGEN00PQSM1150 |  | Carpentry & Joinery Works_Prequa. 1st Sub. | 14d | 2012-12-29 A | 2013-01-13 A | DUKHPROGEN00PQSM1080 | 100% |  |
| DUKHPROGEN00PQSM1160 |  | Soft landscaping /Irrigation _Prequa. 1st Sub. | 15d | 2013-01-10 A | 2013-01-27 A | DUKHPROGEN00PQSM1120 | 100% |  |
| DUKHPROGEN00PQSM1170 |  | Pre-cast Boundary Wall _Prequa. 1st Sub. | 15d | 2013-01-10 A | 2013-01-27 A | DUKHPROGEN00PQSM1160 SS | 100% |  |
| DUKHPROGEN00PQSM1180 |  | Road Works _Prequa. 1st Sub. | 11d | 2013-02-02 A | 2013-02-14 A | DUKHPROGEN00PQSM1160 | 100% |  |
|  | 15 | **1ST APPROVAL OF PREQUALIFICATION** |  | 2012-11-10 | 2013-03-21 |  |  |  |
| DUKHPROGEN00PQAP1000 |  | Anti Termite Treatment_Prequa. 1st App. | 15d | 2012-11-10 A | 2012-11-26 A | DUKHPROGEN00PQSM1000 | 100% |  |
| DUKHPROGEN00PQAP1010 |  | Concrete_Prequa. 1st App. | 15d | 2012-11-11 A | 2012-11-27 A | DUKHPROGEN00PQSM1010 | 100% |  |
| DUKHPROGEN00PQAP1030 |  | Waterproofing -Roof_Prequa. 1st App. | 15d | 2012-11-27 A | 2012-12-12 A | DUKHPROGEN00PQSM1030 | 100% |  |
| DUKHPROGEN00PQAP1040 |  | MEPD_Prequa. 1st App. | 30d | 2012-11-27 A | 2012-12-31 A | DUKHPROGEN00PQSM1040 | 100% |  |
| DUKHPROGEN00PQAP1020 |  | Waterproofing -Wet Area _Prequa. 1st App. | 15d | 2012-12-11 A | 2012-12-29 A | DUKHPROGEN00PQSM1020 | 100% |  |
| DUKHPROGEN00PQAP1050 |  | Ceiling Works_Prequa. 1st App. | 19d | 2012-12-29 A | 2013-01-19 A | DUKHPROGEN00PQSM1050 | 100% |  |
| DUKHPROGEN00PQAP1060 |  | GRC Panels_Prequa. 1st App. | 18d | 2012-12-29 A | 2013-01-17 A | DUKHPROGEN00PQSM1060 | 100% |  |
| DUKHPROGEN00PQAP1070 |  | Wooden Doors_Prequa. 1st App. | 29d | 2012-12-29 A | 2013-01-30 A | DUKHPROGEN00PQSM1070, DUKHPROGEN00PQSM1050 | 100% |  |
| DUKHPROGEN00PQAP1080 |  | Aluminum Doors & Windows_Prequa. 1st App. | 29d | 2012-12-29 A | 2013-01-30 A | DUKHPROGEN00PQSM1050, DUKHPROGEN00PQSM1080 | 100% |  |
| DUKHPROGEN00PQAP1090 |  | Granite_Prequa. 1st App. | 29d | 2012-12-29 A | 2013-01-30 A | DUKHPROGEN00PQSM1090 | 100% |  |
| DUKHPROGEN00PQAP1100 |  | Roller Shutter_Prequa. 1st App. | 26d | 2012-12-29 A | 2013-01-27 A | DUKHPROGEN00PQSM1100 | 100% |  |
| DUKHPROGEN00PQAP1110 |  | Structural Steel works_Prequa. 1st App. | 30d | 2013-01-10 A | 2013-02-14 A | DUKHPROGEN00PQSM1110 | 100% |  |
| DUKHPROGEN00PQAP1120 |  | Car Parking Shed_Prequa. 1st App. | 30d | 2013-01-10 A | 2013-02-14 A | DUKHPROGEN00PQSM1120 | 100% |  |
| DUKHPROGEN00PQAP1130 |  | Steel Door_Prequa. 1st App. | 30d | 2013-01-10 A | 2013-02-14 A | DUKHPROGEN00PQSM1130 | 100% |  |
| DUKHPROGEN00PQAP1140 |  | PVC Tent_Prequa. 1st App. | 30d | 2013-01-10 A | 2013-02-14 A | DUKHPROGEN00PQSM1140 | 100% |  |
| DUKHPROGEN00PQAP1150 |  | Carpentry & Joinery Works_Prequa. 1st App. | 30d | 2013-01-14 A | 2013-02-18 A | DUKHPROGEN00PQSM1150 | 100% |  |
| DUKHPROGEN00PQAP1160 |  | Soft landscaping /Irrigation _Prequa. 1st App. | 26d | 2013-02-02 A | 2013-03-04 A | DUKHPROGEN00PQSM1160 | 100% |  |
| DUKHPROGEN00PQAP1170 |  | Pre-cast Boundary Wall _Prequa. 1st App. | 26d | 2013-02-02 A | 2013-03-04 A | DUKHPROGEN00PQSM1170 | 100% |  |
| DUKHPROGEN00PQAP1180 |  | Road Works _Prequa. 1st App. | 30d | 2013-02-16 A | 2013-03-21 A | DUKHPROGEN00PQSM1180 | 100% |  |
|  | 20 | **2ND SUBMISSION OF PREQUALIFICATION** |  | 2012-12-29 | 2013-03-30 |  |  |  |
| DUKHPROGEN00PQSM2040 |  | MEPD_Prequa. 2nd Sub. | 12d | 2012-12-29 A | 2013-01-10 A | DUKHPROGEN00PQAP1040 | 100% |  |
| DUKHPROGEN00PQSM2060 |  | GRC Panels_Prequa. 2nd Sub. | 10d | 2013-01-19 A | 2013-01-29 A | DUKHPROGEN00PQAP1060 | 100% |  |
| DUKHPROGEN00PQSM2050 |  | Ceiling Works_Prequa. 2nd Sub. | 14d | 2013-01-20 A | 2013-02-01 A | DUKHPROGEN00PQAP1050 | 100% |  |
| DUKHPROGEN00PQSM2100 |  | Roller Shutter_Prequa. 2nd Sub. | 10d | 2013-01-28 A | 2013-02-07 A | DUKHPROGEN00PQAP1100 | 100% |  |
| DUKHPROGEN00PQSM2070 |  | Wooden Doors_Prequa. 2nd Sub. | 9d | 2013-02-02 A | 2013-02-11 A | DUKHPROGEN00PQAP1070 | 100% |  |
| DUKHPROGEN00PQSM2080 |  | Aluminum Doors & Windows_Prequa. 2nd Sub. | 9d | 2013-02-02 A | 2013-02-11 A | DUKHPROGEN00PQAP1080 | 100% |  |
| DUKHPROGEN00PQSM2090 |  | Granite_Prequa. 2nd Sub. | 9d | 2013-02-02 A | 2013-02-11 A | DUKHPROGEN00PQAP1090 | 100% |  |
| DUKHPROGEN00PQSM2110 |  | Structural Steel works_Prequa. 2nd Sub. | 10d | 2013-02-16 A | 2013-02-26 A | DUKHPROGEN00PQAP1110 | 100% |  |
| DUKHPROGEN00PQSM2120 |  | Car Parking Shed_Prequa. 2nd Sub. | 10d | 2013-02-16 A | 2013-02-26 A | DUKHPROGEN00PQAP1120 | 100% |  |
| DUKHPROGEN00PQSM2130 |  | Steel Door_Prequa. 2nd Sub. | 10d | 2013-02-16 A | 2013-02-26 A | DUKHPROGEN00PQAP1130 | 100% |  |
| DUKHPROGEN00PQSM2140 |  | PVC Tent_Prequa. 2nd Sub. | 10d | 2013-02-16 A | 2013-02-26 A | DUKHPROGEN00PQAP1140 | 100% |  |
| DUKHPROGEN00PQSM2150 |  | Carpentry & Joinery Works_Prequa. 2nd Sub. | 10d | 2013-02-19 A | 2013-03-01 A | DUKHPROGEN00PQAP1150 | 100% |  |
| DUKHPROGEN00PQSM2160 |  | Soft landscaping /Irrigation _Prequa. 2nd Sub. | 10d | 2013-03-05 A | 2013-03-16 A | DUKHPROGEN00PQAP1160 | 100% |  |
| DUKHPROGEN00PQSM2170 |  | Pre-cast Boundary Wall _Prequa. 2nd Sub. | 10d | 2013-03-05 A | 2013-03-16 A | DUKHPROGEN00PQAP1170 | 100% |  |
| DUKHPROGEN00PQSM2180 |  | Road Works _Prequa. 2nd Sub. | 10d | 2013-03-23 A | 2013-03-30 A | DUKHPROGEN00PQAP1180 | 100% |  |
|  | 25 | **2ND APPROVAL OF PREQUALIFICATION** |  | 2013-01-12 | 2013-05-02 |  |  |  |
| DUKHPROGEN00PQAP2040 |  | MEPD_Prequa. 2nd App. | 30d | 2013-01-12 A | 2013-02-16 A | DUKHPROGEN00PQSM2040 | 100% |  |
| DUKHPROGEN00PQAP2050 |  | Ceiling Works_Prequa. 2nd App. | 30d | 2013-02-02 A | 2013-03-09 A | DUKHPROGEN00PQSM2050 | 100% |  |
| DUKHPROGEN00PQAP2060 |  | GRC Panels_Prequa. 2nd App. | 28d | 2013-02-02 A | 2013-03-01 A | DUKHPROGEN00PQSM2060 | 100% |  |
| DUKHPROGEN00PQAP2100 |  | Roller Shutter_Prequa. 2nd App. | 30d | 2013-02-09 A | 2013-03-16 A | DUKHPROGEN00PQSM2100 | 100% |  |
| DUKHPROGEN00PQAP2070 |  | Wooden Doors_Prequa. 2nd App. | 30d | 2013-02-13 A | 2013-03-19 A | DUKHPROGEN00PQSM2070 | 100% |  |
| DUKHPROGEN00PQAP2080 |  | Aluminum Doors & Windows_Prequa. 2nd App. | 30d | 2013-02-13 A | 2013-03-19 A | DUKHPROGEN00PQSM2080 | 100% |  |
| DUKHPROGEN00PQAP2090 |  | Granite_Prequa. 2nd App. | 30d | 2013-02-13 A | 2013-03-19 A | DUKHPROGEN00PQSM2090 | 100% |  |
| DUKHPROGEN00PQAP2110 |  | Structural Steel works_Prequa. 2nd App. | 30d | 2013-02-27 A | 2013-04-02 A | DUKHPROGEN00PQSM2110 | 100% |  |
| DUKHPROGEN00PQAP2120 |  | Car Parking Shed_Prequa. 2nd App. | 30d | 2013-02-27 A | 2013-04-02 A | DUKHPROGEN00PQSM2120 | 100% |  |
| DUKHPROGEN00PQAP2130 |  | Steel Door_Prequa. 2nd App. | 30d | 2013-02-27 A | 2013-04-02 A | DUKHPROGEN00PQSM2130 | 100% |  |
| DUKHPROGEN00PQAP2140 |  | PVC Tent_Prequa. 2nd App. | 30d | 2013-02-27 A | 2013-04-02 A | DUKHPROGEN00PQSM2140 | 100% |  |
| DUKHPROGEN00PQAP2150 |  | Carpentry & Joinery Works_Prequa. 2nd App. | 30d | 2013-03-02 A | 2013-04-04 A | DUKHPROGEN00PQSM2150 | 100% |  |
| DUKHPROGEN00PQAP2160 |  | Soft landscaping /Irrigation _Prequa. 2nd App. | 30d | 2013-03-17 A | 2013-04-20 A | DUKHPROGEN00PQSM2160 | 100% |  |
| DUKHPROGEN00PQAP2170 |  | Pre-cast Boundary Wall _Prequa. 2nd App. | 30d | 2013-03-17 A | 2013-04-20 A | DUKHPROGEN00PQSM2170 | 100% |  |
| DUKHPROGEN00PQAP2180 |  | Road Works _Prequa. 2nd App. | 30d | 2013-03-30 A | 2013-05-02 | DUKHPROGEN00PQSM2180 | 80% | 26d |
|  | L20 | **MATERIAL SUBMITTAL AND APPROVAL** |  | 2012-11-27 | 2013-11-16 |  |  |  |
|  | 10 | **1ST SUBMISSION OF MATERIAL** |  | 2012-11-27 | 2013-08-24 |  |  |  |
| DUKHPROGEN00MTSM1000 |  | Anti Termite _1st_Sub | 10d | 2012-11-27 A | 2012-12-06 A | DUKHPROGEN00PQAP1000 | 100% |  |
| DUKHPROGEN00MTSM1020 |  | Concrete_1st_Sub | 10d | 2012-11-28 A | 2012-12-08 A | DUKHPROGEN00PQAP1010 | 100% |  |
| DUKHPROGEN00MTSM1010 |  | Block Work_1st_Sub | 10d | 2012-12-08 A | 2012-12-19 A | DUKHPROGEN00MTSM1000 | 100% |  |
| DUKHPROGEN00MTSM1040 |  | Plastering & Accessories_1st_Sub | 10d | 2012-12-12 A | 2012-12-24 A | DUKHPROGEN00MTSM1010 SS+4d | 100% |  |
| DUKHPROGEN00MTSM1090 |  | Cobble stone finish _1st_Sub | 15d | 2012-12-25 A | 2013-01-10 A | DUKHPROGEN00MTSM1040 | 100% |  |
| DUKHPROGEN00MTSM1100 |  | Slate Tile_1st_Sub | 15d | 2012-12-25 A | 2013-01-10 A | DUKHPROGEN00MTSM1090 SS | 100% |  |
| DUKHPROGEN00MTSM1110 |  | Stone Cladding_1st_Sub | 15d | 2012-12-25 A | 2013-01-10 A | DUKHPROGEN00MTSM1100 SS | 100% |  |
| DUKHPROGEN00MTSM1120 |  | Ceramic Tile_1st_Sub | 15d | 2012-12-25 A | 2013-01-10 A | DUKHPROGEN00MTSM1110 SS | 100% |  |
| DUKHPROGEN00MTSM1130 |  | Porcelain Tile_1st_Sub | 15d | 2012-12-25 A | 2013-01-10 A | DUKHPROGEN00MTSM1120 SS | 100% |  |

| ID | Task | Duration | Start | Finish | Predecessors | Complete | Total float |
| --- | --- | --- | --- | --- | --- | --- | --- |
| DUKHPROGEN00MTSM1060 | UPVC Pipes_1st_Sub | 15d | 2012-12-29 A | 2013-01-14 A | DUKHPROGEN00PQAP1040 | 100% |  |
| DUKHPROGEN00MTSM1070 | Floor drains & Cleanouts_1st_Sub | 15d | 2012-12-29 A | 2013-01-14 A | DUKHPROGEN00MTSM1060 SS, DUKHPROGEN00PQAP1040 | 100% |  |
| DUKHPROGEN00MTSM1080 | Polyethylene Pipes_1st_Sub | 15d | 2012-12-29 A | 2013-01-14 A | DUKHPROGEN00PQAP1040, DUKHPROGEN00MTSM1070 SS | 100% |  |
| DUKHPROGEN00MTSM1030 | Waterproofing_1st_Sub | 10d | 2012-12-30 A | 2013-01-09 A | DUKHPROGEN00PQAP1030, DUKHPROGEN00PQAP1020 | 100% |  |
| DUKHPROGEN00MTSM1050 | Thermal Insulation_1st_Sub | 15d | 2013-01-10 A | 2013-01-27 A | DUKHPROGEN00MTSM1030 | 100% |  |
| DUKHPROGEN00MTSM1140 | Pitch roofing_1st_Sub | 15d | 2013-01-28 A | 2013-02-14 A | DUKHPROGEN00MTSM1050 | 100% |  |
| DUKHPROGEN00MTSM1150 | Sanitary Fittings_1st_Sub | 15d | 2013-02-17 A | 2013-03-05 A | DUKHPROGEN00PQAP2040 | 100% |  |
| DUKHPROGEN00MTSM1160 | Copper Pipes_1st_Sub | 15d | 2013-02-17 A | 2013-03-05 A | DUKHPROGEN00MTSM1080 SS, DUKHPROGEN00PQAP2040 | 100% |  |
| DUKHPROGEN00MTSM1170 | SMDB_1st_Sub | 15d | 2013-02-17 A | 2013-03-05 A | DUKHPROGEN00PQAP2040 | 100% |  |
| DUKHPROGEN00MTSM1180 | Cables & Wires_1st_Sub | 15d | 2013-02-17 A | 2013-03-05 A | DUKHPROGEN00PQAP2040 | 100% |  |
| DUKHPROGEN00MTSM1190 | Lights & Fixtures_1st_Sub | 15d | 2013-02-17 A | 2013-03-05 A | DUKHPROGEN00PQAP2040 | 100% |  |
| DUKHPROGEN00MTSM1200 | Isolators_1st_Sub | 15d | 2013-02-17 A | 2013-03-05 A | DUKHPROGEN00PQAP2040 | 100% |  |
| DUKHPROGEN00MTSM1210 | Fire Resistant Cables_1st_Sub | 15d | 2013-02-17 A | 2013-03-05 A | DUKHPROGEN00PQAP2040, DUKHPROGEN00MTSM1180 SS | 100% |  |
| DUKHPROGEN00MTSM1390 | GRC Panels_1st_Sub | 15d | 2013-03-02 A | 2013-03-18 A | DUKHPROGEN00PQAP2060 | 100% |  |
| DUKHPROGEN00MTSM1400 | Access Ladder_1st_Sub | 15d | 2013-03-02 A | 2013-03-18 A | DUKHPROGEN00MTSM1390 SS | 100% |  |
| DUKHPROGEN00MTSM1410 | Aluminum Slat Screen_1st_Sub | 15d | 2013-03-02 A | 2013-03-18 A | DUKHPROGEN00MTSM1390 SS | 100% |  |
| DUKHPROGEN00MTSM1220 | Water Chiller_1st_Sub | 15d | 2013-03-06 A | 2013-03-23 A | DUKHPROGEN00MTSM1150, DUKHPROGEN00PQAP2040 | 100% |  |
| DUKHPROGEN00MTSM1230 | Water Heater_1st_Sub | 15d | 2013-03-06 A | 2013-03-23 A | DUKHPROGEN00MTSM1150, DUKHPROGEN00PQAP2040 | 100% |  |
| DUKHPROGEN00MTSM1240 | Split AC_1st_Sub | 15d | 2013-03-06 A | 2013-03-23 A | DUKHPROGEN00PQAP2040, DUKHPROGEN00MTSM1160 | 100% |  |
| DUKHPROGEN00MTSM1250 | Street Light Post Set_1st_Sub | 15d | 2013-03-06 A | 2013-03-23 A | DUKHPROGEN00PQAP2040, DUKHPROGEN00MTSM1180 | 100% |  |
| DUKHPROGEN00MTSM1260 | Smoke Detector_1st_Sub | 15d | 2013-03-06 A | 2013-03-23 A | DUKHPROGEN00PQAP2040, DUKHPROGEN00MTSM1210 | 100% |  |
| DUKHPROGEN00MTSM1270 | Video Com System_1st_Sub | 15d | 2013-03-06 A | 2013-03-23 A | DUKHPROGEN00MTSM1210, DUKHPROGEN00PQAP2040 | 100% |  |
| DUKHPROGEN00MTSM1280 | Telephone Fittings & Accessories_1st_Sub | 15d | 2013-03-06 A | 2013-03-23 A | DUKHPROGEN00MTSM1270 SS, DUKHPROGEN00PQAP2040 | 100% |  |
| DUKHPROGEN00MTSM1290 | Television devices,Fittings & Access._1st_Sub | 15d | 2013-03-06 A | 2013-03-23 A | DUKHPROGEN00PQAP2040, DUKHPROGEN00MTSM1280 SS | 100% |  |
| DUKHPROGEN00MTSM1300 | Gypsum Board false ceiling_1st_Sub | 10d | 2013-03-10 A | 2013-03-20 A | DUKHPROGEN00PQAP2050 | 100% |  |
| DUKHPROGEN00MTSM1310 | Aluminum Tile false ceiling_1st_Sub | 15d | 2013-03-10 A | 2013-03-26 A | DUKHPROGEN00PQAP2050 | 100% |  |
| DUKHPROGEN00MTSM1320 | Paints_1st_Sub | 15d | 2013-03-16 A | 2013-04-01 A | DUKHPROGEN00MTSM1300 SS+5d | 100% |  |
| DUKHPROGEN00MTSM1430 | Roller Shutter_1st_Sub | 10d | 2013-03-17 A | 2013-03-27 A | DUKHPROGEN00PQAP2100 | 100% |  |
| DUKHPROGEN00MTSM1590 | Manhole Covers and Frames_1st_Sub | 15d | 2013-03-19 A | 2013-04-04 A | DUKHPROGEN00MTSM1400 | 100% |  |
| DUKHPROGEN00MTSM1440 | PVC Doors_1st_Sub | 10d | 2013-03-20 A | 2013-03-30 A | DUKHPROGEN00PQAP2080 | 100% |  |
| DUKHPROGEN00MTSM1450 | Ironmongeries_1st_Sub | 10d | 2013-03-20 A | 2013-03-30 A | DUKHPROGEN00PQAP2080 | 100% |  |
| DUKHPROGEN00MTSM1460 | Aluminum Doors _1st_Sub | 10d | 2013-03-20 A | 2013-03-30 A | DUKHPROGEN00PQAP2080 | 100% |  |
| DUKHPROGEN00MTSM1470 | Aluminum Windows_1st_Sub | 10d | 2013-03-20 A | 2013-03-30 A | DUKHPROGEN00PQAP2080 | 100% |  |
| DUKHPROGEN00MTSM1480 | Granite_1st_Sub | 10d | 2013-03-20 A | 2013-03-30 A | DUKHPROGEN00MTSM1130, DUKHPROGEN00PQAP2090 | 100% |  |
| DUKHPROGEN00MTSM1490 | Wooden Doors_1st_Sub | 10d | 2013-03-20 A | 2013-03-30 A | DUKHPROGEN00PQAP2070 | 100% |  |
| DUKHPROGEN00MTSM1330 | Booster Pump_1st_Sub | 15d | 2013-03-24 A | 2013-04-09 A | DUKHPROGEN00PQAP2040, DUKHPROGEN00MTSM1150, DUKHPROGEN00MTSM1220 | 100% |  |
| DUKHPROGEN00MTSM1340 | Exhaust Air louver_1st_Sub | 15d | 2013-03-24 A | 2013-04-09 A | DUKHPROGEN00PQAP2040, DUKHPROGEN00MTSM1240, DUKHPROGEN00MTSM1160 | 100% |  |
| DUKHPROGEN00MTSM1350 | Bollard Lamp_1st_Sub | 15d | 2013-03-24 A | 2013-04-09 A | DUKHPROGEN00MTSM1250, DUKHPROGEN00PQAP2040 | 100% |  |
| DUKHPROGEN00MTSM1360 | Digital Alarm Communicator Panel_1st_Sub | 15d | 2013-03-24 A | 2013-04-09 A | DUKHPROGEN00PQAP2040, DUKHPROGEN00MTSM1260 | 100% |  |
| DUKHPROGEN00MTSM1370 | Fire Blanket_1st_Sub | 15d | 2013-03-24 A | 2013-04-09 A | DUKHPROGEN00MTSM1230, DUKHPROGEN00PQAP2040 | 100% |  |
| DUKHPROGEN00MTSM1380 | Fire Extinguisher_1st_Sub | 15d | 2013-03-24 A | 2013-04-09 A | DUKHPROGEN00PQAP2040, DUKHPROGEN00MTSM1370 SS | 100% |  |
| DUKHPROGEN00MTSM1500 | Steel Door_1st_Sub | 10d | 2013-03-28 A | 2013-04-08 A | DUKHPROGEN00MTSM1430 | 100% |  |
| DUKHPROGEN00MTSM1510 | Stainless Steel Cover_1st_Sub | 10d | 2013-03-28 A | 2013-04-08 A | DUKHPROGEN00MTSM1500 SS | 100% |  |
| DUKHPROGEN00MTSM1420 | Epoxy_1st_Sub | 15d | 2013-04-02 A | 2013-04-18 A | DUKHPROGEN00MTSM1320 | 100% |  |
| DUKHPROGEN00MTSM1600 | kerb works_1st_Sub | 15d | 2013-04-03 A | 2013-04-20 A | DUKHPROGEN00PQAP2110 | 100% |  |
| DUKHPROGEN00MTSM1610 | PVC Tent_1st_Sub | 10d | 2013-04-03 A | 2013-04-14 A | DUKHPROGEN00PQAP2140 | 100% |  |
| DUKHPROGEN00MTSM1620 | Structural Steel_1st_Sub | 10d | 2013-04-03 A | 2013-04-14 A | DUKHPROGEN00MTSM1610 SS | 100% |  |
| DUKHPROGEN00MTSM1550 | Closets /wardrobe& Pelmets_1st_Sub | 15d | 2013-04-06 A | 2013-04-22 A | DUKHPROGEN00PQAP2150 | 100% |  |
| DUKHPROGEN00MTSM1560 | Counters, Cabinets & Shelves_1st_Sub | 15d | 2013-04-06 A | 2013-04-22 A | DUKHPROGEN00PQAP2150 | 100% |  |
| DUKHPROGEN00MTSM1570 | Wooden Hand Rails _1st_Sub | 15d | 2013-04-06 A | 2013-04-22 A | DUKHPROGEN00PQAP2150 | 100% |  |
| DUKHPROGEN00MTSM1580 | Stainless Steel Handrail_1st_Sub | 15d | 2013-04-06 A | 2013-04-22 A | DUKHPROGEN00MTSM1570 SS | 100% |  |
| DUKHPROGEN00MTSM1520 | Lift Pump_1st_Sub | 15d | 2013-04-10 A | 2013-04-27 A | DUKHPROGEN00MTSM1150, DUKHPROGEN00PQAP2040, DUKHPROGEN00MTSM1330 | 100% |  |
| DUKHPROGEN00MTSM1530 | Exhaust Fan_1st_Sub | 15d | 2013-04-10 A | 2013-04-27 A | DUKHPROGEN00MTSM1340, DUKHPROGEN00PQAP2040, DUKHPROGEN00MTSM1160 | 100% |  |
| DUKHPROGEN00MTSM1540 | Ductile Iron Pipes_1st_Sub | 15d | 2013-04-10 A | 2013-04-27 A | DUKHPROGEN00MTSM1380, DUKHPROGEN00PQAP2040 | 100% |  |
| DUKHPROGEN00MTSM1630 | Steel Ladder_1st_Sub | 15d | 2013-04-15 A | 2013-05-01 | DUKHPROGEN00MTSM1610 | 67% | 36d |
| DUKHPROGEN00MTSM1660 | Interlock works_1st_Sub | 15d | 2013-04-21 A | 2013-05-07 | DUKHPROGEN00MTSM1600, DUKHPROGEN00MTSM1600 SS | 33% | 40d |
| DUKHPROGEN00MTSM1670 | Irrigation Pipes_1st_Sub | 15d | 2013-04-21 A | 2013-05-07 | DUKHPROGEN00PQAP2160 | 33% | 37d |
| DUKHPROGEN00MTSM1640 | Water meter_1st_Sub | 15d | 2013-04-27 | 2013-05-13 | DUKHPROGEN00PQAP2040, DUKHPROGEN00MTSM1520, DUKHPROGEN00MTSM1150 |  | 14d |
| DUKHPROGEN00MTSM1650 | Isolating Values_1st_Sub | 15d | 2013-04-27 | 2013-05-13 | DUKHPROGEN00MTSM1540, DUKHPROGEN00PQAP2040 |  | 9d |
| DUKHPROGEN00MTSM1700 | Road Works Materials _1st_Sub | 15d | 2013-05-04 | 2013-05-20 | DUKHPROGEN00PQAP2180 |  | 26d |
| DUKHPROGEN00MTSM1710 | External signage _1st_Sub | 15d | 2013-05-04 | 2013-05-20 | DUKHPROGEN00MTSM1700 SS |  | 176d |
| DUKHPROGEN00MTSM1720 | Road Marking_1st_Sub | 15d | 2013-05-04 | 2013-05-20 | DUKHPROGEN00MTSM1700 SS |  | 176d |
| DUKHPROGEN00MTSM1740 | Stone Boulders_1st_Sub | 15d | 2013-05-04 | 2013-05-20 | DUKHPROGEN00MTSM1750 SS |  | 26d |
| DUKHPROGEN00MTSM1750 | Speed Humps _1st_Sub | 15d | 2013-05-04 | 2013-05-20 | DUKHPROGEN00MTSM1700 SS |  | 26d |
| DUKHPROGEN00MTSM1730 | Car Parking Shed_1st_Sub | 15d | 2013-05-08 | 2013-05-25 | DUKHPROGEN00PQAP2120, DUKHPROGEN00MTSM1660 |  | 40d |
| DUKHPROGEN00MTSM1760 | Sprinklers_1st_Sub | 15d | 2013-05-08 | 2013-05-25 | DUKHPROGEN00PQAP2160, DUKHPROGEN00MTSM1670 |  | 37d |
| DUKHPROGEN00MTSM1680 | Water Tank_1st_Sub | 15d | 2013-05-14 | 2013-05-30 | DUKHPROGEN00PQAP2040, DUKHPROGEN00MTSM1640, DUKHPROGEN00MTSM1150 |  | 14d |
| DUKHPROGEN00MTSM1690 | Fire Hydrant_1st_Sub | 15d | 2013-05-14 | 2013-05-30 | DUKHPROGEN00MTSM1650, DUKHPROGEN00PQAP2040 |  | 20d |
| DUKHPROGEN00MTSM1780 | Gazebo Structure_1st_Sub | 15d | 2013-05-21 | 2013-06-06 | DUKHPROGEN00MTSM1700 |  | 71d |
| DUKHPROGEN00MTSM1790 | Plantation(Grass,Trees)_1st_Sub | 15d | 2013-05-21 | 2013-06-06 | DUKHPROGEN00PQAP2160, DUKHPROGEN00MTSM1740 |  | 26d |

| ID | WBS | Task | Duration | Start | Finish | Predecessors | Complete | Total float |
| --- | --- | --- | --- | --- | --- | --- | --- | --- |
| DUKHPROGEN00MTSM1800 |  | Steel Gate & Barrier gates_1st_Sub | 15d | 2013-05-26 | 2013-06-11 | DUKHPROGEN00PQAP2130, DUKHPROGEN00MTSM1730 |  | 40d |
| DUKHPROGEN00MTSM1810 |  | Nozzle Jet_1st_Sub | 15d | 2013-05-26 | 2013-06-11 | DUKHPROGEN00MTSM1760, DUKHPROGEN00PQAP2160 |  | 37d |
| DUKHPROGEN00MTSM1820 |  | Pre-cast Boundary Wall _1st_Sub | 15d | 2013-05-26 | 2013-06-11 | DUKHPROGEN00MTSM1800 SS, DUKHPROGEN00PQAP2170 |  | 40d |
| DUKHPROGEN00MTSM1770 |  | Kitchen Water Filter_1st_Sub | 15d | 2013-06-01 | 2013-06-17 | DUKHPROGEN00MTSM1680, DUKHPROGEN00MTSM1150, DUKHPROGEN00PQAP2040 |  | 14d |
| DUKHPROGEN00MTSM1830 |  | Solenoid Values_1st_Sub | 15d | 2013-06-12 | 2013-06-29 | DUKHPROGEN00PQAP2160, DUKHPROGEN00MTSM1810 |  | 37d |
| DUKHPROGEN00MTSM1850 |  | Fences_1st_Sub | 15d | 2013-06-12 | 2013-06-29 | DUKHPROGEN00MTSM1820, DUKHPROGEN00MTSM1820 SS |  | 126d |
| DUKHPROGEN00MTSM1840 |  | Gate Values_1st_Sub | 15d | 2013-06-30 | 2013-07-16 | DUKHPROGEN00PQAP2160, DUKHPROGEN00MTSM1830 |  | 37d |
| DUKHPROGEN00MTSM1860 |  | Remote Control Value_1st_Sub | 15d | 2013-07-17 | 2013-08-03 | DUKHPROGEN00PQAP2160, DUKHPROGEN00MTSM1840 |  | 37d |
| DUKHPROGEN00MTSM1870 |  | Irrigation Controller_1st_Sub | 15d | 2013-08-04 | 2013-08-24 | DUKHPROGEN00PQAP2160, DUKHPROGEN00MTSM1860 |  | 37d |
|  | 15 | **1ST APPROVAL OF MATERIAL** |  | 2012-12-08 | 2013-09-28 |  |  |  |
| DUKHPROGEN00MTAP1000 |  | Anti Termite _1st_App | 15d | 2012-12-08 A | 2012-12-25 A | DUKHPROGEN00MTSM1000 | 100% |  |
| DUKHPROGEN00MTAP1020 |  | Concrete_1st_App | 15d | 2012-12-09 A | 2012-12-26 A | DUKHPROGEN00MTSM1020 | 100% |  |
| DUKHPROGEN00MTAP1010 |  | Block Work_1st_App | 25d | 2012-12-13 A | 2013-01-12 A | DUKHPROGEN00MTSM1010 SS+5d | 100% |  |
| DUKHPROGEN00MTAP1040 |  | Plastering & Accessories_1st_App | 30d | 2012-12-25 A | 2013-01-28 A | DUKHPROGEN00MTSM1040 | 100% |  |
| DUKHPROGEN00MTAP1030 |  | Waterproofing_1st_App | 15d | 2013-01-10 A | 2013-01-27 A | DUKHPROGEN00MTSM1030 | 100% |  |
| DUKHPROGEN00MTAP1090 |  | Cobble stone finish _1st_App | 30d | 2013-01-12 A | 2013-02-16 A | DUKHPROGEN00MTSM1090 | 100% |  |
| DUKHPROGEN00MTAP1100 |  | Slate Tile_1st_App | 30d | 2013-01-12 A | 2013-02-16 A | DUKHPROGEN00MTSM1100 | 100% |  |
| DUKHPROGEN00MTAP1110 |  | Stone Cladding_1st_App | 30d | 2013-01-12 A | 2013-02-16 A | DUKHPROGEN00MTSM1110 | 100% |  |
| DUKHPROGEN00MTAP1120 |  | Ceramic Tile_1st_App | 30d | 2013-01-12 A | 2013-02-16 A | DUKHPROGEN00MTSM1120 | 100% |  |
| DUKHPROGEN00MTAP1130 |  | Porcelain Tile_1st_App | 30d | 2013-01-12 A | 2013-02-16 A | DUKHPROGEN00MTSM1130 | 100% |  |
| DUKHPROGEN00MTAP1060 |  | UPVC Pipes_1st_App | 30d | 2013-01-15 A | 2013-02-19 A | DUKHPROGEN00MTSM1060 | 100% |  |
| DUKHPROGEN00MTAP1070 |  | Floor drains & Cleanouts_1st_App | 30d | 2013-01-15 A | 2013-02-19 A | DUKHPROGEN00MTSM1070 | 100% |  |
| DUKHPROGEN00MTAP1080 |  | Polyethylene Pipes_1st_App | 30d | 2013-01-15 A | 2013-02-19 A | DUKHPROGEN00MTSM1080 | 100% |  |
| DUKHPROGEN00MTAP1050 |  | Thermal Insulation_1st_App | 30d | 2013-01-28 A | 2013-03-04 A | DUKHPROGEN00MTSM1050 | 100% |  |
| DUKHPROGEN00MTAP1140 |  | Pitch roofing_1st_App | 30d | 2013-02-16 A | 2013-03-21 A | DUKHPROGEN00MTSM1140 | 100% |  |
| DUKHPROGEN00MTAP1150 |  | Sanitary Fittings_1st_App | 54d | 2013-04-27 | 2013-06-27 | DUKHPROGEN00MTSM1150 |  | -13d |
| DUKHPROGEN00MTAP1160 |  | Copper Pipes_1st_App | 54d | 2013-04-27 | 2013-06-27 | DUKHPROGEN00MTSM1160 |  | -10d |
| DUKHPROGEN00MTAP1170 |  | SMDB_1st_App | 54d | 2013-04-27 | 2013-06-27 | DUKHPROGEN00MTSM1170 |  | 11d |
| DUKHPROGEN00MTAP1180 |  | Cables & Wires_1st_App | 54d | 2013-04-27 | 2013-06-27 | DUKHPROGEN00MTSM1180 |  | 0d |
| DUKHPROGEN00MTAP1190 |  | Lights & Fixtures_1st_App | 54d | 2013-04-27 | 2013-06-27 | DUKHPROGEN00MTSM1190 |  | 23d |
| DUKHPROGEN00MTAP1200 |  | Isolators_1st_App | 54d | 2013-04-27 | 2013-06-27 | DUKHPROGEN00MTSM1200 |  | 44d |
| DUKHPROGEN00MTAP1210 |  | Fire Resistant Cables_1st_App | 54d | 2013-04-27 | 2013-06-27 | DUKHPROGEN00MTSM1210 |  | 41d |
| DUKHPROGEN00MTAP1220 |  | Water Chiller_1st_App | 54d | 2013-04-27 | 2013-06-27 | DUKHPROGEN00MTSM1220 |  | 1d |
| DUKHPROGEN00MTAP1230 |  | Water Heater_1st_App | 54d | 2013-04-27 | 2013-06-27 | DUKHPROGEN00MTSM1230 |  | 10d |
| DUKHPROGEN00MTAP1240 |  | Split AC_1st_App | 54d | 2013-04-27 | 2013-06-27 | DUKHPROGEN00MTSM1240 |  | 35d |
| DUKHPROGEN00MTAP1250 |  | Street Light Post Set_1st_App | 54d | 2013-04-27 | 2013-06-27 | DUKHPROGEN00MTSM1250 |  | 76d |
| DUKHPROGEN00MTAP1260 |  | Smoke Detector_1st_App | 54d | 2013-04-27 | 2013-06-27 | DUKHPROGEN00MTSM1260 |  | 41d |
| DUKHPROGEN00MTAP1270 |  | Video Com System_1st_App | 54d | 2013-04-27 | 2013-06-27 | DUKHPROGEN00MTSM1270 |  | 21d |
| DUKHPROGEN00MTAP1280 |  | Telephone Fittings & Accessories_1st_App | 54d | 2013-04-27 | 2013-06-27 | DUKHPROGEN00MTSM1280 |  | 21d |
| DUKHPROGEN00MTAP1290 |  | Television devices,Fittings & Access._1st_App | 54d | 2013-04-27 | 2013-06-27 | DUKHPROGEN00MTSM1290 |  | 50d |
| DUKHPROGEN00MTAP1300 |  | Gypsum Board false ceiling_1st_App | 54d | 2013-04-27 | 2013-06-27 | DUKHPROGEN00MTSM1300 |  | -19d |
| DUKHPROGEN00MTAP1310 |  | Aluminum Tile false ceiling_1st_App | 54d | 2013-04-27 | 2013-06-27 | DUKHPROGEN00MTSM1310 |  | -4d |
| DUKHPROGEN00MTAP1320 |  | Paints_1st_App | 54d | 2013-04-27 | 2013-06-27 | DUKHPROGEN00MTSM1320 |  | -31d |
| DUKHPROGEN00MTAP1330 |  | Booster Pump_1st_App | 54d | 2013-04-27 | 2013-06-27 | DUKHPROGEN00MTSM1330 |  | 1d |
| DUKHPROGEN00MTAP1340 |  | Exhaust Air louver_1st_App | 54d | 2013-04-27 | 2013-06-27 | DUKHPROGEN00MTSM1340 |  | 42d |
| DUKHPROGEN00MTAP1350 |  | Bollard Lamp_1st_App | 54d | 2013-04-27 | 2013-06-27 | DUKHPROGEN00MTSM1350 |  | 76d |
| DUKHPROGEN00MTAP1360 |  | Digital Alarm Communicator Panel_1st_App | 54d | 2013-04-27 | 2013-06-27 | DUKHPROGEN00MTSM1360 |  | 15d |
| DUKHPROGEN00MTAP1370 |  | Fire Blanket_1st_App | 54d | 2013-04-27 | 2013-06-27 | DUKHPROGEN00MTSM1370 |  | 64d |
| DUKHPROGEN00MTAP1380 |  | Fire Extinguisher_1st_App | 54d | 2013-04-27 | 2013-06-27 | DUKHPROGEN00MTSM1380 |  | 56d |
| DUKHPROGEN00MTAP1390 |  | GRC Panels_1st_App | 54d | 2013-04-27 | 2013-06-27 | DUKHPROGEN00MTSM1390 |  | 23d |
| DUKHPROGEN00MTAP1400 |  | Access Ladder_1st_App | 54d | 2013-04-27 | 2013-06-27 | DUKHPROGEN00MTSM1400 |  | 40d |
| DUKHPROGEN00MTAP1410 |  | Aluminum Slat Screen_1st_App | 54d | 2013-04-27 | 2013-06-27 | DUKHPROGEN00MTSM1410 |  | 30d |
| DUKHPROGEN00MTAP1420 |  | Epoxy_1st_App | 54d | 2013-04-27 | 2013-06-27 | DUKHPROGEN00MTSM1420 |  | 108d |
| DUKHPROGEN00MTAP1430 |  | Roller Shutter_1st_App | 54d | 2013-04-27 | 2013-06-27 | DUKHPROGEN00MTSM1430 |  | 169d |
| DUKHPROGEN00MTAP1440 |  | PVC Doors_1st_App | 54d | 2013-04-27 | 2013-06-27 | DUKHPROGEN00MTSM1440 |  | 46d |
| DUKHPROGEN00MTAP1450 |  | Ironmongeries_1st_App | 54d | 2013-04-27 | 2013-06-27 | DUKHPROGEN00MTSM1450 |  | -20d |
| DUKHPROGEN00MTAP1460 |  | Aluminum Doors_1st_App | 54d | 2013-04-27 | 2013-06-27 | DUKHPROGEN00MTSM1460 |  | 19d |
| DUKHPROGEN00MTAP1470 |  | Aluminum Windows_1st_App | 54d | 2013-04-27 | 2013-06-27 | DUKHPROGEN00MTSM1470 |  | 25d |
| DUKHPROGEN00MTAP1480 |  | Granite_1st_App | 54d | 2013-04-27 | 2013-06-27 | DUKHPROGEN00MTSM1480 |  | 0d |
| DUKHPROGEN00MTAP1490 |  | Wooden Doors_1st_App | 54d | 2013-04-27 | 2013-06-27 | DUKHPROGEN00MTSM1490 |  | -20d |
| DUKHPROGEN00MTAP1500 |  | Steel Door_1st_App | 54d | 2013-04-27 | 2013-06-27 | DUKHPROGEN00MTSM1500 |  | -10d |
| DUKHPROGEN00MTAP1510 |  | Stainless Steel Cover_1st_App | 54d | 2013-04-27 | 2013-06-27 | DUKHPROGEN00MTSM1510 |  | -10d |
| DUKHPROGEN00MTAP1520 |  | Lift Pump_1st_App | 30d | 2013-04-27 | 2013-05-30 | DUKHPROGEN00MTSM1520 |  | 25d |
| DUKHPROGEN00MTAP1530 |  | Exhaust Fan_1st_App | 30d | 2013-04-27 | 2013-05-30 | DUKHPROGEN00MTSM1530 |  | 66d |
| DUKHPROGEN00MTAP1540 |  | Ductile Iron Pipes_1st_App | 30d | 2013-04-27 | 2013-05-30 | DUKHPROGEN00MTSM1540 |  | 10d |
| DUKHPROGEN00MTAP1550 |  | Closets /wardrobe& Pelmets_1st_App | 54d | 2013-04-27 | 2013-06-27 | DUKHPROGEN00MTSM1550 |  | 17d |
| DUKHPROGEN00MTAP1560 |  | Counters, Cabinets & Shelves_1st_App | 54d | 2013-04-27 | 2013-06-27 | DUKHPROGEN00MTSM1560 |  | 17d |
| DUKHPROGEN00MTAP1570 |  | Wooden Hand Rails _1st_App | 54d | 2013-04-27 | 2013-06-27 | DUKHPROGEN00MTSM1570 |  | 35d |
| DUKHPROGEN00MTAP1580 |  | Stainless Steel Handrail_1st_App | 54d | 2013-04-27 | 2013-06-27 | DUKHPROGEN00MTSM1580 |  | 35d |
| DUKHPROGEN00MTAP1590 |  | Manhole Covers and Frames_1st_App | 54d | 2013-04-27 | 2013-06-27 | DUKHPROGEN00MTSM1590 |  | 27d |

| ID | WBS | Task | Duration | Start | Finish | Predecessors | Complete | Total float |
| --- | --- | --- | --- | --- | --- | --- | --- | --- |
| DUKHPROGEN00MTAP1600 |  | kerb works_1st_App | 54d | 2013-04-27 | 2013-06-27 | DUKHPROGEN00MTSM1600 |  | 49d |
| DUKHPROGEN00MTAP1610 |  | PVC Tent_1st_App | 54d | 2013-04-27 | 2013-06-27 | DUKHPROGEN00MTSM1610 |  | -4d |
| DUKHPROGEN00MTAP1620 |  | Structural Steel_1st_App | 54d | 2013-04-27 | 2013-06-27 | DUKHPROGEN00MTSM1620 |  | -6d |
| DUKHPROGEN00MTAP1630 |  | Steel Ladder_1st_App | 30d | 2013-05-02 | 2013-06-05 | DUKHPROGEN00MTSM1630 |  | 36d |
| DUKHPROGEN00MTAP1660 |  | Interlock works_1st_App | 30d | 2013-05-08 | 2013-06-11 | DUKHPROGEN00MTSM1660 |  | 85d |
| DUKHPROGEN00MTAP1670 |  | Irrigation Pipes_1st_App | 30d | 2013-05-08 | 2013-06-11 | DUKHPROGEN00MTSM1670 |  | 76d |
| DUKHPROGEN00MTAP1640 |  | Water meter_1st_App | 30d | 2013-05-14 | 2013-06-17 | DUKHPROGEN00MTSM1640 |  | 61d |
| DUKHPROGEN00MTAP1650 |  | Isolating Values_1st_App | 30d | 2013-05-14 | 2013-06-17 | DUKHPROGEN00MTSM1650 |  | 9d |
| DUKHPROGEN00MTAP1700 |  | Road Works Materials _1st_App | 30d | 2013-05-21 | 2013-06-24 | DUKHPROGEN00MTSM1700 |  | 193d |
| DUKHPROGEN00MTAP1710 |  | External signage _1st_App | 30d | 2013-05-21 | 2013-06-24 | DUKHPROGEN00MTSM1710 |  | 176d |
| DUKHPROGEN00MTAP1720 |  | Road Marking_1st_App | 30d | 2013-05-21 | 2013-06-24 | DUKHPROGEN00MTSM1720 |  | 176d |
| DUKHPROGEN00MTAP1740 |  | Stone Boulders_1st_App | 30d | 2013-05-21 | 2013-06-24 | DUKHPROGEN00MTSM1740 |  | 131d |
| DUKHPROGEN00MTAP1750 |  | Speed Humps _1st_App | 30d | 2013-05-21 | 2013-06-24 | DUKHPROGEN00MTSM1750 |  | 130d |
| DUKHPROGEN00MTAP1730 |  | Car Parking Shed_1st_App | 30d | 2013-05-26 | 2013-06-29 | DUKHPROGEN00MTSM1730 |  | 127d |
| DUKHPROGEN00MTAP1760 |  | Sprinklers_1st_App | 30d | 2013-05-26 | 2013-06-29 | DUKHPROGEN00MTSM1760 |  | 138d |
| DUKHPROGEN00MTAP1680 |  | Water Tank_1st_App | 30d | 2013-06-01 | 2013-07-04 | DUKHPROGEN00MTSM1680 |  | 46d |
| DUKHPROGEN00MTAP1690 |  | Fire Hydrant_1st_App | 30d | 2013-06-01 | 2013-07-04 | DUKHPROGEN00MTSM1690 |  | 20d |
| DUKHPROGEN00MTAP1780 |  | Gazebo Structure_1st_App | 30d | 2013-06-08 | 2013-07-11 | DUKHPROGEN00MTSM1780 |  | 71d |
| DUKHPROGEN00MTAP1790 |  | Plantation(Grass,Trees)_1st_App | 30d | 2013-06-08 | 2013-07-11 | DUKHPROGEN00MTSM1790 |  | 26d |
| DUKHPROGEN00MTAP1800 |  | Steel Gate & Barrier gates_1st_App | 30d | 2013-06-12 | 2013-07-16 | DUKHPROGEN00MTSM1800 |  | 63d |
| DUKHPROGEN00MTAP1810 |  | Nozzle Jet_1st_App | 30d | 2013-06-12 | 2013-07-16 | DUKHPROGEN00MTSM1810 |  | 97d |
| DUKHPROGEN00MTAP1820 |  | Pre-cast Boundary Wall _1st_App | 30d | 2013-06-12 | 2013-07-16 | DUKHPROGEN00MTSM1820 |  | 40d |
| DUKHPROGEN00MTAP1770 |  | Kitchen Water Filter_1st_App | 30d | 2013-06-18 | 2013-07-22 | DUKHPROGEN00MTSM1770 |  | 14d |
| DUKHPROGEN00MTAP1830 |  | Solenoid Values_1st_App | 30d | 2013-06-30 | 2013-08-03 | DUKHPROGEN00MTSM1830 |  | 82d |
| DUKHPROGEN00MTAP1850 |  | Fences_1st_App | 30d | 2013-06-30 | 2013-08-03 | DUKHPROGEN00MTSM1850 |  | 126d |
| DUKHPROGEN00MTAP1840 |  | Gate Values_1st_App | 30d | 2013-07-17 | 2013-08-24 | DUKHPROGEN00MTSM1840 |  | 67d |
| DUKHPROGEN00MTAP1860 |  | Remote Control Value_1st_App | 30d | 2013-08-04 | 2013-09-10 | DUKHPROGEN00MTSM1860 |  | 52d |
| DUKHPROGEN00MTAP1870 |  | Irrigation Controller_1st_App | 30d | 2013-08-25 | 2013-09-28 | DUKHPROGEN00MTSM1870 |  | 37d |
|  | 20 | **2ND SUBMISSION OF MATERIAL** |  | 2013-01-29 | 2013-10-09 |  |  |  |
| DUKHPROGEN00MTSM2040 |  | Plastering & Accessories_2nd_Sub | 10d | 2013-01-29 A | 2013-02-09 A | DUKHPROGEN00MTAP1040 | 100% |  |
| DUKHPROGEN00MTSM2090 |  | Cobble stone finish _2nd_Sub | 10d | 2013-02-17 A | 2013-02-27 A | DUKHPROGEN00MTAP1090 | 100% |  |
| DUKHPROGEN00MTSM2100 |  | Slate Tile_2nd_Sub | 10d | 2013-02-17 A | 2013-02-27 A | DUKHPROGEN00MTAP1100 | 100% |  |
| DUKHPROGEN00MTSM2110 |  | Stone Cladding_2nd_Sub | 10d | 2013-02-17 A | 2013-02-27 A | DUKHPROGEN00MTAP1110 | 100% |  |
| DUKHPROGEN00MTSM2120 |  | Ceramic Tile_2nd_Sub | 10d | 2013-02-17 A | 2013-02-27 A | DUKHPROGEN00MTAP1120 | 100% |  |
| DUKHPROGEN00MTSM2130 |  | Porcelain Tile_2nd_Sub | 10d | 2013-02-17 A | 2013-02-27 A | DUKHPROGEN00MTAP1130 | 100% |  |
| DUKHPROGEN00MTSM2080 |  | Polyethylene Pipes_2nd_Sub | 10d | 2013-02-20 A | 2013-03-03 A | DUKHPROGEN00MTAP1080 | 100% |  |
| DUKHPROGEN00MTSM2050 |  | Thermal Insulation_2nd_Sub | 15d | 2013-03-05 A | 2013-03-21 A | DUKHPROGEN00MTAP1050 | 100% |  |
| DUKHPROGEN00MTSM2140 |  | Pitch roofing_2nd_Sub | 15d | 2013-03-23 A | 2013-04-08 A | DUKHPROGEN00MTAP1140 | 100% |  |
| DUKHPROGEN00MTSM2520 |  | Lift Pump_2nd_Sub | 10d | 2013-06-01 | 2013-06-11 | DUKHPROGEN00MTAP1520 |  | 25d |
| DUKHPROGEN00MTSM2530 |  | Exhaust Fan_2nd_Sub | 10d | 2013-06-01 | 2013-06-11 | DUKHPROGEN00MTAP1530 |  | 66d |
| DUKHPROGEN00MTSM2540 |  | Ductile Iron Pipes_2nd_Sub | 10d | 2013-06-01 | 2013-06-11 | DUKHPROGEN00MTAP1540 |  | 10d |
| DUKHPROGEN00MTSM2630 |  | Steel Ladder_2nd_Sub | 10d | 2013-06-06 | 2013-06-17 | DUKHPROGEN00MTAP1630 |  | 36d |
| DUKHPROGEN00MTSM2660 |  | Interlock works_2nd_Sub | 10d | 2013-06-12 | 2013-06-23 | DUKHPROGEN00MTAP1660 |  | 85d |
| DUKHPROGEN00MTSM2670 |  | Irrigation Pipes_2nd_Sub | 10d | 2013-06-12 | 2013-06-23 | DUKHPROGEN00MTAP1670 |  | 76d |
| DUKHPROGEN00MTSM2640 |  | Water meter_2nd_Sub | 10d | 2013-06-18 | 2013-06-29 | DUKHPROGEN00MTAP1640 |  | 61d |
| DUKHPROGEN00MTSM2650 |  | Isolating Values_2nd_Sub | 10d | 2013-06-18 | 2013-06-29 | DUKHPROGEN00MTAP1650 |  | 9d |
| DUKHPROGEN00MTSM2700 |  | Road Works Materials _2nd_Sub | 10d | 2013-06-25 | 2013-07-06 | DUKHPROGEN00MTAP1700 |  | 193d |
| DUKHPROGEN00MTSM2710 |  | External signage _2nd_Sub | 10d | 2013-06-25 | 2013-07-06 | DUKHPROGEN00MTAP1710 |  | 176d |
| DUKHPROGEN00MTSM2720 |  | Road Marking_2nd_Sub | 10d | 2013-06-25 | 2013-07-06 | DUKHPROGEN00MTAP1720 |  | 176d |
| DUKHPROGEN00MTSM2740 |  | Stone Boulders_2nd_Sub | 10d | 2013-06-25 | 2013-07-06 | DUKHPROGEN00MTAP1740 |  | 131d |
| DUKHPROGEN00MTSM2750 |  | Speed Humps _2nd_Sub | 10d | 2013-06-25 | 2013-07-06 | DUKHPROGEN00MTAP1750 |  | 130d |
| DUKHPROGEN00MTSM2150 |  | Sanitary Fittings_2nd_Sub | 10d | 2013-06-29 | 2013-07-09 | DUKHPROGEN00MTAP1150 |  | -13d |
| DUKHPROGEN00MTSM2160 |  | Copper Pipes_2nd_Sub | 10d | 2013-06-29 | 2013-07-09 | DUKHPROGEN00MTAP1160 |  | -10d |
| DUKHPROGEN00MTSM2170 |  | SMDB_2nd_Sub | 10d | 2013-06-29 | 2013-07-09 | DUKHPROGEN00MTAP1170 |  | 11d |
| DUKHPROGEN00MTSM2190 |  | Lights & Fixtures_2nd_Sub | 10d | 2013-06-29 | 2013-07-09 | DUKHPROGEN00MTAP1190 |  | 23d |
| DUKHPROGEN00MTSM2200 |  | Isolators_2nd_Sub | 10d | 2013-06-29 | 2013-07-09 | DUKHPROGEN00MTAP1200 |  | 44d |
| DUKHPROGEN00MTSM2210 |  | Fire Resistant Cables_2nd_Sub | 10d | 2013-06-29 | 2013-07-09 | DUKHPROGEN00MTAP1210 |  | 41d |
| DUKHPROGEN00MTSM2220 |  | Water Chiller_2nd_Sub | 10d | 2013-06-29 | 2013-07-09 | DUKHPROGEN00MTAP1220 |  | 1d |
| DUKHPROGEN00MTSM2230 |  | Water Heater_2nd_Sub | 10d | 2013-06-29 | 2013-07-09 | DUKHPROGEN00MTAP1230 |  | 10d |
| DUKHPROGEN00MTSM2240 |  | Split AC_2nd_Sub | 10d | 2013-06-29 | 2013-07-09 | DUKHPROGEN00MTAP1240 |  | 35d |
| DUKHPROGEN00MTSM2250 |  | Street Light Post Set_2nd_Sub | 10d | 2013-06-29 | 2013-07-09 | DUKHPROGEN00MTAP1250 |  | 76d |
| DUKHPROGEN00MTSM2260 |  | Smoke Detector_2nd_Sub | 10d | 2013-06-29 | 2013-07-09 | DUKHPROGEN00MTAP1260 |  | 41d |
| DUKHPROGEN00MTSM2270 |  | Video Com System_2nd_Sub | 10d | 2013-06-29 | 2013-07-09 | DUKHPROGEN00MTAP1270 |  | 21d |
| DUKHPROGEN00MTSM2280 |  | Telephone Fittings & Accessories_2nd_Sub | 10d | 2013-06-29 | 2013-07-09 | DUKHPROGEN00MTAP1280 |  | 21d |
| DUKHPROGEN00MTSM2290 |  | Television devices,Fittings & Access._2nd_Sub | 10d | 2013-06-29 | 2013-07-09 | DUKHPROGEN00MTAP1290 |  | 50d |
| DUKHPROGEN00MTSM2300 |  | Gypsum Board false ceiling_2nd_Sub | 10d | 2013-06-29 | 2013-07-09 | DUKHPROGEN00MTAP1300 |  | -19d |
| DUKHPROGEN00MTSM2310 |  | Aluminum Tile false ceiling_2nd_Sub | 10d | 2013-06-29 | 2013-07-09 | DUKHPROGEN00MTAP1310 |  | -4d |
| DUKHPROGEN00MTSM2320 |  | Paints_2nd_Sub | 10d | 2013-06-29 | 2013-07-09 | DUKHPROGEN00MTAP1320 |  | -31d |
| DUKHPROGEN00MTSM2330 |  | Booster Pump_2nd_Sub | 10d | 2013-06-29 | 2013-07-09 | DUKHPROGEN00MTAP1330 |  | 1d |
| DUKHPROGEN00MTSM2340 |  | Exhaust Air louver_2nd_Sub | 10d | 2013-06-29 | 2013-07-09 | DUKHPROGEN00MTAP1340 |  | 42d |

| ID | WBS | Task | Duration | Start | Finish | Predecessors | Complete | Total float |
| --- | --- | --- | --- | --- | --- | --- | --- | --- |
| DUKHPROGEN00MTSM2350 |  | Bollard Lamp_2nd_Sub | 10d | 2013-06-29 | 2013-07-09 | DUKHPROGEN00MTAP1350 |  | 76d |
| DUKHPROGEN00MTSM2360 |  | Digital Alarm Communicator Panel_2nd_Sub | 10d | 2013-06-29 | 2013-07-09 | DUKHPROGEN00MTAP1360 |  | 15d |
| DUKHPROGEN00MTSM2370 |  | Fire Blanket_2nd_Sub | 10d | 2013-06-29 | 2013-07-09 | DUKHPROGEN00MTAP1370 |  | 64d |
| DUKHPROGEN00MTSM2380 |  | Fire Extinguisher_2nd_Sub | 10d | 2013-06-29 | 2013-07-09 | DUKHPROGEN00MTAP1380 |  | 56d |
| DUKHPROGEN00MTSM2390 |  | GRC Panels_2nd_Sub | 10d | 2013-06-29 | 2013-07-09 | DUKHPROGEN00MTAP1390 |  | 23d |
| DUKHPROGEN00MTSM2400 |  | Access Ladder_2nd_Sub | 10d | 2013-06-29 | 2013-07-09 | DUKHPROGEN00MTAP1400 |  | 40d |
| DUKHPROGEN00MTSM2410 |  | Aluminum Slat Screen_2nd_Sub | 10d | 2013-06-29 | 2013-07-09 | DUKHPROGEN00MTAP1410 |  | 30d |
| DUKHPROGEN00MTSM2420 |  | Epoxy_2nd_Sub | 10d | 2013-06-29 | 2013-07-09 | DUKHPROGEN00MTAP1420 |  | 108d |
| DUKHPROGEN00MTSM2430 |  | Roller Shutter_2nd_Sub | 10d | 2013-06-29 | 2013-07-09 | DUKHPROGEN00MTAP1430 |  | 169d |
| DUKHPROGEN00MTSM2440 |  | PVC Doors_2nd_Sub | 10d | 2013-06-29 | 2013-07-09 | DUKHPROGEN00MTAP1440 |  | 46d |
| DUKHPROGEN00MTSM2450 |  | Ironmongeries_2nd_Sub | 10d | 2013-06-29 | 2013-07-09 | DUKHPROGEN00MTAP1450 |  | -20d |
| DUKHPROGEN00MTSM2460 |  | Aluminum Doors_2nd_Sub | 10d | 2013-06-29 | 2013-07-09 | DUKHPROGEN00MTAP1460 |  | 19d |
| DUKHPROGEN00MTSM2470 |  | Aluminum Windows_2nd_Sub | 10d | 2013-06-29 | 2013-07-09 | DUKHPROGEN00MTAP1470 |  | 25d |
| DUKHPROGEN00MTSM2480 |  | Granite_2nd_Sub | 10d | 2013-06-29 | 2013-07-09 | DUKHPROGEN00MTAP1480 |  | 0d |
| DUKHPROGEN00MTSM2490 |  | Wooden Doors_2nd_Sub | 10d | 2013-06-29 | 2013-07-09 | DUKHPROGEN00MTAP1490 |  | -20d |
| DUKHPROGEN00MTSM2500 |  | Steel Door_2nd_Sub | 10d | 2013-06-29 | 2013-07-09 | DUKHPROGEN00MTAP1500 |  | -10d |
| DUKHPROGEN00MTSM2510 |  | Stainless Steel Cover_2nd_Sub | 10d | 2013-06-29 | 2013-07-09 | DUKHPROGEN00MTAP1510 |  | -10d |
| DUKHPROGEN00MTSM2550 |  | Closets /wardrobe& Pelmets_2nd_Sub | 10d | 2013-06-29 | 2013-07-09 | DUKHPROGEN00MTAP1550 |  | 17d |
| DUKHPROGEN00MTSM2560 |  | Counters, Cabinets & Shelves_2nd_Sub | 10d | 2013-06-29 | 2013-07-09 | DUKHPROGEN00MTAP1560 |  | 17d |
| DUKHPROGEN00MTSM2570 |  | Wooden Hand Rails _2nd_Sub | 10d | 2013-06-29 | 2013-07-09 | DUKHPROGEN00MTAP1570 |  | 35d |
| DUKHPROGEN00MTSM2580 |  | Stainless Steel Handrail_2nd_Sub | 10d | 2013-06-29 | 2013-07-09 | DUKHPROGEN00MTSM2570 SS, DUKHPROGEN00MTAP1580 |  | 35d |
| DUKHPROGEN00MTSM2590 |  | Manhole Covers and Frames_2nd_Sub | 10d | 2013-06-29 | 2013-07-09 | DUKHPROGEN00MTAP1590 |  | 27d |
| DUKHPROGEN00MTSM2600 |  | kerb works_2nd_Sub | 10d | 2013-06-29 | 2013-07-09 | DUKHPROGEN00MTAP1600 |  | 49d |
| DUKHPROGEN00MTSM2610 |  | PVC Tent_2nd_Sub | 10d | 2013-06-29 | 2013-07-09 | DUKHPROGEN00MTAP1610 |  | -4d |
| DUKHPROGEN00MTSM2620 |  | Structural Steel_2nd_Sub | 10d | 2013-06-29 | 2013-07-09 | DUKHPROGEN00MTAP1620 |  | -6d |
| DUKHPROGEN00MTSM2730 |  | Car Parking Shed_2nd_Sub | 10d | 2013-06-30 | 2013-07-10 | DUKHPROGEN00MTAP1730 |  | 127d |
| DUKHPROGEN00MTSM2760 |  | Sprinklers_2nd_Sub | 10d | 2013-06-30 | 2013-07-10 | DUKHPROGEN00MTAP1760 |  | 138d |
| DUKHPROGEN00MTSM2680 |  | Water Tank_2nd_Sub | 10d | 2013-07-06 | 2013-07-16 | DUKHPROGEN00MTAP1680 |  | 46d |
| DUKHPROGEN00MTSM2690 |  | Fire Hydrant_2nd_Sub | 10d | 2013-07-06 | 2013-07-16 | DUKHPROGEN00MTAP1690 |  | 20d |
| DUKHPROGEN00MTSM2780 |  | Gazebo Structure_2nd_Sub | 10d | 2013-07-13 | 2013-07-23 | DUKHPROGEN00MTAP1780 |  | 71d |
| DUKHPROGEN00MTSM2790 |  | Plantation(Grass,Trees)_2nd_Sub | 10d | 2013-07-13 | 2013-07-23 | DUKHPROGEN00MTAP1790 |  | 26d |
| DUKHPROGEN00MTSM2800 |  | Steel Gate & Barrier gates_2nd_Sub | 10d | 2013-07-17 | 2013-07-28 | DUKHPROGEN00MTAP1800 |  | 63d |
| DUKHPROGEN00MTSM2810 |  | Nozzle Jet_2nd_Sub | 10d | 2013-07-17 | 2013-07-28 | DUKHPROGEN00MTAP1810 |  | 97d |
| DUKHPROGEN00MTSM2820 |  | Pre-cast Boundary Wall _2nd_Sub | 10d | 2013-07-17 | 2013-07-28 | DUKHPROGEN00MTAP1820 |  | 40d |
| DUKHPROGEN00MTSM2770 |  | Kitchen Water Filter_2nd_Sub | 10d | 2013-07-23 | 2013-08-03 | DUKHPROGEN00MTAP1770 |  | 14d |
| DUKHPROGEN00MTSM2830 |  | Solenoid Values_2nd_Sub | 10d | 2013-08-04 | 2013-08-18 | DUKHPROGEN00MTAP1830 |  | 82d |
| DUKHPROGEN00MTSM2850 |  | Fences_2nd_Sub | 10d | 2013-08-04 | 2013-08-18 | DUKHPROGEN00MTAP1850 |  | 126d |
| DUKHPROGEN00MTSM2840 |  | Gate Values_2nd_Sub | 10d | 2013-08-25 | 2013-09-04 | DUKHPROGEN00MTAP1840 |  | 67d |
| DUKHPROGEN00MTSM2860 |  | Remote Control Value_2nd_Sub | 10d | 2013-09-11 | 2013-09-22 | DUKHPROGEN00MTAP1860 |  | 52d |
| DUKHPROGEN00MTSM2870 |  | Irrigation Controller_2nd_Sub | 10d | 2013-09-29 | 2013-10-09 | DUKHPROGEN00MTAP1870 |  | 37d |
|  | 25 | **2ND APPROVAL OF MATERIAL** |  | 2013-02-10 | 2013-11-16 |  |  |  |
| DUKHPROGEN00MTAP2040 |  | Plastering & Accessories_2nd_App | 30d | 2013-02-10 A | 2013-03-17 A | DUKHPROGEN00MTSM2040 | 100% |  |
| DUKHPROGEN00MTAP2090 |  | Cobble stone finish _2nd_App | 24d | 2013-03-02 A | 2013-03-28 A | DUKHPROGEN00MTSM2090 | 100% |  |
| DUKHPROGEN00MTAP2100 |  | Slate Tile_2nd_App | 24d | 2013-03-02 A | 2013-03-28 A | DUKHPROGEN00MTSM2100 | 100% |  |
| DUKHPROGEN00MTAP2110 |  | Stone Cladding_2nd_App | 29d | 2013-03-02 A | 2013-03-29 A | DUKHPROGEN00MTSM2110 | 100% |  |
| DUKHPROGEN00MTAP2120 |  | Ceramic Tile_2nd_App | 24d | 2013-03-02 A | 2013-03-28 A | DUKHPROGEN00MTSM2120 | 100% |  |
| DUKHPROGEN00MTAP2130 |  | Porcelain Tile_2nd_App | 24d | 2013-03-02 A | 2013-03-28 A | DUKHPROGEN00MTSM2130 | 100% |  |
| DUKHPROGEN00MTAP2080 |  | Polyethylene Pipes_2nd_App | 30d | 2013-03-04 A | 2013-04-07 A | DUKHPROGEN00MTSM2080 | 100% |  |
| DUKHPROGEN00MTAP2050 |  | Thermal Insulation_2nd_App | 30d | 2013-03-23 A | 2013-04-25 A | DUKHPROGEN00MTSM2050 | 100% |  |
| DUKHPROGEN00MTAP2140 |  | Pitch roofing_2nd_App | 30d | 2013-04-09 A | 2013-05-13 | DUKHPROGEN00MTSM2140 | 50% | 75d |
| DUKHPROGEN00MTAP2520 |  | Lift Pump_2nd_App | 30d | 2013-06-12 | 2013-07-16 | DUKHPROGEN00MTSM2520 |  | 25d |
| DUKHPROGEN00MTAP2530 |  | Exhaust Fan_2nd_App | 30d | 2013-06-12 | 2013-07-16 | DUKHPROGEN00MTSM2530 |  | 66d |
| DUKHPROGEN00MTAP2540 |  | Ductile Iron Pipes_2nd_App | 30d | 2013-06-12 | 2013-07-16 | DUKHPROGEN00MTSM2540 |  | 10d |
| DUKHPROGEN00MTAP2630 |  | Steel Ladder_2nd_App | 30d | 2013-06-18 | 2013-07-22 | DUKHPROGEN00MTSM2630 |  | 36d |
| DUKHPROGEN00MTAP2660 |  | Interlock works_2nd_App | 30d | 2013-06-24 | 2013-07-28 | DUKHPROGEN00MTSM2660 |  | 85d |
| DUKHPROGEN00MTAP2670 |  | Irrigation Pipes_2nd_App | 30d | 2013-06-24 | 2013-07-28 | DUKHPROGEN00MTSM2670 |  | 76d |
| DUKHPROGEN00MTAP2640 |  | Water meter_2nd_App | 30d | 2013-06-30 | 2013-08-03 | DUKHPROGEN00MTSM2640 |  | 61d |
| DUKHPROGEN00MTAP2650 |  | Isolating Values_2nd_App | 30d | 2013-06-30 | 2013-08-03 | DUKHPROGEN00MTSM2650 |  | 9d |
| DUKHPROGEN00MTAP2700 |  | Road Works Materials_2nd_App | 30d | 2013-07-07 | 2013-08-13 | DUKHPROGEN00MTSM2700 |  | 193d |
| DUKHPROGEN00MTAP2710 |  | External signage _2nd_App | 30d | 2013-07-07 | 2013-08-13 | DUKHPROGEN00MTSM2710 |  | 176d |
| DUKHPROGEN00MTAP2720 |  | Road Marking_2nd_App | 30d | 2013-07-07 | 2013-08-13 | DUKHPROGEN00MTSM2720 |  | 176d |
| DUKHPROGEN00MTAP2740 |  | Stone Boulders_2nd_App | 30d | 2013-07-07 | 2013-08-13 | DUKHPROGEN00MTSM2740 |  | 131d |
| DUKHPROGEN00MTAP2750 |  | Speed Humps _2nd_App | 30d | 2013-07-07 | 2013-08-13 | DUKHPROGEN00MTSM2750 |  | 130d |
| DUKHPROGEN00MTAP2150 |  | Sanitary Fittings_2nd_App | 30d | 2013-07-10 | 2013-08-17 | DUKHPROGEN00MTSM2150 |  | -13d |
| DUKHPROGEN00MTAP2160 |  | Copper Pipes_2nd_App | 30d | 2013-07-10 | 2013-08-17 | DUKHPROGEN00MTSM2160 |  | -10d |
| DUKHPROGEN00MTAP2170 |  | SMDB_2nd_App | 30d | 2013-07-10 | 2013-08-17 | DUKHPROGEN00MTSM2170 |  | 11d |
| DUKHPROGEN00MTAP2190 |  | Lights & Fixtures_2nd_App | 30d | 2013-07-10 | 2013-08-17 | DUKHPROGEN00MTSM2190 |  | 23d |
| DUKHPROGEN00MTAP2200 |  | Isolators_2nd_App | 30d | 2013-07-10 | 2013-08-17 | DUKHPROGEN00MTSM2200 |  | 44d |
| DUKHPROGEN00MTAP2210 |  | Fire Resistant Cables_2nd_App | 30d | 2013-07-10 | 2013-08-17 | DUKHPROGEN00MTSM2210 |  | 41d |
| DUKHPROGEN00MTAP2220 |  | Water Chiller_2nd_App | 30d | 2013-07-10 | 2013-08-17 | DUKHPROGEN00MTSM2220 |  | 1d |

| ID | WBS | Task | Duration | Start | Finish | Predecessors | Complete | Total float |
| --- | --- | --- | --- | --- | --- | --- | --- | --- |
| DUKHPROGEN00MTAP2230 |  | Water Heater_2nd_App | 30d | 2013-07-10 | 2013-08-17 | DUKHPROGEN00MTSM2230 |  | 10d |
| DUKHPROGEN00MTAP2240 |  | Split AC_2nd_App | 30d | 2013-07-10 | 2013-08-17 | DUKHPROGEN00MTSM2240 |  | 35d |
| DUKHPROGEN00MTAP2250 |  | Street Light Post Set_2nd_App | 30d | 2013-07-10 | 2013-08-17 | DUKHPROGEN00MTSM2250 |  | 76d |
| DUKHPROGEN00MTAP2260 |  | Smoke Detector_2nd_App | 30d | 2013-07-10 | 2013-08-17 | DUKHPROGEN00MTSM2260 |  | 41d |
| DUKHPROGEN00MTAP2270 |  | Video Com System_2nd_App | 30d | 2013-07-10 | 2013-08-17 | DUKHPROGEN00MTSM2270 |  | 21d |
| DUKHPROGEN00MTAP2280 |  | Telephone Fittings & Accessories_2nd_App | 30d | 2013-07-10 | 2013-08-17 | DUKHPROGEN00MTSM2280 |  | 21d |
| DUKHPROGEN00MTAP2290 |  | Television devices,Fittings & Access._2nd_App | 30d | 2013-07-10 | 2013-08-17 | DUKHPROGEN00MTSM2290 |  | 50d |
| DUKHPROGEN00MTAP2300 |  | Gypsum Board false ceiling_2nd_App | 30d | 2013-07-10 | 2013-08-17 | DUKHPROGEN00MTSM2300 |  | -19d |
| DUKHPROGEN00MTAP2310 |  | Aluminum Tile false ceiling_2nd_App | 30d | 2013-07-10 | 2013-08-17 | DUKHPROGEN00MTSM2310 |  | -4d |
| DUKHPROGEN00MTAP2320 |  | Paints_2nd_App | 30d | 2013-07-10 | 2013-08-17 | DUKHPROGEN00MTSM2320 |  | -31d |
| DUKHPROGEN00MTAP2330 |  | Booster Pump_2nd_App | 30d | 2013-07-10 | 2013-08-17 | DUKHPROGEN00MTSM2330 |  | 1d |
| DUKHPROGEN00MTAP2340 |  | Exhaust Air louver_2nd_App | 30d | 2013-07-10 | 2013-08-17 | DUKHPROGEN00MTSM2340 |  | 42d |
| DUKHPROGEN00MTAP2350 |  | Bollard Lamp_2nd_App | 30d | 2013-07-10 | 2013-08-17 | DUKHPROGEN00MTSM2350 |  | 76d |
| DUKHPROGEN00MTAP2360 |  | Digital Alarm Communicator Panel_2nd_App | 30d | 2013-07-10 | 2013-08-17 | DUKHPROGEN00MTSM2360 |  | 15d |
| DUKHPROGEN00MTAP2370 |  | Fire Blanket_2nd_App | 30d | 2013-07-10 | 2013-08-17 | DUKHPROGEN00MTSM2370 |  | 64d |
| DUKHPROGEN00MTAP2380 |  | Fire Extinguisher_2nd_App | 30d | 2013-07-10 | 2013-08-17 | DUKHPROGEN00MTSM2380 |  | 56d |
| DUKHPROGEN00MTAP2390 |  | GRC Panels_2nd_App | 30d | 2013-07-10 | 2013-08-17 | DUKHPROGEN00MTSM2390 |  | 23d |
| DUKHPROGEN00MTAP2400 |  | Access Ladder_2nd_App | 30d | 2013-07-10 | 2013-08-17 | DUKHPROGEN00MTSM2400 |  | 40d |
| DUKHPROGEN00MTAP2410 |  | Aluminum Slat Screen_2nd_App | 30d | 2013-07-10 | 2013-08-17 | DUKHPROGEN00MTSM2410 |  | 30d |
| DUKHPROGEN00MTAP2420 |  | Epoxy_2nd_App | 30d | 2013-07-10 | 2013-08-17 | DUKHPROGEN00MTSM2420 |  | 108d |
| DUKHPROGEN00MTAP2430 |  | Roller Shutter_2nd_App | 30d | 2013-07-10 | 2013-08-17 | DUKHPROGEN00MTSM2430 |  | 169d |
| DUKHPROGEN00MTAP2440 |  | PVC Doors_2nd_App | 30d | 2013-07-10 | 2013-08-17 | DUKHPROGEN00MTSM2440 |  | 46d |
| DUKHPROGEN00MTAP2450 |  | Ironmongeries_2nd_App | 30d | 2013-07-10 | 2013-08-17 | DUKHPROGEN00MTSM2450 |  | -20d |
| DUKHPROGEN00MTAP2460 |  | Aluminum Doors_2nd_App | 30d | 2013-07-10 | 2013-08-17 | DUKHPROGEN00MTSM2460 |  | 19d |
| DUKHPROGEN00MTAP2470 |  | Aluminum Windows_2nd_App | 30d | 2013-07-10 | 2013-08-17 | DUKHPROGEN00MTSM2470 |  | 25d |
| DUKHPROGEN00MTAP2480 |  | Granite_2nd_App | 30d | 2013-07-10 | 2013-08-17 | DUKHPROGEN00MTSM2480 |  | 0d |
| DUKHPROGEN00MTAP2490 |  | Wooden Doors_2nd_App | 30d | 2013-07-10 | 2013-08-17 | DUKHPROGEN00MTSM2490 |  | -20d |
| DUKHPROGEN00MTAP2500 |  | Steel Door_2nd_App | 30d | 2013-07-10 | 2013-08-17 | DUKHPROGEN00MTSM2500 |  | -10d |
| DUKHPROGEN00MTAP2510 |  | Stainless Steel Cover_2nd_App | 30d | 2013-07-10 | 2013-08-17 | DUKHPROGEN00MTSM2510 |  | -10d |
| DUKHPROGEN00MTAP2550 |  | Closets /wardrobe& Pelmets_2nd_App | 30d | 2013-07-10 | 2013-08-17 | DUKHPROGEN00MTSM2550 |  | 17d |
| DUKHPROGEN00MTAP2560 |  | Counters, Cabinets & Shelves_2nd_App | 30d | 2013-07-10 | 2013-08-17 | DUKHPROGEN00MTSM2560 |  | 17d |
| DUKHPROGEN00MTAP2570 |  | Wooden Hand Rails _2nd_App | 30d | 2013-07-10 | 2013-08-17 | DUKHPROGEN00MTSM2570 |  | 35d |
| DUKHPROGEN00MTAP2580 |  | Stainless Steel Handrail_2nd_App | 30d | 2013-07-10 | 2013-08-17 | DUKHPROGEN00MTSM2580 |  | 35d |
| DUKHPROGEN00MTAP2590 |  | Manhole Covers and Frames_2nd_App | 30d | 2013-07-10 | 2013-08-17 | DUKHPROGEN00MTSM2590 |  | 27d |
| DUKHPROGEN00MTAP2600 |  | kerb works_2nd_App | 30d | 2013-07-10 | 2013-08-17 | DUKHPROGEN00MTSM2600 |  | 49d |
| DUKHPROGEN00MTAP2610 |  | PVC Tent_2nd_App | 30d | 2013-07-10 | 2013-08-17 | DUKHPROGEN00MTSM2610 |  | -4d |
| DUKHPROGEN00MTAP2620 |  | Structural Steel_2nd_App | 30d | 2013-07-10 | 2013-08-17 | DUKHPROGEN00MTSM2620 |  | -6d |
| DUKHPROGEN00MTAP2730 |  | Car Parking Shed_2nd_App | 30d | 2013-07-11 | 2013-08-18 | DUKHPROGEN00MTSM2730 |  | 127d |
| DUKHPROGEN00MTAP2760 |  | Sprinklers_2nd_App | 30d | 2013-07-11 | 2013-08-18 | DUKHPROGEN00MTSM2760 |  | 138d |
| DUKHPROGEN00MTAP2680 |  | Water Tank_2nd_App | 30d | 2013-07-17 | 2013-08-24 | DUKHPROGEN00MTSM2680 |  | 46d |
| DUKHPROGEN00MTAP2690 |  | Fire Hydrant_2nd_App | 30d | 2013-07-17 | 2013-08-24 | DUKHPROGEN00MTSM2690 |  | 20d |
| DUKHPROGEN00MTAP2780 |  | Gazebo Structure_2nd_App | 30d | 2013-07-24 | 2013-08-31 | DUKHPROGEN00MTSM2780 |  | 71d |
| DUKHPROGEN00MTAP2790 |  | Plantation(Grass,Trees)_2nd_App | 30d | 2013-07-24 | 2013-08-31 | DUKHPROGEN00MTSM2790 |  | 26d |
| DUKHPROGEN00MTAP2800 |  | Steel Gate & Barrier gates_2nd_App | 30d | 2013-07-29 | 2013-09-04 | DUKHPROGEN00MTSM2800 |  | 63d |
| DUKHPROGEN00MTAP2810 |  | Nozzle Jet_2nd_App | 30d | 2013-07-29 | 2013-09-04 | DUKHPROGEN00MTSM2810 |  | 97d |
| DUKHPROGEN00MTAP2820 |  | Pre-cast Boundary Wall _2nd_App | 30d | 2013-07-29 | 2013-09-04 | DUKHPROGEN00MTSM2820 |  | 40d |
| DUKHPROGEN00MTAP2770 |  | Kitchen Water Filter_2nd_App | 30d | 2013-08-04 | 2013-09-10 | DUKHPROGEN00MTSM2770 |  | 14d |
| DUKHPROGEN00MTAP2830 |  | Solenoid Values_2nd_App | 30d | 2013-08-19 | 2013-09-22 | DUKHPROGEN00MTSM2830 |  | 82d |
| DUKHPROGEN00MTAP2850 |  | Fences_2nd_App | 30d | 2013-08-19 | 2013-09-22 | DUKHPROGEN00MTSM2850 |  | 126d |
| DUKHPROGEN00MTAP2840 |  | Gate Values_2nd_App | 30d | 2013-09-05 | 2013-10-09 | DUKHPROGEN00MTSM2840 |  | 67d |
| DUKHPROGEN00MTAP2860 |  | Remote Control Value_2nd_App | 30d | 2013-09-23 | 2013-10-29 | DUKHPROGEN00MTSM2860 |  | 52d |
| DUKHPROGEN00MTAP2870 |  | Irrigation Controller_2nd_App | 30d | 2013-10-10 | 2013-11-16 | DUKHPROGEN00MTSM2870 |  | 37d |
|  | L25 | **MANUFACTURING, PROCUREMENT & DELIVERY** |  | 2012-12-26 | 2014-02-14 |  |  |  |
| DUKHPROGEN00PRDV3000 |  | Proc & Del Anti Termite | 7d | 2012-12-26 A | 2012-12-28 A | DUKHPROGEN00MTAP1000 | 100% |  |
| DUKHPROGEN00PRDV3020 |  | Proc & Del Concrete | 7d | 2012-12-27 A | 2012-12-28 A | DUKHPROGEN00MTAP1020 | 100% |  |
| DUKHPROGEN00PRDV3010 |  | Proc & Del Block Work | 10d | 2013-01-13 A | 2013-01-22 A | DUKHPROGEN00MTAP1010 | 100% |  |
| DUKHPROGEN00PRDV3030 |  | Proc & Del Waterproofing | 7d | 2013-01-28 A | 2013-02-01 A | DUKHPROGEN00MTAP1030 | 100% |  |
| DUKHPROGEN00PRDV3060 |  | Proc & Del UPVC Pipes | 40d | 2013-02-20 A | 2013-03-31 A | DUKHPROGEN00MTAP1060 | 100% |  |
| DUKHPROGEN00PRDV3070 |  | Proc & Del Floor drains & Cleanouts | 40d | 2013-02-20 A | 2013-03-31 A | DUKHPROGEN00MTAP1070 | 100% |  |
| DUKHPROGEN00PRDV3040 |  | Proc & Del Plastering & Accessories | 59d | 2013-04-27 | 2013-06-24 | DUKHENGP1BDWARAP4460, DUKHENGP03DWARAP5610, DUKHENGP03DWARAP5620, DUKHENGP2ADWARAP4850, DUKHENGP1ADWARAP4060, DUKHENGP1BDWARAP4450, DUKHENGP2BDWARAP5230, DUKHENGP1ADWARAP4050, DUKHPROGEN00MTAP2040 |  | 84d |
| DUKHPROGEN00PRDV3050 |  | Proc & Del Thermal Insulation | 59d | 2013-04-27 | 2013-06-24 | DUKHENGP2ADWARAP4870, DUKHENGP1ADWARAP4070, DUKHENGP03DWARAP5630, DUKHPROGEN00MTAP2050, DUKHENGP1BDWARAP4470, DUKHENGP2BDWARAP5250 |  | 125d |
| DUKHPROGEN00PRDV3080 |  | Proc & Del Polyethylene Pipes | 73d | 2013-04-27 | 2013-07-08 | DUKHENGP1ADWMEAP4210, DUKHENGP1BDWMEAP4610, DUKHENGP1BDWMEAP4620, DUKHENGP2ADWMEAP5020, DUKHENGP2BDWMEAP5400, DUKHPROGEN00MTAP2080, DUKHENGP1ADWMEAP4220, DUKHENGP2ADWMEAP5010, DUKHENGP2BDWMEAP5390, DUKHENGP03DWMEAP5770, DUKHENGP03DWMEAP5780 |  | 67d |
| DUKHPROGEN00PRDV3110 |  | Proc & Del Stone Cladding | 97d | 2013-04-27 | 2013-08-01 | DUKHENGP03DWARAP5610, DUKHENGP2BDWARAP5230, DUKHENGP1ADWARAP4050, DUKHPROGEN00MTAP2110, DUKHENGP2ADWARAP4850, DUKHENGP1BDWARAP4450 |  | 139d |
| DUKHPROGEN00PRDV3090 |  | Proc & Del Cobble stone finish | 120d | 2013-04-30 | 2013-08-27 | DUKHENGP2ADWARAP4900, DUKHENGP1ADWARAP4100, DUKHPROGEN00MTAP2090, DUKHENGP1BDWARAP4520, DUKHENGP2BDWARAP5280, DUKHENGP03DWARAP5660 |  | 96d |
| DUKHPROGEN00PRDV3100 |  | Proc & Del Slate Tile | 120d | 2013-04-30 | 2013-08-27 | DUKHENGP1ADWARAP4100, DUKHENGP03DWARAP5660, DUKHENGP1BDWARAP4520, DUKHPROGEN00MTAP2100, DUKHENGP2ADWARAP4900, DUKHENGP2BDWARAP5280 |  | 102d |
| DUKHPROGEN00PRDV3120 |  | Proc & Del Ceramic Tile | 120d | 2013-04-30 | 2013-08-27 | DUKHENGP03DWARAP5640, DUKHPROGEN00MTAP2120, DUKHENGP1BDWARAP4500, DUKHENGP2BDWARAP5260, DUKHENGP2ADWARAP4880, DUKHENGP1ADWARAP4080 |  | 49d |
| DUKHPROGEN00PRDV3130 |  | Proc & Del Porcelain Tile | 120d | 2013-04-30 | 2013-08-27 | DUKHENGP1BDWARAP4510, DUKHENGP2BDWARAP5270, DUKHENGP2ADWARAP4890, DUKHENGP03DWARAP5650, DUKHENGP1ADWARAP4090, DUKHPROGEN00MTAP2130 |  | 59d |
| DUKHPROGEN00PRDV3140 |  | Proc & Del Pitch roofing | 40d | 2013-05-14 | 2013-06-22 | DUKHENGP2ADWARAP4870, DUKHENGP1ADWARAP4070, DUKHENGP1BDWARAP4470, DUKHENGP03DWARAP5630, DUKHPROGEN00MTAP2140, DUKHENGP2BDWARAP5250 |  | 91d |
| DUKHPROGEN00PRDV3180 |  | Proc & Del Cables & Wires | 120d | 2013-06-28 | 2013-10-25 | DUKHENGP1ADWELAP4160, DUKHENGP1BDWELAP4560 FF, DUKHENGP2BDWELAP5340, DUKHPROGEN00MTAP1180, DUKHENGP2ADWELAP4960, DUKHENGP03DWELAP5720 |  | 1d |
| DUKHPROGEN00PRDV3520 |  | Proc & Del Lift Pump | 120d | 2013-07-17 | 2013-11-13 | DUKHENGP2ADWMEAP5020, DUKHENGP2ADWMEAP5010, DUKHENGP1ADWMEAP4220, DUKHENGP1BDWMEAP4610, DUKHENGP2BDWMEAP5400, DUKHENGP03DWMEAP5780, DUKHENGP1BDWMEAP4620, DUKHENGP1ADWMEAP4210, DUKHPROGEN00MTAP2520, DUKHENGP03DWMEAP5770, DUKHENGP2BDWMEAP5390 |  | 33d |

| ID | Task | Duration | Start | Finish | Predecessors | Total float |
| --- | --- | --- | --- | --- | --- | --- |
| DUKHPROGEN00PRDV3530 | Proc & Del Exhaust Fan | 90d | 2013-07-17 | 2013-10-14 | DUKHENGP2ADWMEAP5040, DUKHENGP1BDWMEAP4640, DUKHPROGEN00MTAP2530, DUKHENGP03DWMEAP5800, DUKHENGP1ADWMEAP4240, DUKHENGP2BDWMEAP5420 | 81d |
| DUKHPROGEN00PRDV3540 | Proc & Del Ductile Iron Pipes | 110d | 2013-07-17 | 2013-11-03 | DUKHENGI2BDWFFAP5440, DUKHPROGEN00MTAP2540, DUKHENGI1BDWFFAP4660, DUKHENGI2ADWFFAP5060, DUKHENGI1ADWFFAP4260, DUKHENGI03DWFFAP5820 | 12d |
| DUKHPROGEN00PRDV3630 | Proc & Del Steel Ladder | 90d | 2013-07-23 | 2013-10-20 | DUKHPROGEN00MTAP2630 | 45d |
| DUKHPROGEN00PRDV3660 | Proc & Del Interlock works | 40d | 2013-07-29 | 2013-09-06 | DUKHENGI1BDWIWAP4760, DUKHENGI03DWIWAP5920, DUKHPROGEN00MTAP2660, DUKHENGI1ADWIWAP4360, DUKHENGI2ADWIWAP5160, DUKHENGI2BDWIWAP5540 | 105d |
| DUKHPROGEN00PRDV3670 | Proc & Del Irrigation Pipes | 60d | 2013-07-29 | 2013-09-26 | DUKHENGI1BDWIRAP4710, DUKHPROGEN00MTAP2670, DUKHENGI1ADWIRAP4310, DUKHENGI2BDWIRAP5490, DUKHENGI03DWIRAP5870, DUKHENGI2ADWIRAP5110 | 94d |
| DUKHPROGEN00PRDV3640 | Proc & Del Water meter | 60d | 2013-08-04 | 2013-10-02 | DUKHENGP1ADWMEAP4220, DUKHENGP1BDWMEAP4610, DUKHENGP03DWMEAP5780, DUKHENGP1BDWMEAP4620, DUKHENGP2ADWMEAP5010, DUKHENGP2BDWMEAP5390, DUKHENGP1ADWMEAP4210, DUKHENGP2BDWMEAP5400, DUKHENGP03DWMEAP5770, DUKHPROGEN00MTAP2640, DUKHENGP2ADWMEAP5020 | 75d |
| DUKHPROGEN00PRDV3650 | Proc & Del Isolating Values | 90d | 2013-08-04 | 2013-11-01 | DUKHENGI1BDWFFAP4660, DUKHENGI03DWFFAP5820, DUKHENGI2ADWFFAP5060, DUKHPROGEN00MTAP2650, DUKHENGI2BDWFFAP5440, DUKHENGI1ADWFFAP4260 | 14d |
| DUKHPROGEN00PRDV3700 | Proc & Del Road Works Materials | 40d | 2013-08-14 | 2013-09-22 | DUKHENGI1BDWRWAP4750, DUKHENGI2ADWRWAP5150, DUKHPROGEN00MTAP2700, DUKHENGI03DWRWAP5910, DUKHENGI2BDWRWAP5530, DUKHENGI1ADWRWAP4350 | 230d |
| DUKHPROGEN00PRDV3710 | Proc & Del External signage | 60d | 2013-08-14 | 2013-10-12 | DUKHPROGEN00MTAP2710 | 210d |
| DUKHPROGEN00PRDV3720 | Proc & Del Road Marking | 60d | 2013-08-14 | 2013-10-12 | DUKHENGI2BDWRWAP5530, DUKHPROGEN00MTAP2720, DUKHENGI1ADWRWAP4350, DUKHENGI2ADWRWAP5150, DUKHENGI03DWRWAP5910, DUKHENGI1BDWRWAP4750 | 210d |
| DUKHPROGEN00PRDV3740 | Proc & Del Stone Boulders | 60d | 2013-08-14 | 2013-10-12 | DUKHPROGEN00MTAP2740 | 157d |
| DUKHPROGEN00PRDV3750 | Proc & Del Speed Humps | 60d | 2013-08-14 | 2013-10-12 | DUKHENGI2BDWRWAP5530, DUKHENGI2ADWRWAP5150, DUKHPROGEN00MTAP2750, DUKHENGI1ADWRWAP4350, DUKHENGI1BDWRWAP4750, DUKHENGI03DWRWAP5910 | 155d |
| DUKHPROGEN00PRDV3150 | Proc & Del Sanitary Fittings | 120d | 2013-08-18 | 2013-12-15 | DUKHENGP1ADWMEAP4220, DUKHENGP1ADWMEAP4210, DUKHENGP2BDWMEAP5390, DUKHENGP2ADWMEAP5020, DUKHENGP1BDWMEAP4620, DUKHENGP03DWMEAP5780, DUKHENGP2ADWMEAP5010, DUKHPROGEN00MTAP2150, DUKHENGP1BDWMEAP4610, DUKHENGP03DWMEAP5770, DUKHENGP2BDWMEAP5400 | -19d |
| DUKHPROGEN00PRDV3160 | Proc & Del Copper Pipes | 90d | 2013-08-18 | 2013-11-15 | DUKHPROGEN00MTAP2160, DUKHENGP2ADWMEAP5040, DUKHENGP1BDWMEAP4640, DUKHENGP03DWMEAP5800, DUKHENGP1ADWMEAP4240, DUKHENGP2BDWMEAP5420 | -16d |
| DUKHPROGEN00PRDV3170 | Proc & Del SMDB | 120d | 2013-08-18 | 2013-12-15 | DUKHENGP2ADWELAP4970, DUKHENGP03DWELAP5730, DUKHENGP1ADWELAP4170, DUKHENGP1BDWELAP4570, DUKHENGP1ADWELAP4150, DUKHENGP2BDWELAP5350, DUKHENGP1BDWELAP4550, DUKHENGP2BDWELAP5330, DUKHPROGEN00MTAP2170, DUKHENGP03DWELAP5710, DUKHENGP2ADWELAP4950 | 13d |
| DUKHPROGEN00PRDV3190 | Proc & Del Lights & Fixtures | 120d | 2013-08-18 | 2013-12-15 | DUKHENGP1BDWELAP4560 FF, DUKHENGP1ADWELAP4160, DUKHENGP2BDWELAP5340, DUKHPROGEN00MTAP2190, DUKHENGP03DWELAP5720, DUKHENGP2ADWELAP4960 | 26d |
| DUKHPROGEN00PRDV3200 | Proc & Del Isolators | 120d | 2013-08-18 | 2013-12-15 | DUKHENGP2ADWELAP4970, DUKHENGP1BDWELAP4570, DUKHENGP2BDWELAP5350, DUKHENGP03DWELAP5730, DUKHPROGEN00MTAP2200, DUKHENGP1ADWELAP4170 | 51d |
| DUKHPROGEN00PRDV3210 | Proc & Del Fire Resistant Cables | 90d | 2013-08-18 | 2013-11-15 | DUKHENGP03DWELAP5740, DUKHPROGEN00MTAP2210, DUKHENGP2ADWELAP4980, DUKHENGP1BDWELAP4580 FF, DUKHENGP2BDWELAP5360, DUKHENGP1ADWELAP4180 | 47d |
| DUKHPROGEN00PRDV3220 | Proc & Del Water Chiller | 120d | 2013-08-18 | 2013-12-15 | DUKHENGP1ADWMEAP4210, DUKHENGP1BDWMEAP4620, DUKHENGP2ADWMEAP5010, DUKHENGP1ADWMEAP4220, DUKHENGP2BDWMEAP5390, DUKHENGP2BDWMEAP5400, DUKHENGP03DWMEAP5770, DUKHENGP03DWMEAP5780, DUKHPROGEN00MTAP2220, DUKHENGP2ADWMEAP5020, DUKHENGP1BDWMEAP4610 | 1d |
| DUKHPROGEN00PRDV3230 | Proc & Del Water Heater | 90d | 2013-08-18 | 2013-11-15 | DUKHENGP1ADWMEAP4220, DUKHENGP03DWMEAP5780, DUKHENGP1BDWMEAP4610, DUKHENGP1BDWMEAP4620, DUKHENGP2ADWMEAP5020, DUKHENGP2BDWMEAP5390, DUKHENGP2BDWMEAP5400, DUKHENGP03DWMEAP5770, DUKHENGP1ADWMEAP4210, DUKHPROGEN00MTAP2230, DUKHENGP2ADWMEAP5010 | 11d |
| DUKHPROGEN00PRDV3240 | Proc & Del Split AC | 120d | 2013-08-18 | 2013-12-15 | DUKHENGP2ADWMEAP5040, DUKHENGP1ADWMEAP4240, DUKHPROGEN00MTAP2240, DUKHENGP1BDWMEAP4640, DUKHENGP2BDWMEAP5420, DUKHENGP03DWMEAP5800 | 40d |
| DUKHPROGEN00PRDV3260 | Proc & Del Smoke Detector | 90d | 2013-08-18 | 2013-11-15 | DUKHENGP1ADWELAP4180, DUKHENGP2BDWELAP5360, DUKHPROGEN00MTAP2260, DUKHENGP2ADWELAP4980, DUKHENGP03DWELAP5740, DUKHENGP1BDWELAP4580 FF | 47d |
| DUKHPROGEN00PRDV3270 | Proc & Del Video Com System | 120d | 2013-08-18 | 2013-12-15 | DUKHENGP2BDWELAP5370, DUKHENGP1BDWELAP4590, DUKHENGP2ADWELAP4990, DUKHPROGEN00MTAP2270, DUKHENGP1ADWELAP4190, DUKHENGP03DWELAP5750 | 24d |
| DUKHPROGEN00PRDV3280 | Proc & Del Telephone Fittings & Accessories | 120d | 2013-08-18 | 2013-12-15 | DUKHENGP2BDWELAP5380, DUKHENGP03DWELAP5760, DUKHENGP1BDWELAP4600, DUKHPROGEN00MTAP2280, DUKHENGP2ADWELAP5000, DUKHENGP1ADWELAP4200 | 24d |
| DUKHPROGEN00PRDV3290 | Proc & Del Television devices,Fit. & Access. | 120d | 2013-08-18 | 2013-12-15 | DUKHPROGEN00MTAP2290, DUKHENGP2BDWELAP5380, DUKHENGP2ADWELAP5000, DUKHENGP1ADWELAP4200, DUKHENGP1BDWELAP4600, DUKHENGP03DWELAP5760 | 58d |
| DUKHPROGEN00PRDV3300 | Proc & Del Gypsum Board false ceiling | 110d | 2013-08-18 | 2013-12-05 | DUKHENGP2BDWARAP5290, DUKHENGP2ADWARAP4910, DUKHENGP03DWARAP5670, DUKHPROGEN00MTAP2300, DUKHENGP1BDWARAP4480, DUKHENGP1ADWARAP4110 | -26d |
| DUKHPROGEN00PRDV3310 | Proc & Del Aluminum Tile false ceiling | 120d | 2013-08-18 | 2013-12-15 | DUKHENGP03DWARAP5680, DUKHPROGEN00MTAP2310, DUKHENGP1ADWARAP4120, DUKHENGP1BDWARAP4490 | -5d |
| DUKHPROGEN00PRDV3320 | Proc & Del Paints | 90d | 2013-08-18 | 2013-11-15 | DUKHPROGEN00MTAP2320, DUKHENGP2ADWARAP4850, DUKHENGP1BDWARAP4450, DUKHENGP2BDWARAP5230, DUKHENGP03DWARAP5610, DUKHENGP1ADWARAP4050 | -40d |
| DUKHPROGEN00PRDV3330 | Proc & Del Booster Pump | 120d | 2013-08-18 | 2013-12-15 | DUKHENGP1BDWMEAP4620, DUKHENGP2BDWMEAP5400, DUKHENGP2ADWMEAP5010, DUKHENGP2BDWMEAP5390, DUKHPROGEN00MTAP2330, DUKHENGP1BDWMEAP4610, DUKHENGP2ADWMEAP5020, DUKHENGP1ADWMEAP4210, DUKHENGP1ADWMEAP4220, DUKHENGP03DWMEAP5770, DUKHENGP03DWMEAP5780 | 1d |
| DUKHPROGEN00PRDV3340 | Proc & Del Exhaust Air louver | 90d | 2013-08-18 | 2013-11-15 | DUKHPROGEN00MTAP2340, DUKHENGP1ADWMEAP4240, DUKHENGP03DWMEAP5800, DUKHENGP2BDWMEAP5420, DUKHENGP2ADWMEAP5040, DUKHENGP1BDWMEAP4640 | 49d |
| DUKHPROGEN00PRDV3350 | Proc & Del Bollard Lamp | 120d | 2013-08-18 | 2013-12-15 | DUKHENGI03DWELAP5840, DUKHENGI03DWSTAP5850, DUKHENGI2ADWSTAP5090, DUKHENGI1BDWELAP4680, DUKHENGI1ADWELAP4280, DUKHENGI1BDWSTAP4690, DUKHENGI2BDWSTAP5470, DUKHENGI2ADWELAP5080, DUKHPROGEN00MTAP2350, DUKHENGI1ADWSTAP4290, DUKHENGI2BDWELAP5460 | 91d |
| DUKHPROGEN00PRDV3360 | Proc & Del Digital Alarm Communicator Panel | 120d | 2013-08-18 | 2013-12-15 | DUKHENGP1ADWELAP4180, DUKHENGP03DWELAP5740, DUKHPROGEN00MTAP2360, DUKHENGP2BDWELAP5360, DUKHENGP2ADWELAP4980, DUKHENGP1BDWELAP4580 FF | 17d |
| DUKHPROGEN00PRDV3370 | Proc & Del Fire Blanket | 60d | 2013-08-18 | 2013-10-16 | DUKHENGP1BDWMEAP4630, DUKHENGP1ADWMEAP4230, DUKHPROGEN00MTAP2370, DUKHENGP2ADWMEAP5030, DUKHENGP2BDWMEAP5410, DUKHENGP03DWMEAP5790 | 77d |
| DUKHPROGEN00PRDV3380 | Proc & Del Fire Extinguisher | 70d | 2013-08-18 | 2013-10-26 | DUKHENGP1BDWMEAP4630, DUKHENGP2ADWMEAP5030, DUKHENGP03DWMEAP5790, DUKHPROGEN00MTAP2380, DUKHENGP1ADWMEAP4230, DUKHENGP2BDWMEAP5410 | 67d |
| DUKHPROGEN00PRDV3390 | Proc & Del GRC Panels | 90d | 2013-08-18 | 2013-11-15 | DUKHPROGEN00MTAP2390 | 26d |
| DUKHPROGEN00PRDV3400 | Proc & Del Access Ladder | 90d | 2013-08-18 | 2013-11-15 | DUKHPROGEN00MTAP2400 | 46d |
| DUKHPROGEN00PRDV3410 | Proc & Del Aluminium Slat Screen | 120d | 2013-08-18 | 2013-12-15 | DUKHPROGEN00MTAP2410 | 35d |
| DUKHPROGEN00PRDV3420 | Proc & Del Epoxy | 40d | 2013-08-18 | 2013-09-26 | DUKHENGP1BDWARAP4450, DUKHENGP03DWARAP5610, DUKHPROGEN00MTAP2420, DUKHENGP2ADWARAP4850, DUKHENGP1ADWARAP4050, DUKHENGP2BDWARAP5230 | 129d |
| DUKHPROGEN00PRDV3430 | Proc & Del Roller Shutter | 120d | 2013-08-18 | 2013-12-15 | DUKHPROGEN00MTAP2430 | 201d |
| DUKHPROGEN00PRDV3440 | Proc & Del PVC Doors | 90d | 2013-08-18 | 2013-11-15 | DUKHENGP2ADWARAP4930, DUKHPROGEN00MTAP2440, DUKHENGP1ADWARAP4130, DUKHENGP1BDWARAP4530, DUKHENGP2BDWARAP5310, DUKHENGP03DWARAP5690 | 53d |
| DUKHPROGEN00PRDV3450 | Proc & Del Ironmogeries | 120d | 2013-08-18 | 2013-12-15 | DUKHENGP1ADWARAP4130, DUKHENGP2ADWARAP4930, DUKHPROGEN00MTAP2450, DUKHENGP2BDWARAP5310, DUKHENGP03DWARAP5690, DUKHENGP1BDWARAP4530 | -27d |
| DUKHPROGEN00PRDV3460 | Proc & Del Aluminum Doors | 120d | 2013-08-18 | 2013-12-15 | DUKHENGP2ADWARAP4930, DUKHENGP2BDWARAP5310, DUKHENGP1ADWARAP4130, DUKHENGP1BDWARAP4530, DUKHPROGEN00MTAP2460, DUKHENGP03DWARAP5690 | 22d |
| DUKHPROGEN00PRDV3470 | Proc & Del Aluminum Windows | 120d | 2013-08-18 | 2013-12-15 | DUKHPROGEN00MTAP2470, DUKHENGP1BDWARAP4530, DUKHENGP03DWARAP5690, DUKHENGP1ADWARAP4130, DUKHENGP2BDWARAP5310, DUKHENGP2ADWARAP4930 | 29d |
| DUKHPROGEN00PRDV3480 | Proc & Del Granite | 120d | 2013-08-18 | 2013-12-15 | DUKHENGP2ADWARAP4850, DUKHENGP1ADWARAP4050, DUKHENGP1BDWARAP4450, DUKHPROGEN00MTAP2480, DUKHENGP2BDWARAP5230, DUKHENGP03DWARAP5610 | 0d |
| DUKHPROGEN00PRDV3490 | Proc & Del Wooden Doors | 120d | 2013-08-18 | 2013-12-15 | DUKHENGP2ADWARAP4930, DUKHENGP1BDWARAP4530, DUKHENGP1ADWARAP4130, DUKHENGP2BDWARAP5310, DUKHPROGEN00MTAP2490, DUKHENGP03DWARAP5690 | -27d |
| DUKHPROGEN00PRDV3500 | Proc & Del Steel Door | 120d | 2013-08-18 | 2013-12-15 | DUKHPROGEN00MTAP2500 | -16d |
| DUKHPROGEN00PRDV3510 | Proc & Del Stainless Steel Cover | 120d | 2013-08-18 | 2013-12-15 | DUKHPROGEN00MTAP2510 | -16d |
| DUKHPROGEN00PRDV3550 | Proc & Del Closets /wardrobe& Pelmets | 120d | 2013-08-18 | 2013-12-15 | DUKHPROGEN00MTAP2550, DUKHENGP2ADWARAP4940, DUKHENGP03DWARAP5700, DUKHENGP2BDWARAP5320, DUKHENGP1ADWARAP4140, DUKHENGP1BDWARAP4540 | 20d |
| DUKHPROGEN00PRDV3560 | Proc & Del Counters, Cabinets & Shelves | 120d | 2013-08-18 | 2013-12-15 | DUKHENGP03DWARAP5700, DUKHENGP1ADWARAP4140, DUKHENGP2ADWARAP4940, DUKHENGP1BDWARAP4540, DUKHENGP2BDWARAP5320, DUKHPROGEN00MTAP2560 | 20d |
| DUKHPROGEN00PRDV3570 | Proc & Del Wooden Hand Rails | 100d | 2013-08-18 | 2013-11-25 | DUKHPROGEN00MTAP2570, DUKHENGP2BDWARAP5320, DUKHENGP1BDWARAP4540, DUKHENGP03DWARAP5700, DUKHENGP1ADWARAP4140, DUKHENGP2ADWARAP4940 | 40d |
| DUKHPROGEN00PRDV3580 | Proc & Del Stainless Steel Handrail | 120d | 2013-08-18 | 2013-12-15 | DUKHPROGEN00MTAP2580 | 41d |
| DUKHPROGEN00PRDV3590 | Proc & Del Manhole Covers and Frames | 90d | 2013-08-18 | 2013-11-15 | DUKHENGI2ADWWSAP5070, DUKHENGI2ADWIWAP5160, DUKHENGI1ADWIWAP4360, DUKHENGI1BDWDRAP4650, DUKHENGI1BDWIWAP4760, DUKHENGI2BDWWSAP5450, DUKHENGI1ADWWSAP4270, DUKHENGI03DWWSAP5830, DUKHENGI1ADWDRAP4250, DUKHENGI03DWDRAP5810, DUKHENGI2BDWDRAP5430, DUKHPROGEN00MTAP2590, DUKHENGI03DWIWAP5920, DUKHENGI2ADWDRAP5050, DUKHENGI1BDWWSAP4670, DUKHENGI2BDWIWAP5540 | 31d |
| DUKHPROGEN00PRDV3600 | Proc & Del kerb works | 40d | 2013-08-18 | 2013-09-26 | DUKHPROGEN00MTAP2600 | 57d |
| DUKHPROGEN00PRDV3610 | Proc & Del PVC Tent | 110d | 2013-08-18 | 2013-12-05 | DUKHPROGEN00MTAP2610 | -6d |
| DUKHPROGEN00PRDV3620 | Proc & Del Strutural Steel | 120d | 2013-08-18 | 2013-12-15 | DUKHPROGEN00MTAP2620 | -11d |
| DUKHPROGEN00PRDV3730 | Proc & Del Car Parking Shed | 90d | 2013-08-19 | 2013-11-16 | DUKHPROGEN00MTAP2730, DUKHENGI2ADWPSAP5140, DUKHENGI1ADWPSAP4340, DUKHENGI1BDWPSAP4740, DUKHENGI03DWPSAP5900, DUKHENGI2BDWPSAP5520 | 151d |
| DUKHPROGEN00PRDV3760 | Proc & Del Sprinklers | 60d | 2013-08-19 | 2013-10-17 | DUKHPROGEN00MTAP2760, DUKHENGI2ADWIRAP5110, DUKHENGI03DWIRAP5870, DUKHENGI2BDWIRAP5490, DUKHENGI1ADWIRAP4310, DUKHENGI1BDWIRAP4710 | 164d |
| DUKHPROGEN00PRDV3680 | Proc & Del Water Tank | 60d | 2013-08-25 | 2013-10-23 | DUKHENGP2ADWMEAP5020, DUKHENGP2ADWMEAP5010, DUKHENGP1ADWMEAP4220, DUKHENGP2BDWMEAP5390, DUKHENGP03DWMEAP5780, DUKHENGP2BDWMEAP5400, DUKHENGP03DWMEAP5770, DUKHENGP1ADWMEAP4210, DUKHPROGEN00MTAP2680, DUKHENGP1BDWMEAP4620, DUKHENGP1BDWMEAP4610 | 54d |
| DUKHPROGEN00PRDV3690 | Proc & Del Fire Hydrant | 100d | 2013-08-25 | 2013-12-02 | DUKHENGI2BDWFFAP5440, DUKHENGI1ADWFFAP4260, DUKHENGI03DWFFAP5820, DUKHENGI2ADWFFAP5060, DUKHPROGEN00MTAP2690, DUKHENGI1BDWFFAP4660 | 23d |
| DUKHPROGEN00PRDV3250 | Proc & Del Street Light Post Set | 120d | 2013-08-30 | 2013-12-27 | DUKHENGI2ADWTCAP5100, DUKHENGI03DWELAP5840, DUKHPROGEN00MTAP2250, DUKHENGI2ADWSTAP5090, DUKHENGI1ADWELAP4280, DUKHENGI2BDWTCAP5480, DUKHENGI03DWTCAP5860, DUKHENGI1BDWELAP4680, DUKHENGI1BDWTCAP4700, DUKHENGI03DWSTAP5850, DUKHENGI2ADWELAP5080, DUKHENGI1ADWTCAP4300, DUKHENGI2BDWELAP5460, DUKHENGI2BDWSTAP5470, DUKHENGI1ADWSTAP4290, DUKHENGI1BDWSTAP4690 | 79d |
| DUKHPROGEN00PRDV3790 | Proc & Del Plantation(Grass,Trees) | 90d | 2013-09-01 | 2013-11-29 | DUKHPROGEN00MTAP2790, DUKHENGI1BDWSLAP4720, DUKHENGI2BDWSLAP5500, DUKHENGI03DWSLAP5880, DUKHENGI1ADWSLAP4320, DUKHENGI2ADWSLAP5120 | 30d |
| DUKHPROGEN00PRDV3800 | Proc & Del Steel Gate & Barrier gates | 90d | 2013-09-05 | 2013-12-03 | DUKHPROGEN00MTAP2800 | 76d |
| DUKHPROGEN00PRDV3810 | Proc & Del Nozzle Jet | 90d | 2013-09-05 | 2013-12-03 | DUKHENGI2ADWIRAP5110, DUKHENGI2BDWIRAP5490, DUKHENGI03DWIRAP5870, DUKHPROGEN00MTAP2810, DUKHENGI1ADWIRAP4310, DUKHENGI1BDWIRAP4710 | 117d |
| DUKHPROGEN00PRDV3820 | Proc & Del Pre-cast Boundry Wall | 100d | 2013-09-05 | 2013-12-13 | DUKHENGI2ADWBWAP5130, DUKHENGI1BDWBWAP4730, DUKHENGI2BDWBWAP5510, DUKHPROGEN00MTAP2820, DUKHENGI1ADWBWAP4330, DUKHENGI03DWBWAP5890 | 49d |
| DUKHPROGEN00PRDV3780 | Proc & Del Gazebo Structure | 120d | 2013-09-08 | 2014-01-05 | DUKHENGI1ADWGZAP4380, DUKHENGI2ADWGZAP5170, DUKHPROGEN00MTAP2780, DUKHENGI1BDWGZAP4780, DUKHENGI03DWGZAP5940, DUKHENGI2BDWGZAP5550 | 78d |
| DUKHPROGEN00PRDV3770 | Proc & Del Kitchen Water Filter | 60d | 2013-09-11 | 2013-11-09 | DUKHENGP1ADWMEAP4210, DUKHENGP03DWMEAP5780, DUKHPROGEN00MTAP2770, DUKHENGP2BDWMEAP5400, DUKHENGP2ADWMEAP5010, DUKHENGP1BDWMEAP4620, DUKHENGP1ADWMEAP4220, DUKHENGP03DWMEAP5770, DUKHENGP2BDWMEAP5390, DUKHENGP2ADWMEAP5020, DUKHENGP1BDWMEAP4610 | 17d |
| DUKHPROGEN00PRDV3830 | Proc & Del Solenoid Values | 90d | 2013-09-23 | 2013-12-21 | DUKHENGI2ADWIRAP5110, DUKHENGI03DWIRAP5870, DUKHENGI1ADWIRAP4310, DUKHENGI1BDWIRAP4710, DUKHPROGEN00MTAP2830, DUKHENGI2BDWIRAP5490 | 99d |
| DUKHPROGEN00PRDV3850 | Proc & Del Fences | 90d | 2013-09-23 | 2013-12-21 | DUKHPROGEN00MTAP2850 | 151d |
| DUKHPROGEN00PRDV3840 | Proc & Del Gate Values | 90d | 2013-10-10 | 2014-01-07 | DUKHENGI03DWIRAP5870, DUKHENGI1ADWIRAP4310, DUKHENGI2BDWIRAP5490, DUKHENGI2ADWIRAP5110, DUKHPROGEN00MTAP2840, DUKHENGI1BDWIRAP4710 | 82d |
| DUKHPROGEN00PRDV3860 | Proc & Del Remote Control Value | 90d | 2013-10-30 | 2014-01-27 | DUKHPROGEN00MTAP2860, DUKHENGI2BDWIRAP5490, DUKHENGI1ADWIRAP4310, DUKHENGI1BDWIRAP4710, DUKHENGI03DWIRAP5870, DUKHENGI2ADWIRAP5110 | 62d |

| ID | WBS | Task | Duration | Start | Finish | Predecessors | Complete | Total float |
| --- | --- | --- | --- | --- | --- | --- | --- | --- |
| DUKHPROGEN00PRDV3870 |  | Proc & Del Irrigation Controller | 90d | 2013-11-17 | 2014-02-14 | DUKHENGI03DWIRAP5870, DUKHENGI2ADWIRAP5110, DUKHENGI1ADWIRAP4310, DUKHENGI1BDWIRAP4710, DUKHENGI2BDWIRAP5490, DUKHPROGEN00MTAP2870 |  | 44d |
|  | K30 | **CONSTRUCTION** |  | 2012-11-10 | 2015-01-19 |  |  |  |
|  | L15 | **PACKAGE-1A** |  | 2012-11-10 | 2015-01-12 |  |  |  |
|  | 03 | **SITE PREPARATORY WORKS** |  | 2012-11-10 | 2013-02-13 |  |  |  |
| DUKHCONP1AGNSP002000 |  | Scanning for Existing Services for rerouting | 16d | 2012-11-10 A | 2012-11-27 A | DUKHMOBP010000004000 SS+7d | 100% |  |
| DUKHCONP1AGNSP003000 |  | Site stripping | 20d | 2012-11-17 A | 2012-12-09 A | DUKHCONP1AGNSP002000 SS+6d | 100% |  |
| DUKHCONP1AGNSP004000 |  | Demolition of Existing building & landscaping | 20d | 2012-11-22 A | 2012-12-15 A | DUKHCONP1AGNSP003000 SS+5d | 100% |  |
| DUKHCONP1AGNSP005000 |  | Demolition of existing services works | 20d | 2012-11-28 A | 2012-12-20 A | DUKHCONP1AGNSP004000 SS+5d | 100% |  |
| DUKHCONP1AGNSP001000 |  | Survey works, | 20d | 2012-12-01 A | 2012-12-24 A | DUKHMOBP010000004000 | 100% |  |
| DUKHCONP1AGNSP002100 |  | Submission of Scanning Reports | 5d | 2012-12-01 A | 2012-12-05 A | DUKHCONP1AGNSP002000 | 100% |  |
| DUKHCONP1AGNSP002200 |  | Information Required for Rerouting | 12d | 2012-12-06 A | 2012-12-20 A | DUKHCONP1AGNSP002100 | 100% |  |
| DUKHCONP1AGNSP002300 |  | Preparation & Submission for new Layout for rerouting | 7d | 2012-12-22 A | 2012-12-29 A | DUKHCONP1AGNSP002200 | 100% |  |
| DUKHCONP1AGNSP002400 |  | Approval for new Layout for rerouting | 14d | 2012-12-30 A | 2013-01-14 A | DUKHCONP1AGNSP002300 | 100% |  |
| DUKHCONP1AGNSP002500 |  | Rerouting Works | 25d | 2013-01-15 A | 2013-02-13 A | DUKHCONP1AGNSP002400 | 100% |  |
|  | 05 | **MOCK UP VILLA** |  | 2013-10-01 | 2014-03-09 |  |  |  |
|  | 15 | **FINISHING WORKS** |  | 2013-10-01 | 2014-02-19 |  |  |  |
|  | 10 | **INTERNAL FINISHES** |  | 2013-10-01 | 2014-02-19 |  |  |  |
|  | 10 | **GROUND FLOOR** |  | 2013-10-01 | 2014-02-02 |  |  |  |
| DUKHCONP1AMKARGF3000 |  | Block work | 6d | 2013-10-01 | 2013-10-07 | DUKHCONP1AZ1STGF2015 FF+5d, DUKHCONP1AZ1STGF2015 SS+21d |  | -6d |
| DUKHCONP1AMKARGF3005 |  | Plastering work | 7d | 2013-10-14 | 2013-10-23 | DUKHPROGEN00PRDV3040, DUKHCONP1AMKARGF3000, DUKHCONP1AMKELGF4000 |  | 1d |
| DUKHCONP1AMKARGF3010 |  | Flooring screed | 7d | 2013-10-20 | 2013-10-27 | DUKHCONP1AMKARGF3005 SS+3d |  | 10d |
| DUKHCONP1AMKARGF3015 |  | Wet area waterproofing & Protection Screed | 5d | 2013-10-23 | 2013-10-28 | DUKHCONP1AMKARGF3005 FF+3d, DUKHCONP1AMKARGF3010 SS+3d |  | 10d |
| DUKHCONP1AMKARGF3020 |  | Ceramic Wall Tiling | 6d | 2013-10-29 | 2013-11-04 | DUKHCONP1AMKARGF3015, DUKHPROGEN00PRDV3120, DUKHCONP1AMKPLGF4310 |  | 10d |
| DUKHCONP1AMKARGF3025 |  | Porcelain Tile flooring | 6d | 2013-11-05 | 2013-11-11 | DUKHPROGEN00PRDV3130, DUKHCONP1AMKARGF3010, DUKHCONP1AMKARGF3020 |  | 10d |
| DUKHCONP1AMKARGF3040 |  | Cobble Tile flooring | 5d | 2013-11-12 | 2013-11-17 | DUKHPROGEN00PRDV3090, DUKHCONP1AMKARGF3010, DUKHCONP1AMKARGF3025 |  | 22d |
| DUKHCONP1AMKARGF3030 |  | Paint First coat | 5d | 2013-11-16 | 2013-11-20 | DUKHPROGEN00PRDV3320, DUKHCONP1AMKARGF3005 SS+14d |  | 5d |
| DUKHCONP1AMKARGF3035 |  | Slate Tile Flooring & Skirting | 5d | 2013-11-18 | 2013-11-23 | DUKHCONP1AMKARGF3040, DUKHPROGEN00PRDV3100, DUKHCONP1AMKARGF3010 |  | 22d |
| DUKHCONP1AMKARGF3045 |  | Fixing of Suspension systems | 7d | 2013-11-21 | 2013-11-28 | DUKHCONP1AMKARGF3030, DUKHCONP1AMKELGF4010, DUKHCONP1AMKARGF3025 |  | 10d |
| DUKHCONP1AMKARGF3060 |  | Gypsum board false ceiling | 7d | 2013-12-07 | 2013-12-14 | DUKHCONP1AMKARGF3045, DUKHCONP1AMKACGF4600, DUKHPROGEN00PRDV3300 |  | 7d |
| DUKHCONP1AMKARGF3050 |  | Granite - Stair case flooring & Skirting | 7d | 2013-12-16 | 2013-12-24 | DUKHCONP1AMKARGF3025, DUKHCONP1AMKARGF3040, DUKHPROGEN00PRDV3480 |  | 7d |
| DUKHCONP1AMKARGF3055 |  | Aluminum tile false ceiling | 7d | 2013-12-16 | 2013-12-24 | DUKHPROGEN00PRDV3310, DUKHCONP1AMKACGF4600, DUKHCONP1AMKARGF3045 |  | -1d |
| DUKHCONP1AMKARGF3065 |  | Wooden door & PVC Door | 5d | 2013-12-25 | 2013-12-30 | DUKHPROGEN00PRDV3490, DUKHCONP1AMKARGF3050, DUKHCONP1AMKARGF3060, DUKHPROGEN00PRDV3450, DUKHCONP1AMKARGF3055 |  | 9d |
| DUKHCONP1AMKARGF3070 |  | Aluminum doors | 5d | 2013-12-31 | 2014-01-05 | DUKHPROGEN00PRDV3460, DUKHPROGEN00PRDV3440, DUKHCONP1AMKARGF3065 |  | 9d |
| DUKHCONP1AMKARGF3075 |  | Carpentry & Joinery Works | 10d | 2014-01-06 | 2014-01-16 | DUKHPROGEN00PRDV3560, DUKHPROGEN00PRDV3550, DUKHPROGEN00PRDV3570, DUKHCONP1AMKARGF3070 |  | 9d |
| DUKHCONP1AMKARGF3080 |  | Aluminum windows | 5d | 2014-01-06 | 2014-01-11 | DUKHCONP1AMKARGF3070, DUKHPROGEN00PRDV3470 |  | 25d |
| DUKHCONP1AMKARGF3085 |  | S.S.Handrails & Balustrade | 7d | 2014-01-18 | 2014-01-25 | DUKHCONP1AMKARGF3075, DUKHCONP1AMKARGF3050 |  | 14d |
| DUKHCONP1AMKARGF3090 |  | Installation of Granite Counter Top | 7d | 2014-01-18 | 2014-01-25 | DUKHCONP1AMKARGF3075 |  | 13d |
| DUKHCONP1AMKARGF3095 |  | Final Painting | 7d | 2014-01-26 | 2014-02-02 | DUKHPROGEN00PRDV3420, DUKHCONP1AMKARGF3030, DUKHCONP1AMKARGF3035, DUKHCONP1AMKARGF3040, DUKHCONP1AMKARGF3085, DUKHCONP1AMKARGF3060, DUKHCONP1AMKARGF3080, DUKHCONP1AMKARGF3070, DUKHCONP1AMKARGF3090 |  | 14d |
|  | 15 | **FIRST FLOORS** |  | 2013-11-14 | 2014-02-19 |  |  |  |
| DUKHCONP1AMKARFF3300 |  | Block work | 6d | 2013-11-14 | 2013-11-20 | DUKHENGP2BDWARAP5230, DUKHENGP03DWARAP5610, DUKHENGP1ADWARAP4050, DUKHENGP1BDWARAP4450, DUKHENGP2ADWARAP4850, DUKHPROGEN00PRDV3010, DUKHCONP1AZ1STFF2035 SS+21d |  | -24d |
| DUKHCONP1AMKARFF3305 |  | Plastering work | 7d | 2013-11-27 | 2013-12-04 | DUKHCONP1AMKARFF3300, DUKHCONP1AMKELFF4035, DUKHPROGEN00PRDV3040 |  | -16d |
| DUKHCONP1AMKARFF3310 |  | Flooring screed | 7d | 2013-12-01 | 2013-12-08 | DUKHCONP1AMKARFF3305 SS+3d |  | -3d |
| DUKHCONP1AMKARFF3315 |  | Wet area waterproofing & Protection Screed | 5d | 2013-12-04 | 2013-12-09 | DUKHCONP1AMKARFF3310 SS+3d, DUKHCONP1AMKARFF3305 FF+3d |  | -3d |
| DUKHCONP1AMKARFF3320 |  | Ceramic Wall Tiling | 6d | 2013-12-10 | 2013-12-16 | DUKHCONP1AMKPLFF4325, DUKHCONP1AMKARFF3315, DUKHPROGEN00PRDV3120, DUKHCONP1AMKPLFF4330 |  | -3d |
| DUKHCONP1AMKARFF3330 |  | Paint First coat | 5d | 2013-12-14 | 2013-12-19 | DUKHCONP1AMKARFF3305 SS+14d, DUKHPROGEN00PRDV3320 |  | 0d |
| DUKHCONP1AMKARFF3325 |  | Porcelain Tile flooring | 6d | 2013-12-17 | 2013-12-24 | DUKHCONP1AMKARFF3310, DUKHPROGEN00PRDV3130, DUKHCONP1AMKARFF3320 |  | -3d |
| DUKHCONP1AMKARFF3335 |  | Slate Tile Flooring & Skirting | 5d | 2013-12-25 | 2013-12-30 | DUKHCONP1AMKARFF3325, DUKHPROGEN00PRDV3100, DUKHCONP1AMKARFF3310 |  | 15d |
| DUKHCONP1AMKARFF3345 |  | Fixing of Suspension systems | 7d | 2013-12-25 | 2014-01-01 | DUKHCONP1AMKARFF3325, DUKHCONP1AMKELFF4045, DUKHCONP1AMKARFF3330 |  | -2d |
| DUKHCONP1AMKARFF3350 |  | Granite - Stair case flooring & Skirting | 7d | 2013-12-25 | 2014-01-01 | DUKHPROGEN00PRDV3480, DUKHCONP1AMKARFF3325, DUKHCONP1AMKARFF3310 |  | 5d |
| DUKHCONP1AMKARFF3360 |  | Gypsum board false ceiling | 7d | 2014-01-02 | 2014-01-09 | DUKHPROGEN00PRDV3300, DUKHCONP1AMKARFF3345, DUKHCONP1AMKACFF4615 |  | -2d |
| DUKHCONP1AMKARFF3365 |  | Wooden door | 5d | 2014-01-11 | 2014-01-15 | DUKHPROGEN00PRDV3490, DUKHPROGEN00PRDV3450, DUKHCONP1AMKARFF3350, DUKHCONP1AMKARFF3360 |  | -2d |
| DUKHCONP1AMKARFF3370 |  | Aluminum doors | 5d | 2014-01-16 | 2014-01-21 | DUKHCONP1AMKARFF3365, DUKHPROGEN00PRDV3460 |  | -2d |
| DUKHCONP1AMKARFF3375 |  | Carpentry & Joinery Works | 10d | 2014-01-22 | 2014-02-02 | DUKHPROGEN00PRDV3560, DUKHPROGEN00PRDV3550, DUKHCONP1AMKARFF3370 |  | -2d |
| DUKHCONP1AMKARFF3380 |  | Aluminum windows | 5d | 2014-01-22 | 2014-01-27 | DUKHPROGEN00PRDV3470, DUKHCONP1AMKARFF3370 |  | 9d |
| DUKHCONP1AMKARFF3385 |  | S.S.Handrails & Balustrade | 7d | 2014-02-03 | 2014-02-10 | DUKHPROGEN00PRDV3570, DUKHCONP1AMKARFF3375, DUKHCONP1AMKARFF3350, DUKHPROGEN00PRDV3580 |  | 0d |
| DUKHCONP1AMKARFF3390 |  | Installation of Granite Counter Top | 7d | 2014-02-03 | 2014-02-10 | DUKHCONP1AMKARFF3375 |  | 0d |
| DUKHCONP1AMKARFF3395 |  | Final Painting | 7d | 2014-02-12 | 2014-02-19 | DUKHCONP1AMKARFF3390, DUKHCONP1AMKARFF3325, DUKHCONP1AMKARFF3335, DUKHCONP1AMKARFF3385, DUKHCONP1AMKARFF3310, DUKHCONP1AMKARRF3620 FF+8d, DUKHCONP1AMKARFF3370, DUKHCONP1AMKARFF3330, DUKHCONP1AMKARFF3380, DUKHCONP1AMKARFF3360 |  | 0d |
|  | 20 | **ROOF** |  | 2013-10-21 | 2013-11-21 |  |  |  |
| DUKHCONP1AMKARRF3600 |  | Block work | 6d | 2013-10-21 | 2013-10-27 | DUKHCONP1AZ1STGF2015 FS+21d |  | 12d |
| DUKHCONP1AMKARRF3605 |  | Plastering work | 6d | 2013-10-24 | 2013-10-30 | DUKHCONP1AMKARRF3600 FF+3d, DUKHCONP1AMKARRF3600 SS+3d |  | 12d |
| DUKHCONP1AMKARRF3610 |  | Flooring screed | 6d | 2013-10-31 | 2013-11-06 | DUKHCONP1AMKARRF3605 |  | 68d |
| DUKHCONP1AMKARRF3695 |  | Painting -Storage area | 6d | 2013-11-09 | 2013-11-14 | DUKHCONP1AMKARRF3605 FS+7d |  | 67d |
| DUKHCONP1AMKARRF3620 |  | Epoxy Painting -Storage area | 6d | 2013-11-16 | 2013-11-21 | DUKHPROGEN00PRDV3420, DUKHCONP1AMKARRF3695 |  | 67d |
|  | 15 | **EXTERNAL FINISHES** |  | 2013-12-02 | 2014-01-13 |  |  |  |
|  | 10 | **ROOF** |  | 2013-12-02 | 2014-01-04 |  |  |  |
| DUKHCONP1AMKARRF3630 |  | Leveling Screed for Waterproofing | 2d | 2013-12-02 | 2013-12-03 | DUKHCONP1AZ1STRF2055 SS+10d, DUKHCONP1AZ1STRF2065 SS+7d, DUKHCONP1AZ1STRF2060 SS+10d, DUKHCONP1AMKARRF3605 |  | -15d |
| DUKHCONP1AMKARRF3635 |  | Laying of Waterproofing Membrane | 4d | 2013-12-04 | 2013-12-08 | DUKHCONP1AMKARRF3630 |  | -15d |
| DUKHCONP1AMKARRF3640 |  | Installation of Insulation & Protection | 4d | 2013-12-09 | 2013-12-12 | DUKHCONP1AMKARRF3635 |  | -15d |
| DUKHCONP1AMKARRF3645 |  | Lime Stone Chips & Paving slab Installation | 2d | 2013-12-14 | 2013-12-15 | DUKHCONP1AMKARRF3640 |  | -15d |
| DUKHCONP1AMKARRF3650 |  | Install. of Gal. Frame & Aluminum Slat Screen | 5d | 2013-12-16 | 2013-12-22 | DUKHCONP1AMKARRF3645, DUKHPROGEN00PRDV3410 |  | 31d |

| ID | WBS | Task | Duration | Start | Finish | Predecessors | Total float |
| --- | --- | --- | --- | --- | --- | --- | --- |
| DUKHCONP1AMKARRF3655 |  | Installation of Pumps Protection cabinets | 5d | 2013-12-23 | 2013-12-28 | DUKHCONP1AMKARRF3650, DUKHCONP1AMKARRF3645 | 31d |
| DUKHCONP1AMKARRF3660 |  | Installation of Access Ladder | 6d | 2013-12-29 | 2014-01-04 | DUKHCONP1AMKARRF3655, DUKHPROGEN00PRDV3400, DUKHCONP1AMKARRF3620 | 49d |
|  | 15 | **ELEVATION** |  | 2013-12-16 | 2014-01-13 |  |  |
| DUKHCONP1AMKAREL3665 |  | External Plastering | 10d | 2013-12-16 | 2013-12-28 | DUKHCONP1AMKARRF3645, DUKHCONP1AZ1STRF2060 SS+10d, DUKHCONP1AMKARRF3605 | -8d |
| DUKHCONP1AMKAREL3670 |  | External stone cladding works | 7d | 2013-12-29 | 2014-01-05 | DUKHPROGEN00PRDV3110, DUKHCONP1AMKAREL3665 | -8d |
| DUKHCONP1AMKAREL3680 |  | External Painting | 7d | 2014-01-06 | 2014-01-13 | DUKHCONP1AMKAREL3665, DUKHCONP1AMKAREL3670 | 36d |
|  | 20 | **MEP WORKS** |  | 2013-10-08 | 2014-02-06 |  |  |
|  | 10 | **ELECTRICAL WORKS** |  | 2013-10-08 | 2014-02-04 |  |  |
|  | 10 | **GROUND FLOOR** |  | 2013-10-08 | 2014-01-05 |  |  |
| DUKHCONP1AMKELGF4000 |  | Fixing of wall conduits & switch socket boxes | 5d | 2013-10-08 | 2013-10-13 | DUKHCONP1AMKARGF3000 | 1d |
| DUKHCONP1AMKELGF4005 |  | Cable tray & trunking installation | 5d | 2013-10-24 | 2013-10-29 | DUKHCONP1AMKELGF4000, DUKHCONP1AMKARGF3005 | 19d |
| DUKHCONP1AMKELGF4010 |  | Installation of wiring & Main Cabling | 5d | 2013-10-30 | 2013-11-04 | DUKHCONP1AMKELGF4005, DUKHPROGEN00PRDV3180 | 21d |
| DUKHCONP1AMKELGF4015 |  | Install. of CAMS & Fire Fighting Accessories | 7d | 2013-12-25 | 2014-01-01 | DUKHPROGEN00PRDV3380, DUKHPROGEN00PRDV3370, DUKHCONP1AMKARGF3055, DUKHPROGEN00PRDV3360, DUKHCONP1AMKARGF3060, DUKHPROGEN00PRDV3260, DUKHPROGEN00PRDV3210 | 9d |
| DUKHCONP1AMKELGF4020 |  | Installation of DBS,MCCB Accessories. | 5d | 2013-12-25 | 2013-12-30 | DUKHPROGEN00PRDV3170, DUKHCONP1AMKARGF3055, DUKHCONP1AMKELGF4010, DUKHCONP1AMKARGF3060 | 6d |
| DUKHCONP1AMKELGF4025 |  | Installation of Lighting fixtures & Accessories | 5d | 2013-12-31 | 2014-01-05 | DUKHCONP1AMKELGF4020, DUKHPROGEN00PRDV3190, DUKHCONP1AMKARGF3055, DUKHCONP1AMKARGF3060 | 18d |
| DUKHCONP1AMKELGF4030 |  | Installation of Telephone System | 5d | 2013-12-31 | 2014-01-05 | DUKHCONP1AMKELGF4020, DUKHPROGEN00PRDV3270, DUKHCONP1AMKARGF3055, DUKHCONP1AMKARGF3060, DUKHPROGEN00PRDV3280 | 11d |
|  | 15 | **FIRST FLOORS** |  | 2013-11-21 | 2014-01-21 |  |  |
| DUKHCONP1AMKELFF4035 |  | Fixing of wall conduits & switch socket boxes | 5d | 2013-11-21 | 2013-11-26 | DUKHCONP1AMKARFF3300 | -16d |
| DUKHCONP1AMKELFF4040 |  | Cable tray & trunking installation | 5d | 2013-12-05 | 2013-12-10 | DUKHCONP1AMKELFF4035, DUKHCONP1AMKARFF3305 | 2d |
| DUKHCONP1AMKELFF4045 |  | Installation of wiring & Main Cabling | 5d | 2013-12-11 | 2013-12-16 | DUKHCONP1AMKELFF4040, DUKHPROGEN00PRDV3180 | 4d |
| DUKHCONP1AMKELFF4055 |  | Install. of CAMS & Fire Fighting Accessories | 7d | 2014-01-11 | 2014-01-18 | DUKHPROGEN00PRDV3360, DUKHCONP1AMKELGF4015, DUKHPROGEN00PRDV3210, DUKHPROGEN00PRDV3260, DUKHCONP1AMKARFF3360 | 2d |
| DUKHCONP1AMKELFF4060 |  | Installation of DBS,MCCB Accessories. | 5d | 2014-01-11 | 2014-01-15 | DUKHCONP1AMKELFF4045, DUKHPROGEN00PRDV3170, DUKHCONP1AMKARFF3360 | 7d |
| DUKHCONP1AMKELFF4050 |  | Installation of Telephone System | 5d | 2014-01-16 | 2014-01-21 | DUKHPROGEN00PRDV3280, DUKHCONP1AMKELFF4060, DUKHPROGEN00PRDV3270, DUKHCONP1AMKARFF3360, DUKHCONP1AMKELGF4030 | 7d |
| DUKHCONP1AMKELFF4065 |  | Installation of Lighting fixtures & Accessories | 5d | 2014-01-16 | 2014-01-21 | DUKHPROGEN00PRDV3190, DUKHCONP1AMKARFF3360, DUKHCONP1AMKELGF4025, DUKHCONP1AMKELFF4060 | 9d |
|  | 20 | **ROOF** |  | 2014-01-22 | 2014-02-04 |  |  |
| DUKHCONP1AMKELRF4070 |  | Installation of Isolator | 5d | 2014-01-22 | 2014-01-27 | DUKHPROGEN00PRDV3200, DUKHCONP1AMKELFF4045, DUKHCONP1AMKELFF4050, DUKHCONP1AMKARRF3645, DUKHCONP1AMKELFF4065 | 14d |
| DUKHCONP1AMKELRF4075 |  | Installation of TV Dish Antenna | 7d | 2014-01-28 | 2014-02-04 | DUKHPROGEN00PRDV3290, DUKHCONP1AMKELRF4070 | 14d |
|  | 15 | **PLUMBING, DRAINAGE & FIRE FIGHTING WORKS** |  | 2013-10-08 | 2014-02-06 |  |  |
|  | 10 | **GROUND FLOOR** |  | 2013-10-08 | 2014-01-13 |  |  |
| DUKHCONP1AMKPLGF4305 |  | Installation of Plumbing pipes & testing | 5d | 2013-10-08 | 2013-10-13 | DUKHCONP1AMKARGF3000 | 3d |
| DUKHCONP1AMKPLGF4310 |  | Installation of Drainage pipes &testing | 5d | 2013-10-08 | 2013-10-13 | DUKHCONP1AMKPLGF4305 SS, DUKHCONP1AMKARGF3000 | 21d |
| DUKHCONP1AMKPLGF4315 |  | Sanitary Fittings & Accessories | 7d | 2013-12-31 | 2014-01-07 | DUKHCONP1AMKPLGF4310, DUKHPROGEN00PRDV3770, DUKHPROGEN00PRDV3150, DUKHCONP1AMKARGF3065, DUKHPROGEN00PRDV3230 | 10d |
| DUKHCONP1AMKPLGF4320 |  | Installation of Water Heater | 5d | 2014-01-08 | 2014-01-13 | DUKHCONP1AMKARGF3055, DUKHCONP1AMKARGF3060, DUKHCONP1AMKPLGF4315 | 41d |
|  | 15 | **FIRST FLOORS** |  | 2013-11-21 | 2014-01-29 |  |  |
| DUKHCONP1AMKPLFF4325 |  | Installation of Plumbing pipes & testing | 5d | 2013-11-21 | 2013-11-26 | DUKHPROGEN00PRDV3080, DUKHCONP1AMKARFF3300 | -15d |
| DUKHCONP1AMKPLFF4330 |  | Installation of Drainage pipes & testing | 5d | 2013-11-21 | 2013-11-26 | DUKHCONP1AMKPLFF4325 SS | 6d |
| DUKHCONP1AMKPLFF4335 |  | Sanitary Fittings & Accessories | 7d | 2014-01-16 | 2014-01-23 | DUKHCONP1AMKPLFF4330, DUKHCONP1AMKARFF3365, DUKHCONP1AMKPLGF4315 | 3d |
| DUKHCONP1AMKPLFF4340 |  | Installation of Water Heater | 5d | 2014-01-25 | 2014-01-29 | DUKHCONP1AMKARFF3360, DUKHCONP1AMKPLFF4335 | 3d |
|  | 20 | **ROOF** |  | 2013-12-16 | 2014-02-06 |  |  |
| DUKHCONP1AMKPLRF4345 |  | Installation of Plumbing pipes & fittings | 5d | 2013-12-16 | 2013-12-22 | DUKHCONP1AMKARRF3645, DUKHCONP1AMKARRF3605 | -15d |
| DUKHCONP1AMKPLRF4350 |  | Installation of Rain water Pipes | 5d | 2013-12-23 | 2013-12-28 | DUKHCONP1AMKPLFF4330, DUKHCONP1AMKPLRF4345 | 31d |
| DUKHCONP1AMKPLRF4355 |  | Roof Water Tank Installation & Connections | 7d | 2014-01-30 | 2014-02-06 | DUKHCONP1AMKPLRF4345, DUKHCONP1AMKPLFF4340, DUKHCONP1AMKARRF3655, DUKHCONP1AMKPLRF4350, DUKHCONP1AMKARRF3645 | 3d |
|  | 20 | **AC WORKS** |  | 2013-11-16 | 2014-01-27 |  |  |
|  | 10 | **GROUND FLOOR** |  | 2013-11-16 | 2014-01-05 |  |  |
| DUKHCONP1AMKACGF4600 |  | Installation AC Pipes | 5d | 2013-11-16 | 2013-11-20 | DUKHCONP1AMKARGF3005, DUKHPROGEN00PRDV3160 | 20d |
| DUKHCONP1AMKACGF4605 |  | Fixing of Ventilation Equipments | 5d | 2013-12-25 | 2013-12-30 | DUKHPROGEN00PRDV3530, DUKHCONP1AMKACGF4600, DUKHCONP1AMKARGF3060, DUKHPROGEN00PRDV3340, DUKHCONP1AMKARGF3055 | 14d |
| DUKHCONP1AMKACGF4610 |  | Fixing of Split AC | 5d | 2013-12-31 | 2014-01-05 | DUKHCONP1AMKACGF4605, DUKHPROGEN00PRDV3240 | 27d |
|  | 15 | **FIRST FLOORS** |  | 2013-12-05 | 2014-01-21 |  |  |
| DUKHCONP1AMKACFF4615 |  | Installation AC Pipes | 5d | 2013-12-05 | 2013-12-10 | DUKHPROGEN00PRDV3160, DUKHCONP1AMKARFF3305, DUKHCONP1AMKACGF4600 | 16d |
| DUKHCONP1AMKACFF4620 |  | Fixing of Ventilation Equipments | 5d | 2014-01-11 | 2014-01-15 | DUKHPROGEN00PRDV3340, DUKHCONP1AMKACFF4615, DUKHCONP1AMKACGF4605, DUKHCONP1AMKARFF3360 | 5d |
| DUKHCONP1AMKACFF4625 |  | Fixing of Split AC | 5d | 2014-01-16 | 2014-01-21 | DUKHCONP1AMKACGF4610, DUKHCONP1AMKACFF4620, DUKHPROGEN00PRDV3240 | 18d |
|  | 20 | **ROOF** |  | 2013-12-16 | 2014-01-27 |  |  |
| DUKHCONP1AMKACRF4630 |  | Installation of Refrigerant Pipes | 5d | 2013-12-16 | 2013-12-22 | DUKHCONP1AMKACFF4615, DUKHCONP1AMKACGF4600, DUKHCONP1AMKARRF3645 | 45d |
| DUKHCONP1AMKACRF4635 |  | Installation of Condensing Unit | 5d | 2014-01-22 | 2014-01-27 | DUKHCONP1AMKACFF4625, DUKHCONP1AMKACRF4630, DUKHCONP1AMKARRF3645, DUKHCONP1AMKACGF4610 | 19d |
|  | 25 | **EXTERNAL WORKS** |  | 2013-12-23 | 2014-03-09 |  |  |
|  | 10 | **MISCELLANEOUS** |  | 2013-12-23 | 2014-01-19 |  |  |
| DUKHCONP1AMKMSEX5000 |  | Construction of Manholes | 7d | 2013-12-23 | 2013-12-30 | DUKHCONP1AMKPLGF4310, DUKHCONP1AMKPLFF4330, DUKHCONP1AMKPLRF4345 | -15d |
| DUKHCONP1AMKMSEX5005 |  | Construction of Soak pit, Chambers | 7d | 2013-12-31 | 2014-01-07 | DUKHCONP1AMKMSEX5000 | -15d |
| DUKHCONP1AMKMSEX5020 |  | Construction Entrance Ramp | 7d | 2014-01-06 | 2014-01-13 | DUKHCONP1AMKAREL3670, DUKHCONP1AMKAREL3665 | -8d |
| DUKHCONP1AMKMSEX5015 |  | Construction of grease Trap | 7d | 2014-01-08 | 2014-01-15 | DUKHCONP1AMKMSEX5005 | -15d |
| DUKHCONP1AMKMSEX5025 |  | SS.Handrails and Balustrades | 5d | 2014-01-14 | 2014-01-19 | DUKHCONP1AMKMSEX5020 | -6d |
|  | 15 | **WATER TANK ENCLOSURE** |  | 2014-01-16 | 2014-03-09 |  |  |
| DUKHCONP1AMKWEEX5030 |  | Excavation | 4d | 2014-01-16 | 2014-01-20 | DUKHCONP1AMKPLRF4345, DUKHCONP1AMKMSEX5015 | -15d |
| DUKHCONP1AMKWEEX5035 |  | Construction of Raft | 7d | 2014-01-21 | 2014-01-28 | DUKHCONP1AMKWEEX5030 | -15d |
| DUKHCONP1AMKWEEX5040 |  | Block works & Plastering | 7d | 2014-01-29 | 2014-02-05 | DUKHCONP1AMKWEEX5035 | -15d |
| DUKHCONP1AMKWEEX5045 |  | Flooring & Painting | 7d | 2014-02-06 | 2014-02-15 | DUKHCONP1AMKWEEX5040 | -15d |
| DUKHCONP1AMKWEEX5050 |  | Installation of Steel Gate | 5d | 2014-02-16 | 2014-02-20 | DUKHPROGEN00PRDV3510, DUKHCONP1AMKWEEX5045, DUKHPROGEN00PRDV3500, DUKHPROGEN00PRDV3610 | -15d |
| DUKHCONP1AMKWEEX5060 |  | Structural steel & SS Shed cover installation | 7d | 2014-02-22 | 2014-03-01 | DUKHPROGEN00PRDV3630, DUKHCONP1AMKMSEX5025, DUKHPROGEN00PRDV3620, DUKHCONP1AMKWEEX5050 | -15d |
| DUKHCONP1AMKWEEX5065 |  | Install. of Water Tank,Chiller,Pump & Meter | 7d | 2014-03-02 | 2014-03-09 | DUKHPROGEN00PRDV3220, DUKHPROGEN00PRDV3520, DUKHPROGEN00PRDV3680, DUKHCONP1AMKPLRF4350, DUKHPROGEN00PRDV3640, DUKHCONP1AMKPLRF4355, DUKHCONP1AMKMSEX5015, DUKHPROGEN00PRDV3330, DUKHCONP1AMKWEEX5060 | -15d |
|  | 20 | **HARD LANDSCAPING** |  | 2014-01-20 | 2014-02-05 |  |  |

| ID | WBS | Task | Duration | Start | Finish | Predecessors | Complete | Total float |
| --- | --- | --- | --- | --- | --- | --- | --- | --- |
| DUKHCONP1AMKHDEX5090 |  | kerb works | 5d | 2014-01-20 | 2014-01-25 | DUKHPROGEN00PRDV3600, DUKHCONP1AMKMSEX5020, DUKHCONP1AMKMSEX5025 |  | -6d |
| DUKHCONP1AMKHDEX5095 |  | Cobble Stone Works | 5d | 2014-01-26 | 2014-01-30 | DUKHCONP1AMKHDEX5090 |  | -3d |
| DUKHCONP1AMKHDEX5100 |  | Interlock works | 5d | 2014-02-01 | 2014-02-05 | DUKHPROGEN00PRDV3660, DUKHCONP1AMKHDEX5095 |  | -3d |
|  | 25 | **SOFT LANDSCAPING** |  | 2014-02-06 | 2014-02-23 |  |  |  |
| DUKHCONP1AMKSLEX5105 |  | Laying of Grass/ green area | 7d | 2014-02-06 | 2014-02-15 | DUKHCONP1AMKHDEX5100, DUKHPROGEN00PRDV3790, DUKHPROGEN00PRDV3670 |  | -3d |
| DUKHCONP1AMKSLEX5110 |  | Laying of Palm tree | 7d | 2014-02-16 | 2014-02-23 | DUKHCONP1AMKSLEX5105 |  | -3d |
|  | 10 | **ZONE - 1 (4 Twin Villas)** |  | 2013-02-14 | 2014-05-17 |  |  |  |
|  | 10 | **STRUCTURAL WORKS** |  | 2013-02-14 | 2013-12-23 |  |  |  |
|  | 10 | **SUB STRUCTURE** |  | 2013-02-14 | 2013-08-07 |  |  |  |
|  | 10 | **UPTO GRADE SLAB** |  | 2013-02-14 | 2013-08-07 |  |  |  |
| DUKHCONP1AZ1STUG1000 |  | Footing Excavation | 25d | 2013-02-14 A | 2013-03-30 A | DUKHMOBP010000004040 SS+5d, DUKHMOBP010000004050 SS+5d, DUKHMOBI1APS00001250, DUKHMOBI1APS00002043 SS+14d, DUKHCONP1AGNSP005000 SS+5d, DUKHCONP1AGNSP002500 | 100% |  |
| DUKHCONP1AZ1STUG1005 |  | Footing Antitermite | 23d | 2013-02-26 A | 2013-03-30 A | DUKHCONP1AZ1STUG1000 FF+5d, DUKHPROGEN00PRDV3000, DUKHCONP1AZ1STUG1000 SS+10d | 100% |  |
| DUKHCONP1AZ1STUG1010 |  | Footing Blinding | 23d | 2013-03-30 A | 2013-04-24 A | DUKHCONP1AZ1STUG1005 FF+3d, DUKHCONP1AZ1STUG1005 SS+3d, DUKHPROGEN00PRDV3020 | 100% |  |
| DUKHCONP1AZ1STUG1015 |  | Footing Waterproofing & Screed | 25d | 2013-04-04 A | 2013-04-26 A | DUKHCONP1AZ1STUG1010 FF+5d, DUKHPROGEN00PRDV3030, DUKHPROGEN00PRDV3020, DUKHCONP1AZ1STUG1010 SS+5d, DUKHENGP1ADWSTAP4000 | 100% |  |
| DUKHCONP1AZ1STUG1020 |  | Construction of foundations | 20d | 2013-04-20 A | 2013-05-12 | DUKHMOBP010000004060 SS+2d, DUKHMOBP010000004080 SS+2d, DUKHPROGEN00PRDV3010, DUKHMOBP010000004090 SS+2d, DUKHCONP1AZ1STUG1015 SS+7d, DUKHCONP1AZ1STUG1015 FF+8d, DUKHMOBP010000004070 SS+2d | 30% | -24d |
| DUKHCONP1AZ1STUG1025 |  | Construction of neck of columns | 25d | 2013-04-29 | 2013-05-27 | DUKHCONP1AZ1STUG1020 SS+8d, DUKHCONP1AZ1STUG1020 FF+7d |  | -24d |
| DUKHCONP1AZ1STUG1030 |  | Waterproofing Footing & Neck Column | 25d | 2013-05-08 | 2013-06-05 | DUKHCONP1AZ1STUG1025 FF+8d, DUKHCONP1AZ1STUG1025 SS+8d |  | -24d |
| DUKHCONP1AZ1STUG1035 |  | Backfilling Upto Grade Beam Bottom | 25d | 2013-05-22 | 2013-06-19 | DUKHCONP1AZ1STUG1030 SS+12d, DUKHCONP1AZ1STUG1030 FF+12d |  | -24d |
| DUKHCONP1AZ1STUG1040 |  | Construction of Grade Beams | 26d | 2013-06-08 | 2013-07-07 | DUKHENGP1ADWSTAP4010, DUKHCONP1AZ1STUG1035 FF+10d, DUKHCONP1AZ1STUG1035 SS+14d |  | -24d |
| DUKHCONP1AZ1STUG1045 |  | Construction of slab on grade | 25d | 2013-07-10 | 2013-08-07 | DUKHCONP1AZ1PLUG4300 SS+8d, DUKHENGP1ADWSTAP4010, DUKHCONP1AZ1STUG1040 FF+10d, DUKHCONP1AZ1PLUG4300 FF+8d, DUKHCONP1AZ1STUG1040 SS+10d |  | -24d |
|  | 15 | **SUPERSTRUCTURE** |  | 2013-07-27 | 2013-12-23 |  |  |  |
|  | 10 | **GROUND FLOOR** |  | 2013-07-27 | 2013-09-23 |  |  |  |
| DUKHCONP1AZ1STGF2000 |  | Column-Rebar & Formwork | 25d | 2013-07-27 | 2013-08-27 | DUKHCONP1AZ1STUG1045 FF+7d, DUKHCONP1AZ1STUG1045 SS+14d, DUKHENGP1ADWSTAP4020 |  | -24d |
| DUKHCONP1AZ1STGF2005 |  | Column-Concrete | 24d | 2013-08-04 | 2013-09-03 | DUKHCONP1AZ1STGF2000 FF+2d, DUKHCONP1AZ1STGF2000 SS+7d |  | -24d |
| DUKHCONP1AZ1STGF2010 |  | Beam, Stairs ,Slab-Rebar & Formwork | 25d | 2013-08-22 | 2013-09-19 | DUKHENGP1ADWSTAP4030, DUKHCONP1AZ1STGF2005 FF+14d, DUKHCONP1AZ1STGF2005 SS+2d |  | -24d |
| DUKHCONP1AZ1STGF2015 |  | Beam, Stairs ,Slab-Concrete | 15d | 2013-09-07 | 2013-09-23 | DUKHCONP1AZ1STGF2010 SS+10d, DUKHCONP1AZ1STGF2010 FF+3d |  | -24d |
|  | 15 | **FIRST FLOORS** |  | 2013-09-09 | 2013-11-06 |  |  |  |
| DUKHCONP1AZ1STFF2020 |  | Column-Rebar & Formwork | 25d | 2013-09-09 | 2013-10-07 | DUKHCONP1AZ1STGF2015 SS+2d, DUKHCONP1AZ1STGF2015 FF+5d, DUKHENGP1ADWSTAP4040 |  | -24d |
| DUKHCONP1AZ1STFF2025 |  | Column-Concrete | 24d | 2013-09-18 | 2013-10-15 | DUKHCONP1AZ1STFF2020 SS+8d, DUKHCONP1AZ1STFF2020 FF+2d |  | -24d |
| DUKHCONP1AZ1STFF2030 |  | Beam, Stairs ,Slab-Rebar & Formwork | 25d | 2013-10-03 | 2013-11-03 | DUKHCONP1AZ1STFF2025 SS+2d, DUKHCONP1AZ1STFF2025 FF+14d |  | -24d |
| DUKHCONP1AZ1STFF2035 |  | Beam, Stairs ,Slab-Concrete | 15d | 2013-10-21 | 2013-11-06 | DUKHCONP1AZ1STFF2030 FF+3d, DUKHCONP1AZ1STFF2030 SS+10d |  | -24d |
|  | 20 | **ROOF** |  | 2013-10-24 | 2013-12-23 |  |  |  |
| DUKHCONP1AZ1STRF2040 |  | Column-Rebar & Formwork | 18d | 2013-10-24 | 2013-11-13 | DUKHCONP1AZ1STFF2035 SS+3d, DUKHCONP1AZ1STFF2035 FF+3d |  | -15d |
| DUKHCONP1AZ1STRF2045 |  | Column-Concrete | 17d | 2013-10-29 | 2013-11-17 | DUKHCONP1AZ1STRF2040 FF+1d, DUKHCONP1AZ1STRF2040 SS+4d |  | -15d |
| DUKHCONP1AZ1STRF2050 |  | Slab-Rebar & Formwork - Head Room | 20d | 2013-11-02 | 2013-11-24 | DUKHCONP1AZ1STRF2045 FF+5d, DUKHCONP1AZ1STRF2045 SS+3d |  | -15d |
| DUKHCONP1AZ1STRF2055 |  | Slab-Concrete-Head room | 10d | 2013-11-16 | 2013-11-26 | DUKHCONP1AZ1STRF2050 SS+5d, DUKHCONP1AZ1STRF2050 FF+2d |  | -15d |
| DUKHCONP1AZ1STRF2060 |  | Construction of Parapets | 25d | 2013-11-18 | 2013-12-16 | DUKHCONP1AZ1STRF2055 SS+2d, DUKHCONP1AZ1STRF2055 FF+14d |  | -15d |
| DUKHCONP1AZ1STRF2065 |  | Construction of up stands/Plinth | 25d | 2013-11-24 | 2013-12-23 | DUKHCONP1AZ1STRF2060 FF+5d, DUKHCONP1AZ1STRF2060 SS+5d |  | -15d |
|  | 15 | **FINISHING WORKS** |  | 2013-10-08 | 2014-04-17 |  |  |  |
|  | 10 | **INTERNAL FINISHES** |  | 2013-10-08 | 2014-04-17 |  |  |  |
|  | 10 | **GROUND FLOOR** |  | 2013-10-08 | 2014-03-24 |  |  |  |
| DUKHCONP1AZ1ARGF3000 |  | Block work | 25d | 2013-10-08 | 2013-11-07 | DUKHCONP1AZ1STGF2015 FF+21d, DUKHCONP1AMKARGF3000, DUKHPROGEN00PRDV3010, DUKHCONP1AZ1STGF2015 SS+21d |  | -6d |
| DUKHCONP1AZ1ARGF3005 |  | Plastering work | 25d | 2013-11-02 | 2013-11-30 | DUKHCONP1AZ1ARGF3000 SS+7d, DUKHPROGEN00PRDV3040, DUKHCONP1AZ1ELGF4000 FF+5d, DUKHCONP1AZ1ELGF4000 SS+5d, DUKHCONP1AZ1PLGF4305 FF+5d, DUKHCONP1AZ1PLGF4305 SS+5d, DUKHCONP1AMKARGF3005, DUKHCONP1AZ1ARGF3000 FF+7d |  | -6d |
| DUKHCONP1AZ1ARGF3010 |  | Flooring screed | 21d | 2013-11-10 | 2013-12-03 | DUKHCONP1AMKARGF3010, DUKHCONP1AZ1ARGF3005 FF+3d, DUKHCONP1AZ1ARGF3005 SS+7d |  | 2d |
| DUKHCONP1AZ1ARGF3015 |  | Wet area waterproofing & Protection Screed | 15d | 2013-11-19 | 2013-12-05 | DUKHCONP1AZ1ARGF3005 FF+5d, DUKHCONP1AMKARGF3015, DUKHCONP1AZ1ARGF3005 SS+7d |  | -6d |
| DUKHCONP1AZ1ARGF3030 |  | Paint First coat | 25d | 2013-11-21 | 2013-12-21 | DUKHCONP1AMKARGF3030, DUKHCONP1AZ1ARGF3005 SS+14d, DUKHCONP1AZ1ARGF3005 FF+14d, DUKHPROGEN00PRDV3320 |  | 5d |
| DUKHCONP1AZ1ARGF3020 |  | Ceramic Wall Tiling | 25d | 2013-11-25 | 2013-12-24 | DUKHCONP1AZ1ARGF3015 FF+5d, DUKHCONP1AZ1PLGF4305 FF+4d, DUKHCONP1AZ1PLGF4305 SS+4d, DUKHCONP1AMKARGF3020, DUKHPROGEN00PRDV3120, DUKHCONP1AZ1PLGF4310 FF+4d, DUKHCONP1AZ1ARGF3015 SS+5d, DUKHCONP1AZ1PLGF4310 SS+4d |  | -6d |
| DUKHCONP1AZ1ARGF3025 |  | Porcelain Tile flooring | 25d | 2013-12-01 | 2013-12-30 | DUKHPROGEN00PRDV3130, DUKHCONP1AMKARGF3025, DUKHCONP1AZ1ARGF3020 SS+5d, DUKHCONP1AZ1ARGF3010 FF+10d, DUKHCONP1AZ1ARGF3020 FF+5d, DUKHCONP1AZ1ARGF3010 SS+10d |  | -6d |
| DUKHCONP1AZ1ARGF3045 |  | Fixing of Suspension systems | 20d | 2013-12-19 | 2014-01-11 | DUKHCONP1AZ1ELGF4010 SS+5d, DUKHCONP1AZ1ELGF4010 FF+5d, DUKHCONP1AZ1ARGF3025 FF+10d, DUKHCONP1AMKARGF3045, DUKHCONP1AZ1ARGF3030 FF+7d, DUKHCONP1AZ1ARGF3025 SS+10d, DUKHCONP1AZ1ARGF3030 SS+7d |  | -6d |
| DUKHCONP1AZ1ARGF3035 |  | Slate Tile Flooring & Skirting | 15d | 2013-12-22 | 2014-01-07 | DUKHCONP1AZ1ARGF3010 FF+13d, DUKHCONP1AZ1ARGF3025 FF+7d, DUKHCONP1AZ1ARGF3010 SS+13d, DUKHPROGEN00PRDV3100, DUKHCONP1AMKARGF3035, DUKHCONP1AZ1ARGF3025 SS+13d |  | -1d |
| DUKHCONP1AZ1ARGF3055 |  | Aluminum tile false ceiling | 25d | 2013-12-28 | 2014-01-25 | DUKHCONP1AZ1ACGF4600 FF+7d, DUKHCONP1AZ1ARGF3045 SS+7d, DUKHPROGEN00PRDV3310, DUKHCONP1AZ1ARGF3045 FF+7d, DUKHCONP1AMKARGF3055, DUKHCONP1AZ1ACGF4600 SS+7d |  | -3d |
| DUKHCONP1AZ1ARGF3040 |  | Cobble Tile flooring | 15d | 2013-12-29 | 2014-01-14 | DUKHCONP1AZ1ARGF3010 SS+13d, DUKHCONP1AZ1ARGF3035 SS+4d, DUKHPROGEN00PRDV3090, DUKHCONP1AMKARGF3040, DUKHCONP1AZ1ARGF3035 FF+4d, DUKHCONP1AZ1ARGF3025 SS+13d, DUKHCONP1AZ1ARGF3010 FF+13d, DUKHCONP1AZ1ARGF3025 FF+13d |  | -3d |
| DUKHCONP1AZ1ARGF3060 |  | Gypsum board false ceiling | 25d | 2013-12-31 | 2014-01-28 | DUKHCONP1AZ1ACGF4600 SS+7d, DUKHCONP1AMKARGF3060, DUKHCONP1AZ1ARGF3045 FF+10d, DUKHPROGEN00PRDV3300, DUKHCONP1AZ1ACGF4600 FF+7d, DUKHCONP1AZ1ARGF3045 SS+10d |  | -6d |
| DUKHCONP1AZ1ARGF3050 |  | Granite - Stair case flooring & Skirting | 20d | 2014-01-06 | 2014-01-28 | DUKHCONP1AZ1ARGF3025 FF+13d, DUKHCONP1AZ1ARGF3040 FF+7d, DUKHCONP1AMKARGF3050, DUKHCONP1AZ1ARGF3025 SS+13d, DUKHPROGEN00PRDV3480, DUKHCONP1AZ1ARGF3040 SS+7d |  | -3d |
| DUKHCONP1AZ1ARGF3065 |  | Wooden door & PVC Door | 15d | 2014-01-20 | 2014-02-05 | DUKHCONP1AMKARGF3065, DUKHCONP1AZ1ARGF3050 FF+7d, DUKHPROGEN00PRDV3490, DUKHCONP1AZ1ARGF3035 SS+7d, DUKHCONP1AZ1ARGF3035 FF+7d, DUKHCONP1AZ1ARGF3050 SS+7d |  | -3d |
| DUKHCONP1AZ1ARGF3070 |  | Aluminum doors | 15d | 2014-01-26 | 2014-02-12 | DUKHPROGEN00PRDV3460, DUKHCONP1AMKARGF3070, DUKHCONP1AZ1ARGF3065 SS+5d, DUKHPROGEN00PRDV3450, DUKHPROGEN00PRDV3440, DUKHCONP1AZ1ARGF3065 FF+5d |  | -3d |
| DUKHCONP1AZ1ARGF3075 |  | Carpentry & Joinery Works | 20d | 2014-02-01 | 2014-02-24 | DUKHCONP1AZ1ARGF3070 SS+5d, DUKHPROGEN00PRDV3550, DUKHCONP1AMKARGF3075, DUKHPROGEN00PRDV3560, DUKHCONP1AZ1ARGF3070 FF+7d |  | -3d |
| DUKHCONP1AZ1ARGF3080 |  | Aluminum windows | 20d | 2014-02-02 | 2014-02-25 | DUKHCONP1AZ1ARGF3070 SS+6d, DUKHPROGEN00PRDV3470, DUKHCONP1AZ1ARGF3070 FF+6d, DUKHCONP1AMKARGF3080 |  | 7d |
| DUKHCONP1AZ1ARGF3085 |  | S.S.Balustrade | 20d | 2014-02-09 | 2014-03-04 | DUKHPROGEN00PRDV3570, DUKHCONP1AMKARGF3085, DUKHCONP1AZ1ARGF3075 SS+7d, DUKHCONP1AZ1ARGF3050 SS+7d, DUKHCONP1AZ1ARGF3050 FF+7d, DUKHCONP1AZ1ARGF3075 FF+7d |  | 2d |
| DUKHCONP1AZ1ARGF3090 |  | Installation of Granite Counter Top | 15d | 2014-02-15 | 2014-03-03 | DUKHCONP1AZ1ARGF3075 SS+7d, DUKHCONP1AZ1ARGF3075 FF+6d, DUKHCONP1AMKARGF3090 |  | -3d |
| DUKHCONP1AZ1ARGF3095 |  | Final Painting | 25d | 2014-02-24 | 2014-03-24 | DUKHCONP1AZ1ARGF3060 SS+8d, DUKHCONP1AZ1ARGF3090 FF+8d, DUKHCONP1AZ1ACGF4610 FF+10d, DUKHCONP1AZ1ARGF3030 SS+10d, DUKHCONP1AZ1ARGF3080 SS+8d, DUKHCONP1AZ1ARGF3070 SS+5d, DUKHCONP1AZ1ARGF3085 FF+7d, DUKHCONP1AZ1ACGF4610 SS+10d, DUKHCONP1AZ1ARGF3030 FF+10d, DUKHCONP1AZ1ARGF3040 SS+13d, DUKHCONP1AZ1ARGF3040 FF+13d, DUKHCONP1AZ1ARGF3035 SS+13d, DUKHCONP1AZ1ARGF3070 FF+5d, DUKHCONP1AZ1ARGF3080 FF+8d, DUKHCONP1AZ1ARGF3035 FF+13d, DUKHCONP1AZ1ARGF3060 FF+8d, DUKHCONP1AZ1ARGF3090 SS+8d, DUKHCONP1AZ1ARGF3085 SS+7d, DUKHCONP1AMKARGF3095 |  | -3d |
|  | 15 | **FIRST FLOORS** |  | 2013-11-21 | 2014-04-17 |  |  |  |
| DUKHCONP1AZ1ARFF3300 |  | Block work | 25d | 2013-11-21 | 2013-12-21 | DUKHCONP1AZ1STFF2020 FF+21d, DUKHCONP1AMKARFF3300, DUKHCONP1AZ1STFF2020 SS+21d, DUKHCONP1AZ1STFF2035 FF+21d, DUKHCONP1AZ1STFF2035 SS+21d |  | -24d |
| DUKHCONP1AZ1ARFF3305 |  | Plastering work | 25d | 2013-12-15 | 2014-01-13 | DUKHCONP1AZ1PLFF4325 SS+6d, DUKHCONP1AZ1ELFF4035 FF+5d, DUKHCONP1AMKARFF3305, DUKHCONP1AZ1PLFF4325 FF+6d, DUKHCONP1AZ1ARFF3300 FF+7d, DUKHCONP1AZ1ELFF4035 SS+5d, DUKHCONP1AZ1ARFF3300 SS+7d |  | -24d |
| DUKHCONP1AZ1ARFF3310 |  | Flooring screed | 21d | 2013-12-24 | 2014-01-16 | DUKHCONP1AMKARFF3310, DUKHCONP1AZ1ARFF3305 FF+3d, DUKHCONP1AZ1ARFF3305 SS+7d |  | -12d |
| DUKHCONP1AZ1ARFF3330 |  | Paint First coat | 25d | 2014-01-01 | 2014-01-29 | DUKHCONP1AMKARFF3330, DUKHCONP1AZ1ARFF3305 SS+14d, DUKHCONP1AZ1ARFF3305 FF+14d |  | -10d |
| DUKHCONP1AZ1ARFF3315 |  | Wet area waterproofing | 15d | 2014-01-05 | 2014-01-21 | DUKHCONP1AMKARFF3315, DUKHCONP1AZ1ARFF3305 SS+7d, DUKHCONP1AZ1ARFF3305 FF+7d |  | -24d |
| DUKHCONP1AZ1ARFF3320 |  | Ceramic Wall Tiling | 25d | 2014-01-12 | 2014-02-09 | DUKHCONP1AZ1PLFF4325 SS+4d, DUKHCONP1AZ1ARFF3315 SS+6d, DUKHCONP1AMKARFF3320, DUKHCONP1AZ1PLFF4330 SS+7d, DUKHCONP1AZ1ARFF3315 FF+6d, DUKHCONP1AZ1PLFF4325 FF+4d, DUKHCONP1AZ1PLFF4330 FF+7d |  | -24d |
| DUKHCONP1AZ1ARFF3325 |  | Porcelain Tile flooring | 25d | 2014-01-19 | 2014-02-17 | DUKHCONP1AZ1ARFF3310 SS+10d, DUKHCONP1AZ1ARFF3310 FF+10d, DUKHCONP1AZ1ARFF3320 SS+6d, DUKHCONP1AZ1ARFF3320 FF+6d, DUKHCONP1AMKARFF3325 |  | -24d |
| DUKHCONP1AZ1ARFF3345 |  | Fixing of Suspension systems | 20d | 2014-02-01 | 2014-02-24 | DUKHCONP1AZ1ARFF3330 SS+7d, DUKHCONP1AZ1ELFF4045 FF+5d, DUKHCONP1AZ1ELFF4045 SS+5d, DUKHCONP1AZ1ARFF3325 FF+6d, DUKHCONP1AZ1ARFF3330 FF+7d, DUKHCONP1AZ1ARFF3325 SS+6d, DUKHCONP1AMKARFF3345 |  | -24d |

| ID | WBS | Task | Duration | Start | Finish | Predecessors | Total float |
| --- | --- | --- | --- | --- | --- | --- | --- |
| DUKHCONP1AZ1ARFF3335 |  | Slate Tile Flooring & Skirting | 15d | 2014-02-05 | 2014-02-23 | DUKHCONP1AZ1ARFF3310 SS+13d, DUKHCONP1AMKARFF3335, DUKHCONP1AZ1ARFF3310 FF+13d, DUKHCONP1AZ1ARFF3325 FF+5d, DUKHCONP1AZ1ARFF3325 SS+13d | -16d |
| DUKHCONP1AZ1ARFF3360 |  | Gypsum board false ceiling | 25d | 2014-02-08 | 2014-03-09 | DUKHCONP1AZ1ACFF4615 SS+7d, DUKHCONP1AMKARFF3360, DUKHCONP1AZ1ACFF4615 FF+7d, DUKHCONP1AZ1ARFF3345 SS+6d, DUKHCONP1AZ1ARFF3345 FF+6d | -24d |
| DUKHCONP1AZ1ARFF3350 |  | Granite - Stair case flooring & Skirting | 20d | 2014-02-09 | 2014-03-04 | DUKHCONP1AMKARFF3350, DUKHCONP1AZ1ARFF3325 SS+13d, DUKHCONP1AZ1ARFF3325 FF+13d | -22d |
| DUKHCONP1AZ1ARFF3365 |  | Wooden door | 15d | 2014-02-24 | 2014-03-12 | DUKHCONP1AZ1ARFF3360 SS+3d, DUKHCONP1AMKARFF3365, DUKHCONP1AZ1ARFF3350 SS+5d, DUKHCONP1AZ1ARFF3360 FF+3d, DUKHCONP1AZ1ARFF3335 SS+7d, DUKHCONP1AZ1ARFF3335 FF+7d, DUKHCONP1AZ1ARFF3350 FF+5d | -24d |
| DUKHCONP1AZ1ARFF3370 |  | Aluminum Door | 20d | 2014-02-24 | 2014-03-18 | DUKHCONP1AMKARFF3370, DUKHCONP1AZ1ARFF3365 SS, DUKHCONP1AZ1ARFF3365 FF | -24d |
| DUKHCONP1AZ1ARFF3375 |  | Carpentry & Joinery Works | 25d | 2014-03-02 | 2014-03-30 | DUKHCONP1AMKARFF3375, DUKHCONP1AZ1ARFF3370 SS+5d, DUKHCONP1AZ1ARFF3370 FF+5d | -24d |
| DUKHCONP1AZ1ARFF3380 |  | Aluminum windows | 20d | 2014-03-03 | 2014-03-25 | DUKHCONP1AZ1ARFF3370 FF+6d, DUKHCONP1AMKARFF3380, DUKHCONP1AZ1ARFF3370 SS+6d | -19d |
| DUKHCONP1AZ1ARFF3385 |  | Handrail & S.S.Balustrade | 20d | 2014-03-15 | 2014-04-06 | DUKHCONP1AZ1ARFF3350 SS+7d, DUKHCONP1AMKARFF3385, DUKHCONP1AZ1ARFF3375 FF+6d, DUKHCONP1AZ1ARFF3375 SS+6d, DUKHCONP1AZ1ARFF3350 FF+7d | -24d |
| DUKHCONP1AZ1ARFF3390 |  | Installation of Granite Counter Top | 20d | 2014-03-15 | 2014-04-06 | DUKHCONP1AZ1ARFF3375 SS+6d, DUKHCONP1AMKARFF3390, DUKHCONP1AZ1ARFF3375 FF+6d | -23d |
| DUKHCONP1AZ1ARFF3395 |  | Final Painting | 25d | 2014-03-20 | 2014-04-17 | DUKHCONP1AZ1ARFF3335 FF+8d, DUKHCONP1AZ1ARFF3380 FF+10d, DUKHCONP1AZ1ARFF3385 SS+5d, DUKHCONP1AZ1ARRF3620 FF+8d, DUKHCONP1AZ1ARFF3365 SS+8d, DUKHCONP1AZ1ARFF3330 FF+10d, DUKHCONP1AZ1ARFF3335 SS+8d, DUKHCONP1AZ1ARFF3380 SS+10d, DUKHCONP1AZ1ARFF3385 FF+5d, DUKHCONP1AZ1ARFF3350 FF+8d, DUKHCONP1AZ1ARFF3350 SS+8d, DUKHCONP1AZ1ARFF3360 FF+10d, DUKHCONP1AZ1ARFF3365 FF+8d, DUKHCONP1AZ1ACFF4625 FF+6d, DUKHCONP1AZ1ARFF3360 SS+10d, DUKHCONP1AZ1ARFF3375 FF+8d, DUKHCONP1AZ1ACFF4625 SS+6d, DUKHCONP1AMKARFF3395, DUKHCONP1AZ1ARFF3390 SS+4d, DUKHCONP1AZ1ARFF3330 SS+10d, DUKHCONP1AZ1ARFF3375 SS+8d, DUKHCONP1AZ1ARFF3390 FF+8d | -24d |
|  | 20 | **ROOF** |  | 2013-12-10 | 2014-02-15 |  |  |
| DUKHCONP1AZ1ARRF3600 |  | Block work | 20d | 2013-12-10 | 2014-01-02 | DUKHCONP1AZ1STRF2055 SS+21d, DUKHCONP1AMKARRF3600, DUKHCONP1AZ1STRF2055 FF+21d | -3d |
| DUKHCONP1AZ1ARRF3605 |  | Plastering work | 20d | 2013-12-19 | 2014-01-11 | DUKHCONP1AZ1ARRF3600 FF+7d, DUKHCONP1AZ1ARRF3600 SS+7d, DUKHCONP1AMKARRF3605 | -3d |
| DUKHCONP1AZ1ARRF3610 |  | Flooring screed | 15d | 2014-01-02 | 2014-01-19 | DUKHCONP1AZ1ARRF3605 FF+7d, DUKHCONP1AZ1ARRF3605 SS+7d, DUKHCONP1AMKARRF3610 | 21d |
| DUKHCONP1AZ1ARRF3695 |  | Painting -Storage area | 20d | 2014-01-11 | 2014-02-02 | DUKHCONP1AZ1ARRF3610 SS+7d, DUKHCONP1AMKARRF3695, DUKHCONP1AZ1ARRF3610 FF+7d | 21d |
| DUKHCONP1AZ1ARRF3620 |  | Epoxy Painting -Storage area | 15d | 2014-01-28 | 2014-02-15 | DUKHPROGEN00PRDV3420, DUKHCONP1AMKARRF3620, DUKHCONP1AZ1ARRF3695 SS+10d, DUKHCONP1AZ1ARRF3695 FF+10d | 21d |
|  | 15 | **EXTERNAL FINISHES** |  | 2013-12-29 | 2014-03-18 |  |  |
|  | 10 | **ROOF** |  | 2014-01-12 | 2014-03-18 |  |  |
| DUKHCONP1AZ1ARRF3630 |  | Leveling Screed for Waterproofing | 25d | 2014-01-12 | 2014-02-09 | DUKHCONP1AZ1STRF2065 FF+10d, DUKHCONP1AZ1STRF2060 FF+10d, DUKHCONP1AZ1STRF2060 SS+10d, DUKHCONP1AZ1ARRF3605, DUKHCONP1AZ1STRF2065 SS+10d, DUKHCONP1AMKARRF3630 | -3d |
| DUKHCONP1AZ1ARRF3635 |  | Laying of Waterproofing Membrane | 25d | 2014-01-15 | 2014-02-13 | DUKHPROGEN00PRDV3050, DUKHCONP1AMKARRF3635, DUKHCONP1AZ1ARRF3630 SS+3d, DUKHCONP1AZ1ARRF3630 FF+3d | -3d |
| DUKHCONP1AZ1ARRF3640 |  | Installation of Insulation & Protection | 25d | 2014-01-20 | 2014-02-18 | DUKHCONP1AZ1ARRF3635 FF+4d, DUKHCONP1AZ1ARRF3635 SS+4d, DUKHCONP1AMKARRF3640 | -3d |
| DUKHCONP1AZ1ARRF3645 |  | Lime Stone Chips & Paving slab Installation | 25d | 2014-01-25 | 2014-02-23 | DUKHCONP1AMKARRF3645, DUKHCONP1AZ1ARRF3640 FF+4d, DUKHCONP1AZ1ARRF3640 SS+4d | -3d |
| DUKHCONP1AZ1ARRF3650 |  | Install. of Gal. Frame & Aluminum Slat Screen | 25d | 2014-02-02 | 2014-03-03 | DUKHCONP1AMKARRF3650, DUKHCONP1AZ1ARRF3645 FF+7d, DUKHPROGEN00PRDV3410, DUKHCONP1AZ1ARRF3645 SS+7d | -3d |
| DUKHCONP1AZ1ARRF3655 |  | Installation of Pumps Protection cabinets | 20d | 2014-02-18 | 2014-03-12 | DUKHPROGEN00PRDV3510, DUKHCONP1AMKARRF3655, DUKHCONP1AZ1ARRF3645 SS+7d, DUKHCONP1AZ1ARRF3650 SS+8d, DUKHCONP1AZ1ARRF3650 FF+8d, DUKHCONP1AZ1ARRF3645 FF+7d | -3d |
| DUKHCONP1AZ1ARRF3660 |  | Installation of Access Ladder | 15d | 2014-03-02 | 2014-03-18 | DUKHCONP1AZ1ARRF3655 SS+5d, DUKHCONP1AMKARRF3660, DUKHCONP1AZ1ARRF3655 FF+5d, DUKHPROGEN00PRDV3400 | 2d |
|  | 15 | **ELEVATION** |  | 2013-12-29 | 2014-02-19 |  |  |
| DUKHCONP1AZ1AREL3665 |  | External Plastering | 25d | 2013-12-29 | 2014-01-26 | DUKHCONP1AZ1STRF2065 FF+7d, DUKHCONP1AZ1ARFF3305 FF+7d, DUKHCONP1AZ1STRF2065 SS+7d, DUKHCONP1AZ1ARFF3305 SS+7d, DUKHCONP1AMKAREL3665, DUKHCONP1AZ1ARRF3605 SS+7d | 23d |
| DUKHCONP1AZ1AREL3670 |  | External stone cladding works | 20d | 2014-01-15 | 2014-02-06 | DUKHPROGEN00PRDV3110, DUKHCONP1AZ1AREL3665 FF+10d, DUKHCONP1AZ1AREL3665 SS+10d, DUKHCONP1AMKAREL3670 | 25d |
| DUKHCONP1AZ1AREL3680 |  | External Painting | 20d | 2014-01-27 | 2014-02-19 | DUKHCONP1AZ1ARRF3695 SS+4d, DUKHCONP1AZ1AREL3670 SS+10d, DUKHCONP1AZ1ARRF3695 FF+4d, DUKHCONP1AZ1AREL3670 FF+10d, DUKHCONP1AMKAREL3680 | 25d |
|  | 20 | **MEP WORKS** |  | 2013-07-01 | 2014-04-16 |  |  |
|  | 10 | **ELECTRICAL WORKS** |  | 2013-10-14 | 2014-04-16 |  |  |
|  | 10 | **GROUND FLOOR** |  | 2013-10-14 | 2014-02-24 |  |  |
| DUKHCONP1AZ1ELGF4000 |  | Fixing of wall conduits & switch socket boxes | 25d | 2013-10-14 | 2013-11-13 | DUKHCONP1AZ1ARGF3000 SS+5d, DUKHCONP1AMKELGF4000, DUKHCONP1AZ1ARGF3000 FF+5d | 3d |
| DUKHCONP1AZ1ELGF4005 |  | Cable tray & trunking installation | 20d | 2013-10-30 | 2013-11-21 | DUKHCONP1AMKELGF4005, DUKHCONP1AZ1ELGF4000 FF+5d, DUKHCONP1AZ1ELGF4000 SS+5d, DUKHPROGEN00PRDV3180 | 19d |
| DUKHCONP1AZ1ELGF4010 |  | Installation of wiring & Main Cabling | 25d | 2013-11-07 | 2013-12-05 | DUKHCONP1AMKELGF4010, DUKHCONP1AZ1ELGF4005 FF+7d, DUKHCONP1AZ1ELGF4005 SS+7d | 19d |
| DUKHCONP1AZ1ELGF4015 |  | Install. of CAMS & Fire Fighting Accessories | 25d | 2014-01-08 | 2014-02-05 | DUKHPROGEN00PRDV3210, DUKHCONP1AZ1ARGF3055 FF+7d, DUKHPROGEN00PRDV3360, DUKHCONP1AZ1ARGF3060 SS+7d, DUKHPROGEN00PRDV3260, DUKHCONP1AZ1ARGF3060 FF+7d, DUKHPROGEN00PRDV3380, DUKHCONP1AZ1ARGF3055 SS+7d, DUKHCONP1AMKELGF4015, DUKHPROGEN00PRDV3370 | 6d |
| DUKHCONP1AZ1ELGF4020 |  | Installation of DBS,MCCB Accessories. | 20d | 2014-01-14 | 2014-02-05 | DUKHCONP1AZ1ARGF3060 SS+7d, DUKHCONP1AZ1ELGF4010 FF+5d, DUKHPROGEN00PRDV3170, DUKHCONP1AMKELGF4020, DUKHCONP1AZ1ARGF3055 SS+7d, DUKHCONP1AZ1ARGF3060 FF+7d, DUKHCONP1AZ1ELGF4010 SS+5d, DUKHCONP1AZ1ARGF3055 FF+7d | -6d |
| DUKHCONP1AZ1ELGF4025 |  | Installation of Lighting fixtures & Accessories | 25d | 2014-01-26 | 2014-02-24 | DUKHCONP1AZ1ARGF3060 SS+10d, DUKHCONP1AZ1ARGF3055 FF+10d, DUKHCONP1AZ1ARGF3060 FF+10d, DUKHPROGEN00PRDV3190, DUKHCONP1AZ1ELGF4020 FF+10d, DUKHCONP1AZ1ELGF4020 SS+10d, DUKHCONP1AMKELGF4025, DUKHCONP1AZ1ARGF3055 SS+10d | 1d |
| DUKHCONP1AZ1ELGF4030 |  | Installation of Telephone System | 20d | 2014-01-26 | 2014-02-18 | DUKHCONP1AZ1ELGF4020 SS+10d, DUKHPROGEN00PRDV3270, DUKHPROGEN00PRDV3280, DUKHCONP1AZ1ARGF3060 FF+5d, DUKHCONP1AZ1ELGF4020 FF+10d, DUKHCONP1AZ1ARGF3060 SS+5d, DUKHCONP1AMKELGF4030 | -6d |
|  | 15 | **FIRST FLOORS** |  | 2013-11-27 | 2014-03-30 |  |  |
| DUKHCONP1AZ1ELFF4035 |  | Fixing of wall conduits & switch socket boxes | 25d | 2013-11-27 | 2013-12-26 | DUKHCONP1AMKELFF4035, DUKHCONP1AZ1ARFF3300 SS+5d, DUKHCONP1AZ1ARFF3300 FF+5d | -14d |
| DUKHCONP1AZ1ELFF4040 |  | Cable tray & trunking installation | 20d | 2013-12-11 | 2014-01-04 | DUKHCONP1AMKELFF4040, DUKHCONP1AZ1ELFF4035 SS+5d, DUKHCONP1AZ1ELFF4035 FF+5d | 2d |
| DUKHCONP1AZ1ELFF4045 |  | Installation of wiring & Main Cabling | 25d | 2013-12-21 | 2014-01-18 | DUKHCONP1AMKELFF4045, DUKHCONP1AZ1ELFF4040 FF+7d, DUKHCONP1AZ1ELFF4040 SS+7d | 2d |
| DUKHCONP1AZ1ELFF4050 |  | Installation of Telephone System | 25d | 2014-02-15 | 2014-03-15 | DUKHCONP1AZ1ELGF4030 SS+10d, DUKHCONP1AZ1ARFF3360 FF+5d, DUKHCONP1AZ1MSEX5010 FF, DUKHCONP1AMKELFF4050, DUKHCONP1AZ1ARFF3360 SS+5d, DUKHCONP1AZ1ELGF4030 FF+10d | -12d |
| DUKHCONP1AZ1ELFF4055 |  | Install. of CAMS & Fire Fighting Accessories | 25d | 2014-02-17 | 2014-03-17 | DUKHCONP1AZ1ELGF4015 SS+5d, DUKHCONP1AMKELFF4055, DUKHCONP1AZ1ARFF3360 SS+7d, DUKHCONP1AZ1ARFF3360 FF+7d, DUKHCONP1AZ1ELGF4015 FF+5d | -22d |
| DUKHCONP1AZ1ELFF4060 |  | Installation of DBS,MCCB Accessories. | 20d | 2014-02-24 | 2014-03-18 | DUKHCONP1AZ1ARFF3360 FF+8d, DUKHCONP1AZ1ELFF4045 FF+5d, DUKHCONP1AZ1ARFF3360 SS+8d, DUKHCONP1AZ1ELFF4045 SS+5d, DUKHCONP1AMKELFF4060 | -23d |
| DUKHCONP1AZ1ELFF4065 |  | Installation of Lighting fixtures & Accessories | 25d | 2014-03-02 | 2014-03-30 | DUKHCONP1AZ1ARFF3360 FF+10d, DUKHCONP1AMKELFF4065, DUKHCONP1AZ1ELGF4025 FF+5d, DUKHCONP1AZ1ARFF3360 SS+10d, DUKHCONP1AZ1ELFF4060 SS+5d, DUKHCONP1AZ1ELFF4060 FF+5d, DUKHCONP1AZ1ELGF4025 SS+5d | -23d |
|  | 20 | **ROOF** |  | 2014-03-16 | 2014-04-16 |  |  |
| DUKHCONP1AZ1ELRF4070 |  | Installation of Isolator | 18d | 2014-03-16 | 2014-04-05 | DUKHCONP1AZ1ELFF4045 SS+10d, DUKHCONP1AZ1ELFF4045 FF+10d, DUKHCONP1AZ1ARRF3645 FF+7d, DUKHCONP1AMKELRF4070, DUKHCONP1AZ1ELFF4065 FF+5d, DUKHCONP1AZ1ELFF4050 FF+7d, DUKHPROGEN00PRDV3200, DUKHCONP1AZ1ARRF3645 SS+7d, DUKHCONP1AZ1ELFF4050 SS+5d, DUKHCONP1AZ1ELFF4065 SS+5d | -23d |
| DUKHCONP1AZ1ELRF4075 |  | Installation of TV Dish Antenna | 23d | 2014-03-22 | 2014-04-16 | DUKHPROGEN00PRDV3290, DUKHCONP1AZ1ELRF4070 SS+5d, DUKHCONP1AZ1ELRF4070 FF+5d, DUKHCONP1AMKELRF4075 | -23d |
|  | 15 | **PLUMBING, DRAINAGE & FIRE FIGHTING WORKS** |  | 2013-07-01 | 2014-04-16 |  |  |
|  | 10 | **GROUND FLOOR** |  | 2013-07-01 | 2014-02-24 |  |  |
| DUKHCONP1AZ1PLUG4300 |  | Drainage / Storm Pipes in Grade Slab | 16d | 2013-07-01 | 2013-07-18 | DUKHCONP1AZ1STUG1040 SS+10d, DUKHPROGEN00PRDV3070, DUKHPROGEN00PRDV3060, DUKHCONP1AZ1STUG1040 FF+10d | -24d |
| DUKHCONP1AZ1PLGF4305 |  | Installation of Plumbing pipes & testing | 18d | 2013-10-27 | 2013-11-16 | DUKHCONP1AMKPLGF4305, DUKHCONP1AZ1ARGF3000 SS+7d, DUKHCONP1AZ1ARGF3000 FF+7d | -6d |
| DUKHCONP1AZ1PLGF4310 |  | Installation of Drainage pipes &testing | 18d | 2013-10-27 | 2013-11-16 | DUKHCONP1AZ1PLGF4305 FF, DUKHCONP1AZ1ARGF3000 SS+7d, DUKHCONP1AMKPLGF4310, DUKHCONP1AZ1PLGF4305 SS, DUKHCONP1AZ1ARGF3000 FF+7d | 15d |
| DUKHCONP1AZ1PLGF4315 |  | Sanitary Fittings & Accessories | 20d | 2014-01-26 | 2014-02-18 | DUKHCONP1AZ1ARGF3065 FF+5d, DUKHCONP1AZ1PLGF4310 FF+5d, DUKHPROGEN00PRDV3770, DUKHPROGEN00PRDV3150, DUKHCONP1AZ1PLGF4310 SS+5d, DUKHCONP1AZ1ARGF3065 SS+5d, DUKHCONP1AMKPLGF4315 | 21d |
| DUKHCONP1AZ1PLGF4320 |  | Installation of Water Heater | 15d | 2014-02-06 | 2014-02-24 | DUKHPROGEN00PRDV3230, DUKHCONP1AZ1PLGF4315 FF+5d, DUKHCONP1AZ1ARGF3060 FF+5d, DUKHCONP1AZ1PLGF4315 SS+5d, DUKHCONP1AZ1ARGF3060 SS+5d, DUKHCONP1AMKPLGF4320 | 21d |
|  | 15 | **FIRST FLOORS** |  | 2013-12-08 | 2014-03-30 |  |  |
| DUKHCONP1AZ1PLFF4325 |  | Installation of Plumbing pipes & testing | 18d | 2013-12-08 | 2013-12-29 | DUKHPROGEN00PRDV3080, DUKHCONP1AZ1ARFF3300 SS+7d, DUKHCONP1AZ1ARFF3300 FF+7d, DUKHCONP1AMKPLFF4325 | -24d |
| DUKHCONP1AZ1PLFF4330 |  | Installation of Drainage pipes & testing | 18d | 2013-12-08 | 2013-12-29 | DUKHCONP1AZ1ARFF3300 FF+7d, DUKHCONP1AZ1PLFF4325 FF, DUKHCONP1AZ1PLFF4325 SS, DUKHCONP1AMKPLFF4330, DUKHCONP1AZ1ARFF3300 SS+7d | -2d |
| DUKHCONP1AZ1PLFF4335 |  | Sanitary Fittings & Accessories | 20d | 2014-03-02 | 2014-03-24 | DUKHCONP1AZ1PLFF4330 SS+5d, DUKHCONP1AZ1ARFF3365 FF+5d, DUKHCONP1AZ1ARFF3365 SS+5d, DUKHCONP1AMKPLFF4335, DUKHCONP1AZ1PLFF4330 FF+5d | -23d |
| DUKHCONP1AZ1PLFF4340 |  | Installation of Water Heater | 15d | 2014-03-13 | 2014-03-30 | DUKHCONP1AZ1PLFF4335 SS+5d, DUKHCONP1AZ1PLFF4335 FF+5d, DUKHCONP1AMKPLFF4340, DUKHCONP1AZ1ARFF3360 FF+5d, DUKHCONP1AZ1ARFF3360 SS+5d | -23d |
|  | 20 | **ROOF** |  | 2014-01-02 | 2014-04-16 |  |  |
| DUKHCONP1AZ1PLRF4345 |  | Installation of Plumbing pipes & fittings | 15d | 2014-01-02 | 2014-01-19 | DUKHCONP1AMKPLRF4345, DUKHCONP1AZ1ARRF3605 FF+7d, DUKHCONP1AZ1ARRF3605 SS+7d | 28d |
| DUKHCONP1AZ1PLRF4350 |  | Installation of Rain water Pipes | 15d | 2014-02-12 | 2014-03-01 | DUKHCONP1AZ1AREL3665 FF+7d, DUKHCONP1AZ1PLFF4330 FF+5d, DUKHCONP1AZ1ARRF3645 FF+5d, DUKHCONP1AZ1PLRF4345 SS+8d, DUKHCONP1AMKPLRF4350, DUKHCONP1AZ1AREL3665 SS+7d, DUKHCONP1AZ1PLRF4345 FF+8d, DUKHCONP1AZ1ARRF3645 SS+5d, DUKHCONP1AZ1PLFF4330 SS+5d | 2d |
| DUKHCONP1AZ1PLRF4355 |  | Roof Water Tank Installation & Connections | 25d | 2014-03-19 | 2014-04-16 | DUKHCONP1AZ1PLFF4340 FF+5d, DUKHCONP1AZ1PLRF4350 SS+5d, DUKHCONP1AZ1PLRF4345 FF+8d, DUKHCONP1AZ1PLRF4350 FF+5d, DUKHCONP1AMKPLRF4355, DUKHCONP1AZ1ARRF3655 FF+5d, DUKHCONP1AZ1PLRF4345 SS+8d, DUKHCONP1AZ1ARRF3655 SS+5d, DUKHCONP1AZ1PLFF4340 SS+5d | -23d |
|  | 20 | **AC WORKS** |  | 2013-11-21 | 2014-04-13 |  |  |
|  | 10 | **GROUND FLOOR** |  | 2013-11-21 | 2014-02-22 |  |  |
| DUKHCONP1AZ1ACGF4600 |  | Installation AC Pipes | 20d | 2013-11-21 | 2013-12-14 | DUKHCONP1AZ1ARGF3005 FF+7d, DUKHPROGEN00PRDV3160, DUKHCONP1AZ1ARGF3005 SS+7d, DUKHCONP1AMKACGF4600 | 20d |
| DUKHCONP1AZ1ACGF4605 |  | Fixing of Ventilation Equipments | 25d | 2014-01-08 | 2014-02-05 | DUKHPROGEN00PRDV3340, DUKHCONP1AZ1ACGF4600 FF+10d, DUKHCONP1AZ1ARGF3055 SS+7d, DUKHCONP1AZ1ARGF3060 SS+7d, DUKHPROGEN00PRDV3530, DUKHCONP1AZ1ARGF3055 FF+7d, DUKHCONP1AZ1ARGF3060 FF+7d, DUKHCONP1AZ1ACGF4600 SS+10d, DUKHCONP1AMKACGF4605 | 8d |

| ID | WBS | Task | Duration | Start | Finish | Predecessors | Complete | Total float |
| --- | --- | --- | --- | --- | --- | --- | --- | --- |
| DUKHCONP1AZ1ACGF4610 |  | Fixing of Split AC | 20d | 2014-01-29 | 2014-02-22 | DUKHPROGEN00PRDV3240, DUKHCONP1AMKACGF4610, DUKHCONP1AZ1ACGF4605 FF+13d, DUKHCONP1AZ1ACGF4605 SS+13d |  | 8d |
|  | 15 | **FIRST FLOORS** |  | 2013-12-30 | 2014-04-01 |  |  |  |
| DUKHCONP1AZ1ACFF4615 |  | Installation AC Pipes | 20d | 2013-12-30 | 2014-01-21 | DUKHCONP1AMKACFF4615, DUKHCONP1AZ1ARFF3305 SS+7d, DUKHCONP1AZ1ARFF3305 FF+7d |  | 3d |
| DUKHCONP1AZ1ACFF4620 |  | Fixing of Ventilation Equipments | 25d | 2014-02-17 | 2014-03-17 | DUKHCONP1AZ1ACFF4615 FF+10d, DUKHCONP1AZ1ARFF3360 FF+7d, DUKHCONP1AZ1ACFF4615 SS+10d, DUKHCONP1AMKACFF4620, DUKHCONP1AZ1ARFF3360 SS+7d |  | -21d |
| DUKHCONP1AZ1ACFF4625 |  | Fixing of Split AC | 20d | 2014-03-10 | 2014-04-01 | DUKHCONP1AMKACFF4625, DUKHCONP1AZ1ACFF4620 SS+13d, DUKHCONP1AZ1ACFF4620 FF+13d |  | -21d |
|  | 20 | **ROOF** |  | 2014-02-02 | 2014-04-13 |  |  |  |
| DUKHCONP1AZ1ACRF4630 |  | Installation of Refrigerant Pipes | 25d | 2014-02-02 | 2014-03-03 | DUKHCONP1AZ1ARRF3645 SS+7d, DUKHCONP1AZ1ARRF3645 FF+7d, DUKHCONP1AZ1ACGF4600 SS+7d, DUKHCONP1AZ1ACFF4615 SS+7d, DUKHCONP1AMKACRF4630, DUKHCONP1AZ1ACFF4615 FF+7d, DUKHCONP1AZ1ACGF4600 FF+7d |  | 10d |
| DUKHCONP1AZ1ACRF4635 |  | Installation of Condensing Unit | 25d | 2014-03-16 | 2014-04-13 | DUKHCONP1AZ1ACRF4630 FF+5d, DUKHCONP1AZ1ACGF4610 SS+5d, DUKHCONP1AMKACRF4635, DUKHCONP1AZ1ACGF4610 FF+5d, DUKHCONP1AZ1ACFF4625 SS+5d, DUKHCONP1AZ1ACRF4630 SS+5d, DUKHCONP1AZ1ACFF4625 FF+5d |  | -20d |
|  | 25 | **EXTERNAL WORKS** |  | 2013-12-31 | 2014-05-01 |  |  |  |
|  | 10 | **MISCELLANEOUS** |  | 2013-12-31 | 2014-05-01 |  |  |  |
| DUKHCONP1AZ1MSEX5000 |  | Construction of Manholes | 25d | 2013-12-31 | 2014-01-28 | DUKHCONP1AZ1PLGF4310 FF+10d, DUKHCONP1AZ1STRF2055 SS+5d, DUKHCONP1AZ1STRF2055 FF+5d, DUKHCONP1AMKMSEX5000, DUKHCONP1AZ1PLGF4310 SS+10d, DUKHPROGEN00PRDV3590 |  | -11d |
| DUKHCONP1AZ1MSEX5005 |  | Construction of Soak pit, Chambers | 25d | 2014-01-14 | 2014-02-12 | DUKHCONP1AZ1MSEX5000 SS+12d, DUKHCONP1AMKMSEX5005, DUKHCONP1AZ1MSEX5000 FF+12d |  | -11d |
| DUKHCONP1AZ1MSEX5020 |  | Construction Entrance Ramp | 25d | 2014-01-14 | 2014-02-12 | DUKHCONP1AZ1STRF2055 SS, DUKHCONP1AMKMSEX5020, DUKHCONP1AZ1STRF2055 FF |  | -8d |
| DUKHCONP1AZ1MSEX5015 |  | Construction of grease Trap | 20d | 2014-02-03 | 2014-02-26 | DUKHCONP1AZ1MSEX5005 SS+12d, DUKHCONP1AMKMSEX5015, DUKHCONP1AZ1MSEX5005 FF+12d |  | 9d |
| DUKHCONP1AZ1MSEX5025 |  | SS.Handrails and Balustrades | 20d | 2014-02-03 | 2014-02-26 | DUKHCONP1AZ1MSEX5020 FF+12d, DUKHCONP1AZ1MSEX5020 SS+12d, DUKHCONP1AMKMSEX5025, DUKHPROGEN00PRDV3580 |  | -2d |
| DUKHCONP1AZ1MSEX5010 |  | Telephone cable laying | 25d | 2014-02-13 | 2014-03-13 | DUKHCONP1AZ1MSEX5005 |  | -11d |
| DUKHCONP1AZ1MSEX5335 |  | Aluminum Roll-up Shutter with 2m Wall | 25d | 2014-04-03 | 2014-05-01 | DUKHPROGEN00PRDV3430, DUKHCONI1AZ1BWGL5325 SS+10d |  | 79d |
|  | 15 | **WATER TANK ENCLOSURE** |  | 2014-01-21 | 2014-04-07 |  |  |  |
| DUKHCONP1AZ1WEEX5030 |  | Excavation | 20d | 2014-01-21 | 2014-02-13 | DUKHCONP1AZ1STRF2055 SS+5d, DUKHCONP1AMKWEEX5030, DUKHCONP1AZ1STRF2055 FF+5d |  | -11d |
| DUKHCONP1AZ1WEEX5035 |  | Construction of Raft | 25d | 2014-01-29 | 2014-02-27 | DUKHCONP1AZ1WEEX5030 FF+10d, DUKHCONP1AMKWEEX5035, DUKHCONP1AZ1WEEX5030 SS+5d |  | -13d |
| DUKHCONP1AZ1WEEX5040 |  | Block works & Plastering | 25d | 2014-02-08 | 2014-03-09 | DUKHCONP1AZ1WEEX5035 SS+8d, DUKHCONP1AZ1WEEX5035 FF+8d, DUKHCONP1AMKWEEX5040 |  | -13d |
| DUKHCONP1AZ1WEEX5045 |  | Flooring & Painting | 25d | 2014-02-16 | 2014-03-16 | DUKHCONP1AZ1WEEX5040 SS+6d, DUKHCONP1AZ1WEEX5040 FF+6d, DUKHCONP1AMKWEEX5045 |  | -13d |
| DUKHCONP1AZ1WEEX5050 |  | Installation of Steel Gate | 20d | 2014-03-01 | 2014-03-23 | DUKHCONP1AZ1WEEX5045 FF+6d, DUKHCONP1AMKWEEX5050, DUKHPROGEN00PRDV3500, DUKHCONP1AZ1MSEX5025 FF+10d, DUKHCONP1AZ1WEEX5045 SS+5d |  | -13d |
| DUKHCONP1AZ1WEEX5060 |  | Structural steel & SS Shed cover installation | 25d | 2014-03-02 | 2014-03-30 | DUKHCONP1AMKWEEX5060, DUKHPROGEN00PRDV3610, DUKHCONP1AZ1MSEX5025 FF+10d, DUKHCONP1AZ1WEEX5050 SS, DUKHCONP1AZ1WEEX5050 FF, DUKHPROGEN00PRDV3620 |  | -14d |
| DUKHCONP1AZ1WEEX5065 |  | Install. of Water Tank,Chiller,Pump & Meter | 25d | 2014-03-10 | 2014-04-07 | DUKHPROGEN00PRDV3640, DUKHCONP1AZ1WEEX5060 SS+6d, DUKHPROGEN00PRDV3330, DUKHCONP1AZ1PLRF4350 FF+5d, DUKHCONP1AZ1MSEX5015 FF+5d, DUKHPROGEN00PRDV3220, DUKHPROGEN00PRDV3520, DUKHPROGEN00PRDV3680, DUKHCONP1AZ1PLRF4350 SS+5d, DUKHCONP1AMKWEEX5065, DUKHCONP1AZ1MSEX5015 SS+5d, DUKHCONP1AZ1WEEX5060 FF+6d |  | -15d |
|  | 20 | **HARD LANDSCAPING** |  | 2014-01-28 | 2014-03-11 |  |  |  |
| DUKHCONP1AZ1HDEX5090 |  | kerb works | 20d | 2014-01-28 | 2014-02-20 | DUKHCONP1AZ1MSEX5020 SS+7d, DUKHCONP1AZ1MSEX5020 FF+7d, DUKHCONP1AMKHDEX5090, DUKHPROGEN00PRDV3600 |  | -8d |
| DUKHCONP1AZ1HDEX5095 |  | Cobble Stone Works | 20d | 2014-02-09 | 2014-03-04 | DUKHCONP1AMKHDEX5095, DUKHCONP1AZ1HDEX5090 FF+10d, DUKHCONP1AZ1HDEX5090 SS+10d |  | -8d |
| DUKHCONP1AZ1HDEX5100 |  | Interlock works | 20d | 2014-02-17 | 2014-03-11 | DUKHPROGEN00PRDV3660, DUKHCONP1AZ1HDEX5095 SS+6d, DUKHCONP1AZ1HDEX5095 FF+6d, DUKHCONP1AMKHDEX5100 |  | -8d |
|  | 25 | **SOFT LANDSCAPING** |  | 2014-02-23 | 2014-03-30 |  |  |  |
| DUKHCONP1AZ1SLEX5105 |  | Laying of Grass/ green area | 25d | 2014-02-23 | 2014-03-23 | DUKHPROGEN00PRDV3790, DUKHCONP1AZ1HDEX5100 FF+5d, DUKHCONP1AMKSLEX5105, DUKHCONP1AZ1HDEX5100 SS+5d |  | -8d |
| DUKHCONP1AZ1SLEX5110 |  | Laying of Palm tree | 25d | 2014-03-02 | 2014-03-30 | DUKHCONP1AMKSLEX5110, DUKHCONP1AZ1SLEX5105 FF+6d, DUKHCONP1AZ1SLEX5105 SS+6d |  | -8d |
|  | 30 | **TESTING AND COMMISSIONING** |  | 2014-04-19 | 2014-05-17 |  |  |  |
| DUKHCONP1AZ1ACTC8000 |  | Pre-Commissioning & Testing of AC Works | 25d | 2014-04-19 | 2014-05-17 | DUKHCONP1AMKELFF4055, DUKHCONP1AMKELRF4075, DUKHCONP1AZ1ARFF3395, DUKHCONP1AZ1ACFF4625, DUKHCONP1AMKHDEX5100, DUKHCONP1AMKACRF4635, DUKHCONP1AMKELGF4025, DUKHCONP1AZ1ACRF4635, DUKHCONP1AMKARRF3655, DUKHCONP1AMKPLRF4355, DUKHCONP1AMKELFF4050, DUKHCONP1AMKELGF4030, DUKHCONP1AMKAREL3680, DUKHCONP1AMKARFF3395, DUKHCONP1AMKMSEX5005, DUKHCONP1AMKACFF4625, DUKHCONP1AZ1AREL3680, DUKHCONP1AMKSLEX5110, DUKHCONP1AMKARRF3620, DUKHCONP1AMKELFF4065, DUKHCONP1AMKELGF4015, DUKHCONP1AZ1ARGF3095, DUKHCONP1AMKWEEX5065, DUKHCONP1AMKSLEX5105, DUKHCONP1AMKARGF3095, DUKHCONP1AMKPLGF4320, DUKHCONP1AMKPLRF4350 |  | -24d |
| DUKHCONP1AZ1ELTC8010 |  | Pre-Commissioning & Testing of Electrical Works | 25d | 2014-04-19 | 2014-05-17 | DUKHCONP1AZ1SLEX5105, DUKHCONP1AMKACFF4625, DUKHCONP1AZ1ELFF4055, DUKHCONP1AMKMSEX5005, DUKHCONP1AMKWEEX5065, DUKHCONP1AMKARRF3655, DUKHCONP1AMKARRF3620, DUKHCONP1AMKELFF4055, DUKHCONP1AMKELGF4030, DUKHCONP1AMKAREL3680, DUKHCONP1AMKARGF3095, DUKHCONP1AMKELGF4025, DUKHCONP1AZ1ARRF3660, DUKHCONP1AZ1ELGF4025, DUKHCONP1AZ1ELFF4050, DUKHCONP1AMKSLEX5110, DUKHCONP1AMKPLGF4320, DUKHCONP1AMKELGF4015, DUKHCONP1AZ1ARRF3620, DUKHCONP1AZ1ELRF4075, DUKHCONP1AZ1ELFF4065, DUKHCONP1AZ1SLEX5110, DUKHCONP1AMKSLEX5105, DUKHCONP1AMKHDEX5100, DUKHCONP1AMKELFF4065, DUKHCONP1AMKELFF4050, DUKHCONP1AZ1ARFF3395, DUKHCONP1AZ1ELGF4015, DUKHCONP1AZ1ELGF4030, DUKHCONP1AZ1HDEX5100, DUKHCONP1AZ1MSEX5005, DUKHCONP1AMKELRF4075, DUKHCONP1AZ1ARGF3095, DUKHCONP1AZ1ARRF3655, DUKHCONP1AMKPLRF4355, DUKHCONP1AZ1AREL3680, DUKHCONP1AMKARFF3395, DUKHCONP1AMKPLRF4350, DUKHCONP1AMKACRF4635 |  | -24d |
| DUKHCONP1AZ1PLTC8005 |  | Pre-Commissioning & Testing of Plumbing Works | 25d | 2014-04-19 | 2014-05-17 | DUKHCONP1AZ1AREL3680, DUKHCONP1AZ1ARFF3395, DUKHCONP1AMKWEEX5065, DUKHCONP1AMKELFF4055, DUKHCONP1AZ1ARRF3655, DUKHCONP1AZ1ARRF3660, DUKHCONP1AMKMSEX5005, DUKHCONP1AMKSLEX5105, DUKHCONP1AMKARRF3655, DUKHCONP1AMKPLGF4320, DUKHCONP1AMKPLRF4350, DUKHCONP1AMKPLRF4355, DUKHCONP1AMKACFF4625, DUKHCONP1AMKELGF4015, DUKHCONP1AMKELGF4030, DUKHCONP1AMKARFF3395, DUKHCONP1AMKACRF4635, DUKHCONP1AMKELFF4065, DUKHCONP1AMKELGF4025, DUKHCONP1AZ1ARRF3620, DUKHCONP1AZ1PLRF4350, DUKHCONP1AZ1WEEX5065, DUKHCONP1AMKARGF3095, DUKHCONP1AMKARRF3620, DUKHCONP1AMKELFF4050, DUKHCONP1AZ1PLGF4320, DUKHCONP1AZ1MSEX5005, DUKHCONP1AZ1SLEX5105, DUKHCONP1AMKAREL3680, DUKHCONP1AZ1PLRF4355, DUKHCONP1AMKSLEX5110, DUKHCONP1AMKELRF4075, DUKHCONP1AZ1ARGF3095, DUKHCONP1AZ1HDEX5100, DUKHCONP1AZ1SLEX5110, DUKHCONP1AMKHDEX5100 |  | -24d |
|  | 15 | **ZONE - 2 (4 Twin Villas)** |  | 2013-03-30 | 2014-06-15 |  |  |  |
|  | 10 | **STRUCTURAL WORKS** |  | 2013-03-30 | 2014-01-21 |  |  |  |
|  | 10 | **SUB STRUCTURE** |  | 2013-03-30 | 2013-09-09 |  |  |  |
|  | 10 | **UPTO GRADE SLAB** |  | 2013-03-30 | 2013-09-09 |  |  |  |
| DUKHCONP1AZ2STUG1000 |  | Footing Excavation | 25d | 2013-03-30 A | 2013-04-27 A | DUKHCONP1AZ1STUG1000, DUKHCONP1AGNSP005000 | 100% |  |
| DUKHCONP1AZ2STUG1005 |  | Footing Antitermite | 23d | 2013-04-10 A | 2013-05-06 | DUKHCONP1AZ2STUG1000 SS+10d, DUKHCONP1AZ2STUG1000 FF+5d | 61% | -12d |
| DUKHCONP1AZ2STUG1010 |  | Footing Blinding | 23d | 2013-04-14 A | 2013-05-09 | DUKHCONP1AZ2STUG1005 SS+3d, DUKHCONP1AZ2STUG1005 FF+3d | 48% | -12d |
| DUKHCONP1AZ2STUG1015 |  | Footing Waterproofing & Screed | 25d | 2013-04-20 A | 2013-05-18 | DUKHCONP1AZ2STUG1010 FF+5d, DUKHCONP1AZ2STUG1010 SS+5d | 24% | -12d |
| DUKHCONP1AZ2STUG1020 |  | Construction of foundations | 20d | 2013-05-05 | 2013-05-27 | DUKHCONP1AZ2STUG1015 SS+7d, DUKHCONP1AZ2STUG1015 FF+8d |  | -12d |
| DUKHCONP1AZ2STUG1025 |  | Construction of neck of columns | 25d | 2013-05-28 | 2013-06-25 | DUKHCONP1AZ2STUG1020 FF+7d, DUKHCONP1AZ1STUG1025, DUKHCONP1AZ2STUG1020 SS+8d |  | -24d |
| DUKHCONP1AZ2STUG1030 |  | Waterproofing Footing & Neck Column | 25d | 2013-06-06 | 2013-07-04 | DUKHCONP1AZ2STUG1025 SS+8d, DUKHCONP1AZ2STUG1025 FF+8d |  | -24d |
| DUKHCONP1AZ2STUG1035 |  | Backfilling Upto Grade Beam Bottom | 25d | 2013-06-20 | 2013-07-18 | DUKHCONP1AZ2STUG1030 SS+12d, DUKHCONP1AZ2STUG1030 FF+12d, DUKHCONP1AZ1STUG1035 |  | -24d |
| DUKHCONP1AZ2STUG1040 |  | Construction of Grade Beams | 25d | 2013-07-07 | 2013-08-04 | DUKHCONP1AZ2STUG1035 SS+14d, DUKHCONP1AZ2STUG1035 FF+14d |  | -24d |
| DUKHCONP1AZ2STUG1045 |  | Construction of slab on grade | 25d | 2013-08-08 | 2013-09-09 | DUKHCONP1AZ2PLUG4300 FF+8d, DUKHCONP1AZ2STUG1040 FF+10d, DUKHCONP1AZ2PLUG4300 SS+8d, DUKHCONP1AZ1STUG1045, DUKHCONP1AZ2STUG1040 SS+10d |  | -24d |
|  | 15 | **SUPERSTRUCTURE** |  | 2013-08-28 | 2014-01-21 |  |  |  |
|  | 10 | **GROUND FLOOR** |  | 2013-08-28 | 2013-10-24 |  |  |  |
| DUKHCONP1AZ2STGF2000 |  | Column-Rebar & Formwork | 25d | 2013-08-28 | 2013-09-25 | DUKHCONP1AZ1STGF2000, DUKHCONP1AZ2STUG1045 SS+14d, DUKHCONP1AZ2STUG1045 FF+7d |  | -24d |
| DUKHCONP1AZ2STGF2005 |  | Column-Concrete | 24d | 2013-09-05 | 2013-10-02 | DUKHCONP1AZ2STGF2000 SS+7d, DUKHCONP1AZ2STGF2000 FF+2d |  | -22d |
| DUKHCONP1AZ2STGF2010 |  | Beam, Stairs ,Slab-Rebar & Formwork | 25d | 2013-09-21 | 2013-10-21 | DUKHCONP1AZ2STGF2005 FF+14d, DUKHCONP1AZ2STGF2005 SS+2d |  | -22d |
| DUKHCONP1AZ2STGF2015 |  | Beam, Stairs ,Slab-Concrete | 14d | 2013-10-07 | 2013-10-24 | DUKHCONP1AZ1STGF2015, DUKHCONP1AZ2STGF2010 SS+10d, DUKHCONP1AZ2STGF2010 FF+3d |  | -22d |
|  | 15 | **FIRST FLOORS** |  | 2013-10-09 | 2013-12-07 |  |  |  |
| DUKHCONP1AZ2STFF2020 |  | Column-Rebar & Formwork | 25d | 2013-10-09 | 2013-11-09 | DUKHCONP1AZ2STGF2015 SS+2d, DUKHCONP1AZ1STFF2020, DUKHCONP1AZ2STGF2015 FF+5d |  | -22d |
| DUKHCONP1AZ2STFF2025 |  | Column-Concrete | 24d | 2013-10-21 | 2013-11-17 | DUKHCONP1AZ2STFF2020 SS+8d, DUKHCONP1AZ2STFF2020 FF+2d |  | -20d |
| DUKHCONP1AZ2STFF2030 |  | Beam, Stairs ,Slab-Rebar & Formwork | 25d | 2013-11-05 | 2013-12-03 | DUKHCONP1AZ2STFF2025 FF+14d, DUKHCONP1AZ2STFF2025 SS+2d |  | -20d |
| DUKHCONP1AZ2STFF2035 |  | Beam, Stairs ,Slab-Concrete | 14d | 2013-11-21 | 2013-12-07 | DUKHCONP1AZ2STFF2030 SS+10d, DUKHCONP1AZ1STFF2035, DUKHCONP1AZ2STFF2030 FF+3d |  | -20d |
|  | 20 | **ROOF** |  | 2013-11-24 | 2014-01-21 |  |  |  |
| DUKHCONP1AZ2STRF2040 |  | Column-Rebar & Formwork | 18d | 2013-11-24 | 2013-12-14 | DUKHCONP1AZ2STFF2035 SS+2d, DUKHCONP1AZ1STRF2040, DUKHCONP1AZ2STFF2035 FF+3d |  | -2d |
| DUKHCONP1AZ2STRF2045 |  | Column-Concrete | 17d | 2013-11-27 | 2013-12-16 | DUKHCONP1AZ2STRF2040 SS+3d, DUKHCONP1AZ2STRF2040 FF+1d |  | 8d |
| DUKHCONP1AZ2STRF2050 |  | Slab-Rebar & Formwork - Head Room | 20d | 2013-11-30 | 2013-12-23 | DUKHCONP1AZ2STRF2045 SS+2d, DUKHCONP1AZ2STRF2045 FF+5d |  | 8d |
| DUKHCONP1AZ2STRF2055 |  | Slab-Concrete-Head room | 13d | 2013-12-10 | 2013-12-25 | DUKHCONP1AZ1STRF2055, DUKHCONP1AZ2STRF2050 FF+2d, DUKHCONP1AZ2STRF2050 SS+5d |  | 8d |
| DUKHCONP1AZ2STRF2060 |  | Construction of Parapets | 25d | 2013-12-12 | 2014-01-11 | DUKHCONP1AZ2STRF2055 FF+14d, DUKHCONP1AZ2STRF2055 SS+2d |  | 32d |
| DUKHCONP1AZ2STRF2065 |  | Construction of up stands/Plinth | 25d | 2013-12-24 | 2014-01-21 | DUKHCONP1AZ1STRF2065, DUKHCONP1AZ2STRF2060 FF+5d, DUKHCONP1AZ2STRF2060 SS+5d |  | 28d |
|  | 15 | **FINISHING WORKS** |  | 2013-11-09 | 2014-05-17 |  |  |  |
|  | 10 | **INTERNAL FINISHES** |  | 2013-11-09 | 2014-05-17 |  |  |  |

| ID | WBS | Task | Duration | Start | Finish | Predecessors | Total float |
| --- | --- | --- | --- | --- | --- | --- | --- |
|  | 10 | **GROUND FLOOR** |  | 2013-11-09 | 2014-04-22 |  |  |
| DUKHCONP1AZ2ARGF3000 |  | Block work | 25d | 2013-11-09 | 2013-12-07 | DUKHCONP1AZ2STGF2015 FF+21d, DUKHCONP1AZ2STGF2015 SS+21d, DUKHCONP1AZ1ARGF3000 | -6d |
| DUKHCONP1AZ2ARGF3005 |  | Plastering work | 25d | 2013-12-01 | 2013-12-30 | DUKHCONP1AZ1ARGF3005, DUKHCONP1AZ2ELGF4000 SS+5d, DUKHCONP1AZ2ARGF3000 FF+7d, DUKHCONP1AZ2ARGF3000 SS+7d, DUKHCONP1AZ2ELGF4000 FF+5d, DUKHCONP1AZ2PLGF4305 SS+5d, DUKHCONP1AZ2PLGF4305 FF+5d | -6d |
| DUKHCONP1AZ2ARGF3010 |  | Flooring screed | 21d | 2013-12-09 | 2014-01-02 | DUKHCONP1AZ2ARGF3005 SS+7d, DUKHCONP1AZ2ARGF3005 FF+3d | 2d |
| DUKHCONP1AZ2ARGF3015 |  | Wet area waterproofing & Protection Screed | 15d | 2013-12-19 | 2014-01-05 | DUKHCONP1AZ1ARGF3015, DUKHCONP1AZ2ARGF3005 SS+7d, DUKHCONP1AZ2ARGF3005 FF+5d | -6d |
| DUKHCONP1AZ2ARGF3030 |  | Paint First coat | 25d | 2013-12-22 | 2014-01-19 | DUKHCONP1AZ2ARGF3005 SS+14d, DUKHCONP1AZ1ARGF3030, DUKHCONP1AZ2ARGF3005 FF+14d | 5d |
| DUKHCONP1AZ2ARGF3020 |  | Ceramic Wall Tiling | 25d | 2013-12-25 | 2014-01-22 | DUKHCONP1AZ2PLGF4305 FF+4d, DUKHCONP1AZ2PLGF4310 SS+4d, DUKHCONP1AZ1ARGF3020, DUKHCONP1AZ2PLGF4305 SS+4d, DUKHCONP1AZ2ARGF3015 SS+5d, DUKHCONP1AZ2ARGF3015 FF+5d, DUKHCONP1AZ2PLGF4310 FF+4d | -6d |
| DUKHCONP1AZ2ARGF3025 |  | Porcelain Tile flooring | 25d | 2013-12-31 | 2014-01-28 | DUKHCONP1AZ1ARGF3025, DUKHCONP1AZ2ARGF3020 FF+5d, DUKHCONP1AZ2ARGF3010 FF+10d, DUKHCONP1AZ2ARGF3010 SS+10d, DUKHCONP1AZ2ARGF3020 SS+5d | -6d |
| DUKHCONP1AZ2ARGF3045 |  | Fixing of Suspension systems | 20d | 2014-01-18 | 2014-02-09 | DUKHCONP1AZ2ARGF3030 FF+7d, DUKHCONP1AZ1ARGF3045, DUKHCONP1AZ2ELGF4010 FF+5d, DUKHCONP1AZ2ARGF3025 FF+10d, DUKHCONP1AZ2ARGF3030 SS+7d, DUKHCONP1AZ2ARGF3025 SS+10d, DUKHCONP1AZ2ELGF4010 SS+5d | -6d |
| DUKHCONP1AZ2ARGF3035 |  | Slate Tile Flooring & Skirting | 15d | 2014-01-20 | 2014-02-05 | DUKHCONP1AZ2ARGF3010 FF+13d, DUKHCONP1AZ2ARGF3025 SS+13d, DUKHCONP1AZ2ARGF3025 FF+7d, DUKHCONP1AZ2ARGF3010 SS+13d | -1d |
| DUKHCONP1AZ2ARGF3055 |  | Aluminum tile false ceiling | 25d | 2014-01-26 | 2014-02-24 | DUKHCONP1AZ2ARGF3045 FF+7d, DUKHCONP1AZ2ARGF3045 SS+7d, DUKHCONP1AZ2ACGF4600 SS+7d, DUKHCONP1AZ2ACGF4600 FF+7d | -3d |
| DUKHCONP1AZ2ARGF3040 |  | Cobble Tile flooring | 15d | 2014-01-27 | 2014-02-13 | DUKHCONP1AZ2ARGF3010 SS+13d, DUKHCONP1AZ2ARGF3025 FF+13d, DUKHCONP1AZ2ARGF3010 FF+13d, DUKHCONP1AZ2ARGF3025 SS+13d, DUKHCONP1AZ2ARGF3035 FF+4d, DUKHCONP1AZ2ARGF3035 SS+4d | -3d |
| DUKHCONP1AZ2ARGF3060 |  | Gypsum board false ceiling | 25d | 2014-01-29 | 2014-02-27 | DUKHCONP1AZ2ARGF3045 SS+10d, DUKHCONP1AZ1ARGF3060, DUKHCONP1AZ2ACGF4600 SS+7d, DUKHCONP1AZ2ACGF4600 FF+7d, DUKHCONP1AZ2ARGF3045 FF+10d | -6d |
| DUKHCONP1AZ2ARGF3050 |  | Granite - Stair case flooring & Skirting | 20d | 2014-02-04 | 2014-02-27 | DUKHCONP1AZ2ARGF3025 SS+13d, DUKHCONP1AZ2ARGF3040 SS+7d, DUKHCONP1AZ2ARGF3025 FF+13d, DUKHCONP1AZ2ARGF3040 FF+7d | -3d |
| DUKHCONP1AZ2ARGF3065 |  | Wooden door & PVC Door | 15d | 2014-02-19 | 2014-03-08 | DUKHCONP1AZ1ARGF3065, DUKHCONP1AZ2ARGF3050 SS+7d, DUKHCONP1AZ2ARGF3035 SS+7d, DUKHCONP1AZ2ARGF3050 FF+7d, DUKHCONP1AZ2ARGF3035 FF+7d | -3d |
| DUKHCONP1AZ2ARGF3070 |  | Aluminum doors | 15d | 2014-02-25 | 2014-03-13 | DUKHCONP1AZ2ARGF3065 FF+5d, DUKHCONP1AZ1ARGF3070, DUKHCONP1AZ2ARGF3065 SS+5d | -3d |
| DUKHCONP1AZ2ARGF3075 |  | Carpentry & Joinery Works | 20d | 2014-03-03 | 2014-03-25 | DUKHCONP1AZ2ARGF3070 FF+7d, DUKHCONP1AZ2ARGF3070 SS+5d, DUKHCONP1AZ1ARGF3075 | -3d |
| DUKHCONP1AZ2ARGF3080 |  | Aluminum windows | 20d | 2014-03-04 | 2014-03-26 | DUKHCONP1AZ2ARGF3070 SS+6d, DUKHCONP1AZ2ARGF3070 FF+6d, DUKHCONP1AZ1ARGF3080 | 7d |
| DUKHCONP1AZ2ARGF3085 |  | S.S.Balustrade | 20d | 2014-03-11 | 2014-04-02 | DUKHCONP1AZ2ARGF3075 FF+7d, DUKHCONP1AZ2ARGF3075 SS+7d, DUKHCONP1AZ2ARGF3050 SS+7d, DUKHCONP1AZ2ARGF3050 FF+7d | 2d |
| DUKHCONP1AZ2ARGF3090 |  | Installation of Granite Counter Top | 15d | 2014-03-16 | 2014-04-01 | DUKHCONP1AZ2ARGF3075 SS+7d, DUKHCONP1AZ2ARGF3075 FF+6d | -3d |
| DUKHCONP1AZ2ARGF3095 |  | Final Painting | 25d | 2014-03-25 | 2014-04-22 | DUKHCONP1AZ2ARGF3035 SS+13d, DUKHCONP1AZ2ARGF3080 SS+8d, DUKHCONP1AZ1ARGF3095, DUKHCONP1AZ2ARGF3060 SS+8d, DUKHCONP1AZ2ARGF3040 FF+13d, DUKHCONP1AZ2ARGF3070 SS+5d, DUKHCONP1AZ2ACGF4610 FF+10d, DUKHCONP1AZ2ARGF3090 SS+8d, DUKHCONP1AZ2ARGF3030 SS+10d, DUKHCONP1AZ2ARGF3040 SS+13d, DUKHCONP1AZ2ARGF3070 FF+5d, DUKHCONP1AZ2ARGF3090 FF+8d, DUKHCONP1AZ2ARGF3085 SS+7d, DUKHCONP1AZ2ARGF3030 FF+10d, DUKHCONP1AZ2ARGF3080 FF+8d, DUKHCONP1AZ2ACGF4610 SS+10d, DUKHCONP1AZ2ARGF3085 FF+7d, DUKHCONP1AZ2ARGF3035 FF+13d, DUKHCONP1AZ2ARGF3060 FF+8d | -3d |
|  | 15 | **FIRST FLOORS** |  | 2013-12-22 | 2014-05-17 |  |  |
| DUKHCONP1AZ2ARFF3300 |  | Block work | 25d | 2013-12-22 | 2014-01-19 | DUKHCONP1AZ2STFF2020 SS+21d, DUKHCONP1AZ2STFF2035 FF+21d, DUKHCONP1AZ2STFF2035 SS+21d, DUKHCONP1AZ2STFF2020 FF+21d, DUKHCONP1AZ1ARFF3300 | -24d |
| DUKHCONP1AZ2ARFF3305 |  | Plastering work | 25d | 2014-01-15 | 2014-02-13 | DUKHCONP1AZ2ARFF3300 SS+7d, DUKHCONP1AZ2ELFF4035 SS+5d, DUKHCONP1AZ2ELFF4035 FF+5d, DUKHCONP1AZ2PLFF4325 FF+6d, DUKHCONP1AZ2ARFF3300 FF+7d, DUKHCONP1AZ1ARFF3305, DUKHCONP1AZ2PLFF4325 SS+6d | -24d |
| DUKHCONP1AZ2ARFF3310 |  | Flooring screed | 21d | 2014-01-23 | 2014-02-17 | DUKHCONP1AZ2ARFF3305 FF+3d, DUKHCONP1AZ2ARFF3305 SS+7d | -12d |
| DUKHCONP1AZ2ARFF3330 |  | Paint First coat | 25d | 2014-02-01 | 2014-03-02 | DUKHCONP1AZ2ARFF3305 SS+14d, DUKHCONP1AZ2ARFF3305 FF+14d | -10d |
| DUKHCONP1AZ2ARFF3315 |  | Wet area waterproofing | 15d | 2014-02-04 | 2014-02-22 | DUKHCONP1AZ2ARFF3305 SS+7d, DUKHCONP1AZ2ARFF3305 FF+7d, DUKHCONP1AZ1ARFF3315 | -24d |
| DUKHCONP1AZ2ARFF3320 |  | Ceramic Wall Tiling | 25d | 2014-02-12 | 2014-03-12 | DUKHCONP1AZ2ARFF3315 FF+6d, DUKHCONP1AZ1ARFF3320, DUKHCONP1AZ2ARFF3315 SS+6d, DUKHCONP1AZ2PLFF4330 SS+7d, DUKHCONP1AZ2PLFF4325 SS+4d, DUKHCONP1AZ2PLFF4325 FF+4d, DUKHCONP1AZ2PLFF4330 FF+7d | -24d |
| DUKHCONP1AZ2ARFF3325 |  | Porcelain Tile flooring | 25d | 2014-02-19 | 2014-03-19 | DUKHCONP1AZ2ARFF3320 FF+6d, DUKHCONP1AZ2ARFF3320 SS+6d, DUKHCONP1AZ2ARFF3310 FF+10d, DUKHCONP1AZ2ARFF3310 SS+10d, DUKHCONP1AZ1ARFF3325 | -24d |
| DUKHCONP1AZ2ARFF3345 |  | Fixing of Suspension systems | 20d | 2014-03-04 | 2014-03-26 | DUKHCONP1AZ2ARFF3330 FF+7d, DUKHCONP1AZ2ARFF3330 SS+7d, DUKHCONP1AZ2ARFF3325 SS+6d, DUKHCONP1AZ2ARFF3325 FF+6d, DUKHCONP1AZ2ELFF4045 SS+5d, DUKHCONP1AZ2ELFF4045 FF+5d, DUKHCONP1AZ1ARFF3345 | -24d |
| DUKHCONP1AZ2ARFF3335 |  | Slate Tile Flooring & Skirting | 15d | 2014-03-09 | 2014-03-25 | DUKHCONP1AZ2ARFF3310 FF+13d, DUKHCONP1AZ2ARFF3310 SS+13d, DUKHCONP1AZ2ARFF3325 SS+13d, DUKHCONP1AZ2ARFF3325 FF+5d | -16d |
| DUKHCONP1AZ2ARFF3360 |  | Gypsum board false ceiling | 25d | 2014-03-11 | 2014-04-08 | DUKHCONP1AZ2ACFF4615 SS+7d, DUKHCONP1AZ2ARFF3345 FF+6d, DUKHCONP1AZ2ACFF4615 FF+7d, DUKHCONP1AZ2ARFF3345 SS+6d, DUKHCONP1AZ1ARFF3360 | -24d |
| DUKHCONP1AZ2ARFF3350 |  | Granite - Stair case flooring & Skirting | 20d | 2014-03-12 | 2014-04-03 | DUKHCONP1AZ2ARFF3325 SS+13d, DUKHCONP1AZ2ARFF3325 FF+13d | -22d |
| DUKHCONP1AZ2ARFF3365 |  | Wooden door | 15d | 2014-03-26 | 2014-04-12 | DUKHCONP1AZ2ARFF3350 FF+5d, DUKHCONP1AZ2ARFF3360 SS+3d, DUKHCONP1AZ2ARFF3335 SS+7d, DUKHCONP1AZ2ARFF3335 FF+7d, DUKHCONP1AZ1ARFF3365, DUKHCONP1AZ2ARFF3360 FF+3d, DUKHCONP1AZ2ARFF3350 SS+5d | -24d |
| DUKHCONP1AZ2ARFF3370 |  | Aluminum Door | 20d | 2014-03-26 | 2014-04-17 | DUKHCONP1AZ1ARFF3370, DUKHCONP1AZ2ARFF3365 FF, DUKHCONP1AZ2ARFF3365 SS | -24d |
| DUKHCONP1AZ2ARFF3375 |  | Carpentry & Joinery Works | 25d | 2014-04-01 | 2014-04-29 | DUKHCONP1AZ2ARFF3370 FF+5d, DUKHCONP1AZ1ARFF3375, DUKHCONP1AZ2ARFF3370 SS+5d | -24d |
| DUKHCONP1AZ2ARFF3380 |  | Aluminum windows | 20d | 2014-04-02 | 2014-04-24 | DUKHCONP1AZ2ARFF3370 SS+6d, DUKHCONP1AZ2ARFF3370 FF+6d | -20d |
| DUKHCONP1AZ2ARFF3385 |  | Handrail & Balustrade | 20d | 2014-04-13 | 2014-05-05 | DUKHCONP1AZ2ARFF3350 SS+7d, DUKHCONP1AZ2ARFF3375 FF+5d, DUKHCONP1AZ2ARFF3375 SS+5d, DUKHCONP1AZ2ARFF3350 FF+7d | -24d |
| DUKHCONP1AZ2ARFF3390 |  | Installation of Granite Counter Top | 20d | 2014-04-13 | 2014-05-05 | DUKHCONP1AZ2ARFF3375 FF+5d, DUKHCONP1AZ2ARFF3375 SS+6d | -23d |
| DUKHCONP1AZ2ARFF3395 |  | Final Painting | 25d | 2014-04-19 | 2014-05-17 | DUKHCONP1AZ2ARFF3375 SS+8d, DUKHCONP1AZ2ACFF4625 SS+6d, DUKHCONP1AZ2ARFF3365 SS+8d, DUKHCONP1AZ1ARFF3395, DUKHCONP1AZ2ARFF3330 FF+10d, DUKHCONP1AZ2ARFF3335 SS+8d, DUKHCONP1AZ2ARFF3350 FF+8d, DUKHCONP1AZ2ARFF3375 FF+8d, DUKHCONP1AZ2ARFF3390 FF+6d, DUKHCONP1AZ2ARFF3390 SS+4d, DUKHCONP1AZ2ARFF3385 FF+6d, DUKHCONP1AZ2ARFF3385 SS+5d, DUKHCONP1AZ2ARFF3365 FF+8d, DUKHCONP1AZ2ARFF3335 FF+8d, DUKHCONP1AZ2ARFF3380 SS+10d, DUKHCONP1AZ2ARFF3330 SS+10d, DUKHCONP1AZ2ARFF3360 SS+10d, DUKHCONP1AZ2ACFF4625 FF+6d, DUKHCONP1AZ2ARFF3380 FF+10d, DUKHCONP1AZ2ARFF3350 SS+8d, DUKHCONP1AZ2ARFF3360 FF+10d | -24d |
|  | 20 | **ROOF** |  | 2014-01-05 | 2014-03-11 |  |  |
| DUKHCONP1AZ2ARRF3600 |  | Block work | 20d | 2014-01-05 | 2014-01-27 | DUKHCONP1AZ2STRF2055 FF+21d, DUKHCONP1AZ2STRF2055 SS+21d, DUKHCONP1AZ1ARRF3600 | 28d |
| DUKHCONP1AZ2ARRF3605 |  | Plastering work | 20d | 2014-01-13 | 2014-02-04 | DUKHCONP1AZ2ARRF3600 FF+7d, DUKHCONP1AZ2ARRF3600 SS+7d | 28d |
| DUKHCONP1AZ2ARRF3610 |  | Flooring screed | 15d | 2014-01-27 | 2014-02-13 | DUKHCONP1AZ2ARRF3605 SS+7d, DUKHCONP1AZ2ARRF3605 FF+7d | 33d |
| DUKHCONP1AZ2ARRF3695 |  | Painting -Storage area | 20d | 2014-02-04 | 2014-02-27 | DUKHCONP1AZ2ARRF3610 SS+7d, DUKHCONP1AZ2ARRF3610 FF+7d | 33d |
| DUKHCONP1AZ2ARRF3620 |  | Epoxy Painting -Storage area | 15d | 2014-02-23 | 2014-03-11 | DUKHCONP1AZ2ARRF3695 SS+10d, DUKHCONP1AZ2ARRF3695 FF+10d | 33d |
|  | 15 | **EXTERNAL FINISHES** |  | 2014-01-27 | 2014-04-16 |  |  |
|  | 10 | **ROOF** |  | 2014-02-10 | 2014-04-16 |  |  |
| DUKHCONP1AZ2ARRF3630 |  | Leveling Screed for Waterproofing | 25d | 2014-02-10 | 2014-03-11 | DUKHCONP1AZ2STRF2060 FF+10d, DUKHCONP1AZ2STRF2065 FF+10d, DUKHCONP1AZ2STRF2065 SS+10d, DUKHCONP1AZ1ARRF3630, DUKHCONP1AZ2STRF2060 SS+10d | -3d |
| DUKHCONP1AZ2ARRF3635 |  | Laying of Waterproofing Membrane | 25d | 2014-02-15 | 2014-03-15 | DUKHCONP1AZ2ARRF3630 SS+3d, DUKHCONP1AZ2ARRF3630 FF+3d | -3d |
| DUKHCONP1AZ2ARRF3640 |  | Installation of Insulation & Protection | 25d | 2014-02-19 | 2014-03-19 | DUKHCONP1AZ2ARRF3635 SS+4d, DUKHCONP1AZ2ARRF3635 FF+4d | -3d |
| DUKHCONP1AZ2ARRF3645 |  | Lime Stone Chips & Paving slab Installation | 25d | 2014-02-24 | 2014-03-24 | DUKHCONP1AZ2ARRF3640 SS+4d, DUKHCONP1AZ2ARRF3640 FF+4d | -3d |
| DUKHCONP1AZ2ARRF3650 |  | Install. of Gal. Frame & Aluminum Slat Screen | 25d | 2014-03-04 | 2014-04-01 | DUKHCONP1AZ2ARRF3645 FF+7d, DUKHCONP1AZ2ARRF3645 SS+7d | -3d |
| DUKHCONP1AZ2ARRF3655 |  | Installation of Pumps Protection cabinets | 20d | 2014-03-19 | 2014-04-10 | DUKHCONP1AZ2ARRF3650 SS+8d, DUKHCONP1AZ2ARRF3645 SS+7d, DUKHCONP1AZ1ARRF3655, DUKHCONP1AZ2ARRF3645 FF+7d, DUKHCONP1AZ2ARRF3650 FF+8d | -3d |
| DUKHCONP1AZ2ARRF3660 |  | Installation of Access Ladder | 15d | 2014-03-31 | 2014-04-16 | DUKHCONP1AZ2ARRF3655 SS+5d, DUKHCONP1AZ2ARRF3655 FF+5d | 2d |
|  | 15 | **ELEVATION** |  | 2014-01-27 | 2014-03-20 |  |  |
| DUKHCONP1AZ2AREL3665 |  | External Plastering | 25d | 2014-01-27 | 2014-02-25 | DUKHCONP1AZ2STRF2065 SS+7d, DUKHCONP1AZ2STRF2065 FF+7d, DUKHCONP1AZ1AREL3665, DUKHCONP1AZ2ARFF3305 SS+7d, DUKHCONP1AZ2ARRF3605 SS+7d, DUKHCONP1AZ2ARFF3305 FF+7d | 23d |
| DUKHCONP1AZ2AREL3670 |  | External stone cladding works | 20d | 2014-02-15 | 2014-03-09 | DUKHCONP1AZ2AREL3665 FF+10d, DUKHCONP1AZ1AREL3670, DUKHCONP1AZ2AREL3665 SS+10d | 25d |
| DUKHCONP1AZ2AREL3680 |  | External Painting | 20d | 2014-02-26 | 2014-03-20 | DUKHCONP1AZ2ARRF3695 SS+4d, DUKHCONP1AZ2AREL3670 SS+10d, DUKHCONP1AZ2ARRF3695 FF+4d, DUKHCONP1AZ2AREL3670 FF+10d, DUKHCONP1AZ1AREL3680 | 25d |
|  | 20 | **MEP WORKS** |  | 2013-07-30 | 2014-05-15 |  |  |
|  | 10 | **ELECTRICAL WORKS** |  | 2013-11-14 | 2014-05-15 |  |  |
|  | 10 | **GROUND FLOOR** |  | 2013-11-14 | 2014-03-25 |  |  |
| DUKHCONP1AZ2ELGF4000 |  | Fixing of wall conduits & switch socket boxes | 25d | 2013-11-14 | 2013-12-12 | DUKHCONP1AZ2ARGF3000 SS+5d, DUKHCONP1AZ2ARGF3000 FF+5d | 3d |
| DUKHCONP1AZ2ELGF4005 |  | Cable tray & trunking installation | 20d | 2013-11-26 | 2013-12-19 | DUKHCONP1AZ2ELGF4000 FF+5d, DUKHCONP1AZ1ELGF4005, DUKHCONP1AZ2ELGF4000 SS+5d | 21d |
| DUKHCONP1AZ2ELGF4010 |  | Installation of wiring & Main Cabling | 25d | 2013-12-04 | 2014-01-02 | DUKHCONP1AZ2ELGF4005 FF+7d, DUKHCONP1AZ2ELGF4005 SS+7d | 21d |
| DUKHCONP1AZ2ELGF4015 |  | Install. of CAMS & Fire Fighting Accessories | 25d | 2014-02-06 | 2014-03-08 | DUKHCONP1AZ2ARGF3060 FF+7d, DUKHCONP1AZ1ELGF4015, DUKHCONP1AZ2ARGF3055 SS+7d, DUKHCONP1AZ2ARGF3060 SS+7d, DUKHCONP1AZ2ARGF3055 FF+7d | 6d |
| DUKHCONP1AZ2ELGF4020 |  | Installation of DBS,MCCB Accessories. | 20d | 2014-02-13 | 2014-03-08 | DUKHCONP1AZ2ARGF3060 FF+7d, DUKHCONP1AZ2ARGF3055 SS+7d, DUKHCONP1AZ2ELGF4010 FF+5d, DUKHCONP1AZ2ELGF4010 SS+5d, DUKHCONP1AZ2ARGF3055 FF+7d, DUKHCONP1AZ2ARGF3060 SS+7d | -6d |
| DUKHCONP1AZ2ELGF4025 |  | Installation of Lighting fixtures & Accessories | 25d | 2014-02-25 | 2014-03-25 | DUKHCONP1AZ1ELGF4025, DUKHCONP1AZ2ARGF3055 FF+10d, DUKHCONP1AZ2ARGF3055 SS+10d, DUKHCONP1AZ2ELGF4020 SS+10d, DUKHCONP1AZ2ARGF3060 FF+10d, DUKHCONP1AZ2ELGF4020 FF+10d, DUKHCONP1AZ2ARGF3060 SS+10d | 1d |
| DUKHCONP1AZ2ELGF4030 |  | Installation of Telephone System | 20d | 2014-02-25 | 2014-03-19 | DUKHCONP1AZ2ARGF3060 SS+5d, DUKHCONP1AZ1ELGF4030, DUKHCONP1AZ2ARGF3060 FF+5d, DUKHCONP1AZ2ELGF4020 FF+10d, DUKHCONP1AZ2ELGF4020 SS+10d | -6d |
|  | 15 | **FIRST FLOORS** |  | 2013-12-28 | 2014-04-28 |  |  |

| ID | WBS | Task | Duration | Start | Finish | Predecessors | Total float |
| --- | --- | --- | --- | --- | --- | --- | --- |
| DUKHCONP1AZ2ELFF4035 |  | Fixing of wall conduits & switch socket boxes | 25d | 2013-12-28 | 2014-01-25 | DUKHCONP1AZ2ARFF3300 FF+5d, DUKHCONP1AZ2ARFF3300 SS+5d | -13d |
| DUKHCONP1AZ2ELFF4040 |  | Cable tray & trunking installation | 20d | 2014-01-08 | 2014-01-30 | DUKHCONP1AZ2ELFF4035 SS+5d, DUKHCONP1AZ2ELFF4035 FF+5d | 5d |
| DUKHCONP1AZ2ELFF4045 |  | Installation of wiring & Main Cabling | 25d | 2014-01-19 | 2014-02-17 | DUKHCONP1AZ2ELFF4040 FF+7d, DUKHCONP1AZ1ELFF4045, DUKHCONP1AZ2ELFF4040 SS+7d | 3d |
| DUKHCONP1AZ2ELFF4050 |  | Installation of Telephone System | 25d | 2014-03-17 | 2014-04-14 | DUKHCONP1AZ2ARFF3360 FF+5d, DUKHCONP1AZ2ARFF3360 SS+5d, DUKHCONP1AZ2ELGF4030 SS+10d, DUKHCONP1AZ2ELGF4030 FF+10d, DUKHCONP1AZ2MSEX5010 FF | -13d |
| DUKHCONP1AZ2ELFF4055 |  | Install. of CAMS & Fire Fighting Accessories | 25d | 2014-03-19 | 2014-04-16 | DUKHCONP1AZ2ELGF4015 FF+5d, DUKHCONP1AZ1ELFF4055, DUKHCONP1AZ2ARFF3360 FF+7d, DUKHCONP1AZ2ELGF4015 SS+5d, DUKHCONP1AZ2ARFF3360 SS+7d | -23d |
| DUKHCONP1AZ2ELFF4060 |  | Installation of DBS,MCCB Accessories. | 20d | 2014-03-23 | 2014-04-14 | DUKHCONP1AZ2ELFF4045 SS+5d, DUKHCONP1AZ2ARFF3360 SS+8d, DUKHCONP1AZ2ELFF4045 FF+5d, DUKHCONP1AZ1ELFF4060, DUKHCONP1AZ2ARFF3360 FF+5d | -21d |
| DUKHCONP1AZ2ELFF4065 |  | Installation of Lighting fixtures & Accessories | 25d | 2014-03-31 | 2014-04-28 | DUKHCONP1AZ2ELGF4025 FF+5d, DUKHCONP1AZ2ARFF3360 SS+10d, DUKHCONP1AZ2ARFF3360 FF+10d, DUKHCONP1AZ1ELFF4065, DUKHCONP1AZ2ELFF4060 SS+5d, DUKHCONP1AZ2ELFF4060 FF+5d, DUKHCONP1AZ2ELGF4025 SS+5d | -23d |
|  | 20 | **ROOF** |  | 2014-04-14 | 2014-05-15 |  |  |
| DUKHCONP1AZ2ELRF4070 |  | Installation of Isolator | 18d | 2014-04-14 | 2014-05-04 | DUKHCONP1AZ2ARRF3645 SS+7d, DUKHCONP1AZ2ELFF4045 SS+10d, DUKHCONP1AZ2ELFF4065 FF+5d, DUKHCONP1AZ2ELFF4065 SS+5d, DUKHCONP1AZ2ARRF3645 FF+7d, DUKHCONP1AZ2ELFF4050 SS+5d, DUKHCONP1AZ2ELFF4045 FF+10d, DUKHCONP1AZ2ELFF4050 FF+7d | -23d |
| DUKHCONP1AZ2ELRF4075 |  | Installation of TV Dish Antenna | 23d | 2014-04-20 | 2014-05-15 | DUKHCONP1AZ2ELRF4070 SS+5d, DUKHCONP1AZ2ELRF4070 FF+5d | -23d |
|  | 15 | **PLUMBING, DRAINAGE & FIRE FIGHTING WORKS** |  | 2013-07-30 | 2014-05-15 |  |  |
|  | 10 | **GROUND FLOOR** |  | 2013-07-30 | 2014-03-25 |  |  |
| DUKHCONP1AZ2PLUG4300 |  | Drainage / Storm Pipes in Grade Slab | 16d | 2013-07-30 | 2013-08-20 | DUKHCONP1AZ2STUG1040 FF+11d, DUKHCONP1AZ2STUG1040 SS+11d | -24d |
| DUKHCONP1AZ2PLGF4305 |  | Installation of Plumbing pipes & testing | 18d | 2013-11-25 | 2013-12-15 | DUKHCONP1AZ2ARGF3000 FF+7d, DUKHCONP1AZ2ARGF3000 SS+7d, DUKHCONP1AZ1PLGF4305 | -6d |
| DUKHCONP1AZ2PLGF4310 |  | Installation of Drainage pipes &testing | 18d | 2013-11-25 | 2013-12-15 | DUKHCONP1AZ2PLGF4305 FF, DUKHCONP1AZ2ARGF3000 SS+7d, DUKHCONP1AZ2ARGF3000 FF+7d, DUKHCONP1AZ2PLGF4305 SS | 15d |
| DUKHCONP1AZ2PLGF4315 |  | Sanitary Fittings & Accessories | 20d | 2014-02-25 | 2014-03-19 | DUKHCONP1AZ1PLGF4315, DUKHCONP1AZ2ARGF3065 FF+5d, DUKHCONP1AZ2PLGF4310 FF+5d, DUKHCONP1AZ2PLGF4310 SS+5d, DUKHCONP1AZ2ARGF3065 SS+5d | 21d |
| DUKHCONP1AZ2PLGF4320 |  | Installation of Water Heater | 15d | 2014-03-09 | 2014-03-25 | DUKHCONP1AZ2PLGF4315 SS+5d, DUKHCONP1AZ1PLGF4320, DUKHCONP1AZ2PLGF4315 FF+5d, DUKHCONP1AZ2ARGF3060 SS+5d, DUKHCONP1AZ2ARGF3060 FF+5d | 21d |
|  | 15 | **FIRST FLOORS** |  | 2014-01-08 | 2014-04-23 |  |  |
| DUKHCONP1AZ2PLFF4325 |  | Installation of Plumbing pipes & testing | 18d | 2014-01-08 | 2014-01-28 | DUKHCONP1AZ2ARFF3300 SS+7d, DUKHCONP1AZ2ARFF3300 FF+8d | -24d |
| DUKHCONP1AZ2PLFF4330 |  | Installation of Drainage pipes & testing | 18d | 2014-01-08 | 2014-01-28 | DUKHCONP1AZ2ARFF3300 SS+7d, DUKHCONP1AZ2ARFF3300 FF+7d, DUKHCONP1AZ2PLFF4325 SS, DUKHCONP1AZ1PLFF4330, DUKHCONP1AZ2PLFF4325 FF | -2d |
| DUKHCONP1AZ2PLFF4335 |  | Sanitary Fittings & Accessories | 20d | 2014-03-26 | 2014-04-17 | DUKHCONP1AZ2ARFF3365 FF+5d, DUKHCONP1AZ2PLFF4330 FF+5d, DUKHCONP1AZ2PLFF4330 SS+5d, DUKHCONP1AZ2ARFF3365 SS | -19d |
| DUKHCONP1AZ2PLFF4340 |  | Installation of Water Heater | 15d | 2014-04-07 | 2014-04-23 | DUKHCONP1AZ2PLFF4335 SS+5d, DUKHCONP1AZ2PLFF4335 FF+5d, DUKHCONP1AZ1PLFF4340, DUKHCONP1AZ2ARFF3360 FF+5d, DUKHCONP1AZ2ARFF3360 SS+5d | -19d |
|  | 20 | **ROOF** |  | 2014-01-27 | 2014-05-15 |  |  |
| DUKHCONP1AZ2PLRF4345 |  | Installation of Plumbing pipes & fittings | 15d | 2014-01-27 | 2014-02-13 | DUKHCONP1AZ2ARRF3605 SS+7d, DUKHCONP1AZ2ARRF3605 FF+7d | 32d |
| DUKHCONP1AZ2PLRF4350 |  | Installation of Rain water Pipes | 15d | 2014-03-13 | 2014-03-30 | DUKHCONP1AZ2PLRF4345 SS+8d, DUKHCONP1AZ2PLFF4330 FF+5d, DUKHCONP1AZ2AREL3665 SS+7d, DUKHCONP1AZ2AREL3665 FF+7d, DUKHCONP1AZ1PLRF4350, DUKHCONP1AZ2PLFF4330 SS+5d, DUKHCONP1AZ2ARRF3645 SS+5d, DUKHCONP1AZ2ARRF3645 FF+5d, DUKHCONP1AZ2PLRF4345 FF+8d | 2d |
| DUKHCONP1AZ2PLRF4355 |  | Roof Water Tank Installation & Connections | 25d | 2014-04-17 | 2014-05-15 | DUKHCONP1AZ2PLRF4345 SS+8d, DUKHCONP1AZ2PLRF4345 FF+8d, DUKHCONP1AZ2ARRF3655 FF+5d, DUKHCONP1AZ2PLFF4340 SS+5d, DUKHCONP1AZ2PLRF4350 FF+5d, DUKHCONP1AZ1PLRF4355, DUKHCONP1AZ2ARRF3655 SS+5d, DUKHCONP1AZ2PLFF4340 FF+5d, DUKHCONP1AZ2PLRF4350 SS+5d | -23d |
|  | 20 | **AC WORKS** |  | 2013-12-15 | 2014-05-13 |  |  |
|  | 10 | **GROUND FLOOR** |  | 2013-12-15 | 2014-03-23 |  |  |
| DUKHCONP1AZ2ACGF4600 |  | Installation AC Pipes | 20d | 2013-12-15 | 2014-01-07 | DUKHCONP1AZ2ARGF3005 SS+7d, DUKHCONP1AZ2ARGF3005 FF+7d, DUKHCONP1AZ1ACGF4600 | 25d |
| DUKHCONP1AZ2ACGF4605 |  | Fixing of Ventilation Equipments | 25d | 2014-02-06 | 2014-03-08 | DUKHCONP1AZ2ACGF4600 SS+10d, DUKHCONP1AZ1ACGF4605, DUKHCONP1AZ2ARGF3055 FF+7d, DUKHCONP1AZ2ACGF4600 FF+10d, DUKHCONP1AZ2ARGF3055 SS+7d, DUKHCONP1AZ2ARGF3060 FF+7d, DUKHCONP1AZ2ARGF3060 SS+7d | 8d |
| DUKHCONP1AZ2ACGF4610 |  | Fixing of Split AC | 20d | 2014-03-01 | 2014-03-23 | DUKHCONP1AZ1ACGF4610, DUKHCONP1AZ2ACGF4605 FF+13d, DUKHCONP1AZ2ACGF4605 SS+13d | 8d |
|  | 15 | **FIRST FLOORS** |  | 2014-01-29 | 2014-05-01 |  |  |
| DUKHCONP1AZ2ACFF4615 |  | Installation AC Pipes | 20d | 2014-01-29 | 2014-02-22 | DUKHCONP1AZ1ACFF4615, DUKHCONP1AZ2ARFF3305 SS+7d, DUKHCONP1AZ2ARFF3305 FF+7d | 3d |
| DUKHCONP1AZ2ACFF4620 |  | Fixing of Ventilation Equipments | 25d | 2014-03-19 | 2014-04-16 | DUKHCONP1AZ2ARFF3360 FF+7d, DUKHCONP1AZ2ACFF4615 FF+10d, DUKHCONP1AZ1ACFF4620, DUKHCONP1AZ2ARFF3360 SS+7d, DUKHCONP1AZ2ACFF4615 SS+10d | -22d |
| DUKHCONP1AZ2ACFF4625 |  | Fixing of Split AC | 20d | 2014-04-09 | 2014-05-01 | DUKHCONP1AZ2ACFF4620 FF+13d, DUKHCONP1AZ2ACFF4620 SS+13d, DUKHCONP1AZ1ACFF4625 | -22d |
|  | 20 | **ROOF** |  | 2014-03-04 | 2014-05-13 |  |  |
| DUKHCONP1AZ2ACRF4630 |  | Installation of Refrigerant Pipes | 25d | 2014-03-04 | 2014-04-01 | DUKHCONP1AZ2ARRF3645 FF+7d, DUKHCONP1AZ2ACFF4615 SS+7d, DUKHCONP1AZ2ACGF4600 SS+7d, DUKHCONP1AZ2ACFF4615 FF+7d, DUKHCONP1AZ2ACGF4600 FF+7d, DUKHCONP1AZ1ACRF4630, DUKHCONP1AZ2ARRF3645 SS+7d | 10d |
| DUKHCONP1AZ2ACRF4635 |  | Installation of Condensing Unit | 25d | 2014-04-15 | 2014-05-13 | DUKHCONP1AZ2ACRF4630 SS+5d, DUKHCONP1AZ2ACFF4625 FF+5d, DUKHCONP1AZ2ACFF4625 SS+5d, DUKHCONP1AZ1ACRF4635, DUKHCONP1AZ2ACGF4610 FF+5d, DUKHCONP1AZ2ACRF4630 FF+5d, DUKHCONP1AZ2ACGF4610 SS+5d | -21d |
|  | 25 | **EXTERNAL WORKS** |  | 2013-12-23 | 2014-05-31 |  |  |
|  | 10 | **MISCELLANEOUS** |  | 2013-12-23 | 2014-05-31 |  |  |
| DUKHCONP1AZ2MSEX5000 |  | Construction of Manholes | 25d | 2013-12-23 | 2014-01-20 | DUKHCONP1AZ2STRF2055 FF+10d, DUKHCONP1AZ2STRF2055 SS+10d, DUKHCONP1AZ2PLGF4310 FF+10d, DUKHCONP1AZ2PLGF4310 SS+10d | 9d |
| DUKHCONP1AZ2MSEX5005 |  | Construction of Soak pit, Chambers | 25d | 2014-01-06 | 2014-02-03 | DUKHCONP1AZ2MSEX5000 FF+12d, DUKHCONP1AZ2MSEX5000 SS+12d | 9d |
| DUKHCONP1AZ2MSEX5015 |  | Construction of grease Trap | 20d | 2014-01-26 | 2014-02-18 | DUKHCONP1AZ2MSEX5005 SS+12d, DUKHCONP1AZ2MSEX5005 FF+12d | 9d |
| DUKHCONP1AZ2MSEX5020 |  | Construction Entrance Ramp | 25d | 2014-02-13 | 2014-03-13 | DUKHCONP1AZ1MSEX5020, DUKHCONP1AZ2STRF2055 SS, DUKHCONP1AZ2STRF2055 FF | -8d |
| DUKHCONP1AZ2MSEX5010 |  | Telephone cable laying | 25d | 2014-02-19 | 2014-03-19 | DUKHCONP1AZ2MSEX5005, DUKHCONP1AZ2MSEX5015 | 9d |
| DUKHCONP1AZ2MSEX5025 |  | SS.Handrails and Balustrades | 20d | 2014-03-03 | 2014-03-25 | DUKHCONP1AZ2MSEX5020 FF+10d, DUKHCONP1AZ2MSEX5020 SS+10d | -5d |
| DUKHCONP1AZ2MSEX5335 |  | Aluminum Roll-up Shutter with 2m Wall | 25d | 2014-05-03 | 2014-05-31 | DUKHCONP1AZ1MSEX5335, DUKHPROGEN00PRDV3430, DUKHCONI1AZ1BWGL5325 | 79d |
|  | 15 | **WATER TANK ENCLOSURE** |  | 2014-02-15 | 2014-05-06 |  |  |
| DUKHCONP1AZ2WEEX5030 |  | Excavation | 20d | 2014-02-15 | 2014-03-09 | DUKHCONP1AZ2STRF2055 SS+5d, DUKHCONP1AZ1WEEX5030, DUKHCONP1AZ2STRF2055 FF+5d | -11d |
| DUKHCONP1AZ2WEEX5035 |  | Construction of Raft | 25d | 2014-02-20 | 2014-03-20 | DUKHCONP1AZ2WEEX5030 SS+5d, DUKHCONP1AZ2WEEX5030 FF+10d | -11d |
| DUKHCONP1AZ2WEEX5040 |  | Block works & Plastering | 25d | 2014-03-02 | 2014-03-30 | DUKHCONP1AZ2WEEX5035 FF+8d, DUKHCONP1AZ2WEEX5035 SS+8d | -11d |
| DUKHCONP1AZ2WEEX5045 |  | Flooring & Painting | 25d | 2014-03-09 | 2014-04-06 | DUKHCONP1AZ2WEEX5040 SS+6d, DUKHCONP1AZ2WEEX5040 FF+6d | -11d |
| DUKHCONP1AZ2WEEX5050 |  | Installation of Steel Gate | 20d | 2014-03-22 | 2014-04-13 | DUKHCONP1AZ2MSEX5025 FF+10d, DUKHCONP1AZ2WEEX5045 SS+5d, DUKHCONP1AZ2WEEX5045 FF+6d | -11d |
| DUKHCONP1AZ2WEEX5060 |  | Structural steel & SS Shed cover installation | 25d | 2014-03-31 | 2014-04-28 | DUKHCONP1AZ2MSEX5025 FF+10d, DUKHCONP1AZ2WEEX5050 SS+5d, DUKHCONP1AZ1WEEX5060, DUKHCONP1AZ2WEEX5050 FF+10d | -14d |
| DUKHCONP1AZ2WEEX5065 |  | Install. of Water Tank,Chiller,Pump & Meter | 25d | 2014-04-08 | 2014-05-06 | DUKHCONP1AZ2WEEX5060 SS+6d, DUKHCONP1AZ2MSEX5015 SS+5d, DUKHCONP1AZ1WEEX5065, DUKHCONP1AZ2WEEX5060 FF+6d, DUKHCONP1AZ2MSEX5015 FF+5d, DUKHCONP1AZ2PLRF4350 FF+5d, DUKHCONP1AZ2PLRF4350 SS+5d | -15d |
|  | 20 | **HARD LANDSCAPING** |  | 2014-02-27 | 2014-04-09 |  |  |
| DUKHCONP1AZ2HDEX5090 |  | kerb works | 20d | 2014-02-27 | 2014-03-22 | DUKHCONP1AZ2MSEX5020 FF+7d, DUKHCONP1AZ1HDEX5090, DUKHCONP1AZ2MSEX5020 SS+7d | -8d |
| DUKHCONP1AZ2HDEX5095 |  | Cobble Stone Works | 20d | 2014-03-11 | 2014-04-02 | DUKHCONP1AZ2HDEX5090 SS+10d, DUKHCONP1AZ2HDEX5090 FF+10d | -8d |
| DUKHCONP1AZ2HDEX5100 |  | Interlock works | 20d | 2014-03-18 | 2014-04-09 | DUKHCONP1AZ2HDEX5095 SS+6d, DUKHCONP1AZ2HDEX5095 FF+6d | -8d |
|  | 25 | **SOFT LANDSCAPING** |  | 2014-03-24 | 2014-04-28 |  |  |
| DUKHCONP1AZ2SLEX5105 |  | Laying of Grass/ green area | 25d | 2014-03-24 | 2014-04-21 | DUKHCONP1AZ2HDEX5100 FF+5d, DUKHCONP1AZ2HDEX5100 SS+5d | -8d |
| DUKHCONP1AZ2SLEX5110 |  | Laying of Palm tree | 25d | 2014-03-31 | 2014-04-28 | DUKHCONP1AZ2SLEX5105 FF+6d, DUKHCONP1AZ2SLEX5105 SS+6d | -8d |
|  | 30 | **TESTING AND COMMISSIONING** |  | 2014-05-18 | 2014-06-15 |  |  |
| DUKHCONP1AZ2ACTC8000 |  | Pre-Commissioning & Testing of AC Works | 25d | 2014-05-18 | 2014-06-15 | DUKHCONP1AZ2ARFF3395, DUKHCONP1AZ2AREL3680, DUKHCONP1AZ1ACTC8000, DUKHCONP1AZ2ARGF3095, DUKHCONP1AZ2ACRF4635, DUKHCONP1AZ2ACFF4625 | -24d |
| DUKHCONP1AZ2ELTC8010 |  | Pre-Commissioning & Testing of Electrical Works | 25d | 2014-05-18 | 2014-06-15 | DUKHCONP1AZ2SLEX5105, DUKHCONP1AZ2SLEX5110, DUKHCONP1AZ1ELTC8010, DUKHCONP1AZ2HDEX5100, DUKHCONP1AZ2ARFF3395, DUKHCONP1AZ2ELGF4030, DUKHCONP1AZ2AREL3680, DUKHCONP1AZ2ELRF4075, DUKHCONP1AZ2ARGF3095, DUKHCONP1AZ2ELGF4025, DUKHCONP1AZ2ARRF3620, DUKHCONP1AZ2ARRF3655, DUKHCONP1AZ2ELFF4055, DUKHCONP1AZ2MSEX5005, DUKHCONP1AZ2ARRF3660, DUKHCONP1AZ2ELFF4065, DUKHCONP1AZ2ELFF4050, DUKHCONP1AZ2ELGF4015 | -24d |
| DUKHCONP1AZ2PLTC8005 |  | Pre-Commissioning & Testing of Plumbing Works | 25d | 2014-05-18 | 2014-06-15 | DUKHCONP1AZ2HDEX5100, DUKHCONP1AZ2ARRF3620, DUKHCONP1AZ2AREL3680, DUKHCONP1AZ2ARRF3655, DUKHCONP1AZ2ARRF3660, DUKHCONP1AZ2ARFF3395, DUKHCONP1AZ2PLRF4350, DUKHCONP1AZ2PLGF4320, DUKHCONP1AZ1PLTC8005, DUKHCONP1AZ2SLEX5110, DUKHCONP1AZ2PLRF4355, DUKHCONP1AZ2WEEX5065, DUKHCONP1AZ2MSEX5005, DUKHCONP1AZ2ARGF3095, DUKHCONP1AZ2SLEX5105 | -24d |
|  | 20 | **ZONE - 3 (4 Twin Villas)** |  | 2013-04-27 | 2014-07-14 |  |  |
|  | 10 | **STRUCTURAL WORKS** |  | 2013-04-27 | 2014-02-20 |  |  |
|  | 10 | **SUB STRUCTURE** |  | 2013-04-27 | 2013-10-08 |  |  |
|  | 10 | **UPTO GRADE SLAB** |  | 2013-04-27 | 2013-10-08 |  |  |

| ID | WBS | Task | Duration | Start | Finish | Predecessors | Total float |
| --- | --- | --- | --- | --- | --- | --- | --- |
| DUKHCONP1AZ3STUG1000 |  | Footing Excavation | 25d | 2013-04-27 | 2013-05-25 | DUKHCONP1AGNSP005000, DUKHCONP1AZ2STUG1000 | -11d |
| DUKHCONP1AZ3STUG1005 |  | Footing Antitermite | 23d | 2013-05-08 | 2013-06-03 | DUKHCONP1AZ3STUG1000 SS+10d, DUKHCONP1AZ3STUG1000 FF+5d | -11d |
| DUKHCONP1AZ3STUG1010 |  | Footing Blinding | 23d | 2013-05-12 | 2013-06-06 | DUKHCONP1AZ3STUG1005 SS+3d, DUKHCONP1AZ3STUG1005 FF+3d | -11d |
| DUKHCONP1AZ3STUG1015 |  | Footing Waterproofing & Screed | 25d | 2013-05-18 | 2013-06-15 | DUKHCONP1AZ3STUG1010 SS+5d, DUKHCONP1AZ3STUG1010 FF+5d | -11d |
| DUKHCONP1AZ3STUG1020 |  | Construction of foundations | 20d | 2013-06-02 | 2013-06-24 | DUKHCONP1AZ3STUG1015 FF+8d, DUKHCONP1AZ3STUG1015 SS+7d | -11d |
| DUKHCONP1AZ3STUG1025 |  | Construction of neck of columns | 25d | 2013-06-26 | 2013-07-24 | DUKHCONP1AZ2STUG1025, DUKHCONP1AZ3STUG1020 SS+8d, DUKHCONP1AZ3STUG1020 FF+7d | -24d |
| DUKHCONP1AZ3STUG1030 |  | Waterproofing Footing & Neck Column | 25d | 2013-07-06 | 2013-08-03 | DUKHCONP1AZ3STUG1025 SS+8d, DUKHCONP1AZ3STUG1025 FF+8d | -24d |
| DUKHCONP1AZ3STUG1035 |  | Backfilling Upto Grade Beam Bottom | 25d | 2013-07-20 | 2013-08-20 | DUKHCONP1AZ3STUG1030 SS+12d, DUKHCONP1AZ3STUG1030 FF+12d, DUKHCONP1AZ2STUG1035 | -24d |
| DUKHCONP1AZ3STUG1040 |  | Construction of Grade Beams | 25d | 2013-08-05 | 2013-09-05 | DUKHCONP1AZ3STUG1035 SS+14d, DUKHCONP1AZ3STUG1035 FF+14d | -24d |
| DUKHCONP1AZ3STUG1045 |  | Construction of slab on grade | 25d | 2013-09-10 | 2013-10-08 | DUKHCONP1AZ3PLUG4300 FF+8d, DUKHCONP1AZ3STUG1040 FF+10d, DUKHCONP1AZ3STUG1040 SS+10d, DUKHCONP1AZ2STUG1045, DUKHCONP1AZ3PLUG4300 SS+8d | -24d |
|  | 15 | **SUPERSTRUCTURE** |  | 2013-09-26 | 2014-02-20 |  |  |
|  | 10 | **GROUND FLOOR** |  | 2013-09-26 | 2013-11-23 |  |  |
| DUKHCONP1AZ3STGF2000 |  | Column-Rebar & Formwork | 25d | 2013-09-26 | 2013-10-27 | DUKHCONP1AZ3STUG1045 SS+14d, DUKHCONP1AZ2STGF2000, DUKHCONP1AZ3STUG1045 FF+7d | -24d |
| DUKHCONP1AZ3STGF2005 |  | Column-Concrete | 24d | 2013-10-05 | 2013-11-03 | DUKHCONP1AZ3STGF2000 SS+7d, DUKHCONP1AZ3STGF2000 FF+2d | -22d |
| DUKHCONP1AZ3STGF2010 |  | Beam, Stairs ,Slab-Rebar & Formwork | 25d | 2013-10-22 | 2013-11-19 | DUKHCONP1AZ3STGF2005 FF+14d, DUKHCONP1AZ3STGF2005 SS+2d | -22d |
| DUKHCONP1AZ3STGF2015 |  | Beam, Stairs ,Slab-Concrete | 14d | 2013-11-07 | 2013-11-23 | DUKHCONP1AZ2STGF2015, DUKHCONP1AZ3STGF2010 SS+10d, DUKHCONP1AZ3STGF2010 FF+3d | -22d |
|  | 15 | **FIRST FLOORS** |  | 2013-11-10 | 2014-01-06 |  |  |
| DUKHCONP1AZ3STFF2020 |  | Column-Rebar & Formwork | 25d | 2013-11-10 | 2013-12-08 | DUKHCONP1AZ2STFF2020, DUKHCONP1AZ3STGF2015 FF+5d, DUKHCONP1AZ3STGF2015 SS+2d | -22d |
| DUKHCONP1AZ3STFF2025 |  | Column-Concrete | 24d | 2013-11-19 | 2013-12-16 | DUKHCONP1AZ3STFF2020 FF+2d, DUKHCONP1AZ3STFF2020 SS+8d | -20d |
| DUKHCONP1AZ3STFF2030 |  | Beam, Stairs ,Slab-Rebar & Formwork | 25d | 2013-12-04 | 2014-01-02 | DUKHCONP1AZ3STFF2025 SS+2d, DUKHCONP1AZ3STFF2025 FF+14d | -20d |
| DUKHCONP1AZ3STFF2035 |  | Beam, Stairs ,Slab-Concrete | 14d | 2013-12-22 | 2014-01-06 | DUKHCONP1AZ3STFF2030 FF+3d, DUKHCONP1AZ3STFF2030 SS+10d, DUKHCONP1AZ2STFF2035 | -20d |
|  | 20 | **ROOF** |  | 2013-12-24 | 2014-02-20 |  |  |
| DUKHCONP1AZ3STRF2040 |  | Column-Rebar & Formwork | 18d | 2013-12-24 | 2014-01-13 | DUKHCONP1AZ3STFF2035 SS+2d, DUKHCONP1AZ2STRF2040, DUKHCONP1AZ3STFF2035 FF+3d | -9d |
| DUKHCONP1AZ3STRF2045 |  | Column-Concrete | 17d | 2013-12-28 | 2014-01-15 | DUKHCONP1AZ3STRF2040 SS+3d, DUKHCONP1AZ3STRF2040 FF+1d | -4d |
| DUKHCONP1AZ3STRF2050 |  | Slab-Rebar & Formwork - Head Room | 20d | 2013-12-30 | 2014-01-21 | DUKHCONP1AZ3STRF2045 SS+2d, DUKHCONP1AZ3STRF2045 FF+5d | -4d |
| DUKHCONP1AZ3STRF2055 |  | Slab-Concrete-Head room | 13d | 2014-01-09 | 2014-01-23 | DUKHCONP1AZ3STRF2050 SS+5d, DUKHCONP1AZ2STRF2055, DUKHCONP1AZ3STRF2050 FF+2d | -4d |
| DUKHCONP1AZ3STRF2060 |  | Construction of Parapets | 25d | 2014-01-12 | 2014-02-09 | DUKHCONP1AZ3STRF2055 FF+14d, DUKHCONP1AZ3STRF2055 SS+2d | 32d |
| DUKHCONP1AZ3STRF2065 |  | Construction of up stands/Plinth | 25d | 2014-01-22 | 2014-02-20 | DUKHCONP1AZ3STRF2060 FF+5d, DUKHCONP1AZ3STRF2060 SS+5d, DUKHCONP1AZ2STRF2065 | 28d |
|  | 15 | **FINISHING WORKS** |  | 2013-12-08 | 2014-06-15 |  |  |
|  | 10 | **INTERNAL FINISHES** |  | 2013-12-08 | 2014-06-15 |  |  |
|  | 10 | **GROUND FLOOR** |  | 2013-12-08 | 2014-05-21 |  |  |
| DUKHCONP1AZ3ARGF3000 |  | Block work | 25d | 2013-12-08 | 2014-01-06 | DUKHCONP1AZ2ARGF3000, DUKHCONP1AZ3STGF2015 FF+21d, DUKHCONP1AZ3STGF2015 SS+21d | -6d |
| DUKHCONP1AZ3ARGF3005 |  | Plastering work | 25d | 2013-12-31 | 2014-01-28 | DUKHCONP1AZ3ARGF3000 FF+7d, DUKHCONP1AZ2ARGF3005, DUKHCONP1AZ3ELGF4000 SS+5d, DUKHCONP1AZ3ELGF4000 FF+5d, DUKHCONP1AZ3PLGF4305 SS+5d, DUKHCONP1AZ3PLGF4305 FF+5d, DUKHCONP1AZ3ARGF3000 SS+7d | -6d |
| DUKHCONP1AZ3ARGF3010 |  | Flooring screed | 21d | 2014-01-08 | 2014-02-01 | DUKHCONP1AZ3ARGF3005 FF+3d, DUKHCONP1AZ3ARGF3005 SS+7d | 2d |
| DUKHCONP1AZ3ARGF3015 |  | Wet area waterproofing & Protection Screed | 15d | 2014-01-18 | 2014-02-03 | DUKHCONP1AZ3ARGF3005 FF+5d, DUKHCONP1AZ2ARGF3015, DUKHCONP1AZ3ARGF3005 SS+7d | -6d |
| DUKHCONP1AZ3ARGF3030 |  | Paint First coat | 25d | 2014-01-20 | 2014-02-18 | DUKHCONP1AZ3ARGF3005 FF+14d, DUKHCONP1AZ2ARGF3030, DUKHCONP1AZ3ARGF3005 SS+14d | 5d |
| DUKHCONP1AZ3ARGF3020 |  | Ceramic Wall Tiling | 25d | 2014-01-23 | 2014-02-22 | DUKHCONP1AZ2ARGF3020, DUKHCONP1AZ3PLGF4305 SS+4d, DUKHCONP1AZ3PLGF4310 FF+4d, DUKHCONP1AZ3PLGF4305 FF+4d, DUKHCONP1AZ3PLGF4310 SS+4d, DUKHCONP1AZ3ARGF3015 FF+5d, DUKHCONP1AZ3ARGF3015 SS+5d | -6d |
| DUKHCONP1AZ3ARGF3025 |  | Porcelain Tile flooring | 25d | 2014-01-29 | 2014-02-27 | DUKHCONP1AZ3ARGF3010 SS+10d, DUKHCONP1AZ3ARGF3010 FF+10d, DUKHCONP1AZ3ARGF3020 SS+5d, DUKHCONP1AZ3ARGF3020 FF+5d, DUKHCONP1AZ2ARGF3025 | -6d |
| DUKHCONP1AZ3ARGF3045 |  | Fixing of Suspension systems | 20d | 2014-02-17 | 2014-03-11 | DUKHCONP1AZ3ARGF3030 SS+7d, DUKHCONP1AZ3ARGF3030 FF+7d, DUKHCONP1AZ3ARGF3025 FF+10d, DUKHCONP1AZ3ELGF4010 SS+5d, DUKHCONP1AZ2ARGF3045, DUKHCONP1AZ3ELGF4010 FF+5d, DUKHCONP1AZ3ARGF3025 SS+10d | -6d |
| DUKHCONP1AZ3ARGF3035 |  | Slate Tile Flooring & Skirting | 15d | 2014-02-19 | 2014-03-08 | DUKHCONP1AZ3ARGF3025 SS+13d, DUKHCONP1AZ3ARGF3025 FF+7d, DUKHCONP1AZ3ARGF3010 FF+13d, DUKHCONP1AZ3ARGF3010 SS+13d | -1d |
| DUKHCONP1AZ3ARGF3055 |  | Aluminum tile false ceiling | 25d | 2014-02-25 | 2014-03-25 | DUKHCONP1AZ3ARGF3045 SS+7d, DUKHCONP1AZ3ARGF3045 FF+7d, DUKHCONP1AZ3ACGF4600 SS+7d, DUKHCONP1AZ3ACGF4600 FF+7d | -3d |
| DUKHCONP1AZ3ARGF3040 |  | Cobble Tile flooring | 15d | 2014-02-26 | 2014-03-15 | DUKHCONP1AZ3ARGF3010 FF+13d, DUKHCONP1AZ3ARGF3035 SS+4d, DUKHCONP1AZ3ARGF3010 SS+13d, DUKHCONP1AZ3ARGF3025 SS+13d, DUKHCONP1AZ3ARGF3035 FF+4d, DUKHCONP1AZ3ARGF3025 FF+13d | -3d |
| DUKHCONP1AZ3ARGF3060 |  | Gypsum board false ceiling | 25d | 2014-03-01 | 2014-03-29 | DUKHCONP1AZ2ARGF3060, DUKHCONP1AZ3ARGF3045 SS+10d, DUKHCONP1AZ3ARGF3045 FF+10d, DUKHCONP1AZ3ACGF4600 FF+7d, DUKHCONP1AZ3ACGF4600 SS+7d | -6d |
| DUKHCONP1AZ3ARGF3050 |  | Granite - Stair case flooring & Skirting | 20d | 2014-03-06 | 2014-03-29 | DUKHCONP1AZ3ARGF3025 FF+13d, DUKHCONP1AZ3ARGF3040 SS+7d, DUKHCONP1AZ3ARGF3040 FF+7d, DUKHCONP1AZ3ARGF3025 SS+13d | -3d |
| DUKHCONP1AZ3ARGF3065 |  | Wooden door & PVC Door | 15d | 2014-03-20 | 2014-04-06 | DUKHCONP1AZ3ARGF3035 FF+7d, DUKHCONP1AZ3ARGF3050 SS+7d, DUKHCONP1AZ3ARGF3050 FF+7d, DUKHCONP1AZ2ARGF3065, DUKHCONP1AZ3ARGF3035 SS+7d | -3d |
| DUKHCONP1AZ3ARGF3070 |  | Aluminum doors | 15d | 2014-03-26 | 2014-04-12 | DUKHCONP1AZ3ARGF3065 SS+5d, DUKHCONP1AZ3ARGF3065 FF+5d, DUKHCONP1AZ2ARGF3070 | -3d |
| DUKHCONP1AZ3ARGF3075 |  | Carpentry & Joinery Works | 20d | 2014-04-01 | 2014-04-23 | DUKHCONP1AZ3ARGF3070 SS+5d, DUKHCONP1AZ2ARGF3075, DUKHCONP1AZ3ARGF3070 FF+7d | -3d |
| DUKHCONP1AZ3ARGF3080 |  | Aluminum windows | 20d | 2014-04-02 | 2014-04-24 | DUKHCONP1AZ3ARGF3070 SS+6d, DUKHCONP1AZ2ARGF3080, DUKHCONP1AZ3ARGF3070 FF+6d | 7d |
| DUKHCONP1AZ3ARGF3085 |  | S.S.Balustrade | 20d | 2014-04-09 | 2014-05-01 | DUKHCONP1AZ3ARGF3050 FF+7d, DUKHCONP1AZ3ARGF3075 FF+7d, DUKHCONP1AZ3ARGF3050 SS+7d, DUKHCONP1AZ3ARGF3075 SS+7d | 2d |
| DUKHCONP1AZ3ARGF3090 |  | Installation of Granite Counter Top | 15d | 2014-04-14 | 2014-04-30 | DUKHCONP1AZ3ARGF3075 FF+6d, DUKHCONP1AZ3ARGF3075 SS+7d | -3d |
| DUKHCONP1AZ3ARGF3095 |  | Final Painting | 25d | 2014-04-23 | 2014-05-21 | DUKHCONP1AZ3ARGF3040 SS+13d, DUKHCONP1AZ3ARGF3090 SS+8d, DUKHCONP1AZ3ARGF3060 FF+8d, DUKHCONP1AZ3ARGF3030 FF+10d, DUKHCONP1AZ3ARGF3035 FF+13d, DUKHCONP1AZ3ARGF3060 SS+8d, DUKHCONP1AZ3ARGF3070 FF+5d, DUKHCONP1AZ3ARGF3080 FF+8d, DUKHCONP1AZ3ACGF4610 FF+10d, DUKHCONP1AZ2ARGF3095, DUKHCONP1AZ3ACGF4610 SS+10d, DUKHCONP1AZ3ARGF3085 SS+7d, DUKHCONP1AZ3ARGF3030 SS+10d, DUKHCONP1AZ3ARGF3040 FF+13d, DUKHCONP1AZ3ARGF3035 SS+13d, DUKHCONP1AZ3ARGF3070 SS+5d, DUKHCONP1AZ3ARGF3080 SS+8d, DUKHCONP1AZ3ARGF3090 FF+8d, DUKHCONP1AZ3ARGF3085 FF+7d | -3d |
|  | 15 | **FIRST FLOORS** |  | 2014-01-20 | 2014-06-15 |  |  |
| DUKHCONP1AZ3ARFF3300 |  | Block work | 25d | 2014-01-20 | 2014-02-18 | DUKHCONP1AZ3STFF2035 SS+21d, DUKHCONP1AZ2ARFF3300, DUKHCONP1AZ3STFF2020 SS+21d, DUKHCONP1AZ3STFF2020 FF+21d, DUKHCONP1AZ3STFF2035 FF+21d | -24d |
| DUKHCONP1AZ3ARFF3305 |  | Plastering work | 25d | 2014-02-15 | 2014-03-15 | DUKHCONP1AZ2ARFF3305, DUKHCONP1AZ3PLFF4325 FF+6d, DUKHCONP1AZ3PLFF4325 SS+6d, DUKHCONP1AZ3ELFF4035 SS+5d, DUKHCONP1AZ3ARFF3300 FF+7d, DUKHCONP1AZ3ARFF3300 SS+7d, DUKHCONP1AZ3ELFF4035 FF+5d | -24d |
| DUKHCONP1AZ3ARFF3310 |  | Flooring screed | 21d | 2014-02-23 | 2014-03-18 | DUKHCONP1AZ3ARFF3305 SS+7d, DUKHCONP1AZ3ARFF3305 FF+3d | -12d |
| DUKHCONP1AZ3ARFF3330 |  | Paint First coat | 25d | 2014-03-03 | 2014-03-31 | DUKHCONP1AZ3ARFF3305 SS+14d, DUKHCONP1AZ3ARFF3305 FF+14d | -10d |
| DUKHCONP1AZ3ARFF3315 |  | Wet area waterproofing | 15d | 2014-03-06 | 2014-03-23 | DUKHCONP1AZ2ARFF3315, DUKHCONP1AZ3ARFF3305 SS+7d, DUKHCONP1AZ3ARFF3305 FF+7d | -24d |
| DUKHCONP1AZ3ARFF3320 |  | Ceramic Wall Tiling | 25d | 2014-03-13 | 2014-04-10 | DUKHCONP1AZ3PLFF4325 FF+4d, DUKHCONP1AZ3ARFF3315 SS+6d, DUKHCONP1AZ3ARFF3315 FF+6d, DUKHCONP1AZ3PLFF4330 SS+7d, DUKHCONP1AZ3PLFF4325 SS+4d, DUKHCONP1AZ2ARFF3320, DUKHCONP1AZ3PLFF4330 FF+7d | -24d |
| DUKHCONP1AZ3ARFF3325 |  | Porcelain Tile flooring | 25d | 2014-03-20 | 2014-04-17 | DUKHCONP1AZ2ARFF3325, DUKHCONP1AZ3ARFF3320 SS+6d, DUKHCONP1AZ3ARFF3310 SS+10d, DUKHCONP1AZ3ARFF3310 FF+10d, DUKHCONP1AZ3ARFF3320 FF+6d | -24d |
| DUKHCONP1AZ3ARFF3345 |  | Fixing of Suspension systems | 20d | 2014-04-02 | 2014-04-24 | DUKHCONP1AZ2ARFF3345, DUKHCONP1AZ3ELFF4045 SS+5d, DUKHCONP1AZ3ARFF3330 FF+7d, DUKHCONP1AZ3ARFF3330 SS+7d, DUKHCONP1AZ3ARFF3325 FF+6d, DUKHCONP1AZ3ARFF3325 SS+6d, DUKHCONP1AZ3ELFF4045 FF+5d | -24d |
| DUKHCONP1AZ3ARFF3335 |  | Slate Tile Flooring & Skirting | 15d | 2014-04-07 | 2014-04-23 | DUKHCONP1AZ3ARFF3310 SS+13d, DUKHCONP1AZ3ARFF3325 SS+13d, DUKHCONP1AZ3ARFF3310 FF+13d, DUKHCONP1AZ3ARFF3325 FF+5d | -16d |
| DUKHCONP1AZ3ARFF3360 |  | Gypsum board false ceiling | 25d | 2014-04-09 | 2014-05-07 | DUKHCONP1AZ3ACFF4615 SS+7d, DUKHCONP1AZ3ACFF4615 FF+7d, DUKHCONP1AZ3ARFF3345 FF+6d, DUKHCONP1AZ3ARFF3345 SS+6d, DUKHCONP1AZ2ARFF3360 | -24d |
| DUKHCONP1AZ3ARFF3350 |  | Granite - Stair case flooring & Skirting | 20d | 2014-04-10 | 2014-05-03 | DUKHCONP1AZ3ARFF3325 SS+13d, DUKHCONP1AZ3ARFF3325 FF+13d | -22d |
| DUKHCONP1AZ3ARFF3365 |  | Wooden door | 15d | 2014-04-24 | 2014-05-11 | DUKHCONP1AZ3ARFF3360 FF+3d, DUKHCONP1AZ3ARFF3335 FF+7d, DUKHCONP1AZ3ARFF3350 SS+5d, DUKHCONP1AZ3ARFF3360 SS+3d, DUKHCONP1AZ3ARFF3350 FF+5d, DUKHCONP1AZ3ARFF3335 SS+7d, DUKHCONP1AZ2ARFF3365 | -24d |
| DUKHCONP1AZ3ARFF3370 |  | Aluminum Door | 20d | 2014-04-24 | 2014-05-17 | DUKHCONP1AZ3ARFF3365 SS, DUKHCONP1AZ3ARFF3365 FF, DUKHCONP1AZ2ARFF3370 | -24d |
| DUKHCONP1AZ3ARFF3375 |  | Carpentry & Joinery Works | 25d | 2014-04-30 | 2014-05-28 | DUKHCONP1AZ2ARFF3375, DUKHCONP1AZ3ARFF3370 FF+5d, DUKHCONP1AZ3ARFF3370 SS+5d | -24d |
| DUKHCONP1AZ3ARFF3380 |  | Aluminum windows | 20d | 2014-05-01 | 2014-05-24 | DUKHCONP1AZ3ARFF3370 FF+6d, DUKHCONP1AZ3ARFF3370 SS+6d | -20d |
| DUKHCONP1AZ3ARFF3385 |  | Handrail & Balustrade | 20d | 2014-05-12 | 2014-06-03 | DUKHCONP1AZ3ARFF3350 FF+7d, DUKHCONP1AZ3ARFF3375 SS+5d, DUKHCONP1AZ3ARFF3350 SS+7d, DUKHCONP1AZ3ARFF3375 FF+5d | -24d |
| DUKHCONP1AZ3ARFF3390 |  | Installation of Granite Counter Top | 20d | 2014-05-12 | 2014-06-03 | DUKHCONP1AZ3ARFF3375 SS+6d, DUKHCONP1AZ3ARFF3375 FF+5d | -23d |
| DUKHCONP1AZ3ARFF3395 |  | Final Painting | 25d | 2014-05-18 | 2014-06-15 | DUKHCONP1AZ3ARFF3335 SS+8d, DUKHCONP1AZ3ARFF3335 FF+8d, DUKHCONP1AZ3ARFF3350 SS+8d, DUKHCONP1AZ3ARFF3380 SS+10d, DUKHCONP1AZ3ARFF3390 FF+6d, DUKHCONP1AZ3ACFF4625 SS+6d, DUKHCONP1AZ3ARFF3350 FF+8d, DUKHCONP1AZ3ARFF3380 FF+10d, DUKHCONP1AZ3ARFF3330 SS+10d, DUKHCONP1AZ3ARFF3375 FF+8d, DUKHCONP1AZ3ARFF3375 SS+8d, DUKHCONP1AZ3ARFF3385 FF+6d, DUKHCONP1AZ3ARFF3360 SS+10d, DUKHCONP1AZ3ARFF3390 SS+4d, DUKHCONP1AZ3ARFF3360 FF+10d, DUKHCONP1AZ3ACFF4625 FF+6d, DUKHCONP1AZ2ARFF3395, DUKHCONP1AZ3ARFF3365 SS+8d, DUKHCONP1AZ3ARFF3365 FF+8d, DUKHCONP1AZ3ARFF3385 SS+5d, DUKHCONP1AZ3ARFF3330 FF+10d | -24d |

| ID | WBS | Task | Duration | Start | Finish | Predecessors | Total float |
| --- | --- | --- | --- | --- | --- | --- | --- |
|  | 20 | **ROOF** |  | 2014-02-03 | 2014-04-09 |  |  |
| DUKHCONP1AZ3ARRF3600 |  | Block work | 20d | 2014-02-03 | 2014-02-26 | DUKHCONP1AZ2ARRF3600, DUKHCONP1AZ3STRF2055 FF+21d, DUKHCONP1AZ3STRF2055 SS+21d | 28d |
| DUKHCONP1AZ3ARRF3605 |  | Plastering work | 20d | 2014-02-12 | 2014-03-06 | DUKHCONP1AZ3ARRF3600 SS+7d, DUKHCONP1AZ3ARRF3600 FF+7d | 28d |
| DUKHCONP1AZ3ARRF3610 |  | Flooring screed | 15d | 2014-02-26 | 2014-03-15 | DUKHCONP1AZ3ARRF3605 FF+7d, DUKHCONP1AZ3ARRF3605 SS+7d | 33d |
| DUKHCONP1AZ3ARRF3695 |  | Painting -Storage area | 20d | 2014-03-06 | 2014-03-29 | DUKHCONP1AZ3ARRF3610 SS+7d, DUKHCONP1AZ3ARRF3610 FF+7d | 33d |
| DUKHCONP1AZ3ARRF3620 |  | Epoxy Painting -Storage area | 15d | 2014-03-24 | 2014-04-09 | DUKHCONP1AZ3ARRF3695 FF+10d, DUKHCONP1AZ3ARRF3695 SS+10d | 33d |
|  | 15 | **EXTERNAL FINISHES** |  | 2014-02-26 | 2014-05-15 |  |  |
|  | 10 | **ROOF** |  | 2014-03-12 | 2014-05-15 |  |  |
| DUKHCONP1AZ3ARRF3630 |  | Leveling Screed for Waterproofing | 25d | 2014-03-12 | 2014-04-09 | DUKHCONP1AZ3STRF2065 FF+10d, DUKHCONP1AZ2ARRF3630, DUKHCONP1AZ3STRF2060 SS+10d, DUKHCONP1AZ3STRF2065 SS+10d, DUKHCONP1AZ3STRF2060 FF+10d | -3d |
| DUKHCONP1AZ3ARRF3635 |  | Laying of Waterproofing Membrane | 25d | 2014-03-16 | 2014-04-13 | DUKHCONP1AZ3ARRF3630 FF+3d, DUKHCONP1AZ3ARRF3630 SS+3d | -3d |
| DUKHCONP1AZ3ARRF3640 |  | Installation of Insulation & Protection | 25d | 2014-03-20 | 2014-04-17 | DUKHCONP1AZ3ARRF3635 SS+4d, DUKHCONP1AZ3ARRF3635 FF+4d | -3d |
| DUKHCONP1AZ3ARRF3645 |  | Lime Stone Chips & Paving slab Installation | 25d | 2014-03-25 | 2014-04-22 | DUKHCONP1AZ3ARRF3640 SS+4d, DUKHCONP1AZ3ARRF3640 FF+4d | -3d |
| DUKHCONP1AZ3ARRF3650 |  | Install. of Gal. Frame & Aluminum Slat Screen | 25d | 2014-04-02 | 2014-04-30 | DUKHCONP1AZ3ARRF3645 SS+7d, DUKHCONP1AZ3ARRF3645 FF+7d | -3d |
| DUKHCONP1AZ3ARRF3655 |  | Installation of Pumps Protection cabinets | 20d | 2014-04-17 | 2014-05-10 | DUKHCONP1AZ3ARRF3645 SS+7d, DUKHCONP1AZ3ARRF3650 FF+8d, DUKHCONP1AZ3ARRF3650 SS+8d, DUKHCONP1AZ2ARRF3655, DUKHCONP1AZ3ARRF3645 FF+7d | -3d |
| DUKHCONP1AZ3ARRF3660 |  | Installation of Access Ladder | 15d | 2014-04-29 | 2014-05-15 | DUKHCONP1AZ3ARRF3655 FF+5d, DUKHCONP1AZ3ARRF3655 SS+5d | 2d |
|  | 15 | **ELEVATION** |  | 2014-02-26 | 2014-04-19 |  |  |
| DUKHCONP1AZ3AREL3665 |  | External Plastering | 25d | 2014-02-26 | 2014-03-26 | DUKHCONP1AZ3ARFF3305 FF+7d, DUKHCONP1AZ3ARRF3605 SS+7d, DUKHCONP1AZ3STRF2065 SS+7d, DUKHCONP1AZ3ARFF3305 SS+7d, DUKHCONP1AZ2AREL3665, DUKHCONP1AZ3STRF2065 FF+7d | 23d |
| DUKHCONP1AZ3AREL3670 |  | External stone cladding works | 20d | 2014-03-16 | 2014-04-07 | DUKHCONP1AZ2AREL3670, DUKHCONP1AZ3AREL3665 SS+10d, DUKHCONP1AZ3AREL3665 FF+10d | 25d |
| DUKHCONP1AZ3AREL3680 |  | External Painting | 20d | 2014-03-27 | 2014-04-19 | DUKHCONP1AZ3AREL3670 FF+10d, DUKHCONP1AZ2AREL3680, DUKHCONP1AZ3ARRF3695 FF+4d, DUKHCONP1AZ3AREL3670 SS+10d, DUKHCONP1AZ3ARRF3695 SS+4d | 25d |
|  | 20 | **MEP WORKS** |  | 2013-09-01 | 2014-06-14 |  |  |
|  | 10 | **ELECTRICAL WORKS** |  | 2013-12-14 | 2014-06-14 |  |  |
|  | 10 | **GROUND FLOOR** |  | 2013-12-14 | 2014-04-23 |  |  |
| DUKHCONP1AZ3ELGF4000 |  | Fixing of wall conduits & switch socket boxes | 25d | 2013-12-14 | 2014-01-12 | DUKHCONP1AZ3ARGF3000 FF+5d, DUKHCONP1AZ3ARGF3000 SS+5d | 3d |
| DUKHCONP1AZ3ELGF4005 |  | Cable tray & trunking installation | 20d | 2013-12-26 | 2014-01-18 | DUKHCONP1AZ3ELGF4000 SS+5d, DUKHCONP1AZ2ELGF4005, DUKHCONP1AZ3ELGF4000 FF+5d | 21d |
| DUKHCONP1AZ3ELGF4010 |  | Installation of wiring & Main Cabling | 25d | 2014-01-04 | 2014-02-01 | DUKHCONP1AZ3ELGF4005 FF+7d, DUKHCONP1AZ3ELGF4005 SS+7d | 21d |
| DUKHCONP1AZ3ELGF4015 |  | Install. of CAMS & Fire Fighting Accessories | 25d | 2014-03-09 | 2014-04-06 | DUKHCONP1AZ3ARGF3055 SS+7d, DUKHCONP1AZ3ARGF3060 FF+7d, DUKHCONP1AZ2ELGF4015, DUKHCONP1AZ3ARGF3055 FF+7d, DUKHCONP1AZ3ARGF3060 SS+7d | 6d |
| DUKHCONP1AZ3ELGF4020 |  | Installation of DBS,MCCB Accessories. | 20d | 2014-03-15 | 2014-04-06 | DUKHCONP1AZ3ARGF3055 FF+7d, DUKHCONP1AZ3ARGF3055 SS+7d, DUKHCONP1AZ3ARGF3060 FF+7d, DUKHCONP1AZ3ELGF4010 SS+5d, DUKHCONP1AZ3ARGF3060 SS+7d, DUKHCONP1AZ3ELGF4010 FF+5d | -6d |
| DUKHCONP1AZ3ELGF4025 |  | Installation of Lighting fixtures & Accessories | 25d | 2014-03-26 | 2014-04-23 | DUKHCONP1AZ2ELGF4025, DUKHCONP1AZ3ARGF3060 SS+10d, DUKHCONP1AZ3ARGF3055 SS+10d, DUKHCONP1AZ3ARGF3055 FF+10d, DUKHCONP1AZ3ELGF4020 FF+10d, DUKHCONP1AZ3ARGF3060 FF+10d, DUKHCONP1AZ3ELGF4020 SS+10d | 1d |
| DUKHCONP1AZ3ELGF4030 |  | Installation of Telephone System | 20d | 2014-03-26 | 2014-04-17 | DUKHCONP1AZ3ARGF3060 SS+5d, DUKHCONP1AZ3ELGF4020 SS+10d, DUKHCONP1AZ2ELGF4030, DUKHCONP1AZ3ARGF3060 FF+5d, DUKHCONP1AZ3ELGF4020 FF+10d | -6d |
|  | 15 | **FIRST FLOORS** |  | 2014-01-26 | 2014-05-27 |  |  |
| DUKHCONP1AZ3ELFF4035 |  | Fixing of wall conduits & switch socket boxes | 25d | 2014-01-26 | 2014-02-24 | DUKHCONP1AZ3ARFF3300 FF+5d, DUKHCONP1AZ3ARFF3300 SS+5d | -13d |
| DUKHCONP1AZ3ELFF4040 |  | Cable tray & trunking installation | 20d | 2014-02-06 | 2014-03-02 | DUKHCONP1AZ3ELFF4035 SS+5d, DUKHCONP1AZ3ELFF4035 FF+5d | 5d |
| DUKHCONP1AZ3ELFF4045 |  | Installation of wiring & Main Cabling | 25d | 2014-02-18 | 2014-03-18 | DUKHCONP1AZ3ELFF4040 FF+7d, DUKHCONP1AZ2ELFF4045, DUKHCONP1AZ3ELFF4040 SS+7d | 3d |
| DUKHCONP1AZ3ELFF4050 |  | Installation of Telephone System | 25d | 2014-04-15 | 2014-05-13 | DUKHCONP1AZ3ELGF4030 SS+10d, DUKHCONP1AZ3MSEX5010 FF, DUKHCONP1AZ3ARFF3360 FF+5d, DUKHCONP1AZ3ARFF3360 SS+5d, DUKHCONP1AZ3ELGF4030 FF+10d | -13d |
| DUKHCONP1AZ3ELFF4055 |  | Install. of CAMS & Fire Fighting Accessories | 25d | 2014-04-17 | 2014-05-15 | DUKHCONP1AZ3ARFF3360 FF+7d, DUKHCONP1AZ3ARFF3360 SS+7d, DUKHCONP1AZ3ELGF4015 FF+5d, DUKHCONP1AZ3ELGF4015 SS+5d, DUKHCONP1AZ2ELFF4055 | -23d |
| DUKHCONP1AZ3ELFF4060 |  | Installation of DBS,MCCB Accessories. | 20d | 2014-04-21 | 2014-05-13 | DUKHCONP1AZ3ELFF4045 FF+5d, DUKHCONP1AZ3ELFF4045 SS+5d, DUKHCONP1AZ3ARFF3360 FF+5d, DUKHCONP1AZ2ELFF4060, DUKHCONP1AZ3ARFF3360 SS+8d | -21d |
| DUKHCONP1AZ3ELFF4065 |  | Installation of Lighting fixtures & Accessories | 25d | 2014-04-29 | 2014-05-27 | DUKHCONP1AZ2ELFF4065, DUKHCONP1AZ3ELFF4060 SS+5d, DUKHCONP1AZ3ELFF4060 FF+5d, DUKHCONP1AZ3ARFF3360 SS+10d, DUKHCONP1AZ3ELGF4025 SS+5d, DUKHCONP1AZ3ARFF3360 FF+10d, DUKHCONP1AZ3ELGF4025 FF+5d | -23d |
|  | 20 | **ROOF** |  | 2014-05-13 | 2014-06-14 |  |  |
| DUKHCONP1AZ3ELRF4070 |  | Installation of Isolator | 18d | 2014-05-13 | 2014-06-02 | DUKHCONP1AZ3ELFF4065 FF+5d, DUKHCONP1AZ3ARRF3645 SS+7d, DUKHCONP1AZ3ELFF4045 FF+10d, DUKHCONP1AZ3ELFF4065 SS+5d, DUKHCONP1AZ3ARRF3645 FF+7d, DUKHCONP1AZ3ELFF4045 SS+10d, DUKHCONP1AZ3ELFF4050 SS+5d, DUKHCONP1AZ3ELFF4050 FF+7d | -23d |
| DUKHCONP1AZ3ELRF4075 |  | Installation of TV Dish Antenna | 23d | 2014-05-19 | 2014-06-14 | DUKHCONP1AZ3ELRF4070 FF+5d, DUKHCONP1AZ3ELRF4070 SS+5d | -23d |
|  | 15 | **PLUMBING, DRAINAGE & FIRE FIGHTING WORKS** |  | 2013-09-01 | 2014-06-14 |  |  |
|  | 10 | **GROUND FLOOR** |  | 2013-09-01 | 2014-04-23 |  |  |
| DUKHCONP1AZ3PLUG4300 |  | Drainage / Storm Pipes in Grade Slab | 16d | 2013-09-01 | 2013-09-18 | DUKHCONP1AZ3STUG1040 FF+11d, DUKHCONP1AZ3STUG1040 SS+11d | -24d |
| DUKHCONP1AZ3PLGF4305 |  | Installation of Plumbing pipes & testing | 18d | 2013-12-25 | 2014-01-14 | DUKHCONP1AZ3ARGF3000 FF+7d, DUKHCONP1AZ2PLGF4305, DUKHCONP1AZ3ARGF3000 SS+7d | -6d |
| DUKHCONP1AZ3PLGF4310 |  | Installation of Drainage pipes &testing | 18d | 2013-12-25 | 2014-01-14 | DUKHCONP1AZ3ARGF3000 SS+7d, DUKHCONP1AZ3PLGF4305 FF, DUKHCONP1AZ3PLGF4305 SS, DUKHCONP1AZ3ARGF3000 FF+7d | 15d |
| DUKHCONP1AZ3PLGF4315 |  | Sanitary Fittings & Accessories | 20d | 2014-03-26 | 2014-04-17 | DUKHCONP1AZ3PLGF4310 SS+5d, DUKHCONP1AZ2PLGF4315, DUKHCONP1AZ3PLGF4310 FF+5d, DUKHCONP1AZ3ARGF3065 FF+5d, DUKHCONP1AZ3ARGF3065 SS+5d | 21d |
| DUKHCONP1AZ3PLGF4320 |  | Installation of Water Heater | 15d | 2014-04-07 | 2014-04-23 | DUKHCONP1AZ2PLGF4320, DUKHCONP1AZ3PLGF4315 FF+5d, DUKHCONP1AZ3ARGF3060 SS+5d, DUKHCONP1AZ3PLGF4315 SS+5d, DUKHCONP1AZ3ARGF3060 FF+5d | 21d |
|  | 15 | **FIRST FLOORS** |  | 2014-02-06 | 2014-05-22 |  |  |
| DUKHCONP1AZ3PLFF4325 |  | Installation of Plumbing pipes & testing | 18d | 2014-02-06 | 2014-02-27 | DUKHCONP1AZ3ARFF3300 SS+7d, DUKHCONP1AZ3ARFF3300 FF+8d | -24d |
| DUKHCONP1AZ3PLFF4330 |  | Installation of Drainage pipes & testing | 18d | 2014-02-06 | 2014-02-27 | DUKHCONP1AZ3PLFF4325 SS, DUKHCONP1AZ3PLFF4325 FF, DUKHCONP1AZ3ARFF3300 SS+7d, DUKHCONP1AZ3ARFF3300 FF+7d, DUKHCONP1AZ2PLFF4330 | -2d |
| DUKHCONP1AZ3PLFF4335 |  | Sanitary Fittings & Accessories | 20d | 2014-04-24 | 2014-05-17 | DUKHCONP1AZ3PLFF4330 FF+5d, DUKHCONP1AZ3ARFF3365 FF+5d, DUKHCONP1AZ3ARFF3365 SS, DUKHCONP1AZ3PLFF4330 SS+5d | -19d |
| DUKHCONP1AZ3PLFF4340 |  | Installation of Water Heater | 15d | 2014-05-06 | 2014-05-22 | DUKHCONP1AZ3ARFF3360 FF+5d, DUKHCONP1AZ3ARFF3360 SS+5d, DUKHCONP1AZ3PLFF4335 SS+5d, DUKHCONP1AZ2PLFF4340, DUKHCONP1AZ3PLFF4335 FF+5d | -19d |
|  | 20 | **ROOF** |  | 2014-02-26 | 2014-06-14 |  |  |
| DUKHCONP1AZ3PLRF4345 |  | Installation of Plumbing pipes & fittings | 15d | 2014-02-26 | 2014-03-15 | DUKHCONP1AZ3ARRF3605 SS+7d, DUKHCONP1AZ3ARRF3605 FF+7d | 32d |
| DUKHCONP1AZ3PLRF4350 |  | Installation of Rain water Pipes | 15d | 2014-04-12 | 2014-04-28 | DUKHCONP1AZ3PLFF4330 FF+5d, DUKHCONP1AZ3PLFF4330 SS+5d, DUKHCONP1AZ3PLRF4345 SS+8d, DUKHCONP1AZ3AREL3665 SS+7d, DUKHCONP1AZ3ARRF3645 SS+5d, DUKHCONP1AZ3AREL3665 FF+7d, DUKHCONP1AZ3ARRF3645 FF+5d, DUKHCONP1AZ3PLRF4345 FF+8d, DUKHCONP1AZ2PLRF4350 | 2d |
| DUKHCONP1AZ3PLRF4355 |  | Roof Water Tank Installation & Connections | 25d | 2014-05-17 | 2014-06-14 | DUKHCONP1AZ2PLRF4355, DUKHCONP1AZ3PLRF4345 SS+8d, DUKHCONP1AZ3ARRF3655 SS+5d, DUKHCONP1AZ3PLRF4345 FF+8d, DUKHCONP1AZ3PLRF4350 SS+5d, DUKHCONP1AZ3PLFF4340 FF+5d, DUKHCONP1AZ3ARRF3655 FF+5d, DUKHCONP1AZ3PLRF4350 FF+5d, DUKHCONP1AZ3PLFF4340 SS+5d | -23d |
|  | 20 | **AC WORKS** |  | 2014-01-14 | 2014-06-11 |  |  |
|  | 10 | **GROUND FLOOR** |  | 2014-01-14 | 2014-04-21 |  |  |
| DUKHCONP1AZ3ACGF4600 |  | Installation AC Pipes | 20d | 2014-01-14 | 2014-02-05 | DUKHCONP1AZ3ARGF3005 FF+7d, DUKHCONP1AZ2ACGF4600, DUKHCONP1AZ3ARGF3005 SS+7d | 25d |
| DUKHCONP1AZ3ACGF4605 |  | Fixing of Ventilation Equipments | 25d | 2014-03-09 | 2014-04-06 | DUKHCONP1AZ2ACGF4605, DUKHCONP1AZ3ARGF3055 SS+7d, DUKHCONP1AZ3ARGF3055 FF+7d, DUKHCONP1AZ3ACGF4600 SS+10d, DUKHCONP1AZ3ARGF3060 SS+7d, DUKHCONP1AZ3ARGF3060 FF+7d, DUKHCONP1AZ3ACGF4600 FF+10d | 8d |
| DUKHCONP1AZ3ACGF4610 |  | Fixing of Split AC | 20d | 2014-03-30 | 2014-04-21 | DUKHCONP1AZ3ACGF4605 FF+13d, DUKHCONP1AZ2ACGF4610, DUKHCONP1AZ3ACGF4605 SS+13d | 8d |
|  | 15 | **FIRST FLOORS** |  | 2014-03-01 | 2014-05-31 |  |  |
| DUKHCONP1AZ3ACFF4615 |  | Installation AC Pipes | 20d | 2014-03-01 | 2014-03-23 | DUKHCONP1AZ2ACFF4615, DUKHCONP1AZ3ARFF3305 SS+7d, DUKHCONP1AZ3ARFF3305 FF+7d | 3d |
| DUKHCONP1AZ3ACFF4620 |  | Fixing of Ventilation Equipments | 25d | 2014-04-17 | 2014-05-15 | DUKHCONP1AZ3ACFF4615 FF+10d, DUKHCONP1AZ3ARFF3360 FF+7d, DUKHCONP1AZ3ACFF4615 SS+10d, DUKHCONP1AZ2ACFF4620, DUKHCONP1AZ3ARFF3360 SS+7d | -22d |
| DUKHCONP1AZ3ACFF4625 |  | Fixing of Split AC | 20d | 2014-05-08 | 2014-05-31 | DUKHCONP1AZ3ACFF4620 SS+13d, DUKHCONP1AZ3ACFF4620 FF+13d, DUKHCONP1AZ2ACFF4625 | -22d |
|  | 20 | **ROOF** |  | 2014-04-02 | 2014-06-11 |  |  |
| DUKHCONP1AZ3ACRF4630 |  | Installation of Refrigerant Pipes | 25d | 2014-04-02 | 2014-04-30 | DUKHCONP1AZ3ARRF3645 FF+7d, DUKHCONP1AZ3ACGF4600 SS+7d, DUKHCONP1AZ3ACFF4615 SS+7d, DUKHCONP1AZ3ACGF4600 FF+7d, DUKHCONP1AZ2ACRF4630, DUKHCONP1AZ3ARRF3645 SS+7d, DUKHCONP1AZ3ACFF4615 FF+7d | 10d |
| DUKHCONP1AZ3ACRF4635 |  | Installation of Condensing Unit | 25d | 2014-05-14 | 2014-06-11 | DUKHCONP1AZ3ACFF4625 SS+5d, DUKHCONP1AZ3ACRF4630 SS+5d, DUKHCONP1AZ2ACRF4635, DUKHCONP1AZ3ACRF4630 FF+5d, DUKHCONP1AZ3ACGF4610 FF+5d, DUKHCONP1AZ3ACGF4610 SS+5d, DUKHCONP1AZ3ACFF4625 FF+5d | -21d |
|  | 25 | **EXTERNAL WORKS** |  | 2014-01-21 | 2014-06-29 |  |  |
|  | 10 | **MISCELLANEOUS** |  | 2014-01-21 | 2014-06-29 |  |  |

| ID | WBS | Task | Duration | Start | Finish | Predecessors | Total float |
| --- | --- | --- | --- | --- | --- | --- | --- |
| DUKHCONP1AZ3MSEX5000 |  | Construction of Manholes | 25d | 2014-01-21 | 2014-02-19 | DUKHCONP1AZ3STRF2055 SS+10d, DUKHCONP1AZ3PLGF4310 FF+10d, DUKHCONP1AZ3PLGF4310 SS+10d, DUKHCONP1AZ3STRF2055 FF+10d | 9d |
| DUKHCONP1AZ3MSEX5005 |  | Construction of Soak pit, Chambers | 25d | 2014-02-04 | 2014-03-05 | DUKHCONP1AZ3MSEX5000 SS+12d, DUKHCONP1AZ3MSEX5000 FF+12d | 9d |
| DUKHCONP1AZ3MSEX5015 |  | Construction of grease Trap | 20d | 2014-02-25 | 2014-03-19 | DUKHCONP1AZ3MSEX5005 SS+12d, DUKHCONP1AZ3MSEX5005 FF+12d | 9d |
| DUKHCONP1AZ3MSEX5020 |  | Construction Entrance Ramp | 25d | 2014-03-15 | 2014-04-12 | DUKHCONP1AZ3STRF2055 FF, DUKHCONP1AZ2MSEX5020, DUKHCONP1AZ3STRF2055 SS | -8d |
| DUKHCONP1AZ3MSEX5010 |  | Telephone cable laying | 25d | 2014-03-20 | 2014-04-17 | DUKHCONP1AZ3MSEX5015 | 9d |
| DUKHCONP1AZ3MSEX5025 |  | SS.Handrails and Balustrades | 20d | 2014-04-01 | 2014-04-23 | DUKHCONP1AZ3MSEX5020 FF+10d, DUKHCONP1AZ3MSEX5020 SS+10d | -5d |
| DUKHCONP1AZ3MSEX5335 |  | Aluminum Roll-up Shutter with 2m Wall | 25d | 2014-06-01 | 2014-06-29 | DUKHCONI1AZ2BWGL5325 SS+10d, DUKHCONP1AZ2MSEX5335 | 79d |
|  | 15 | **WATER TANK ENCLOSURE** |  | 2014-03-10 | 2014-06-04 |  |  |
| DUKHCONP1AZ3WEEX5030 |  | Excavation | 20d | 2014-03-10 | 2014-04-01 | DUKHCONP1AZ2WEEX5030, DUKHCONP1AZ3STRF2055 FF+5d, DUKHCONP1AZ3STRF2055 SS+5d | -6d |
| DUKHCONP1AZ3WEEX5035 |  | Construction of Raft | 25d | 2014-03-16 | 2014-04-13 | DUKHCONP1AZ3WEEX5030 FF+10d, DUKHCONP1AZ3WEEX5030 SS+5d | -6d |
| DUKHCONP1AZ3WEEX5040 |  | Block works & Plastering | 25d | 2014-03-25 | 2014-04-22 | DUKHCONP1AZ3WEEX5035 SS+8d, DUKHCONP1AZ3WEEX5035 FF+8d | -6d |
| DUKHCONP1AZ3WEEX5045 |  | Flooring & Painting | 25d | 2014-04-01 | 2014-04-29 | DUKHCONP1AZ3WEEX5040 SS+6d, DUKHCONP1AZ3WEEX5040 FF+6d | -6d |
| DUKHCONP1AZ3WEEX5050 |  | Installation of Steel Gate | 20d | 2014-04-14 | 2014-05-06 | DUKHCONP1AZ3WEEX5045 SS+5d, DUKHCONP1AZ3MSEX5025 FF+10d, DUKHCONP1AZ3WEEX5045 FF+6d | -6d |
| DUKHCONP1AZ3WEEX5060 |  | Structural steel & SS Shed cover installation | 25d | 2014-04-29 | 2014-05-27 | DUKHCONP1AZ3WEEX5050 SS+5d, DUKHCONP1AZ2WEEX5060, DUKHCONP1AZ3WEEX5050 FF+10d, DUKHCONP1AZ3MSEX5025 FF+10d | -14d |
| DUKHCONP1AZ3WEEX5065 |  | Install. of Water Tank,Chiller,Pump & Meter | 25d | 2014-05-07 | 2014-06-04 | DUKHCONP1AZ2WEEX5065, DUKHCONP1AZ3WEEX5060 SS+6d, DUKHCONP1AZ3MSEX5015 SS+5d, DUKHCONP1AZ3PLRF4350 SS+5d, DUKHCONP1AZ3PLRF4350 FF+5d, DUKHCONP1AZ3WEEX5060 FF+6d, DUKHCONP1AZ3MSEX5015 FF+5d | -15d |
|  | 20 | **HARD LANDSCAPING** |  | 2014-03-29 | 2014-05-08 |  |  |
| DUKHCONP1AZ3HDEX5090 |  | kerb works | 20d | 2014-03-29 | 2014-04-20 | DUKHCONP1AZ3MSEX5020 SS+7d, DUKHCONP1AZ3MSEX5020 FF+7d, DUKHCONP1AZ2HDEX5090 | -8d |
| DUKHCONP1AZ3HDEX5095 |  | Cobble Stone Works | 20d | 2014-04-09 | 2014-05-01 | DUKHCONP1AZ3HDEX5090 SS+10d, DUKHCONP1AZ3HDEX5090 FF+10d | -8d |
| DUKHCONP1AZ3HDEX5100 |  | Interlock works | 20d | 2014-04-16 | 2014-05-08 | DUKHCONP1AZ3HDEX5095 FF+6d, DUKHCONP1AZ3HDEX5095 SS+6d | -8d |
|  | 25 | **SOFT LANDSCAPING** |  | 2014-04-22 | 2014-05-27 |  |  |
| DUKHCONP1AZ3SLEX5105 |  | Laying of Grass/ green area | 25d | 2014-04-22 | 2014-05-20 | DUKHCONP1AZ3HDEX5100 SS+5d, DUKHCONP1AZ3HDEX5100 FF+5d | -8d |
| DUKHCONP1AZ3SLEX5110 |  | Laying of Palm tree | 25d | 2014-04-29 | 2014-05-27 | DUKHCONP1AZ3SLEX5105 FF+6d, DUKHCONP1AZ3SLEX5105 SS+6d | -8d |
|  | 30 | **TESTING AND COMMISSIONING** |  | 2014-06-16 | 2014-07-14 |  |  |
| DUKHCONP1AZ3ACTC8000 |  | Pre-Commissioning & Testing of AC Works | 25d | 2014-06-16 | 2014-07-14 | DUKHCONP1AZ3ARRF3660, DUKHCONP1AZ3SLEX5110, DUKHCONP1AZ3ACFF4625, DUKHCONP1AZ3AREL3680, DUKHCONP1AZ3ARRF3620, DUKHCONP1AZ3MSEX5005, DUKHCONP1AZ3ACRF4635, DUKHCONP1AZ3HDEX5100, DUKHCONP1AZ3ARRF3655, DUKHCONP1AZ3ARGF3095, DUKHCONP1AZ3SLEX5105, DUKHCONP1AZ2ACTC8000, DUKHCONP1AZ3ARFF3395 | -24d |
| DUKHCONP1AZ3ELTC8010 |  | Pre-Commissioning & Testing of Electrical Works | 25d | 2014-06-16 | 2014-07-14 | DUKHCONP1AZ3ARRF3660, DUKHCONP1AZ3ARGF3095, DUKHCONP1AZ3ELGF4025, DUKHCONP1AZ3ELGF4015, DUKHCONP1AZ3ELFF4055, DUKHCONP1AZ3ELFF4050, DUKHCONP1AZ3SLEX5105, DUKHCONP1AZ2ELTC8010, DUKHCONP1AZ3ARRF3620, DUKHCONP1AZ3AREL3680, DUKHCONP1AZ3SLEX5110, DUKHCONP1AZ3ELRF4075, DUKHCONP1AZ3ARRF3655, DUKHCONP1AZ3MSEX5005, DUKHCONP1AZ3ELGF4030, DUKHCONP1AZ3ARFF3395, DUKHCONP1AZ3HDEX5100, DUKHCONP1AZ3ELFF4065 | -24d |
| DUKHCONP1AZ3PLTC8005 |  | Pre-Commissioning & Testing of Plumbing Works | 25d | 2014-06-16 | 2014-07-14 | DUKHCONP1AZ3ARGF3095, DUKHCONP1AZ3ARRF3620, DUKHCONP1AZ3SLEX5105, DUKHCONP1AZ3ARFF3395, DUKHCONP1AZ3SLEX5110, DUKHCONP1AZ3PLGF4320, DUKHCONP1AZ3ARRF3660, DUKHCONP1AZ2PLTC8005, DUKHCONP1AZ3PLRF4350, DUKHCONP1AZ3AREL3680, DUKHCONP1AZ3ARRF3655, DUKHCONP1AZ3PLRF4355, DUKHCONP1AZ3WEEX5065, DUKHCONP1AZ3HDEX5100, DUKHCONP1AZ3MSEX5005 | -24d |
|  | 25 | **ZONE - 4 (4 Twin Villas)** |  | 2013-05-26 | 2014-08-16 |  |  |
|  | 10 | **STRUCTURAL WORKS** |  | 2013-05-26 | 2014-03-22 |  |  |
|  | 10 | **SUB STRUCTURE** |  | 2013-05-26 | 2013-11-09 |  |  |
|  | 10 | **UPTO GRADE SLAB** |  | 2013-05-26 | 2013-11-09 |  |  |
| DUKHCONP1AZ4STUG1000 |  | Footing Excavation | 25d | 2013-05-26 | 2013-06-23 | DUKHCONP1AZ3STUG1000, DUKHCONP1AGNSP005000 | -11d |
| DUKHCONP1AZ4STUG1005 |  | Footing Antitermite | 23d | 2013-06-06 | 2013-07-02 | DUKHCONP1AZ4STUG1000 SS+10d, DUKHCONP1AZ4STUG1000 FF+5d | -11d |
| DUKHCONP1AZ4STUG1010 |  | Footing Blinding | 23d | 2013-06-10 | 2013-07-06 | DUKHCONP1AZ4STUG1005 SS+3d, DUKHCONP1AZ4STUG1005 FF+3d | -11d |
| DUKHCONP1AZ4STUG1015 |  | Footing Waterproofing & Screed | 25d | 2013-06-16 | 2013-07-14 | DUKHCONP1AZ4STUG1010 SS+5d, DUKHCONP1AZ4STUG1010 FF+5d | -11d |
| DUKHCONP1AZ4STUG1020 |  | Construction of foundations | 20d | 2013-07-01 | 2013-07-23 | DUKHCONP1AZ4STUG1015 FF+8d, DUKHCONP1AZ4STUG1015 SS+7d | -11d |
| DUKHCONP1AZ4STUG1025 |  | Construction of neck of columns | 25d | 2013-07-25 | 2013-08-26 | DUKHCONP1AZ4STUG1020 SS+8d, DUKHCONP1AZ3STUG1025, DUKHCONP1AZ4STUG1020 FF+7d | -24d |
| DUKHCONP1AZ4STUG1030 |  | Waterproofing Footing & Neck Column | 25d | 2013-08-04 | 2013-09-04 | DUKHCONP1AZ4STUG1025 SS+8d, DUKHCONP1AZ4STUG1025 FF+8d | -24d |
| DUKHCONP1AZ4STUG1035 |  | Backfilling Upto Grade Beam Bottom | 25d | 2013-08-21 | 2013-09-18 | DUKHCONP1AZ4STUG1030 SS+12d, DUKHCONP1AZ4STUG1030 FF+12d, DUKHCONP1AZ3STUG1035 | -24d |
| DUKHCONP1AZ4STUG1040 |  | Construction of Grade Beams | 25d | 2013-09-07 | 2013-10-05 | DUKHCONP1AZ4STUG1035 SS+14d, DUKHCONP1AZ4STUG1035 FF+14d | -24d |
| DUKHCONP1AZ4STUG1045 |  | Construction of slab on grade | 25d | 2013-10-09 | 2013-11-09 | DUKHCONP1AZ3STUG1045, DUKHCONP1AZ4PLUG4300 SS+8d, DUKHCONP1AZ4STUG1040 FF+10d, DUKHCONP1AZ4STUG1040 SS+10d, DUKHCONP1AZ4PLUG4300 FF+8d | -24d |
|  | 15 | **SUPERSTRUCTURE** |  | 2013-10-28 | 2014-03-22 |  |  |
|  | 10 | **GROUND FLOOR** |  | 2013-10-28 | 2013-12-23 |  |  |
| DUKHCONP1AZ4STGF2000 |  | Column-Rebar & Formwork | 25d | 2013-10-28 | 2013-11-25 | DUKHCONP1AZ3STGF2000, DUKHCONP1AZ4STUG1045 SS+14d, DUKHCONP1AZ4STUG1045 FF+7d | -24d |
| DUKHCONP1AZ4STGF2005 |  | Column-Concrete | 24d | 2013-11-05 | 2013-12-02 | DUKHCONP1AZ4STGF2000 SS+7d, DUKHCONP1AZ4STGF2000 FF+2d | -22d |
| DUKHCONP1AZ4STGF2010 |  | Beam, Stairs ,Slab-Rebar & Formwork | 25d | 2013-11-20 | 2013-12-19 | DUKHCONP1AZ4STGF2005 SS+2d, DUKHCONP1AZ4STGF2005 FF+14d | -22d |
| DUKHCONP1AZ4STGF2015 |  | Beam, Stairs ,Slab-Concrete | 14d | 2013-12-07 | 2013-12-23 | DUKHCONP1AZ4STGF2010 FF+3d, DUKHCONP1AZ4STGF2010 SS+10d, DUKHCONP1AZ3STGF2015 | -22d |
|  | 15 | **FIRST FLOORS** |  | 2013-12-09 | 2014-02-04 |  |  |
| DUKHCONP1AZ4STFF2020 |  | Column-Rebar & Formwork | 25d | 2013-12-09 | 2014-01-07 | DUKHCONP1AZ4STGF2015 FF+5d, DUKHCONP1AZ4STGF2015 SS+2d, DUKHCONP1AZ3STFF2020 | -22d |
| DUKHCONP1AZ4STFF2025 |  | Column-Concrete | 24d | 2013-12-19 | 2014-01-15 | DUKHCONP1AZ4STFF2020 FF+2d, DUKHCONP1AZ4STFF2020 SS+8d | -20d |
| DUKHCONP1AZ4STFF2030 |  | Beam, Stairs ,Slab-Rebar & Formwork | 25d | 2014-01-04 | 2014-02-01 | DUKHCONP1AZ4STFF2025 SS+2d, DUKHCONP1AZ4STFF2025 FF+14d | -20d |
| DUKHCONP1AZ4STFF2035 |  | Beam, Stairs ,Slab-Concrete | 14d | 2014-01-20 | 2014-02-04 | DUKHCONP1AZ3STFF2035, DUKHCONP1AZ4STFF2030 FF+3d, DUKHCONP1AZ4STFF2030 SS+10d | -20d |
|  | 20 | **ROOF** |  | 2014-01-22 | 2014-03-22 |  |  |
| DUKHCONP1AZ4STRF2040 |  | Column-Rebar & Formwork | 18d | 2014-01-22 | 2014-02-12 | DUKHCONP1AZ4STFF2035 SS+2d, DUKHCONP1AZ3STRF2040, DUKHCONP1AZ4STFF2035 FF+3d | -16d |
| DUKHCONP1AZ4STRF2045 |  | Column-Concrete | 17d | 2014-01-26 | 2014-02-15 | DUKHCONP1AZ4STRF2040 FF+1d, DUKHCONP1AZ4STRF2040 SS+3d | -16d |
| DUKHCONP1AZ4STRF2050 |  | Slab-Rebar & Formwork - Head Room | 20d | 2014-01-28 | 2014-02-20 | DUKHCONP1AZ4STRF2045 FF+5d, DUKHCONP1AZ4STRF2045 SS+2d | -16d |
| DUKHCONP1AZ4STRF2055 |  | Slab-Concrete-Head room | 13d | 2014-02-08 | 2014-02-23 | DUKHCONP1AZ4STRF2050 FF+2d, DUKHCONP1AZ3STRF2055, DUKHCONP1AZ4STRF2050 SS+5d | -16d |
| DUKHCONP1AZ4STRF2060 |  | Construction of Parapets | 25d | 2014-02-10 | 2014-03-11 | DUKHCONP1AZ4STRF2055 SS+2d, DUKHCONP1AZ4STRF2055 FF+14d | 32d |
| DUKHCONP1AZ4STRF2065 |  | Construction of up stands/Plinth | 25d | 2014-02-22 | 2014-03-22 | DUKHCONP1AZ3STRF2065, DUKHCONP1AZ4STRF2060 FF+5d, DUKHCONP1AZ4STRF2060 SS+5d | 28d |
|  | 15 | **FINISHING WORKS** |  | 2014-01-07 | 2014-07-14 |  |  |
|  | 10 | **INTERNAL FINISHES** |  | 2014-01-07 | 2014-07-14 |  |  |
|  | 10 | **GROUND FLOOR** |  | 2014-01-07 | 2014-06-19 |  |  |
| DUKHCONP1AZ4ARGF3000 |  | Block work | 25d | 2014-01-07 | 2014-02-04 | DUKHCONP1AZ4STGF2015 SS+21d, DUKHCONP1AZ3ARGF3000, DUKHCONP1AZ4STGF2015 FF+21d | -6d |
| DUKHCONP1AZ4ARGF3005 |  | Plastering work | 25d | 2014-01-29 | 2014-02-27 | DUKHCONP1AZ4ELGF4000 FF+5d, DUKHCONP1AZ4ARGF3000 SS+7d, DUKHCONP1AZ4ARGF3000 FF+7d, DUKHCONP1AZ4PLGF4305 FF+5d, DUKHCONP1AZ4PLGF4305 SS+5d, DUKHCONP1AZ3ARGF3005, DUKHCONP1AZ4ELGF4000 SS+5d | -6d |
| DUKHCONP1AZ4ARGF3010 |  | Flooring screed | 21d | 2014-02-06 | 2014-03-03 | DUKHCONP1AZ4ARGF3005 SS+7d, DUKHCONP1AZ4ARGF3005 FF+3d | 2d |
| DUKHCONP1AZ4ARGF3015 |  | Wet area waterproofing & Protection Screed | 15d | 2014-02-17 | 2014-03-05 | DUKHCONP1AZ3ARGF3015, DUKHCONP1AZ4ARGF3005 SS+7d, DUKHCONP1AZ4ARGF3005 FF+5d | -6d |
| DUKHCONP1AZ4ARGF3030 |  | Paint First coat | 25d | 2014-02-19 | 2014-03-19 | DUKHCONP1AZ3ARGF3030, DUKHCONP1AZ4ARGF3005 FF+14d, DUKHCONP1AZ4ARGF3005 SS+14d | 5d |
| DUKHCONP1AZ4ARGF3020 |  | Ceramic Wall Tiling | 25d | 2014-02-23 | 2014-03-23 | DUKHCONP1AZ4ARGF3015 FF+5d, DUKHCONP1AZ4ARGF3015 SS+5d, DUKHCONP1AZ4PLGF4310 SS+4d, DUKHCONP1AZ4PLGF4305 FF+4d, DUKHCONP1AZ3ARGF3020, DUKHCONP1AZ4PLGF4305 SS+4d, DUKHCONP1AZ4PLGF4310 FF+4d | -6d |
| DUKHCONP1AZ4ARGF3025 |  | Porcelain Tile flooring | 25d | 2014-03-01 | 2014-03-29 | DUKHCONP1AZ4ARGF3010 SS+10d, DUKHCONP1AZ4ARGF3020 SS+5d, DUKHCONP1AZ3ARGF3025, DUKHCONP1AZ4ARGF3010 FF+10d, DUKHCONP1AZ4ARGF3020 FF+5d | -6d |
| DUKHCONP1AZ4ARGF3045 |  | Fixing of Suspension systems | 20d | 2014-03-18 | 2014-04-09 | DUKHCONP1AZ4ARGF3030 FF+7d, DUKHCONP1AZ4ARGF3025 SS+10d, DUKHCONP1AZ4ELGF4010 FF+5d, DUKHCONP1AZ4ELGF4010 SS+5d, DUKHCONP1AZ4ARGF3030 SS+7d, DUKHCONP1AZ4ARGF3025 FF+10d, DUKHCONP1AZ3ARGF3045 | -6d |
| DUKHCONP1AZ4ARGF3035 |  | Slate Tile Flooring & Skirting | 15d | 2014-03-20 | 2014-04-06 | DUKHCONP1AZ4ARGF3025 FF+7d, DUKHCONP1AZ4ARGF3010 FF+13d, DUKHCONP1AZ4ARGF3010 SS+13d, DUKHCONP1AZ4ARGF3025 SS+13d | -1d |

| ID | WBS | Task | Duration | Start | Finish | Predecessors | Total float |
| --- | --- | --- | --- | --- | --- | --- | --- |
| DUKHCONP1AZ4ARGF3055 |  | Aluminum tile false ceiling | 25d | 2014-03-26 | 2014-04-23 | DUKHCONP1AZ4ACGF4600 SS+7d, DUKHCONP1AZ4ARGF3045 FF+7d, DUKHCONP1AZ4ACGF4600 FF+7d, DUKHCONP1AZ4ARGF3045 SS+7d | -3d |
| DUKHCONP1AZ4ARGF3040 |  | Cobble Tile flooring | 15d | 2014-03-27 | 2014-04-13 | DUKHCONP1AZ4ARGF3025 FF+13d, DUKHCONP1AZ4ARGF3010 SS+13d, DUKHCONP1AZ4ARGF3025 SS+13d, DUKHCONP1AZ4ARGF3035 SS+4d, DUKHCONP1AZ4ARGF3035 FF+4d, DUKHCONP1AZ4ARGF3010 FF+13d | -3d |
| DUKHCONP1AZ4ARGF3060 |  | Gypsum board false ceiling | 25d | 2014-03-30 | 2014-04-27 | DUKHCONP1AZ4ARGF3045 FF+10d, DUKHCONP1AZ4ACGF4600 FF+7d, DUKHCONP1AZ3ARGF3060, DUKHCONP1AZ4ARGF3045 SS+10d, DUKHCONP1AZ4ACGF4600 SS+7d | -6d |
| DUKHCONP1AZ4ARGF3050 |  | Granite - Stair case flooring & Skirting | 20d | 2014-04-05 | 2014-04-27 | DUKHCONP1AZ4ARGF3040 FF+7d, DUKHCONP1AZ4ARGF3025 FF+13d, DUKHCONP1AZ4ARGF3025 SS+13d, DUKHCONP1AZ4ARGF3040 SS+7d | -3d |
| DUKHCONP1AZ4ARGF3065 |  | Wooden door & PVC Door | 15d | 2014-04-19 | 2014-05-05 | DUKHCONP1AZ3ARGF3065, DUKHCONP1AZ4ARGF3035 SS+7d, DUKHCONP1AZ4ARGF3050 FF+7d, DUKHCONP1AZ4ARGF3035 FF+7d, DUKHCONP1AZ4ARGF3050 SS+7d | -3d |
| DUKHCONP1AZ4ARGF3070 |  | Aluminum doors | 15d | 2014-04-24 | 2014-05-11 | DUKHCONP1AZ3ARGF3070, DUKHCONP1AZ4ARGF3065 SS+5d, DUKHCONP1AZ4ARGF3065 FF+5d | -3d |
| DUKHCONP1AZ4ARGF3075 |  | Carpentry & Joinery Works | 20d | 2014-04-30 | 2014-05-22 | DUKHCONP1AZ4ARGF3070 FF+7d, DUKHCONP1AZ3ARGF3075, DUKHCONP1AZ4ARGF3070 SS+5d | -3d |
| DUKHCONP1AZ4ARGF3080 |  | Aluminum windows | 20d | 2014-05-01 | 2014-05-24 | DUKHCONP1AZ4ARGF3070 SS+6d, DUKHCONP1AZ3ARGF3080, DUKHCONP1AZ4ARGF3070 FF+6d | 7d |
| DUKHCONP1AZ4ARGF3085 |  | S.S.Balustrade | 20d | 2014-05-08 | 2014-05-31 | DUKHCONP1AZ4ARGF3050 SS+7d, DUKHCONP1AZ4ARGF3050 FF+7d, DUKHCONP1AZ4ARGF3075 SS+7d, DUKHCONP1AZ4ARGF3075 FF+7d | 2d |
| DUKHCONP1AZ4ARGF3090 |  | Installation of Granite Counter Top | 15d | 2014-05-13 | 2014-05-29 | DUKHCONP1AZ4ARGF3075 FF+6d, DUKHCONP1AZ4ARGF3075 SS+7d | -3d |
| DUKHCONP1AZ4ARGF3095 |  | Final Painting | 25d | 2014-05-22 | 2014-06-19 | DUKHCONP1AZ4ARGF3070 SS+5d, DUKHCONP1AZ4ARGF3080 FF+8d, DUKHCONP1AZ4ARGF3085 FF+7d, DUKHCONP1AZ4ARGF3090 SS+8d, DUKHCONP1AZ4ACGF4610 FF+10d, DUKHCONP1AZ4ARGF3040 SS+13d, DUKHCONP1AZ4ARGF3070 FF+5d, DUKHCONP1AZ4ARGF3080 SS+8d, DUKHCONP1AZ4ARGF3085 SS+7d, DUKHCONP1AZ4ARGF3030 SS+10d, DUKHCONP1AZ4ARGF3030 FF+10d, DUKHCONP1AZ4ARGF3035 FF+13d, DUKHCONP1AZ4ARGF3060 SS+8d, DUKHCONP1AZ4ACGF4610 SS+10d, DUKHCONP1AZ3ARGF3095, DUKHCONP1AZ4ARGF3040 FF+13d, DUKHCONP1AZ4ARGF3035 SS+13d, DUKHCONP1AZ4ARGF3060 FF+8d, DUKHCONP1AZ4ARGF3090 FF+8d | -3d |
|  | 15 | **FIRST FLOORS** |  | 2014-02-19 | 2014-07-14 |  |  |
| DUKHCONP1AZ4ARFF3300 |  | Block work | 25d | 2014-02-19 | 2014-03-19 | DUKHCONP1AZ4STFF2020 SS+21d, DUKHCONP1AZ4STFF2020 FF+21d, DUKHCONP1AZ3ARFF3300, DUKHCONP1AZ4STFF2035 FF+21d, DUKHCONP1AZ4STFF2035 SS+21d | -24d |
| DUKHCONP1AZ4ARFF3305 |  | Plastering work | 25d | 2014-03-16 | 2014-04-13 | DUKHCONP1AZ4ARFF3300 FF+7d, DUKHCONP1AZ4ELFF4035 SS+5d, DUKHCONP1AZ3ARFF3305, DUKHCONP1AZ4ARFF3300 SS+7d, DUKHCONP1AZ4PLFF4325 SS+6d, DUKHCONP1AZ4ELFF4035 FF+5d, DUKHCONP1AZ4PLFF4325 FF+6d | -24d |
| DUKHCONP1AZ4ARFF3310 |  | Flooring screed | 21d | 2014-03-24 | 2014-04-16 | DUKHCONP1AZ4ARFF3305 SS+7d, DUKHCONP1AZ4ARFF3305 FF+3d | -12d |
| DUKHCONP1AZ4ARFF3330 |  | Paint First coat | 25d | 2014-04-01 | 2014-04-29 | DUKHCONP1AZ4ARFF3305 SS+14d, DUKHCONP1AZ4ARFF3305 FF+14d | -10d |
| DUKHCONP1AZ4ARFF3315 |  | Wet area waterproofing | 15d | 2014-04-05 | 2014-04-21 | DUKHCONP1AZ3ARFF3315, DUKHCONP1AZ4ARFF3305 FF+7d, DUKHCONP1AZ4ARFF3305 SS+7d | -24d |
| DUKHCONP1AZ4ARFF3320 |  | Ceramic Wall Tiling | 25d | 2014-04-12 | 2014-05-10 | DUKHCONP1AZ4ARFF3315 FF+6d, DUKHCONP1AZ3ARFF3320, DUKHCONP1AZ4PLFF4325 FF+4d, DUKHCONP1AZ4PLFF4325 SS+4d, DUKHCONP1AZ4PLFF4330 FF+7d, DUKHCONP1AZ4ARFF3315 SS+6d, DUKHCONP1AZ4PLFF4330 SS+7d | -24d |
| DUKHCONP1AZ4ARFF3325 |  | Porcelain Tile flooring | 25d | 2014-04-19 | 2014-05-17 | DUKHCONP1AZ4ARFF3320 SS+6d, DUKHCONP1AZ4ARFF3320 FF+6d, DUKHCONP1AZ4ARFF3310 FF+10d, DUKHCONP1AZ4ARFF3310 SS+10d, DUKHCONP1AZ3ARFF3325 | -24d |
| DUKHCONP1AZ4ARFF3345 |  | Fixing of Suspension systems | 20d | 2014-05-01 | 2014-05-24 | DUKHCONP1AZ4ARFF3325 SS+6d, DUKHCONP1AZ4ELFF4045 SS+5d, DUKHCONP1AZ4ELFF4045 FF+5d, DUKHCONP1AZ4ARFF3325 FF+6d, DUKHCONP1AZ4ARFF3330 FF+7d, DUKHCONP1AZ4ARFF3330 SS+7d, DUKHCONP1AZ3ARFF3345 | -24d |
| DUKHCONP1AZ4ARFF3335 |  | Slate Tile Flooring & Skirting | 15d | 2014-05-06 | 2014-05-22 | DUKHCONP1AZ4ARFF3310 SS+13d, DUKHCONP1AZ4ARFF3325 FF+5d, DUKHCONP1AZ4ARFF3325 SS+13d, DUKHCONP1AZ4ARFF3310 FF+13d | -16d |
| DUKHCONP1AZ4ARFF3360 |  | Gypsum board false ceiling | 25d | 2014-05-08 | 2014-06-05 | DUKHCONP1AZ4ACFF4615 FF+7d, DUKHCONP1AZ4ARFF3345 SS+6d, DUKHCONP1AZ4ARFF3345 FF+6d, DUKHCONP1AZ4ACFF4615 SS+7d, DUKHCONP1AZ3ARFF3360 | -24d |
| DUKHCONP1AZ4ARFF3350 |  | Granite - Stair case flooring & Skirting | 20d | 2014-05-10 | 2014-06-01 | DUKHCONP1AZ4ARFF3325 SS+13d, DUKHCONP1AZ4ARFF3325 FF+13d | -22d |
| DUKHCONP1AZ4ARFF3365 |  | Wooden door | 15d | 2014-05-24 | 2014-06-09 | DUKHCONP1AZ4ARFF3360 SS+3d, DUKHCONP1AZ4ARFF3350 SS+5d, DUKHCONP1AZ4ARFF3335 SS+7d, DUKHCONP1AZ4ARFF3350 FF+5d, DUKHCONP1AZ4ARFF3360 FF+3d, DUKHCONP1AZ4ARFF3335 FF+7d, DUKHCONP1AZ3ARFF3365 | -24d |
| DUKHCONP1AZ4ARFF3370 |  | Aluminum Door | 20d | 2014-05-24 | 2014-06-15 | DUKHCONP1AZ4ARFF3365 SS, DUKHCONP1AZ4ARFF3365 FF, DUKHCONP1AZ3ARFF3370 | -24d |
| DUKHCONP1AZ4ARFF3375 |  | Carpentry & Joinery Works | 25d | 2014-05-29 | 2014-06-26 | DUKHCONP1AZ3ARFF3375, DUKHCONP1AZ4ARFF3370 SS+5d, DUKHCONP1AZ4ARFF3370 FF+5d | -24d |
| DUKHCONP1AZ4ARFF3380 |  | Aluminum windows | 20d | 2014-05-31 | 2014-06-22 | DUKHCONP1AZ4ARFF3370 SS+6d, DUKHCONP1AZ4ARFF3370 FF+6d | -20d |
| DUKHCONP1AZ4ARFF3385 |  | Handrail & Balustrade | 20d | 2014-06-10 | 2014-07-02 | DUKHCONP1AZ4ARFF3350 SS+7d, DUKHCONP1AZ4ARFF3375 FF+5d, DUKHCONP1AZ4ARFF3350 FF+7d, DUKHCONP1AZ4ARFF3375 SS+5d | -24d |
| DUKHCONP1AZ4ARFF3390 |  | Installation of Granite Counter Top | 20d | 2014-06-10 | 2014-07-02 | DUKHCONP1AZ4ARFF3375 FF+5d, DUKHCONP1AZ4ARFF3375 SS+6d | -23d |
| DUKHCONP1AZ4ARFF3395 |  | Final Painting | 25d | 2014-06-16 | 2014-07-14 | DUKHCONP1AZ4ARFF3350 FF+8d, DUKHCONP1AZ4ARFF3350 SS+8d, DUKHCONP1AZ4ARFF3365 SS+8d, DUKHCONP1AZ4ARFF3375 FF+8d, DUKHCONP1AZ4ARFF3335 SS+8d, DUKHCONP1AZ4ARFF3390 SS+4d, DUKHCONP1AZ4ARFF3365 FF+8d, DUKHCONP1AZ4ARFF3385 SS+5d, DUKHCONP1AZ4ARFF3335 FF+8d, DUKHCONP1AZ4ARFF3380 SS+10d, DUKHCONP1AZ3ARFF3395, DUKHCONP1AZ4ARFF3330 SS+10d, DUKHCONP1AZ4ARFF3380 FF+10d, DUKHCONP1AZ4ARFF3375 SS+8d, DUKHCONP1AZ4ARFF3390 FF+6d, DUKHCONP1AZ4ACFF4625 SS+6d, DUKHCONP1AZ4ARFF3330 FF+10d, DUKHCONP1AZ4ARFF3360 FF+10d, DUKHCONP1AZ4ARFF3385 FF+5d, DUKHCONP1AZ4ACFF4625 FF+6d, DUKHCONP1AZ4ARFF3360 SS+10d | -24d |
|  | 20 | **ROOF** |  | 2014-03-05 | 2014-05-08 |  |  |
| DUKHCONP1AZ4ARRF3600 |  | Block work | 20d | 2014-03-05 | 2014-03-27 | DUKHCONP1AZ3ARRF3600, DUKHCONP1AZ4STRF2055 SS+21d, DUKHCONP1AZ4STRF2055 FF+21d | 28d |
| DUKHCONP1AZ4ARRF3605 |  | Plastering work | 20d | 2014-03-13 | 2014-04-05 | DUKHCONP1AZ4ARRF3600 SS+7d, DUKHCONP1AZ4ARRF3600 FF+7d | 28d |
| DUKHCONP1AZ4ARRF3610 |  | Flooring screed | 15d | 2014-03-27 | 2014-04-13 | DUKHCONP1AZ4ARRF3605 FF+7d, DUKHCONP1AZ4ARRF3605 SS+7d | 33d |
| DUKHCONP1AZ4ARRF3695 |  | Painting -Storage area | 20d | 2014-04-05 | 2014-04-27 | DUKHCONP1AZ4ARRF3610 SS+7d, DUKHCONP1AZ4ARRF3610 FF+7d | 33d |
| DUKHCONP1AZ4ARRF3620 |  | Epoxy Painting -Storage area | 15d | 2014-04-22 | 2014-05-08 | DUKHCONP1AZ4ARRF3695 SS+10d, DUKHCONP1AZ4ARRF3695 FF+10d | 33d |
|  | 15 | **EXTERNAL FINISHES** |  | 2014-03-27 | 2014-06-14 |  |  |
|  | 10 | **ROOF** |  | 2014-04-10 | 2014-06-14 |  |  |
| DUKHCONP1AZ4ARRF3630 |  | Leveling Screed for Waterproofing | 25d | 2014-04-10 | 2014-05-08 | DUKHCONP1AZ4STRF2065 SS+10d, DUKHCONP1AZ3ARRF3630, DUKHCONP1AZ4STRF2065 FF+10d, DUKHCONP1AZ4STRF2060 FF+10d, DUKHCONP1AZ4STRF2060 SS+10d | -3d |
| DUKHCONP1AZ4ARRF3635 |  | Laying of Waterproofing Membrane | 25d | 2014-04-14 | 2014-05-12 | DUKHCONP1AZ4ARRF3630 FF+3d, DUKHCONP1AZ4ARRF3630 SS+3d | -3d |
| DUKHCONP1AZ4ARRF3640 |  | Installation of Insulation & Protection | 25d | 2014-04-19 | 2014-05-17 | DUKHCONP1AZ4ARRF3635 FF+4d, DUKHCONP1AZ4ARRF3635 SS+4d | -3d |
| DUKHCONP1AZ4ARRF3645 |  | Lime Stone Chips & Paving slab Installation | 25d | 2014-04-23 | 2014-05-21 | DUKHCONP1AZ4ARRF3640 FF+4d, DUKHCONP1AZ4ARRF3640 SS+4d | -3d |
| DUKHCONP1AZ4ARRF3650 |  | Install. of Gal. Frame & Aluminum Slat Screen | 25d | 2014-05-01 | 2014-05-29 | DUKHCONP1AZ4ARRF3645 SS+7d, DUKHCONP1AZ4ARRF3645 FF+7d | -3d |
| DUKHCONP1AZ4ARRF3655 |  | Installation of Pumps Protection cabinets | 20d | 2014-05-17 | 2014-06-08 | DUKHCONP1AZ4ARRF3645 SS+7d, DUKHCONP1AZ4ARRF3650 FF+8d, DUKHCONP1AZ3ARRF3655, DUKHCONP1AZ4ARRF3650 SS+8d, DUKHCONP1AZ4ARRF3645 FF+7d | -3d |
| DUKHCONP1AZ4ARRF3660 |  | Installation of Access Ladder | 15d | 2014-05-28 | 2014-06-14 | DUKHCONP1AZ4ARRF3655 SS+5d, DUKHCONP1AZ4ARRF3655 FF+5d | 2d |
|  | 15 | **ELEVATION** |  | 2014-03-27 | 2014-05-18 |  |  |
| DUKHCONP1AZ4AREL3665 |  | External Plastering | 25d | 2014-03-27 | 2014-04-24 | DUKHCONP1AZ4ARRF3605 SS+7d, DUKHCONP1AZ4ARFF3305 SS+7d, DUKHCONP1AZ4STRF2065 SS+7d, DUKHCONP1AZ4STRF2065 FF+7d, DUKHCONP1AZ3AREL3665, DUKHCONP1AZ4ARFF3305 FF+7d | 23d |
| DUKHCONP1AZ4AREL3670 |  | External stone cladding works | 20d | 2014-04-14 | 2014-05-06 | DUKHCONP1AZ4AREL3665 FF+10d, DUKHCONP1AZ4AREL3665 SS+10d, DUKHCONP1AZ3AREL3670 | 25d |
| DUKHCONP1AZ4AREL3680 |  | External Painting | 20d | 2014-04-26 | 2014-05-18 | DUKHCONP1AZ4AREL3670 SS+10d, DUKHCONP1AZ4AREL3670 FF+10d, DUKHCONP1AZ4ARRF3695 SS+4d, DUKHCONP1AZ4ARRF3695 FF+4d, DUKHCONP1AZ3AREL3680 | 25d |
|  | 20 | **MEP WORKS** |  | 2013-09-30 | 2014-07-13 |  |  |
|  | 10 | **ELECTRICAL WORKS** |  | 2014-01-13 | 2014-07-13 |  |  |
|  | 10 | **GROUND FLOOR** |  | 2014-01-13 | 2014-05-22 |  |  |
| DUKHCONP1AZ4ELGF4000 |  | Fixing of wall conduits & switch socket boxes | 25d | 2014-01-13 | 2014-02-10 | DUKHCONP1AZ4ARGF3000 FF+5d, DUKHCONP1AZ4ARGF3000 SS+5d | 3d |
| DUKHCONP1AZ4ELGF4005 |  | Cable tray & trunking installation | 20d | 2014-01-25 | 2014-02-17 | DUKHCONP1AZ4ELGF4000 FF+5d, DUKHCONP1AZ4ELGF4000 SS+5d, DUKHCONP1AZ3ELGF4005 | 21d |
| DUKHCONP1AZ4ELGF4010 |  | Installation of wiring & Main Cabling | 25d | 2014-02-02 | 2014-03-03 | DUKHCONP1AZ4ELGF4005 SS+7d, DUKHCONP1AZ4ELGF4005 FF+7d | 21d |
| DUKHCONP1AZ4ELGF4015 |  | Install. of CAMS & Fire Fighting Accessories | 25d | 2014-04-07 | 2014-05-05 | DUKHCONP1AZ4ARGF3055 FF+7d, DUKHCONP1AZ4ARGF3060 SS+7d, DUKHCONP1AZ4ARGF3060 FF+7d, DUKHCONP1AZ4ARGF3055 SS+7d, DUKHCONP1AZ3ELGF4015 | 6d |
| DUKHCONP1AZ4ELGF4020 |  | Installation of DBS,MCCB Accessories. | 20d | 2014-04-13 | 2014-05-05 | DUKHCONP1AZ4ELGF4010 SS+5d, DUKHCONP1AZ4ARGF3055 SS+7d, DUKHCONP1AZ4ARGF3055 FF+7d, DUKHCONP1AZ4ARGF3060 FF+7d, DUKHCONP1AZ4ARGF3060 SS+7d, DUKHCONP1AZ4ELGF4010 FF+5d | -6d |
| DUKHCONP1AZ4ELGF4025 |  | Installation of Lighting fixtures & Accessories | 25d | 2014-04-24 | 2014-05-22 | DUKHCONP1AZ4ELGF4020 SS+10d, DUKHCONP1AZ4ARGF3060 FF+10d, DUKHCONP1AZ4ELGF4020 FF+10d, DUKHCONP1AZ3ELGF4025, DUKHCONP1AZ4ARGF3055 FF+10d, DUKHCONP1AZ4ARGF3055 SS+10d, DUKHCONP1AZ4ARGF3060 SS+10d | 1d |
| DUKHCONP1AZ4ELGF4030 |  | Installation of Telephone System | 20d | 2014-04-24 | 2014-05-17 | DUKHCONP1AZ4ELGF4020 SS+10d, DUKHCONP1AZ4ARGF3060 SS+5d, DUKHCONP1AZ4ARGF3060 FF+5d, DUKHCONP1AZ3ELGF4030, DUKHCONP1AZ4ELGF4020 FF+10d | -6d |
|  | 15 | **FIRST FLOORS** |  | 2014-02-25 | 2014-06-25 |  |  |
| DUKHCONP1AZ4ELFF4035 |  | Fixing of wall conduits & switch socket boxes | 25d | 2014-02-25 | 2014-03-25 | DUKHCONP1AZ4ARFF3300 FF+5d, DUKHCONP1AZ4ARFF3300 SS+5d | -13d |
| DUKHCONP1AZ4ELFF4040 |  | Cable tray & trunking installation | 20d | 2014-03-09 | 2014-03-31 | DUKHCONP1AZ4ELFF4035 FF+5d, DUKHCONP1AZ4ELFF4035 SS+5d | 5d |
| DUKHCONP1AZ4ELFF4045 |  | Installation of wiring & Main Cabling | 25d | 2014-03-19 | 2014-04-16 | DUKHCONP1AZ4ELFF4040 FF+7d, DUKHCONP1AZ4ELFF4040 SS+7d, DUKHCONP1AZ3ELFF4045 | 3d |
| DUKHCONP1AZ4ELFF4055 |  | Install. of CAMS & Fire Fighting Accessories | 25d | 2014-05-17 | 2014-06-14 | DUKHCONP1AZ4ARFF3360 FF+7d, DUKHCONP1AZ4ARFF3360 SS+7d, DUKHCONP1AZ3ELFF4055, DUKHCONP1AZ4ELGF4015 SS+5d, DUKHCONP1AZ4ELGF4015 FF+5d | -23d |
| DUKHCONP1AZ4ELFF4050 |  | Installation of Telephone System | 25d | 2014-05-18 | 2014-06-15 | DUKHCONP1AZ4MSEX5010, DUKHCONP1AZ4ARFF3360 SS+5d, DUKHCONP1AZ4ELGF4030 SS+10d, DUKHCONP1AZ4ARFF3360 FF+5d, DUKHCONP1AZ4ELGF4030 FF+10d | -16d |
| DUKHCONP1AZ4ELFF4060 |  | Installation of DBS,MCCB Accessories. | 20d | 2014-05-20 | 2014-06-11 | DUKHCONP1AZ4ARFF3360 FF+5d, DUKHCONP1AZ4ELFF4045 FF+5d, DUKHCONP1AZ3ELFF4060, DUKHCONP1AZ4ARFF3360 SS+8d, DUKHCONP1AZ4ELFF4045 SS+5d | -21d |
| DUKHCONP1AZ4ELFF4065 |  | Installation of Lighting fixtures & Accessories | 25d | 2014-05-28 | 2014-06-25 | DUKHCONP1AZ4ELFF4060 SS+5d, DUKHCONP1AZ3ELFF4065, DUKHCONP1AZ4ARFF3360 FF+10d, DUKHCONP1AZ4ELGF4025 FF+5d, DUKHCONP1AZ4ELFF4060 FF+5d, DUKHCONP1AZ4ELGF4025 SS+5d, DUKHCONP1AZ4ARFF3360 SS+10d | -23d |
|  | 20 | **ROOF** |  | 2014-06-11 | 2014-07-13 |  |  |
| DUKHCONP1AZ4ELRF4070 |  | Installation of Isolator | 18d | 2014-06-11 | 2014-07-01 | DUKHCONP1AZ4ARRF3645 SS+7d, DUKHCONP1AZ4ELFF4045 SS+10d, DUKHCONP1AZ4ELFF4045 FF+10d, DUKHCONP1AZ4ELFF4065 FF+5d, DUKHCONP1AZ4ELFF4050 FF+7d, DUKHCONP1AZ4ARRF3645 FF+7d, DUKHCONP1AZ4ELFF4065 SS+5d, DUKHCONP1AZ4ELFF4050 SS+5d | -23d |
| DUKHCONP1AZ4ELRF4075 |  | Installation of TV Dish Antenna | 23d | 2014-06-17 | 2014-07-13 | DUKHCONP1AZ4ELRF4070 SS+5d, DUKHCONP1AZ4ELRF4070 FF+5d | -23d |

| ID | WBS | Task | Duration | Start | Finish | Predecessors | Total float |
| --- | --- | --- | --- | --- | --- | --- | --- |
|  | 15 | **PLUMBING, DRAINAGE & FIRE FIGHTING WORKS** |  | 2013-09-30 | 2014-07-13 |  |  |
|  | 10 | **GROUND FLOOR** |  | 2013-09-30 | 2014-05-22 |  |  |
| DUKHCONP1AZ4PLUG4300 |  | Drainage / Storm Pipes in Grade Slab | 16d | 2013-09-30 | 2013-10-20 | DUKHCONP1AZ4STUG1040 SS+11d, DUKHCONP1AZ4STUG1040 FF+11d | -24d |
| DUKHCONP1AZ4PLGF4305 |  | Installation of Plumbing pipes & testing | 18d | 2014-01-23 | 2014-02-13 | DUKHCONP1AZ4ARGF3000 FF+7d, DUKHCONP1AZ3PLGF4305, DUKHCONP1AZ4ARGF3000 SS+7d | -6d |
| DUKHCONP1AZ4PLGF4310 |  | Installation of Drainage pipes &testing | 18d | 2014-01-23 | 2014-02-13 | DUKHCONP1AZ4PLGF4305 SS, DUKHCONP1AZ4ARGF3000 FF+7d, DUKHCONP1AZ4PLGF4305 FF, DUKHCONP1AZ4ARGF3000 SS+7d | -3d |
| DUKHCONP1AZ4PLGF4315 |  | Sanitary Fittings & Accessories | 20d | 2014-04-24 | 2014-05-17 | DUKHCONP1AZ4ARGF3065 FF+5d, DUKHCONP1AZ3PLGF4315, DUKHCONP1AZ4ARGF3065 SS+5d, DUKHCONP1AZ4PLGF4310 SS+5d, DUKHCONP1AZ4PLGF4310 FF+5d | 21d |
| DUKHCONP1AZ4PLGF4320 |  | Installation of Water Heater | 15d | 2014-05-06 | 2014-05-22 | DUKHCONP1AZ4PLGF4315 FF+5d, DUKHCONP1AZ4ARGF3060 FF+5d, DUKHCONP1AZ4ARGF3060 SS+5d, DUKHCONP1AZ3PLGF4320, DUKHCONP1AZ4PLGF4315 SS+5d | 21d |
|  | 15 | **FIRST FLOORS** |  | 2014-03-08 | 2014-06-21 |  |  |
| DUKHCONP1AZ4PLFF4325 |  | Installation of Plumbing pipes & testing | 18d | 2014-03-08 | 2014-03-27 | DUKHCONP1AZ4ARFF3300 SS+7d, DUKHCONP1AZ4ARFF3300 FF+7d | -23d |
| DUKHCONP1AZ4PLFF4330 |  | Installation of Drainage pipes & testing | 18d | 2014-03-08 | 2014-03-27 | DUKHCONP1AZ4PLFF4325 FF, DUKHCONP1AZ4PLFF4325 SS, DUKHCONP1AZ3PLFF4330, DUKHCONP1AZ4ARFF3300 SS+7d, DUKHCONP1AZ4ARFF3300 FF+7d | -1d |
| DUKHCONP1AZ4PLFF4335 |  | Sanitary Fittings & Accessories | 20d | 2014-05-24 | 2014-06-15 | DUKHCONP1AZ4ARFF3365 SS, DUKHCONP1AZ4ARFF3365 FF+5d, DUKHCONP1AZ4PLFF4330 FF+5d, DUKHCONP1AZ4PLFF4330 SS+5d | -19d |
| DUKHCONP1AZ4PLFF4340 |  | Installation of Water Heater | 15d | 2014-06-04 | 2014-06-21 | DUKHCONP1AZ4PLFF4335 FF+5d, DUKHCONP1AZ3PLFF4340, DUKHCONP1AZ4ARFF3360 SS+5d, DUKHCONP1AZ4ARFF3360 FF+5d, DUKHCONP1AZ4PLFF4335 SS+5d | -19d |
|  | 20 | **ROOF** |  | 2014-03-27 | 2014-07-13 |  |  |
| DUKHCONP1AZ4PLRF4345 |  | Installation of Plumbing pipes & fittings | 15d | 2014-03-27 | 2014-04-13 | DUKHCONP1AZ4ARRF3605 SS+7d, DUKHCONP1AZ4ARRF3605 FF+7d | 32d |
| DUKHCONP1AZ4PLRF4350 |  | Installation of Rain water Pipes | 15d | 2014-05-11 | 2014-05-27 | DUKHCONP1AZ4ARRF3645 SS+5d, DUKHCONP1AZ4PLRF4345 FF+8d, DUKHCONP1AZ4PLFF4330 SS+5d, DUKHCONP1AZ4ARRF3645 FF+5d, DUKHCONP1AZ4PLFF4330 FF+5d, DUKHCONP1AZ4AREL3665 FF+7d, DUKHCONP1AZ3PLRF4350, DUKHCONP1AZ4PLRF4345 SS+8d, DUKHCONP1AZ4AREL3665 SS+7d | 2d |
| DUKHCONP1AZ4PLRF4355 |  | Roof Water Tank Installation & Connections | 25d | 2014-06-15 | 2014-07-13 | DUKHCONP1AZ3PLRF4355, DUKHCONP1AZ4PLRF4350 FF+5d, DUKHCONP1AZ4ARRF3655 SS+5d, DUKHCONP1AZ4PLFF4340 SS+5d, DUKHCONP1AZ4PLRF4350 SS+5d, DUKHCONP1AZ4ARRF3655 FF+5d, DUKHCONP1AZ4PLFF4340 FF+5d, DUKHCONP1AZ4PLRF4345 SS+8d, DUKHCONP1AZ4PLRF4345 FF+8d | -23d |
|  | 20 | **AC WORKS** |  | 2014-02-13 | 2014-07-10 |  |  |
|  | 10 | **GROUND FLOOR** |  | 2014-02-13 | 2014-05-20 |  |  |
| DUKHCONP1AZ4ACGF4600 |  | Installation AC Pipes | 20d | 2014-02-13 | 2014-03-08 | DUKHCONP1AZ4ARGF3005 SS+7d, DUKHCONP1AZ4ARGF3005 FF+7d, DUKHCONP1AZ3ACGF4600 | 25d |
| DUKHCONP1AZ4ACGF4605 |  | Fixing of Ventilation Equipments | 25d | 2014-04-07 | 2014-05-05 | DUKHCONP1AZ4ARGF3055 FF+7d, DUKHCONP1AZ4ACGF4600 SS+10d, DUKHCONP1AZ4ARGF3055 SS+7d, DUKHCONP1AZ4ARGF3060 SS+7d, DUKHCONP1AZ4ACGF4600 FF+10d, DUKHCONP1AZ4ARGF3060 FF+7d, DUKHCONP1AZ3ACGF4605 | 8d |
| DUKHCONP1AZ4ACGF4610 |  | Fixing of Split AC | 20d | 2014-04-28 | 2014-05-20 | DUKHCONP1AZ4ACGF4605 SS+13d, DUKHCONP1AZ4ACGF4605 FF+13d, DUKHCONP1AZ3ACGF4610 | 8d |
|  | 15 | **FIRST FLOORS** |  | 2014-03-30 | 2014-06-29 |  |  |
| DUKHCONP1AZ4ACFF4615 |  | Installation AC Pipes | 20d | 2014-03-30 | 2014-04-21 | DUKHCONP1AZ4ARFF3305 SS+7d, DUKHCONP1AZ4ARFF3305 FF+7d, DUKHCONP1AZ3ACFF4615 | 3d |
| DUKHCONP1AZ4ACFF4620 |  | Fixing of Ventilation Equipments | 25d | 2014-05-17 | 2014-06-14 | DUKHCONP1AZ4ACFF4615 FF+10d, DUKHCONP1AZ4ARFF3360 FF+7d, DUKHCONP1AZ4ARFF3360 SS+7d, DUKHCONP1AZ3ACFF4620, DUKHCONP1AZ4ACFF4615 SS+10d | -22d |
| DUKHCONP1AZ4ACFF4625 |  | Fixing of Split AC | 20d | 2014-06-07 | 2014-06-29 | DUKHCONP1AZ4ACFF4620 SS+13d, DUKHCONP1AZ3ACFF4625, DUKHCONP1AZ4ACFF4620 FF+13d | -22d |
|  | 20 | **ROOF** |  | 2014-05-01 | 2014-07-10 |  |  |
| DUKHCONP1AZ4ACRF4630 |  | Installation of Refrigerant Pipes | 25d | 2014-05-01 | 2014-05-29 | DUKHCONP1AZ4ACGF4600 FF+7d, DUKHCONP1AZ4ACFF4615 FF+7d, DUKHCONP1AZ4ACFF4615 SS+7d, DUKHCONP1AZ3ACRF4630, DUKHCONP1AZ4ARRF3645 FF+7d, DUKHCONP1AZ4ARRF3645 SS+7d, DUKHCONP1AZ4ACGF4600 SS+7d | 10d |
| DUKHCONP1AZ4ACRF4635 |  | Installation of Condensing Unit | 25d | 2014-06-12 | 2014-07-10 | DUKHCONP1AZ4ACGF4610 FF+5d, DUKHCONP1AZ4ACGF4610 SS+5d, DUKHCONP1AZ4ACRF4630 SS+5d, DUKHCONP1AZ4ACFF4625 SS+5d, DUKHCONP1AZ4ACRF4630 FF+5d, DUKHCONP1AZ4ACFF4625 FF+5d, DUKHCONP1AZ3ACRF4635 | -21d |
|  | 25 | **EXTERNAL WORKS** |  | 2014-02-20 | 2014-07-16 |  |  |
|  | 10 | **MISCELLANEOUS** |  | 2014-02-20 | 2014-07-16 |  |  |
| DUKHCONP1AZ4MSEX5000 |  | Construction of Manholes | 25d | 2014-02-20 | 2014-03-20 | DUKHCONP1AZ4STRF2055 FF+10d, DUKHCONP1AZ4PLGF4310 SS+10d, DUKHCONP1AZ4STRF2055 SS+10d, DUKHCONP1AZ4PLGF4310 FF+10d | -16d |
| DUKHCONP1AZ4MSEX5005 |  | Construction of Soak pit, Chambers | 25d | 2014-03-06 | 2014-04-03 | DUKHCONP1AZ4MSEX5000 FF+12d, DUKHCONP1AZ4MSEX5000 SS+12d | -16d |
| DUKHCONP1AZ4MSEX5015 |  | Construction of grease Trap | 20d | 2014-03-26 | 2014-04-17 | DUKHCONP1AZ4MSEX5005 SS+12d, DUKHCONP1AZ4MSEX5005 FF+12d | -16d |
| DUKHCONP1AZ4MSEX5020 |  | Construction Entrance Ramp | 25d | 2014-04-13 | 2014-05-11 | DUKHCONP1AZ3MSEX5020, DUKHCONP1AZ4STRF2055 FF, DUKHCONP1AZ4STRF2055 SS | -8d |
| DUKHCONP1AZ4MSEX5010 |  | Telephone cable laying | 25d | 2014-04-19 | 2014-05-17 | DUKHCONP1AZ4MSEX5015 | -16d |
| DUKHCONP1AZ4MSEX5025 |  | SS.Handrails and Balustrades | 20d | 2014-04-30 | 2014-05-22 | DUKHCONP1AZ4MSEX5020 SS+10d, DUKHCONP1AZ4MSEX5020 FF+10d | -5d |
| DUKHCONP1AZ4MSEX5335 |  | Aluminum Roll-up Shutter with 2m Wall | 25d | 2014-06-18 | 2014-07-16 | DUKHCONP1AZ3MSEX5335 SS+7d, DUKHCONI1AZ2BWGL5325 | 71d |
|  | 15 | **WATER TANK ENCLOSURE** |  | 2014-04-02 | 2014-07-03 |  |  |
| DUKHCONP1AZ4WEEX5030 |  | Excavation | 20d | 2014-04-02 | 2014-04-24 | DUKHCONP1AZ4STRF2055 FF+5d, DUKHCONP1AZ3WEEX5030, DUKHCONP1AZ4STRF2055 SS+5d | -1d |
| DUKHCONP1AZ4WEEX5035 |  | Construction of Raft | 25d | 2014-04-08 | 2014-05-06 | DUKHCONP1AZ4WEEX5030 FF+10d, DUKHCONP1AZ4WEEX5030 SS+5d | -1d |
| DUKHCONP1AZ4WEEX5040 |  | Block works & Plastering | 25d | 2014-04-17 | 2014-05-15 | DUKHCONP1AZ4WEEX5035 FF+8d, DUKHCONP1AZ4WEEX5035 SS+8d | -1d |
| DUKHCONP1AZ4WEEX5045 |  | Flooring & Painting | 25d | 2014-04-24 | 2014-05-22 | DUKHCONP1AZ4WEEX5040 SS+6d, DUKHCONP1AZ4WEEX5040 FF+6d | -1d |
| DUKHCONP1AZ4WEEX5050 |  | Installation of Steel Gate | 20d | 2014-05-12 | 2014-06-03 | DUKHCONP1AZ4WEEX5045 SS+5d, DUKHCONP1AZ4WEEX5045 FF+6d, DUKHCONP1AZ4MSEX5025 FF+10d | -5d |
| DUKHCONP1AZ4WEEX5060 |  | Structural steel & SS Shed cover installation | 25d | 2014-05-28 | 2014-06-25 | DUKHCONP1AZ4WEEX5050 SS+5d, DUKHCONP1AZ4MSEX5025 FF+10d, DUKHCONP1AZ3WEEX5060, DUKHCONP1AZ4WEEX5050 FF+10d | -14d |
| DUKHCONP1AZ4WEEX5065 |  | Install. of Water Tank,Chiller,Pump & Meter | 25d | 2014-06-05 | 2014-07-03 | DUKHCONP1AZ4MSEX5015 SS+5d, DUKHCONP1AZ4MSEX5015 FF+5d, DUKHCONP1AZ4WEEX5060 SS+6d, DUKHCONP1AZ4WEEX5060 FF+6d, DUKHCONP1AZ4PLRF4350 SS+5d, DUKHCONP1AZ3WEEX5065, DUKHCONP1AZ4PLRF4350 FF+5d | -15d |
|  | 20 | **HARD LANDSCAPING** |  | 2014-04-27 | 2014-06-07 |  |  |
| DUKHCONP1AZ4HDEX5090 |  | kerb works | 20d | 2014-04-27 | 2014-05-19 | DUKHCONP1AZ4MSEX5020 FF+7d, DUKHCONP1AZ3HDEX5090, DUKHCONP1AZ4MSEX5020 SS+7d | -8d |
| DUKHCONP1AZ4HDEX5095 |  | Cobble Stone Works | 20d | 2014-05-08 | 2014-05-31 | DUKHCONP1AZ4HDEX5090 SS+10d, DUKHCONP1AZ4HDEX5090 FF+10d | -8d |
| DUKHCONP1AZ4HDEX5100 |  | Interlock works | 20d | 2014-05-15 | 2014-06-07 | DUKHCONP1AZ4HDEX5095 FF+6d, DUKHCONP1AZ4HDEX5095 SS+6d | -8d |
|  | 25 | **SOFT LANDSCAPING** |  | 2014-05-21 | 2014-06-25 |  |  |
| DUKHCONP1AZ4SLEX5105 |  | Laying of Grass/ green area | 25d | 2014-05-21 | 2014-06-18 | DUKHCONP1AZ4HDEX5100 FF+5d, DUKHCONP1AZ4HDEX5100 SS+5d | -8d |
| DUKHCONP1AZ4SLEX5110 |  | Laying of Palm tree | 25d | 2014-05-28 | 2014-06-25 | DUKHCONP1AZ4SLEX5105 FF+6d, DUKHCONP1AZ4SLEX5105 SS+6d | -8d |
|  | 30 | **TESTING AND COMMISSIONING** |  | 2014-07-15 | 2014-08-16 |  |  |
| DUKHCONP1AZ4ACTC8000 |  | Pre-Commissioning & Testing of AC Works | 25d | 2014-07-15 | 2014-08-16 | DUKHCONP1AZ4HDEX5100, DUKHCONP1AZ4AREL3680, DUKHCONP1AZ4ARRF3620, DUKHCONP1AZ4ACRF4635, DUKHCONP1AZ4ARRF3660, DUKHCONP1AZ4SLEX5105, DUKHCONP1AZ4SLEX5110, DUKHCONP1AZ3ACTC8000, DUKHCONP1AZ4ARFF3395, DUKHCONP1AZ4MSEX5005, DUKHCONP1AZ4ACFF4625, DUKHCONP1AZ4ARGF3095 | -24d |
| DUKHCONP1AZ4ELTC8010 |  | Pre-Commissioning & Testing of Electrical Works | 25d | 2014-07-15 | 2014-08-16 | DUKHCONP1AZ4ARRF3655, DUKHCONP1AZ4ARRF3620, DUKHCONP1AZ4HDEX5100, DUKHCONP1AZ4MSEX5005, DUKHCONP1AZ4ELGF4025, DUKHCONP1AZ3ELTC8010, DUKHCONP1AZ4ARRF3660, DUKHCONP1AZ4ARFF3395, DUKHCONP1AZ4SLEX5110, DUKHCONP1AZ4ELFF4065, DUKHCONP1AZ4ELRF4075, DUKHCONP1AZ4SLEX5105, DUKHCONP1AZ4ELGF4015, DUKHCONP1AZ4ELGF4030, DUKHCONP1AZ4ELFF4050, DUKHCONP1AZ4AREL3680, DUKHCONP1AZ4ELFF4055, DUKHCONP1AZ4ARGF3095 | -24d |
| DUKHCONP1AZ4PLTC8005 |  | Pre-Commissioning & Testing of Plumbing Works | 25d | 2014-07-15 | 2014-08-16 | DUKHCONP1AZ4ARFF3395, DUKHCONP1AZ4HDEX5100, DUKHCONP1AZ4ARGF3095, DUKHCONP1AZ4ARRF3655, DUKHCONP1AZ4MSEX5005, DUKHCONP1AZ3PLTC8005, DUKHCONP1AZ4SLEX5110, DUKHCONP1AZ4WEEX5065, DUKHCONP1AZ4PLRF4355, DUKHCONP1AZ4ARRF3660, DUKHCONP1AZ4ARRF3620, DUKHCONP1AZ4SLEX5105, DUKHCONP1AZ4PLGF4320, DUKHCONP1AZ4AREL3680, DUKHCONP1AZ4PLRF4350 | -24d |
|  | 30 | **ZONE - 5 (4 Twin Villas)** |  | 2013-06-24 | 2014-09-14 |  |  |
|  | 10 | **STRUCTURAL WORKS** |  | 2013-06-24 | 2014-04-20 |  |  |
|  | 10 | **SUB STRUCTURE** |  | 2013-06-24 | 2013-12-08 |  |  |
|  | 10 | **UPTO GRADE SLAB** |  | 2013-06-24 | 2013-12-08 |  |  |
| DUKHCONP1AZ5STUG1000 |  | Footing Excavation | 25d | 2013-06-24 | 2013-07-22 | DUKHCONP1AGNSP005000, DUKHCONP1AZ4STUG1000 | -11d |
| DUKHCONP1AZ5STUG1005 |  | Footing Antitermite | 23d | 2013-07-06 | 2013-07-31 | DUKHCONP1AZ5STUG1000 SS+10d, DUKHCONP1AZ5STUG1000 FF+5d | -11d |
| DUKHCONP1AZ5STUG1010 |  | Footing Blinding | 23d | 2013-07-09 | 2013-08-04 | DUKHCONP1AZ5STUG1005 FF+3d, DUKHCONP1AZ5STUG1005 SS+3d | -11d |
| DUKHCONP1AZ5STUG1015 |  | Footing Waterproofing & Screed | 25d | 2013-07-15 | 2013-08-15 | DUKHCONP1AZ5STUG1010 FF+5d, DUKHCONP1AZ5STUG1010 SS+5d | -11d |
| DUKHCONP1AZ5STUG1020 |  | Construction of foundations | 20d | 2013-07-30 | 2013-08-25 | DUKHCONP1AZ5STUG1015 FF+8d, DUKHCONP1AZ5STUG1015 SS+7d | -11d |
| DUKHCONP1AZ5STUG1025 |  | Construction of neck of columns | 25d | 2013-08-27 | 2013-09-24 | DUKHCONP1AZ5STUG1020 FF+7d, DUKHCONP1AZ5STUG1020 SS+8d, DUKHCONP1AZ4STUG1025 | -24d |
| DUKHCONP1AZ5STUG1030 |  | Waterproofing Footing & Neck Column | 25d | 2013-09-05 | 2013-10-03 | DUKHCONP1AZ5STUG1025 FF+8d, DUKHCONP1AZ5STUG1025 SS+8d | -24d |
| DUKHCONP1AZ5STUG1035 |  | Backfilling Upto Grade Beam Bottom | 25d | 2013-09-19 | 2013-10-20 | DUKHCONP1AZ5STUG1030 FF+12d, DUKHCONP1AZ4STUG1035, DUKHCONP1AZ5STUG1030 SS+12d | -24d |
| DUKHCONP1AZ5STUG1040 |  | Construction of Grade Beams | 25d | 2013-10-06 | 2013-11-05 | DUKHCONP1AZ5STUG1035 SS+14d, DUKHCONP1AZ5STUG1035 FF+14d | -24d |
| DUKHCONP1AZ5STUG1045 |  | Construction of slab on grade | 25d | 2013-11-10 | 2013-12-08 | DUKHCONP1AZ5STUG1040 SS+10d, DUKHCONP1AZ4STUG1045, DUKHCONP1AZ5PLUG4300 FF+8d, DUKHCONP1AZ5PLUG4300 SS+8d, DUKHCONP1AZ5STUG1040 FF+10d | -24d |

| ID | WBS | Task | Duration | Start | Finish | Predecessors | Total float |
| --- | --- | --- | --- | --- | --- | --- | --- |
|  | 15 | **SUPERSTRUCTURE** |  | 2013-11-26 | 2014-04-20 |  |  |
|  | 10 | **GROUND FLOOR** |  | 2013-11-26 | 2014-01-21 |  |  |
| DUKHCONP1AZ5STGF2000 |  | Column-Rebar & Formwork | 25d | 2013-11-26 | 2013-12-25 | DUKHCONP1AZ5STUG1045 FF+7d, DUKHCONP1AZ4STGF2000, DUKHCONP1AZ5STUG1045 SS+14d | -24d |
| DUKHCONP1AZ5STGF2005 |  | Column-Concrete | 24d | 2013-12-04 | 2014-01-01 | DUKHCONP1AZ5STGF2000 FF+2d, DUKHCONP1AZ5STGF2000 SS+7d | -22d |
| DUKHCONP1AZ5STGF2010 |  | Beam, Stairs ,Slab-Rebar & Formwork | 25d | 2013-12-21 | 2014-01-18 | DUKHCONP1AZ5STGF2005 FF+14d, DUKHCONP1AZ5STGF2005 SS+2d | -22d |
| DUKHCONP1AZ5STGF2015 |  | Beam, Stairs ,Slab-Concrete | 14d | 2014-01-06 | 2014-01-21 | DUKHCONP1AZ4STGF2015, DUKHCONP1AZ5STGF2010 FF+3d, DUKHCONP1AZ5STGF2010 SS+10d | -22d |
|  | 15 | **FIRST FLOORS** |  | 2014-01-08 | 2014-03-06 |  |  |
| DUKHCONP1AZ5STFF2020 |  | Column-Rebar & Formwork | 25d | 2014-01-08 | 2014-02-05 | DUKHCONP1AZ4STFF2020, DUKHCONP1AZ5STGF2015 SS+2d, DUKHCONP1AZ5STGF2015 FF+5d | -22d |
| DUKHCONP1AZ5STFF2025 |  | Column-Concrete | 24d | 2014-01-18 | 2014-02-15 | DUKHCONP1AZ5STFF2020 FF+2d, DUKHCONP1AZ5STFF2020 SS+8d | -20d |
| DUKHCONP1AZ5STFF2030 |  | Beam, Stairs ,Slab-Rebar & Formwork | 25d | 2014-02-02 | 2014-03-03 | DUKHCONP1AZ5STFF2025 FF+14d, DUKHCONP1AZ5STFF2025 SS+2d | -20d |
| DUKHCONP1AZ5STFF2035 |  | Beam, Stairs ,Slab-Concrete | 14d | 2014-02-19 | 2014-03-06 | DUKHCONP1AZ4STFF2035, DUKHCONP1AZ5STFF2030 FF+3d, DUKHCONP1AZ5STFF2030 SS+10d | -20d |
|  | 20 | **ROOF** |  | 2014-02-22 | 2014-04-20 |  |  |
| DUKHCONP1AZ5STRF2040 |  | Column-Rebar & Formwork | 18d | 2014-02-22 | 2014-03-13 | DUKHCONP1AZ4STRF2040, DUKHCONP1AZ5STFF2035 FF+3d, DUKHCONP1AZ5STFF2035 SS+2d | -16d |
| DUKHCONP1AZ5STRF2045 |  | Column-Concrete | 17d | 2014-02-25 | 2014-03-16 | DUKHCONP1AZ5STRF2040 SS+3d, DUKHCONP1AZ5STRF2040 FF+1d | -16d |
| DUKHCONP1AZ5STRF2050 |  | Slab-Rebar & Formwork - Head Room | 20d | 2014-02-27 | 2014-03-22 | DUKHCONP1AZ5STRF2045 SS+2d, DUKHCONP1AZ5STRF2045 FF+5d | -16d |
| DUKHCONP1AZ5STRF2055 |  | Slab-Concrete-Head room | 13d | 2014-03-10 | 2014-03-24 | DUKHCONP1AZ5STRF2050 SS+5d, DUKHCONP1AZ5STRF2050 FF+2d, DUKHCONP1AZ4STRF2055 | -16d |
| DUKHCONP1AZ5STRF2060 |  | Construction of Parapets | 25d | 2014-03-12 | 2014-04-09 | DUKHCONP1AZ5STRF2055 SS+2d, DUKHCONP1AZ5STRF2055 FF+14d | 32d |
| DUKHCONP1AZ5STRF2065 |  | Construction of up stands/Plinth | 25d | 2014-03-23 | 2014-04-20 | DUKHCONP1AZ4STRF2065, DUKHCONP1AZ5STRF2060 SS+5d, DUKHCONP1AZ5STRF2060 FF+5d | 28d |
|  | 15 | **FINISHING WORKS** |  | 2014-02-05 | 2014-08-16 |  |  |
|  | 10 | **INTERNAL FINISHES** |  | 2014-02-05 | 2014-08-16 |  |  |
|  | 10 | **GROUND FLOOR** |  | 2014-02-05 | 2014-07-19 |  |  |
| DUKHCONP1AZ5ARGF3000 |  | Block work | 25d | 2014-02-05 | 2014-03-06 | DUKHCONP1AZ5STGF2015 FF+21d, DUKHCONP1AZ4ARGF3000, DUKHCONP1AZ5STGF2015 SS+21d | -6d |
| DUKHCONP1AZ5ARGF3005 |  | Plastering work | 25d | 2014-03-01 | 2014-03-29 | DUKHCONP1AZ5PLGF4305 FF+5d, DUKHCONP1AZ5ARGF3000 FF+7d, DUKHCONP1AZ4ARGF3005, DUKHCONP1AZ5ELGF4000 SS+5d, DUKHCONP1AZ5ARGF3000 SS+7d, DUKHCONP1AZ5ELGF4000 FF+5d, DUKHCONP1AZ5PLGF4305 SS+5d | -6d |
| DUKHCONP1AZ5ARGF3010 |  | Flooring screed | 21d | 2014-03-09 | 2014-04-01 | DUKHCONP1AZ5ARGF3005 FF+3d, DUKHCONP1AZ5ARGF3005 SS+7d | 2d |
| DUKHCONP1AZ5ARGF3015 |  | Wet area waterproofing & Protection Screed | 15d | 2014-03-18 | 2014-04-03 | DUKHCONP1AZ5ARGF3005 FF+5d, DUKHCONP1AZ4ARGF3015, DUKHCONP1AZ5ARGF3005 SS+7d | -6d |
| DUKHCONP1AZ5ARGF3030 |  | Paint First coat | 25d | 2014-03-20 | 2014-04-17 | DUKHCONP1AZ5ARGF3005 SS+14d, DUKHCONP1AZ5ARGF3005 FF+14d, DUKHCONP1AZ4ARGF3030 | 5d |
| DUKHCONP1AZ5ARGF3020 |  | Ceramic Wall Tiling | 25d | 2014-03-24 | 2014-04-21 | DUKHCONP1AZ5PLGF4305 SS+4d, DUKHCONP1AZ5PLGF4310 SS+4d, DUKHCONP1AZ5ARGF3015 FF+5d, DUKHCONP1AZ4ARGF3020, DUKHCONP1AZ5PLGF4305 FF+4d, DUKHCONP1AZ5PLGF4310 FF+4d, DUKHCONP1AZ5ARGF3015 SS+5d | -6d |
| DUKHCONP1AZ5ARGF3025 |  | Porcelain Tile flooring | 25d | 2014-03-30 | 2014-04-27 | DUKHCONP1AZ5ARGF3010 SS+10d, DUKHCONP1AZ5ARGF3020 SS+5d, DUKHCONP1AZ5ARGF3010 FF+10d, DUKHCONP1AZ4ARGF3025, DUKHCONP1AZ5ARGF3020 FF+5d | -6d |
| DUKHCONP1AZ5ARGF3045 |  | Fixing of Suspension systems | 20d | 2014-04-16 | 2014-05-08 | DUKHCONP1AZ4ARGF3045, DUKHCONP1AZ5ARGF3030 SS+7d, DUKHCONP1AZ5ARGF3025 FF+10d, DUKHCONP1AZ5ELGF4010 FF+5d, DUKHCONP1AZ5ELGF4010 SS+5d, DUKHCONP1AZ5ARGF3025 SS+10d, DUKHCONP1AZ5ARGF3030 FF+7d | -6d |
| DUKHCONP1AZ5ARGF3035 |  | Slate Tile Flooring & Skirting | 15d | 2014-04-19 | 2014-05-05 | DUKHCONP1AZ5ARGF3010 FF+13d, DUKHCONP1AZ5ARGF3010 SS+13d, DUKHCONP1AZ5ARGF3025 FF+7d, DUKHCONP1AZ5ARGF3025 SS+13d | -1d |
| DUKHCONP1AZ5ARGF3055 |  | Aluminum tile false ceiling | 25d | 2014-04-24 | 2014-05-22 | DUKHCONP1AZ5ACGF4600 FF+7d, DUKHCONP1AZ5ACGF4600 SS+7d, DUKHCONP1AZ5ARGF3045 FF+7d, DUKHCONP1AZ5ARGF3045 SS+7d | -3d |
| DUKHCONP1AZ5ARGF3040 |  | Cobble Tile flooring | 15d | 2014-04-26 | 2014-05-12 | DUKHCONP1AZ5ARGF3010 SS+13d, DUKHCONP1AZ5ARGF3035 FF+4d, DUKHCONP1AZ5ARGF3025 SS+13d, DUKHCONP1AZ5ARGF3025 FF+13d, DUKHCONP1AZ5ARGF3035 SS+4d, DUKHCONP1AZ5ARGF3010 FF+13d | -3d |
| DUKHCONP1AZ5ARGF3060 |  | Gypsum board false ceiling | 25d | 2014-04-28 | 2014-05-26 | DUKHCONP1AZ5ARGF3045 FF+10d, DUKHCONP1AZ4ARGF3060, DUKHCONP1AZ5ACGF4600 FF+7d, DUKHCONP1AZ5ARGF3045 SS+10d, DUKHCONP1AZ5ACGF4600 SS+7d | -6d |
| DUKHCONP1AZ5ARGF3050 |  | Granite - Stair case flooring & Skirting | 20d | 2014-05-04 | 2014-05-26 | DUKHCONP1AZ5ARGF3040 SS+7d, DUKHCONP1AZ5ARGF3025 SS+13d, DUKHCONP1AZ5ARGF3040 FF+7d, DUKHCONP1AZ5ARGF3025 FF+13d | -3d |
| DUKHCONP1AZ5ARGF3065 |  | Wooden door & PVC Door | 15d | 2014-05-18 | 2014-06-03 | DUKHCONP1AZ5ARGF3050 SS+7d, DUKHCONP1AZ4ARGF3065, DUKHCONP1AZ5ARGF3050 FF+7d, DUKHCONP1AZ5ARGF3035 SS+7d, DUKHCONP1AZ5ARGF3035 FF+7d | -3d |
| DUKHCONP1AZ5ARGF3070 |  | Aluminum doors | 15d | 2014-05-24 | 2014-06-09 | DUKHCONP1AZ5ARGF3065 FF+5d, DUKHCONP1AZ4ARGF3070, DUKHCONP1AZ5ARGF3065 SS+5d | -3d |
| DUKHCONP1AZ5ARGF3075 |  | Carpentry & Joinery Works | 20d | 2014-05-29 | 2014-06-21 | DUKHCONP1AZ5ARGF3070 SS+5d, DUKHCONP1AZ4ARGF3075, DUKHCONP1AZ5ARGF3070 FF+7d | -3d |
| DUKHCONP1AZ5ARGF3080 |  | Aluminum windows | 20d | 2014-05-31 | 2014-06-22 | DUKHCONP1AZ4ARGF3080, DUKHCONP1AZ5ARGF3070 FF+6d, DUKHCONP1AZ5ARGF3070 SS+6d | 7d |
| DUKHCONP1AZ5ARGF3085 |  | S.S.Balustrade | 20d | 2014-06-07 | 2014-06-29 | DUKHCONP1AZ5ARGF3050 SS+7d, DUKHCONP1AZ5ARGF3075 SS+7d, DUKHCONP1AZ5ARGF3050 FF+7d, DUKHCONP1AZ5ARGF3075 FF+7d | 2d |
| DUKHCONP1AZ5ARGF3090 |  | Installation of Granite Counter Top | 15d | 2014-06-11 | 2014-06-28 | DUKHCONP1AZ5ARGF3075 FF+6d, DUKHCONP1AZ5ARGF3075 SS+7d | -3d |
| DUKHCONP1AZ5ARGF3095 |  | Final Painting | 25d | 2014-06-21 | 2014-07-19 | DUKHCONP1AZ5ARGF3040 SS+13d, DUKHCONP1AZ5ARGF3035 FF+13d, DUKHCONP1AZ5ARGF3060 SS+8d, DUKHCONP1AZ5ARGF3085 FF+7d, DUKHCONP1AZ5ACGF4610 FF+10d, DUKHCONP1AZ5ARGF3030 FF+10d, DUKHCONP1AZ5ARGF3070 SS+5d, DUKHCONP1AZ4ARGF3095, DUKHCONP1AZ5ARGF3060 FF+8d, DUKHCONP1AZ5ARGF3090 SS+8d, DUKHCONP1AZ5ARGF3040 FF+13d, DUKHCONP1AZ5ARGF3085 SS+7d, DUKHCONP1AZ5ARGF3030 SS+10d, DUKHCONP1AZ5ARGF3080 FF+8d, DUKHCONP1AZ5ARGF3090 FF+8d, DUKHCONP1AZ5ARGF3035 SS+13d, DUKHCONP1AZ5ACGF4610 SS+10d, DUKHCONP1AZ5ARGF3070 FF+5d, DUKHCONP1AZ5ARGF3080 SS+8d | -3d |
|  | 15 | **FIRST FLOORS** |  | 2014-03-20 | 2014-08-16 |  |  |
| DUKHCONP1AZ5ARFF3300 |  | Block work | 25d | 2014-03-20 | 2014-04-17 | DUKHCONP1AZ5STFF2020 FF+21d, DUKHCONP1AZ5STFF2020 SS+21d, DUKHCONP1AZ5STFF2035 SS+21d, DUKHCONP1AZ5STFF2035 FF+21d, DUKHCONP1AZ4ARFF3300 | -24d |
| DUKHCONP1AZ5ARFF3305 |  | Plastering work | 25d | 2014-04-14 | 2014-05-12 | DUKHCONP1AZ5ARFF3300 FF+7d, DUKHCONP1AZ4ARFF3305, DUKHCONP1AZ5PLFF4325 FF+6d, DUKHCONP1AZ5ELFF4035 FF+5d, DUKHCONP1AZ5ARFF3300 SS+7d, DUKHCONP1AZ5ELFF4035 SS+5d, DUKHCONP1AZ5PLFF4325 SS+6d | -24d |
| DUKHCONP1AZ5ARFF3310 |  | Flooring screed | 21d | 2014-04-22 | 2014-05-15 | DUKHCONP1AZ5ARFF3305 SS+7d, DUKHCONP1AZ5ARFF3305 FF+3d | -12d |
| DUKHCONP1AZ5ARFF3330 |  | Paint First coat | 25d | 2014-04-30 | 2014-05-28 | DUKHCONP1AZ5ARFF3305 SS+14d, DUKHCONP1AZ5ARFF3305 FF+14d | -10d |
| DUKHCONP1AZ5ARFF3315 |  | Wet area waterproofing | 15d | 2014-05-04 | 2014-05-20 | DUKHCONP1AZ4ARFF3315, DUKHCONP1AZ5ARFF3305 SS+7d, DUKHCONP1AZ5ARFF3305 FF+7d | -24d |
| DUKHCONP1AZ5ARFF3320 |  | Ceramic Wall Tiling | 25d | 2014-05-11 | 2014-06-08 | DUKHCONP1AZ5PLFF4330 FF+7d, DUKHCONP1AZ5PLFF4325 SS+4d, DUKHCONP1AZ4ARFF3320, DUKHCONP1AZ5ARFF3315 FF+6d, DUKHCONP1AZ5PLFF4325 FF+4d, DUKHCONP1AZ5PLFF4330 SS+7d, DUKHCONP1AZ5ARFF3315 SS+6d | -24d |
| DUKHCONP1AZ5ARFF3325 |  | Porcelain Tile flooring | 25d | 2014-05-18 | 2014-06-15 | DUKHCONP1AZ4ARFF3325, DUKHCONP1AZ5ARFF3310 FF+10d, DUKHCONP1AZ5ARFF3320 SS+6d, DUKHCONP1AZ5ARFF3320 FF+6d, DUKHCONP1AZ5ARFF3310 SS+10d | -24d |
| DUKHCONP1AZ5ARFF3345 |  | Fixing of Suspension systems | 20d | 2014-05-31 | 2014-06-22 | DUKHCONP1AZ5ARFF3330 FF+7d, DUKHCONP1AZ4ARFF3345, DUKHCONP1AZ5ARFF3325 SS+6d, DUKHCONP1AZ5ARFF3325 FF+6d, DUKHCONP1AZ5ELFF4045 FF+5d, DUKHCONP1AZ5ELFF4045 SS+5d, DUKHCONP1AZ5ARFF3330 SS+7d | -24d |
| DUKHCONP1AZ5ARFF3335 |  | Slate Tile Flooring & Skirting | 15d | 2014-06-04 | 2014-06-21 | DUKHCONP1AZ5ARFF3325 FF+5d, DUKHCONP1AZ5ARFF3310 FF+13d, DUKHCONP1AZ5ARFF3325 SS+13d, DUKHCONP1AZ5ARFF3310 SS+13d | -16d |
| DUKHCONP1AZ5ARFF3360 |  | Gypsum board false ceiling | 25d | 2014-06-07 | 2014-07-05 | DUKHCONP1AZ5ARFF3345 FF+6d, DUKHCONP1AZ5ACFF4615 SS+7d, DUKHCONP1AZ5ACFF4615 FF+7d, DUKHCONP1AZ4ARFF3360, DUKHCONP1AZ5ARFF3345 SS+6d | -24d |
| DUKHCONP1AZ5ARFF3350 |  | Granite - Stair case flooring & Skirting | 20d | 2014-06-08 | 2014-06-30 | DUKHCONP1AZ5ARFF3325 FF+13d, DUKHCONP1AZ5ARFF3325 SS+13d | -22d |
| DUKHCONP1AZ5ARFF3365 |  | Wooden door | 15d | 2014-06-22 | 2014-07-08 | DUKHCONP1AZ4ARFF3365, DUKHCONP1AZ5ARFF3335 FF+7d, DUKHCONP1AZ5ARFF3350 FF+5d, DUKHCONP1AZ5ARFF3360 FF+3d, DUKHCONP1AZ5ARFF3350 SS+5d, DUKHCONP1AZ5ARFF3335 SS+7d, DUKHCONP1AZ5ARFF3360 SS+3d | -24d |
| DUKHCONP1AZ5ARFF3370 |  | Aluminum Door | 20d | 2014-06-22 | 2014-07-14 | DUKHCONP1AZ5ARFF3365 FF, DUKHCONP1AZ4ARFF3370, DUKHCONP1AZ5ARFF3365 SS | -24d |
| DUKHCONP1AZ5ARFF3375 |  | Carpentry & Joinery Works | 25d | 2014-06-28 | 2014-07-26 | DUKHCONP1AZ5ARFF3370 FF+5d, DUKHCONP1AZ5ARFF3370 SS+5d, DUKHCONP1AZ4ARFF3375 | -24d |
| DUKHCONP1AZ5ARFF3380 |  | Aluminum windows | 20d | 2014-06-29 | 2014-07-21 | DUKHCONP1AZ5ARFF3370 SS+6d, DUKHCONP1AZ5ARFF3370 FF+6d | -20d |
| DUKHCONP1AZ5ARFF3385 |  | Handrail & Balustrade | 20d | 2014-07-09 | 2014-07-31 | DUKHCONP1AZ5ARFF3350 SS+7d, DUKHCONP1AZ5ARFF3350 FF+7d, DUKHCONP1AZ5ARFF3375 FF+5d, DUKHCONP1AZ5ARFF3375 SS+5d | -24d |
| DUKHCONP1AZ5ARFF3390 |  | Installation of Granite Counter Top | 20d | 2014-07-09 | 2014-07-31 | DUKHCONP1AZ5ARFF3375 SS+6d, DUKHCONP1AZ5ARFF3375 FF+5d | -23d |
| DUKHCONP1AZ5ARFF3395 |  | Final Painting | 25d | 2014-07-15 | 2014-08-16 | DUKHCONP1AZ5ARFF3390 FF+6d, DUKHCONP1AZ5ARFF3360 SS+10d, DUKHCONP1AZ5ARFF3380 SS+10d, DUKHCONP1AZ5ARFF3390 SS+4d, DUKHCONP1AZ5ACFF4625 FF+6d, DUKHCONP1AZ5ARFF3335 FF+8d, DUKHCONP1AZ5ARFF3375 SS+8d, DUKHCONP1AZ5ARFF3330 SS+10d, DUKHCONP1AZ5ARFF3335 SS+8d, DUKHCONP1AZ5ARFF3350 FF+8d, DUKHCONP1AZ5ARFF3385 SS+5d, DUKHCONP1AZ5ARFF3365 SS+8d, DUKHCONP1AZ5ARFF3375 FF+8d, DUKHCONP1AZ5ARFF3385 FF+5d, DUKHCONP1AZ4ARFF3395, DUKHCONP1AZ5ACFF4625 SS+6d, DUKHCONP1AZ5ARFF3330 FF+10d, DUKHCONP1AZ5ARFF3350 SS+8d, DUKHCONP1AZ5ARFF3360 FF+10d, DUKHCONP1AZ5ARFF3365 FF+8d, DUKHCONP1AZ5ARFF3380 FF+10d | -24d |
|  | 20 | **ROOF** |  | 2014-04-03 | 2014-06-07 |  |  |
| DUKHCONP1AZ5ARRF3600 |  | Block work | 20d | 2014-04-03 | 2014-04-26 | DUKHCONP1AZ5STRF2055 FF+21d, DUKHCONP1AZ5STRF2055 SS+21d, DUKHCONP1AZ4ARRF3600 | 28d |
| DUKHCONP1AZ5ARRF3605 |  | Plastering work | 20d | 2014-04-12 | 2014-05-04 | DUKHCONP1AZ5ARRF3600 SS+7d, DUKHCONP1AZ5ARRF3600 FF+7d | 28d |
| DUKHCONP1AZ5ARRF3610 |  | Flooring screed | 15d | 2014-04-26 | 2014-05-12 | DUKHCONP1AZ5ARRF3605 FF+7d, DUKHCONP1AZ5ARRF3605 SS+7d | 33d |
| DUKHCONP1AZ5ARRF3695 |  | Painting -Storage area | 20d | 2014-05-04 | 2014-05-26 | DUKHCONP1AZ5ARRF3610 FF+7d, DUKHCONP1AZ5ARRF3610 SS+7d | 33d |
| DUKHCONP1AZ5ARRF3620 |  | Epoxy Painting -Storage area | 15d | 2014-05-21 | 2014-06-07 | DUKHCONP1AZ5ARRF3695 SS+10d, DUKHCONP1AZ5ARRF3695 FF+10d | 33d |
|  | 15 | **EXTERNAL FINISHES** |  | 2014-04-26 | 2014-07-13 |  |  |
|  | 10 | **ROOF** |  | 2014-05-10 | 2014-07-13 |  |  |
| DUKHCONP1AZ5ARRF3630 |  | Leveling Screed for Waterproofing | 25d | 2014-05-10 | 2014-06-07 | DUKHCONP1AZ5STRF2065 SS+10d, DUKHCONP1AZ5STRF2060 SS+10d, DUKHCONP1AZ5STRF2060 FF+10d, DUKHCONP1AZ5STRF2065 FF+10d, DUKHCONP1AZ4ARRF3630 | -3d |
| DUKHCONP1AZ5ARRF3635 |  | Laying of Waterproofing Membrane | 25d | 2014-05-13 | 2014-06-10 | DUKHCONP1AZ5ARRF3630 FF+3d, DUKHCONP1AZ5ARRF3630 SS+3d | -3d |

| ID | WBS | Task | Duration | Start | Finish | Predecessors | Total float |
| --- | --- | --- | --- | --- | --- | --- | --- |
| DUKHCONP1AZ5ARRF3640 |  | Installation of Insulation & Protection | 25d | 2014-05-18 | 2014-06-15 | DUKHCONP1AZ5ARRF3635 FF+4d, DUKHCONP1AZ5ARRF3635 SS+4d | -3d |
| DUKHCONP1AZ5ARRF3645 |  | Lime Stone Chips & Paving slab Installation | 25d | 2014-05-22 | 2014-06-19 | DUKHCONP1AZ5ARRF3640 FF+4d, DUKHCONP1AZ5ARRF3640 SS+4d | -3d |
| DUKHCONP1AZ5ARRF3650 |  | Install. of Gal. Frame & Aluminum Slat Screen | 25d | 2014-05-31 | 2014-06-28 | DUKHCONP1AZ5ARRF3645 SS+7d, DUKHCONP1AZ5ARRF3645 FF+7d | -3d |
| DUKHCONP1AZ5ARRF3655 |  | Installation of Pumps Protection cabinets | 20d | 2014-06-15 | 2014-07-07 | DUKHCONP1AZ5ARRF3645 FF+7d, DUKHCONP1AZ5ARRF3645 SS+7d, DUKHCONP1AZ4ARRF3655, DUKHCONP1AZ5ARRF3650 SS+8d, DUKHCONP1AZ5ARRF3650 FF+8d | -3d |
| DUKHCONP1AZ5ARRF3660 |  | Installation of Access Ladder | 15d | 2014-06-26 | 2014-07-13 | DUKHCONP1AZ5ARRF3655 SS+5d, DUKHCONP1AZ5ARRF3655 FF+5d | 2d |
|  | 15 | **ELEVATION** |  | 2014-04-26 | 2014-06-16 |  |  |
| DUKHCONP1AZ5AREL3665 |  | External Plastering | 25d | 2014-04-26 | 2014-05-24 | DUKHCONP1AZ5ARRF3605 SS+7d, DUKHCONP1AZ4AREL3665, DUKHCONP1AZ5STRF2065 FF+7d, DUKHCONP1AZ5STRF2065 SS+7d, DUKHCONP1AZ5ARFF3305 FF+7d, DUKHCONP1AZ5ARFF3305 SS+7d | 23d |
| DUKHCONP1AZ5AREL3670 |  | External stone cladding works | 20d | 2014-05-13 | 2014-06-04 | DUKHCONP1AZ4AREL3670, DUKHCONP1AZ5AREL3665 SS+10d, DUKHCONP1AZ5AREL3665 FF+10d | 25d |
| DUKHCONP1AZ5AREL3680 |  | External Painting | 20d | 2014-05-25 | 2014-06-16 | DUKHCONP1AZ5AREL3670 FF+10d, DUKHCONP1AZ5ARRF3695 SS+4d, DUKHCONP1AZ4AREL3680, DUKHCONP1AZ5ARRF3695 FF+4d, DUKHCONP1AZ5AREL3670 SS+10d | 25d |
|  | 20 | **MEP WORKS** |  | 2013-10-31 | 2014-08-14 |  |  |
|  | 10 | **ELECTRICAL WORKS** |  | 2014-02-12 | 2014-08-14 |  |  |
|  | 10 | **GROUND FLOOR** |  | 2014-02-12 | 2014-06-21 |  |  |
| DUKHCONP1AZ5ELGF4000 |  | Fixing of wall conduits & switch socket boxes | 25d | 2014-02-12 | 2014-03-12 | DUKHCONP1AZ5ARGF3000 FF+5d, DUKHCONP1AZ5ARGF3000 SS+5d | 3d |
| DUKHCONP1AZ5ELGF4005 |  | Cable tray & trunking installation | 20d | 2014-02-24 | 2014-03-18 | DUKHCONP1AZ5ELGF4000 SS+5d, DUKHCONP1AZ4ELGF4005, DUKHCONP1AZ5ELGF4000 FF+5d | 21d |
| DUKHCONP1AZ5ELGF4010 |  | Installation of wiring & Main Cabling | 25d | 2014-03-04 | 2014-04-01 | DUKHCONP1AZ5ELGF4005 SS+7d, DUKHCONP1AZ5ELGF4005 FF+7d | 21d |
| DUKHCONP1AZ5ELGF4015 |  | Install. of CAMS & Fire Fighting Accessories | 25d | 2014-05-06 | 2014-06-03 | DUKHCONP1AZ5ARGF3055 FF+7d, DUKHCONP1AZ5ARGF3060 SS+7d, DUKHCONP1AZ5ARGF3055 SS+7d, DUKHCONP1AZ5ARGF3060 FF+7d, DUKHCONP1AZ4ELGF4015 | 6d |
| DUKHCONP1AZ5ELGF4020 |  | Installation of DBS,MCCB Accessories. | 20d | 2014-05-12 | 2014-06-03 | DUKHCONP1AZ5ELGF4010 SS+5d, DUKHCONP1AZ5ELGF4010 FF+5d, DUKHCONP1AZ5ARGF3055 FF+7d, DUKHCONP1AZ5ARGF3060 FF+7d, DUKHCONP1AZ5ARGF3055 SS+7d, DUKHCONP1AZ5ARGF3060 SS+7d | -6d |
| DUKHCONP1AZ5ELGF4025 |  | Installation of Lighting fixtures & Accessories | 25d | 2014-05-24 | 2014-06-21 | DUKHCONP1AZ5ELGF4020 SS+10d, DUKHCONP1AZ5ELGF4020 FF+10d, DUKHCONP1AZ5ARGF3055 SS+10d, DUKHCONP1AZ5ARGF3060 FF+10d, DUKHCONP1AZ4ELGF4025, DUKHCONP1AZ5ARGF3060 SS+10d, DUKHCONP1AZ5ARGF3055 FF+10d | 1d |
| DUKHCONP1AZ5ELGF4030 |  | Installation of Telephone System | 20d | 2014-05-24 | 2014-06-15 | DUKHCONP1AZ4ELGF4030, DUKHCONP1AZ5ELGF4020 SS+10d, DUKHCONP1AZ5ELGF4020 FF+10d, DUKHCONP1AZ5ARGF3060 SS+5d, DUKHCONP1AZ5ARGF3060 FF+5d | -6d |
|  | 15 | **FIRST FLOORS** |  | 2014-03-26 | 2014-07-24 |  |  |
| DUKHCONP1AZ5ELFF4035 |  | Fixing of wall conduits & switch socket boxes | 25d | 2014-03-26 | 2014-04-23 | DUKHCONP1AZ5ARFF3300 SS+5d, DUKHCONP1AZ5ARFF3300 FF+5d | -13d |
| DUKHCONP1AZ5ELFF4040 |  | Cable tray & trunking installation | 20d | 2014-04-07 | 2014-04-29 | DUKHCONP1AZ5ELFF4035 SS+5d, DUKHCONP1AZ5ELFF4035 FF+5d | 5d |
| DUKHCONP1AZ5ELFF4045 |  | Installation of wiring & Main Cabling | 25d | 2014-04-17 | 2014-05-15 | DUKHCONP1AZ4ELFF4045, DUKHCONP1AZ5ELFF4040 SS+7d, DUKHCONP1AZ5ELFF4040 FF+7d | 3d |
| DUKHCONP1AZ5ELFF4055 |  | Install. of CAMS & Fire Fighting Accessories | 25d | 2014-06-15 | 2014-07-13 | DUKHCONP1AZ4ELFF4055, DUKHCONP1AZ5ARFF3360 FF+7d, DUKHCONP1AZ5ELGF4015 SS+5d, DUKHCONP1AZ5ELGF4015 FF+5d, DUKHCONP1AZ5ARFF3360 SS+7d | -23d |
| DUKHCONP1AZ5ELFF4050 |  | Installation of Telephone System | 25d | 2014-06-16 | 2014-07-14 | DUKHCONP1AZ5ELGF4030 FF+10d, DUKHCONP1AZ5ARFF3360 FF+5d, DUKHCONP1AZ5MSEX5010, DUKHCONP1AZ5ARFF3360 SS+5d, DUKHCONP1AZ5ELGF4030 SS+10d | -16d |
| DUKHCONP1AZ5ELFF4060 |  | Installation of DBS,MCCB Accessories. | 20d | 2014-06-18 | 2014-07-10 | DUKHCONP1AZ4ELFF4060, DUKHCONP1AZ5ARFF3360 SS+8d, DUKHCONP1AZ5ARFF3360 FF+5d, DUKHCONP1AZ5ELFF4045 SS+5d, DUKHCONP1AZ5ELFF4045 FF+5d | -21d |
| DUKHCONP1AZ5ELFF4065 |  | Installation of Lighting fixtures & Accessories | 25d | 2014-06-26 | 2014-07-24 | DUKHCONP1AZ4ELFF4065, DUKHCONP1AZ5ELGF4025 FF+5d, DUKHCONP1AZ5ARFF3360 FF+10d, DUKHCONP1AZ5ELFF4060 FF+5d, DUKHCONP1AZ5ELFF4060 SS+5d, DUKHCONP1AZ5ARFF3360 SS+10d, DUKHCONP1AZ5ELGF4025 SS+5d | -23d |
|  | 20 | **ROOF** |  | 2014-07-10 | 2014-08-14 |  |  |
| DUKHCONP1AZ5ELRF4070 |  | Installation of Isolator | 18d | 2014-07-10 | 2014-07-30 | DUKHCONP1AZ5ELFF4045 SS+10d, DUKHCONP1AZ5ARRF3645 FF+7d, DUKHCONP1AZ5ELFF4045 FF+10d, DUKHCONP1AZ5ARRF3645 SS+7d, DUKHCONP1AZ5ELFF4050 SS+5d, DUKHCONP1AZ5ELFF4065 SS+5d, DUKHCONP1AZ5ELFF4065 FF+5d, DUKHCONP1AZ5ELFF4050 FF+7d | -23d |
| DUKHCONP1AZ5ELRF4075 |  | Installation of TV Dish Antenna | 23d | 2014-07-16 | 2014-08-14 | DUKHCONP1AZ5ELRF4070 SS+5d, DUKHCONP1AZ5ELRF4070 FF+5d | -23d |
|  | 15 | **PLUMBING, DRAINAGE & FIRE FIGHTING WORKS** |  | 2013-10-31 | 2014-08-14 |  |  |
|  | 10 | **GROUND FLOOR** |  | 2013-10-31 | 2014-06-21 |  |  |
| DUKHCONP1AZ5PLUG4300 |  | Drainage / Storm Pipes in Grade Slab | 16d | 2013-10-31 | 2013-11-18 | DUKHCONP1AZ5STUG1040 SS+11d, DUKHCONP1AZ5STUG1040 FF+11d | -24d |
| DUKHCONP1AZ5PLGF4305 |  | Installation of Plumbing pipes & testing | 18d | 2014-02-23 | 2014-03-15 | DUKHCONP1AZ5ARGF3000 SS+7d, DUKHCONP1AZ5ARGF3000 FF+7d, DUKHCONP1AZ4PLGF4305 | -6d |
| DUKHCONP1AZ5PLGF4310 |  | Installation of Drainage pipes &testing | 18d | 2014-02-23 | 2014-03-15 | DUKHCONP1AZ5PLGF4305 SS, DUKHCONP1AZ5ARGF3000 FF+7d, DUKHCONP1AZ5ARGF3000 SS+7d, DUKHCONP1AZ5PLGF4305 FF | -3d |
| DUKHCONP1AZ5PLGF4315 |  | Sanitary Fittings & Accessories | 20d | 2014-05-24 | 2014-06-15 | DUKHCONP1AZ5PLGF4310 FF+5d, DUKHCONP1AZ5PLGF4310 SS+5d, DUKHCONP1AZ5ARGF3065 SS+5d, DUKHCONP1AZ4PLGF4315, DUKHCONP1AZ5ARGF3065 FF+5d | 21d |
| DUKHCONP1AZ5PLGF4320 |  | Installation of Water Heater | 15d | 2014-06-04 | 2014-06-21 | DUKHCONP1AZ5PLGF4315 FF+5d, DUKHCONP1AZ5PLGF4315 SS+5d, DUKHCONP1AZ5ARGF3060 FF+5d, DUKHCONP1AZ4PLGF4320, DUKHCONP1AZ5ARGF3060 SS+5d | 21d |
|  | 15 | **FIRST FLOORS** |  | 2014-04-07 | 2014-07-20 |  |  |
| DUKHCONP1AZ5PLFF4325 |  | Installation of Plumbing pipes & testing | 18d | 2014-04-07 | 2014-04-27 | DUKHCONP1AZ5ARFF3300 SS+7d, DUKHCONP1AZ5ARFF3300 FF+8d | -24d |
| DUKHCONP1AZ5PLFF4330 |  | Installation of Drainage pipes & testing | 18d | 2014-04-07 | 2014-04-27 | DUKHCONP1AZ5ARFF3300 FF+7d, DUKHCONP1AZ4PLFF4330, DUKHCONP1AZ5PLFF4325 FF, DUKHCONP1AZ5ARFF3300 SS+7d, DUKHCONP1AZ5PLFF4325 SS | -2d |
| DUKHCONP1AZ5PLFF4335 |  | Sanitary Fittings & Accessories | 20d | 2014-06-22 | 2014-07-14 | DUKHCONP1AZ5PLFF4330 FF+5d, DUKHCONP1AZ5PLFF4330 SS+5d, DUKHCONP1AZ5ARFF3365 SS, DUKHCONP1AZ5ARFF3365 FF+5d | -19d |
| DUKHCONP1AZ5PLFF4340 |  | Installation of Water Heater | 15d | 2014-07-03 | 2014-07-20 | DUKHCONP1AZ5ARFF3360 FF+5d, DUKHCONP1AZ4PLFF4340, DUKHCONP1AZ5PLFF4335 FF+5d, DUKHCONP1AZ5PLFF4335 SS+5d, DUKHCONP1AZ5ARFF3360 SS+5d | -19d |
|  | 20 | **ROOF** |  | 2014-04-26 | 2014-08-14 |  |  |
| DUKHCONP1AZ5PLRF4345 |  | Installation of Plumbing pipes & fittings | 15d | 2014-04-26 | 2014-05-12 | DUKHCONP1AZ5ARRF3605 SS+7d, DUKHCONP1AZ5ARRF3605 FF+7d | 32d |
| DUKHCONP1AZ5PLRF4350 |  | Installation of Rain water Pipes | 15d | 2014-06-09 | 2014-06-25 | DUKHCONP1AZ5PLFF4330 SS+5d, DUKHCONP1AZ5PLRF4345 SS+8d, DUKHCONP1AZ5AREL3665 SS+7d, DUKHCONP1AZ5ARRF3645 SS+5d, DUKHCONP1AZ5PLRF4345 FF+8d, DUKHCONP1AZ4PLRF4350, DUKHCONP1AZ5PLFF4330 FF+5d, DUKHCONP1AZ5ARRF3645 FF+5d, DUKHCONP1AZ5AREL3665 FF+7d | 2d |
| DUKHCONP1AZ5PLRF4355 |  | Roof Water Tank Installation & Connections | 25d | 2014-07-14 | 2014-08-14 | DUKHCONP1AZ5PLRF4345 FF+8d, DUKHCONP1AZ5PLFF4340 SS+5d, DUKHCONP1AZ5ARRF3655 SS+5d, DUKHCONP1AZ4PLRF4355, DUKHCONP1AZ5PLFF4340 FF+5d, DUKHCONP1AZ5ARRF3655 FF+5d, DUKHCONP1AZ5PLRF4345 SS+8d, DUKHCONP1AZ5PLRF4350 SS+5d, DUKHCONP1AZ5PLRF4350 FF+5d | -23d |
|  | 20 | **AC WORKS** |  | 2014-03-15 | 2014-08-12 |  |  |
|  | 10 | **GROUND FLOOR** |  | 2014-03-15 | 2014-06-18 |  |  |
| DUKHCONP1AZ5ACGF4600 |  | Installation AC Pipes | 20d | 2014-03-15 | 2014-04-06 | DUKHCONP1AZ5ARGF3005 FF+7d, DUKHCONP1AZ5ARGF3005 SS+7d, DUKHCONP1AZ4ACGF4600 | 25d |
| DUKHCONP1AZ5ACGF4605 |  | Fixing of Ventilation Equipments | 25d | 2014-05-06 | 2014-06-03 | DUKHCONP1AZ4ACGF4605, DUKHCONP1AZ5ACGF4600 SS+10d, DUKHCONP1AZ5ARGF3060 SS+7d, DUKHCONP1AZ5ARGF3060 FF+7d, DUKHCONP1AZ5ARGF3055 FF+7d, DUKHCONP1AZ5ACGF4600 FF+10d, DUKHCONP1AZ5ARGF3055 SS+7d | 8d |
| DUKHCONP1AZ5ACGF4610 |  | Fixing of Split AC | 20d | 2014-05-27 | 2014-06-18 | DUKHCONP1AZ5ACGF4605 FF+13d, DUKHCONP1AZ4ACGF4610, DUKHCONP1AZ5ACGF4605 SS+13d | 8d |
|  | 15 | **FIRST FLOORS** |  | 2014-04-28 | 2014-07-28 |  |  |
| DUKHCONP1AZ5ACFF4615 |  | Installation AC Pipes | 20d | 2014-04-28 | 2014-05-20 | DUKHCONP1AZ4ACFF4615, DUKHCONP1AZ5ARFF3305 FF+7d, DUKHCONP1AZ5ARFF3305 SS+7d | 3d |
| DUKHCONP1AZ5ACFF4620 |  | Fixing of Ventilation Equipments | 25d | 2014-06-15 | 2014-07-13 | DUKHCONP1AZ5ACFF4615 SS+10d, DUKHCONP1AZ5ACFF4615 FF+10d, DUKHCONP1AZ5ARFF3360 FF+7d, DUKHCONP1AZ4ACFF4620, DUKHCONP1AZ5ARFF3360 SS+7d | -22d |
| DUKHCONP1AZ5ACFF4625 |  | Fixing of Split AC | 20d | 2014-07-06 | 2014-07-28 | DUKHCONP1AZ5ACFF4620 SS+13d, DUKHCONP1AZ5ACFF4620 FF+13d, DUKHCONP1AZ4ACFF4625 | -22d |
|  | 20 | **ROOF** |  | 2014-05-31 | 2014-08-12 |  |  |
| DUKHCONP1AZ5ACRF4630 |  | Installation of Refrigerant Pipes | 25d | 2014-05-31 | 2014-06-28 | DUKHCONP1AZ5ARRF3645 SS+7d, DUKHCONP1AZ5ACFF4615 SS+7d, DUKHCONP1AZ4ACRF4630, DUKHCONP1AZ5ARRF3645 FF+7d, DUKHCONP1AZ5ACGF4600 FF+7d, DUKHCONP1AZ5ACFF4615 FF+7d, DUKHCONP1AZ5ACGF4600 SS+7d | 10d |
| DUKHCONP1AZ5ACRF4635 |  | Installation of Condensing Unit | 25d | 2014-07-12 | 2014-08-12 | DUKHCONP1AZ5ACGF4610 SS+5d, DUKHCONP1AZ5ACGF4610 FF+5d, DUKHCONP1AZ5ACFF4625 SS+5d, DUKHCONP1AZ4ACRF4635, DUKHCONP1AZ5ACFF4625 FF+5d, DUKHCONP1AZ5ACRF4630 FF+5d, DUKHCONP1AZ5ACRF4630 SS+5d | -21d |
|  | 25 | **EXTERNAL WORKS** |  | 2014-03-22 | 2014-08-21 |  |  |
|  | 10 | **MISCELLANEOUS** |  | 2014-03-22 | 2014-08-21 |  |  |
| DUKHCONP1AZ5MSEX5000 |  | Construction of Manholes | 25d | 2014-03-22 | 2014-04-19 | DUKHCONP1AZ5PLGF4310 SS+10d, DUKHCONP1AZ5STRF2055 FF+10d, DUKHCONP1AZ5PLGF4310 FF+10d, DUKHCONP1AZ5STRF2055 SS+10d | -16d |
| DUKHCONP1AZ5MSEX5005 |  | Construction of Soak pit, Chambers | 25d | 2014-04-05 | 2014-05-03 | DUKHCONP1AZ5MSEX5000 SS+12d, DUKHCONP1AZ5MSEX5000 FF+12d | -16d |
| DUKHCONP1AZ5MSEX5015 |  | Construction of grease Trap | 20d | 2014-04-24 | 2014-05-17 | DUKHCONP1AZ5MSEX5005 FF+12d, DUKHCONP1AZ5MSEX5005 SS+12d | -16d |
| DUKHCONP1AZ5MSEX5020 |  | Construction Entrance Ramp | 25d | 2014-05-12 | 2014-06-09 | DUKHCONP1AZ5STRF2055 FF, DUKHCONP1AZ4MSEX5020, DUKHCONP1AZ5STRF2055 SS | -8d |
| DUKHCONP1AZ5MSEX5010 |  | Telephone cable laying | 25d | 2014-05-18 | 2014-06-15 | DUKHCONP1AZ5MSEX5015 | -16d |
| DUKHCONP1AZ5MSEX5025 |  | SS.Handrails and Balustrades | 20d | 2014-05-29 | 2014-06-21 | DUKHCONP1AZ5MSEX5020 SS+10d, DUKHCONP1AZ5MSEX5020 FF+10d | -5d |
| DUKHCONP1AZ5MSEX5335 |  | Aluminum Roll-up Shutter with 2m Wall | 25d | 2014-07-21 | 2014-08-21 | DUKHCONI1AZ3BWGL5325 SS+10d, DUKHCONP1AZ4MSEX5335 | 68d |
|  | 15 | **WATER TANK ENCLOSURE** |  | 2014-04-26 | 2014-08-05 |  |  |
| DUKHCONP1AZ5WEEX5030 |  | Excavation | 20d | 2014-04-26 | 2014-05-18 | DUKHCONP1AZ4WEEX5030, DUKHCONP1AZ5STRF2055 SS+5d, DUKHCONP1AZ5STRF2055 FF+5d | 4d |
| DUKHCONP1AZ5WEEX5035 |  | Construction of Raft | 25d | 2014-05-01 | 2014-05-29 | DUKHCONP1AZ5WEEX5030 SS+5d, DUKHCONP1AZ5WEEX5030 FF+10d | 4d |

| ID | WBS | Task | Duration | Start | Finish | Predecessors | Total float |
| --- | --- | --- | --- | --- | --- | --- | --- |
| DUKHCONP1AZ5WEEX5040 |  | Block works & Plastering | 25d | 2014-05-11 | 2014-06-08 | DUKHCONP1AZ5WEEX5035 SS+8d, DUKHCONP1AZ5WEEX5035 FF+8d | 4d |
| DUKHCONP1AZ5WEEX5045 |  | Flooring & Painting | 25d | 2014-05-18 | 2014-06-15 | DUKHCONP1AZ5WEEX5040 FF+6d, DUKHCONP1AZ5WEEX5040 SS+6d | 4d |
| DUKHCONP1AZ5WEEX5050 |  | Installation of Steel Gate | 20d | 2014-06-10 | 2014-07-02 | DUKHCONP1AZ5WEEX5045 SS+5d, DUKHCONP1AZ5WEEX5045 FF+6d, DUKHCONP1AZ5MSEX5025 FF+10d | -5d |
| DUKHCONP1AZ5WEEX5060 |  | Structural steel & SS Shed cover installation | 25d | 2014-06-26 | 2014-07-24 | DUKHCONP1AZ5MSEX5025 FF+10d, DUKHCONP1AZ4WEEX5060, DUKHCONP1AZ5WEEX5050 FF+10d, DUKHCONP1AZ5WEEX5050 SS+5d | -14d |
| DUKHCONP1AZ5WEEX5065 |  | Install. of Water Tank,Chiller,Pump & Meter | 25d | 2014-07-05 | 2014-08-05 | DUKHCONP1AZ5MSEX5015 SS+5d, DUKHCONP1AZ4WEEX5065, DUKHCONP1AZ5MSEX5015 FF+5d, DUKHCONP1AZ5WEEX5060 FF+6d, DUKHCONP1AZ5PLRF4350 FF+5d, DUKHCONP1AZ5WEEX5060 SS+6d, DUKHCONP1AZ5PLRF4350 SS+5d | -15d |
|  | 20 | **HARD LANDSCAPING** |  | 2014-05-26 | 2014-07-06 |  |  |
| DUKHCONP1AZ5HDEX5090 |  | kerb works | 20d | 2014-05-26 | 2014-06-17 | DUKHCONP1AZ4HDEX5090, DUKHCONP1AZ5MSEX5020 SS+7d, DUKHCONP1AZ5MSEX5020 FF+7d | -8d |
| DUKHCONP1AZ5HDEX5095 |  | Cobble Stone Works | 20d | 2014-06-07 | 2014-06-29 | DUKHCONP1AZ5HDEX5090 FF+10d, DUKHCONP1AZ5HDEX5090 SS+10d | -8d |
| DUKHCONP1AZ5HDEX5100 |  | Interlock works | 20d | 2014-06-14 | 2014-07-06 | DUKHCONP1AZ5HDEX5095 FF+6d, DUKHCONP1AZ5HDEX5095 SS+6d | -8d |
|  | 25 | **SOFT LANDSCAPING** |  | 2014-06-19 | 2014-07-24 |  |  |
| DUKHCONP1AZ5SLEX5105 |  | Laying of Grass/ green area | 25d | 2014-06-19 | 2014-07-17 | DUKHCONP1AZ5HDEX5100 FF+5d, DUKHCONP1AZ5HDEX5100 SS+5d | -8d |
| DUKHCONP1AZ5SLEX5110 |  | Laying of Palm tree | 25d | 2014-06-26 | 2014-07-24 | DUKHCONP1AZ5SLEX5105 SS+6d, DUKHCONP1AZ5SLEX5105 FF+6d | -8d |
|  | 30 | **TESTING AND COMMISSIONING** |  | 2014-08-17 | 2014-09-14 |  |  |
| DUKHCONP1AZ5ACTC8000 |  | Pre-Commissioning & Testing of AC Works | 25d | 2014-08-17 | 2014-09-14 | DUKHCONP1AZ5SLEX5110, DUKHCONP1AZ4ACTC8000, DUKHCONP1AZ5HDEX5100, DUKHCONP1AZ5ARRF3660, DUKHCONP1AZ5SLEX5105, DUKHCONP1AZ5ACFF4625, DUKHCONP1AZ5ARGF3095, DUKHCONP1AZ5ARRF3620, DUKHCONP1AZ5ARFF3395, DUKHCONP1AZ5MSEX5005, DUKHCONP1AZ5AREL3680, DUKHCONP1AZ5ACRF4635 | -24d |
| DUKHCONP1AZ5ELTC8010 |  | Pre-Commissioning & Testing of Electrical Works | 25d | 2014-08-17 | 2014-09-14 | DUKHCONP1AZ5SLEX5105, DUKHCONP1AZ5ELRF4075, DUKHCONP1AZ5ARRF3655, DUKHCONP1AZ5ELFF4050, DUKHCONP1AZ4ELTC8010, DUKHCONP1AZ5ELGF4015, DUKHCONP1AZ5ELFF4055, DUKHCONP1AZ5ARRF3660, DUKHCONP1AZ5ARGF3095, DUKHCONP1AZ5SLEX5110, DUKHCONP1AZ5ELGF4025, DUKHCONP1AZ5HDEX5100, DUKHCONP1AZ5ARRF3620, DUKHCONP1AZ5MSEX5005, DUKHCONP1AZ5ELGF4030, DUKHCONP1AZ5ELFF4065, DUKHCONP1AZ5AREL3680, DUKHCONP1AZ5ARFF3395 | -24d |
| DUKHCONP1AZ5PLTC8005 |  | Pre-Commissioning & Testing of Plumbing Works | 25d | 2014-08-17 | 2014-09-14 | DUKHCONP1AZ4PLTC8005, DUKHCONP1AZ5PLRF4355, DUKHCONP1AZ5SLEX5105, DUKHCONP1AZ5PLRF4350, DUKHCONP1AZ5MSEX5005, DUKHCONP1AZ5PLGF4320, DUKHCONP1AZ5AREL3680, DUKHCONP1AZ5ARFF3395, DUKHCONP1AZ5SLEX5110, DUKHCONP1AZ5WEEX5065, DUKHCONP1AZ5ARRF3655, DUKHCONP1AZ5ARRF3660, DUKHCONP1AZ5ARGF3095, DUKHCONP1AZ5HDEX5100, DUKHCONP1AZ5ARRF3620 | -24d |
|  | 35 | **ZONE - 6 (4 Twin Villas)** |  | 2013-07-23 | 2014-10-15 |  |  |
|  | 10 | **STRUCTURAL WORKS** |  | 2013-07-23 | 2014-05-19 |  |  |
|  | 10 | **SUB STRUCTURE** |  | 2013-07-23 | 2014-01-07 |  |  |
|  | 10 | **UPTO GRADE SLAB** |  | 2013-07-23 | 2014-01-07 |  |  |
| DUKHCONP1AZ6STUG1000 |  | Footing Excavation | 25d | 2013-07-23 | 2013-08-24 | DUKHCONP1AGNSP005000, DUKHCONP1AZ5STUG1000 | -11d |
| DUKHCONP1AZ6STUG1005 |  | Footing Antitermite | 23d | 2013-08-04 | 2013-09-02 | DUKHCONP1AZ6STUG1000 SS+10d, DUKHCONP1AZ6STUG1000 FF+5d | -11d |
| DUKHCONP1AZ6STUG1010 |  | Footing Blinding | 23d | 2013-08-07 | 2013-09-05 | DUKHCONP1AZ6STUG1005 FF+3d, DUKHCONP1AZ6STUG1005 SS+3d | -11d |
| DUKHCONP1AZ6STUG1015 |  | Footing Waterproofing & Screed | 25d | 2013-08-17 | 2013-09-14 | DUKHCONP1AZ6STUG1010 FF+5d, DUKHCONP1AZ6STUG1010 SS+5d | -11d |
| DUKHCONP1AZ6STUG1020 |  | Construction of foundations | 20d | 2013-09-01 | 2013-09-23 | DUKHCONP1AZ6STUG1015 SS+7d, DUKHCONP1AZ6STUG1015 FF+8d | -11d |
| DUKHCONP1AZ6STUG1025 |  | Construction of neck of columns | 25d | 2013-09-25 | 2013-10-26 | DUKHCONP1AZ6STUG1020 SS+8d, DUKHCONP1AZ5STUG1025, DUKHCONP1AZ6STUG1020 FF+7d | -24d |
| DUKHCONP1AZ6STUG1030 |  | Waterproofing Footing & Neck Column | 25d | 2013-10-05 | 2013-11-04 | DUKHCONP1AZ6STUG1025 SS+8d, DUKHCONP1AZ6STUG1025 FF+8d | -24d |
| DUKHCONP1AZ6STUG1035 |  | Backfilling Upto Grade Beam Bottom | 25d | 2013-10-21 | 2013-11-18 | DUKHCONP1AZ6STUG1030 SS+12d, DUKHCONP1AZ5STUG1035, DUKHCONP1AZ6STUG1030 FF+12d | -24d |
| DUKHCONP1AZ6STUG1040 |  | Construction of Grade Beams | 25d | 2013-11-06 | 2013-12-04 | DUKHCONP1AZ6STUG1035 SS+14d, DUKHCONP1AZ6STUG1035 FF+14d | -24d |
| DUKHCONP1AZ6STUG1045 |  | Construction of slab on grade | 25d | 2013-12-09 | 2014-01-07 | DUKHCONP1AZ5STUG1045, DUKHCONP1AZ6STUG1040 FF+10d, DUKHCONP1AZ6PLUG4300 SS+8d, DUKHCONP1AZ6STUG1040 SS+10d, DUKHCONP1AZ6PLUG4300 FF+8d | -24d |
|  | 15 | **SUPERSTRUCTURE** |  | 2013-12-26 | 2014-05-19 |  |  |
|  | 10 | **GROUND FLOOR** |  | 2013-12-26 | 2014-02-20 |  |  |
| DUKHCONP1AZ6STGF2000 |  | Column-Rebar & Formwork | 25d | 2013-12-26 | 2014-01-23 | DUKHCONP1AZ6STUG1045 FF+7d, DUKHCONP1AZ5STGF2000, DUKHCONP1AZ6STUG1045 SS+14d | -24d |
| DUKHCONP1AZ6STGF2005 |  | Column-Concrete | 24d | 2014-01-04 | 2014-01-30 | DUKHCONP1AZ6STGF2000 FF+2d, DUKHCONP1AZ6STGF2000 SS+7d | -22d |
| DUKHCONP1AZ6STGF2010 |  | Beam, Stairs ,Slab-Rebar & Formwork | 25d | 2014-01-19 | 2014-02-17 | DUKHCONP1AZ6STGF2005 FF+14d, DUKHCONP1AZ6STGF2005 SS+2d | -22d |
| DUKHCONP1AZ6STGF2015 |  | Beam, Stairs ,Slab-Concrete | 14d | 2014-02-04 | 2014-02-20 | DUKHCONP1AZ6STGF2010 FF+3d, DUKHCONP1AZ6STGF2010 SS+10d, DUKHCONP1AZ5STGF2015 | -22d |
|  | 15 | **FIRST FLOORS** |  | 2014-02-06 | 2014-04-05 |  |  |
| DUKHCONP1AZ6STFF2020 |  | Column-Rebar & Formwork | 25d | 2014-02-06 | 2014-03-08 | DUKHCONP1AZ6STGF2015 FF+5d, DUKHCONP1AZ5STFF2020, DUKHCONP1AZ6STGF2015 SS+2d | -22d |
| DUKHCONP1AZ6STFF2025 |  | Column-Concrete | 24d | 2014-02-17 | 2014-03-16 | DUKHCONP1AZ6STFF2020 FF+2d, DUKHCONP1AZ6STFF2020 SS+8d | -20d |
| DUKHCONP1AZ6STFF2030 |  | Beam, Stairs ,Slab-Rebar & Formwork | 25d | 2014-03-04 | 2014-04-01 | DUKHCONP1AZ6STFF2025 SS+2d, DUKHCONP1AZ6STFF2025 FF+14d | -20d |
| DUKHCONP1AZ6STFF2035 |  | Beam, Stairs ,Slab-Concrete | 14d | 2014-03-20 | 2014-04-05 | DUKHCONP1AZ5STFF2035, DUKHCONP1AZ6STFF2030 SS+10d, DUKHCONP1AZ6STFF2030 FF+3d | -20d |
|  | 20 | **ROOF** |  | 2014-03-23 | 2014-05-19 |  |  |
| DUKHCONP1AZ6STRF2040 |  | Column-Rebar & Formwork | 18d | 2014-03-23 | 2014-04-12 | DUKHCONP1AZ5STRF2040, DUKHCONP1AZ6STFF2035 SS+2d, DUKHCONP1AZ6STFF2035 FF+3d | -16d |
| DUKHCONP1AZ6STRF2045 |  | Column-Concrete | 17d | 2014-03-26 | 2014-04-14 | DUKHCONP1AZ6STRF2040 SS+3d, DUKHCONP1AZ6STRF2040 FF+1d | -16d |
| DUKHCONP1AZ6STRF2050 |  | Slab-Rebar & Formwork - Head Room | 20d | 2014-03-29 | 2014-04-20 | DUKHCONP1AZ6STRF2045 SS+2d, DUKHCONP1AZ6STRF2045 FF+5d | -16d |
| DUKHCONP1AZ6STRF2055 |  | Slab-Concrete-Head room | 13d | 2014-04-08 | 2014-04-22 | DUKHCONP1AZ6STRF2050 SS+5d, DUKHCONP1AZ5STRF2055, DUKHCONP1AZ6STRF2050 FF+2d | -16d |
| DUKHCONP1AZ6STRF2060 |  | Construction of Parapets | 25d | 2014-04-10 | 2014-05-08 | DUKHCONP1AZ6STRF2055 SS+2d, DUKHCONP1AZ6STRF2055 FF+14d | 32d |
| DUKHCONP1AZ6STRF2065 |  | Construction of up stands/Plinth | 25d | 2014-04-21 | 2014-05-19 | DUKHCONP1AZ6STRF2060 FF+5d, DUKHCONP1AZ6STRF2060 SS+5d, DUKHCONP1AZ5STRF2065 | 28d |
|  | 15 | **FINISHING WORKS** |  | 2014-03-08 | 2014-09-14 |  |  |
|  | 10 | **INTERNAL FINISHES** |  | 2014-03-08 | 2014-09-14 |  |  |
|  | 10 | **GROUND FLOOR** |  | 2014-03-08 | 2014-08-20 |  |  |
| DUKHCONP1AZ6ARGF3000 |  | Block work | 25d | 2014-03-08 | 2014-04-05 | DUKHCONP1AZ6STGF2015 SS+21d, DUKHCONP1AZ6STGF2015 FF+21d, DUKHCONP1AZ5ARGF3000 | -6d |
| DUKHCONP1AZ6ARGF3005 |  | Plastering work | 25d | 2014-03-30 | 2014-04-27 | DUKHCONP1AZ6ELGF4000 SS+5d, DUKHCONP1AZ6ARGF3000 SS+7d, DUKHCONP1AZ5ARGF3005, DUKHCONP1AZ6ELGF4000 FF+5d, DUKHCONP1AZ6PLGF4305 FF+5d, DUKHCONP1AZ6ARGF3000 FF+7d, DUKHCONP1AZ6PLGF4305 SS+5d | -6d |
| DUKHCONP1AZ6ARGF3010 |  | Flooring screed | 21d | 2014-04-07 | 2014-04-30 | DUKHCONP1AZ6ARGF3005 FF+3d, DUKHCONP1AZ6ARGF3005 SS+7d | 2d |
| DUKHCONP1AZ6ARGF3015 |  | Wet area waterproofing & Protection Screed | 15d | 2014-04-16 | 2014-05-03 | DUKHCONP1AZ5ARGF3015, DUKHCONP1AZ6ARGF3005 FF+5d, DUKHCONP1AZ6ARGF3005 SS+7d | -6d |
| DUKHCONP1AZ6ARGF3030 |  | Paint First coat | 25d | 2014-04-19 | 2014-05-17 | DUKHCONP1AZ6ARGF3005 FF+14d, DUKHCONP1AZ6ARGF3005 SS+14d, DUKHCONP1AZ5ARGF3030 | 5d |
| DUKHCONP1AZ6ARGF3020 |  | Ceramic Wall Tiling | 25d | 2014-04-22 | 2014-05-20 | DUKHCONP1AZ6PLGF4310 SS+4d, DUKHCONP1AZ6PLGF4305 SS+4d, DUKHCONP1AZ6PLGF4310 FF+4d, DUKHCONP1AZ5ARGF3020, DUKHCONP1AZ6ARGF3015 SS+5d, DUKHCONP1AZ6PLGF4305 FF+4d, DUKHCONP1AZ6ARGF3015 FF+5d | -6d |
| DUKHCONP1AZ6ARGF3025 |  | Porcelain Tile flooring | 25d | 2014-04-28 | 2014-05-26 | DUKHCONP1AZ6ARGF3010 SS+10d, DUKHCONP1AZ6ARGF3010 FF+10d, DUKHCONP1AZ5ARGF3025, DUKHCONP1AZ6ARGF3020 FF+5d, DUKHCONP1AZ6ARGF3020 SS+5d | -6d |
| DUKHCONP1AZ6ARGF3045 |  | Fixing of Suspension systems | 20d | 2014-05-15 | 2014-06-07 | DUKHCONP1AZ6ELGF4010 SS+5d, DUKHCONP1AZ6ARGF3030 FF+7d, DUKHCONP1AZ6ARGF3025 SS+10d, DUKHCONP1AZ5ARGF3045, DUKHCONP1AZ6ELGF4010 FF+5d, DUKHCONP1AZ6ARGF3030 SS+7d, DUKHCONP1AZ6ARGF3025 FF+10d | -6d |
| DUKHCONP1AZ6ARGF3035 |  | Slate Tile Flooring & Skirting | 15d | 2014-05-18 | 2014-06-03 | DUKHCONP1AZ6ARGF3025 FF+7d, DUKHCONP1AZ6ARGF3025 SS+13d, DUKHCONP1AZ6ARGF3010 FF+13d, DUKHCONP1AZ6ARGF3010 SS+13d | -1d |
| DUKHCONP1AZ6ARGF3055 |  | Aluminum tile false ceiling | 25d | 2014-05-24 | 2014-06-21 | DUKHCONP1AZ6ARGF3045 FF+7d, DUKHCONP1AZ6ACGF4600 SS+7d, DUKHCONP1AZ6ACGF4600 FF+7d, DUKHCONP1AZ6ARGF3045 SS+7d | -3d |
| DUKHCONP1AZ6ARGF3040 |  | Cobble Tile flooring | 15d | 2014-05-25 | 2014-06-10 | DUKHCONP1AZ6ARGF3035 SS+4d, DUKHCONP1AZ6ARGF3010 FF+13d, DUKHCONP1AZ6ARGF3025 FF+13d, DUKHCONP1AZ6ARGF3025 SS+13d, DUKHCONP1AZ6ARGF3035 FF+4d, DUKHCONP1AZ6ARGF3010 SS+13d | -3d |
| DUKHCONP1AZ6ARGF3060 |  | Gypsum board false ceiling | 25d | 2014-05-27 | 2014-06-24 | DUKHCONP1AZ6ACGF4600 FF+7d, DUKHCONP1AZ6ACGF4600 SS+7d, DUKHCONP1AZ5ARGF3060, DUKHCONP1AZ6ARGF3045 FF+10d, DUKHCONP1AZ6ARGF3045 SS+10d | -6d |
| DUKHCONP1AZ6ARGF3050 |  | Granite - Stair case flooring & Skirting | 20d | 2014-06-02 | 2014-06-24 | DUKHCONP1AZ6ARGF3025 FF+13d, DUKHCONP1AZ6ARGF3040 FF+7d, DUKHCONP1AZ6ARGF3025 SS+13d, DUKHCONP1AZ6ARGF3040 SS+7d | -3d |
| DUKHCONP1AZ6ARGF3065 |  | Wooden door & PVC Door | 15d | 2014-06-16 | 2014-07-02 | DUKHCONP1AZ5ARGF3065, DUKHCONP1AZ6ARGF3035 FF+7d, DUKHCONP1AZ6ARGF3050 SS+7d, DUKHCONP1AZ6ARGF3035 SS+7d, DUKHCONP1AZ6ARGF3050 FF+7d | -3d |
| DUKHCONP1AZ6ARGF3070 |  | Aluminum doors | 15d | 2014-06-22 | 2014-07-08 | DUKHCONP1AZ6ARGF3065 FF+5d, DUKHCONP1AZ6ARGF3065 SS+5d, DUKHCONP1AZ5ARGF3070 | -3d |
| DUKHCONP1AZ6ARGF3075 |  | Carpentry & Joinery Works | 20d | 2014-06-28 | 2014-07-20 | DUKHCONP1AZ5ARGF3075, DUKHCONP1AZ6ARGF3070 FF+7d, DUKHCONP1AZ6ARGF3070 SS+5d | -3d |
| DUKHCONP1AZ6ARGF3080 |  | Aluminum windows | 20d | 2014-06-29 | 2014-07-21 | DUKHCONP1AZ6ARGF3070 FF+6d, DUKHCONP1AZ5ARGF3080, DUKHCONP1AZ6ARGF3070 SS+6d | 7d |
| DUKHCONP1AZ6ARGF3085 |  | S.S.Balustrade | 20d | 2014-07-06 | 2014-07-28 | DUKHCONP1AZ6ARGF3050 FF+7d, DUKHCONP1AZ6ARGF3075 SS+7d, DUKHCONP1AZ6ARGF3050 SS+7d, DUKHCONP1AZ6ARGF3075 FF+7d | 2d |
| DUKHCONP1AZ6ARGF3090 |  | Installation of Granite Counter Top | 15d | 2014-07-10 | 2014-07-27 | DUKHCONP1AZ6ARGF3075 SS+7d, DUKHCONP1AZ6ARGF3075 FF+6d | -3d |

| ID | WBS | Task | Duration | Start | Finish | Predecessors | Total float |
| --- | --- | --- | --- | --- | --- | --- | --- |
| DUKHCONP1AZ6ARGF3095 |  | Final Painting | 25d | 2014-07-20 | 2014-08-20 | DUKHCONP1AZ6ARGF3070 SS+5d, DUKHCONP1AZ6ARGF3035 FF+13d, DUKHCONP1AZ6ARGF3080 FF+8d, DUKHCONP1AZ6ACGF4610 FF+10d, DUKHCONP1AZ6ARGF3040 SS+13d, DUKHCONP1AZ6ARGF3060 SS+8d, DUKHCONP1AZ6ARGF3040 FF+13d, DUKHCONP1AZ6ARGF3060 FF+8d, DUKHCONP1AZ6ARGF3070 FF+5d, DUKHCONP1AZ6ACGF4610 SS+10d, DUKHCONP1AZ6ARGF3035 SS+13d, DUKHCONP1AZ6ARGF3080 SS+8d, DUKHCONP1AZ5ARGF3095, DUKHCONP1AZ6ARGF3090 FF+8d, DUKHCONP1AZ6ARGF3085 FF+7d, DUKHCONP1AZ6ARGF3030 FF+10d, DUKHCONP1AZ6ARGF3030 SS+10d, DUKHCONP1AZ6ARGF3090 SS+8d, DUKHCONP1AZ6ARGF3085 SS+7d | -3d |
|  | 15 | **FIRST FLOORS** |  | 2014-04-19 | 2014-09-14 |  |  |
| DUKHCONP1AZ6ARFF3300 |  | Block work | 25d | 2014-04-19 | 2014-05-17 | DUKHCONP1AZ6STFF2020 SS+21d, DUKHCONP1AZ6STFF2035 SS+21d, DUKHCONP1AZ5ARFF3300, DUKHCONP1AZ6STFF2035 FF+21d, DUKHCONP1AZ6STFF2020 FF+21d | -24d |
| DUKHCONP1AZ6ARFF3305 |  | Plastering work | 25d | 2014-05-13 | 2014-06-10 | DUKHCONP1AZ6ARFF3300 SS+7d, DUKHCONP1AZ6ELFF4035 FF+5d, DUKHCONP1AZ6PLFF4325 SS+6d, DUKHCONP1AZ6ELFF4035 SS+5d, DUKHCONP1AZ5ARFF3305, DUKHCONP1AZ6ARFF3300 FF+7d, DUKHCONP1AZ6PLFF4325 FF+6d | -24d |
| DUKHCONP1AZ6ARFF3310 |  | Flooring screed | 21d | 2014-05-21 | 2014-06-14 | DUKHCONP1AZ6ARFF3305 SS+7d, DUKHCONP1AZ6ARFF3305 FF+3d | -12d |
| DUKHCONP1AZ6ARFF3330 |  | Paint First coat | 25d | 2014-05-29 | 2014-06-26 | DUKHCONP1AZ6ARFF3305 FF+14d, DUKHCONP1AZ6ARFF3305 SS+14d | -10d |
| DUKHCONP1AZ6ARFF3315 |  | Wet area waterproofing | 15d | 2014-06-02 | 2014-06-18 | DUKHCONP1AZ5ARFF3315, DUKHCONP1AZ6ARFF3305 FF+7d, DUKHCONP1AZ6ARFF3305 SS+7d | -24d |
| DUKHCONP1AZ6ARFF3320 |  | Ceramic Wall Tiling | 25d | 2014-06-09 | 2014-07-07 | DUKHCONP1AZ5ARFF3320, DUKHCONP1AZ6PLFF4325 FF+4d, DUKHCONP1AZ6PLFF4330 SS+7d, DUKHCONP1AZ6PLFF4330 FF+7d, DUKHCONP1AZ6PLFF4325 SS+4d, DUKHCONP1AZ6ARFF3315 FF+6d, DUKHCONP1AZ6ARFF3315 SS+6d | -24d |
| DUKHCONP1AZ6ARFF3325 |  | Porcelain Tile flooring | 25d | 2014-06-16 | 2014-07-14 | DUKHCONP1AZ6ARFF3320 SS+6d, DUKHCONP1AZ6ARFF3310 FF+10d, DUKHCONP1AZ6ARFF3310 SS+10d, DUKHCONP1AZ6ARFF3320 FF+6d, DUKHCONP1AZ5ARFF3325 | -24d |
| DUKHCONP1AZ6ARFF3345 |  | Fixing of Suspension systems | 20d | 2014-06-29 | 2014-07-21 | DUKHCONP1AZ5ARFF3345, DUKHCONP1AZ6ARFF3325 SS+6d, DUKHCONP1AZ6ELFF4045 SS+5d, DUKHCONP1AZ6ARFF3330 SS+7d, DUKHCONP1AZ6ARFF3330 FF+7d, DUKHCONP1AZ6ARFF3325 FF+6d, DUKHCONP1AZ6ELFF4045 FF+5d | -24d |
| DUKHCONP1AZ6ARFF3335 |  | Slate Tile Flooring & Skirting | 15d | 2014-07-03 | 2014-07-20 | DUKHCONP1AZ6ARFF3325 SS+13d, DUKHCONP1AZ6ARFF3310 FF+13d, DUKHCONP1AZ6ARFF3310 SS+13d, DUKHCONP1AZ6ARFF3325 FF+5d | -16d |
| DUKHCONP1AZ6ARFF3360 |  | Gypsum board false ceiling | 25d | 2014-07-06 | 2014-08-06 | DUKHCONP1AZ6ARFF3345 FF+6d, DUKHCONP1AZ5ARFF3360, DUKHCONP1AZ6ACFF4615 FF+7d, DUKHCONP1AZ6ARFF3345 SS+6d, DUKHCONP1AZ6ACFF4615 SS+7d | -24d |
| DUKHCONP1AZ6ARFF3350 |  | Granite - Stair case flooring & Skirting | 20d | 2014-07-07 | 2014-07-29 | DUKHCONP1AZ6ARFF3325 FF+13d, DUKHCONP1AZ6ARFF3325 SS+13d | -22d |
| DUKHCONP1AZ6ARFF3365 |  | Wooden door | 15d | 2014-07-21 | 2014-08-10 | DUKHCONP1AZ5ARFF3365, DUKHCONP1AZ6ARFF3360 SS+3d, DUKHCONP1AZ6ARFF3335 FF+7d, DUKHCONP1AZ6ARFF3350 SS+5d, DUKHCONP1AZ6ARFF3350 FF+5d, DUKHCONP1AZ6ARFF3360 FF+3d, DUKHCONP1AZ6ARFF3335 SS+7d | -24d |
| DUKHCONP1AZ6ARFF3370 |  | Aluminum Door | 20d | 2014-07-21 | 2014-08-16 | DUKHCONP1AZ5ARFF3370, DUKHCONP1AZ6ARFF3365 FF, DUKHCONP1AZ6ARFF3365 SS | -24d |
| DUKHCONP1AZ6ARFF3375 |  | Carpentry & Joinery Works | 25d | 2014-07-27 | 2014-08-27 | DUKHCONP1AZ5ARFF3375, DUKHCONP1AZ6ARFF3370 FF+5d, DUKHCONP1AZ6ARFF3370 SS+5d | -24d |
| DUKHCONP1AZ6ARFF3380 |  | Aluminum windows | 20d | 2014-07-28 | 2014-08-23 | DUKHCONP1AZ6ARFF3370 SS+6d, DUKHCONP1AZ6ARFF3370 FF+6d | -20d |
| DUKHCONP1AZ6ARFF3385 |  | Handrail & Balustrade | 20d | 2014-08-11 | 2014-09-02 | DUKHCONP1AZ6ARFF3375 FF+5d, DUKHCONP1AZ6ARFF3375 SS+5d, DUKHCONP1AZ6ARFF3350 SS+7d, DUKHCONP1AZ6ARFF3350 FF+7d | -24d |
| DUKHCONP1AZ6ARFF3390 |  | Installation of Granite Counter Top | 20d | 2014-08-11 | 2014-09-02 | DUKHCONP1AZ6ARFF3375 SS+6d, DUKHCONP1AZ6ARFF3375 FF+5d | -23d |
| DUKHCONP1AZ6ARFF3395 |  | Final Painting | 25d | 2014-08-17 | 2014-09-14 | DUKHCONP1AZ6ACFF4625 FF+6d, DUKHCONP1AZ6ARFF3350 SS+8d, DUKHCONP1AZ6ARFF3330 SS+10d, DUKHCONP1AZ6ARFF3335 SS+8d, DUKHCONP1AZ6ARFF3350 FF+8d, DUKHCONP1AZ6ARFF3365 FF+8d, DUKHCONP1AZ6ARFF3380 SS+10d, DUKHCONP1AZ6ARFF3375 FF+8d, DUKHCONP1AZ6ARFF3385 SS+5d, DUKHCONP1AZ5ARFF3395, DUKHCONP1AZ6ARFF3375 SS+8d, DUKHCONP1AZ6ARFF3360 FF+10d, DUKHCONP1AZ6ARFF3330 FF+10d, DUKHCONP1AZ6ARFF3335 FF+8d, DUKHCONP1AZ6ARFF3365 SS+8d, DUKHCONP1AZ6ARFF3360 SS+10d, DUKHCONP1AZ6ARFF3390 FF+6d, DUKHCONP1AZ6ARFF3390 SS+4d, DUKHCONP1AZ6ACFF4625 SS+6d, DUKHCONP1AZ6ARFF3380 FF+10d, DUKHCONP1AZ6ARFF3385 FF+5d | -24d |
|  | 20 | **ROOF** |  | 2014-05-03 | 2014-07-06 |  |  |
| DUKHCONP1AZ6ARRF3600 |  | Block work | 20d | 2014-05-03 | 2014-05-25 | DUKHCONP1AZ6STRF2055 SS+21d, DUKHCONP1AZ5ARRF3600, DUKHCONP1AZ6STRF2055 FF+21d | 28d |
| DUKHCONP1AZ6ARRF3605 |  | Plastering work | 20d | 2014-05-11 | 2014-06-02 | DUKHCONP1AZ6ARRF3600 FF+7d, DUKHCONP1AZ6ARRF3600 SS+7d | 28d |
| DUKHCONP1AZ6ARRF3610 |  | Flooring screed | 15d | 2014-05-25 | 2014-06-10 | DUKHCONP1AZ6ARRF3605 SS+7d, DUKHCONP1AZ6ARRF3605 FF+7d | 33d |
| DUKHCONP1AZ6ARRF3695 |  | Painting -Storage area | 20d | 2014-06-02 | 2014-06-24 | DUKHCONP1AZ6ARRF3610 FF+7d, DUKHCONP1AZ6ARRF3610 SS+7d | 33d |
| DUKHCONP1AZ6ARRF3620 |  | Epoxy Painting -Storage area | 15d | 2014-06-19 | 2014-07-06 | DUKHCONP1AZ6ARRF3695 SS+10d, DUKHCONP1AZ6ARRF3695 FF+10d | 33d |
|  | 15 | **EXTERNAL FINISHES** |  | 2014-05-25 | 2014-08-14 |  |  |
|  | 10 | **ROOF** |  | 2014-06-08 | 2014-08-14 |  |  |
| DUKHCONP1AZ6ARRF3630 |  | Leveling Screed for Waterproofing | 25d | 2014-06-08 | 2014-07-06 | DUKHCONP1AZ6STRF2065 SS+10d, DUKHCONP1AZ6STRF2060 FF+10d, DUKHCONP1AZ5ARRF3630, DUKHCONP1AZ6STRF2060 SS+10d, DUKHCONP1AZ6STRF2065 FF+10d | -3d |
| DUKHCONP1AZ6ARRF3635 |  | Laying of Waterproofing Membrane | 25d | 2014-06-11 | 2014-07-09 | DUKHCONP1AZ6ARRF3630 FF+3d, DUKHCONP1AZ6ARRF3630 SS+3d | -3d |
| DUKHCONP1AZ6ARRF3640 |  | Installation of Insulation & Protection | 25d | 2014-06-16 | 2014-07-14 | DUKHCONP1AZ6ARRF3635 SS+4d, DUKHCONP1AZ6ARRF3635 FF+4d | -3d |
| DUKHCONP1AZ6ARRF3645 |  | Lime Stone Chips & Paving slab Installation | 25d | 2014-06-21 | 2014-07-19 | DUKHCONP1AZ6ARRF3640 SS+4d, DUKHCONP1AZ6ARRF3640 FF+4d | -3d |
| DUKHCONP1AZ6ARRF3650 |  | Install. of Gal. Frame & Aluminum Slat Screen | 25d | 2014-06-29 | 2014-07-27 | DUKHCONP1AZ6ARRF3645 SS+7d, DUKHCONP1AZ6ARRF3645 FF+7d | -3d |
| DUKHCONP1AZ6ARRF3655 |  | Installation of Pumps Protection cabinets | 20d | 2014-07-14 | 2014-08-09 | DUKHCONP1AZ6ARRF3645 SS+7d, DUKHCONP1AZ5ARRF3655, DUKHCONP1AZ6ARRF3645 FF+7d, DUKHCONP1AZ6ARRF3650 SS+8d, DUKHCONP1AZ6ARRF3650 FF+8d | -3d |
| DUKHCONP1AZ6ARRF3660 |  | Installation of Access Ladder | 15d | 2014-07-26 | 2014-08-14 | DUKHCONP1AZ6ARRF3655 SS+5d, DUKHCONP1AZ6ARRF3655 FF+5d | 2d |
|  | 15 | **ELEVATION** |  | 2014-05-25 | 2014-07-15 |  |  |
| DUKHCONP1AZ6AREL3665 |  | External Plastering | 25d | 2014-05-25 | 2014-06-22 | DUKHCONP1AZ6ARRF3605 SS+7d, DUKHCONP1AZ6STRF2065 FF+7d, DUKHCONP1AZ6ARFF3305 FF+7d, DUKHCONP1AZ6STRF2065 SS+7d, DUKHCONP1AZ6ARFF3305 SS+7d, DUKHCONP1AZ5AREL3665 | 23d |
| DUKHCONP1AZ6AREL3670 |  | External stone cladding works | 20d | 2014-06-11 | 2014-07-03 | DUKHCONP1AZ6AREL3665 FF+10d, DUKHCONP1AZ6AREL3665 SS+10d, DUKHCONP1AZ5AREL3670 | 25d |
| DUKHCONP1AZ6AREL3680 |  | External Painting | 20d | 2014-06-23 | 2014-07-15 | DUKHCONP1AZ6AREL3670 SS+10d, DUKHCONP1AZ6AREL3670 FF+10d, DUKHCONP1AZ6ARRF3695 SS+4d, DUKHCONP1AZ5AREL3680, DUKHCONP1AZ6ARRF3695 FF+4d | 25d |
|  | 20 | **MEP WORKS** |  | 2013-11-30 | 2014-09-13 |  |  |
|  | 10 | **ELECTRICAL WORKS** |  | 2014-03-13 | 2014-09-13 |  |  |
|  | 10 | **GROUND FLOOR** |  | 2014-03-13 | 2014-07-20 |  |  |
| DUKHCONP1AZ6ELGF4000 |  | Fixing of wall conduits & switch socket boxes | 25d | 2014-03-13 | 2014-04-10 | DUKHCONP1AZ6ARGF3000 FF+5d, DUKHCONP1AZ6ARGF3000 SS+5d | 3d |
| DUKHCONP1AZ6ELGF4005 |  | Cable tray & trunking installation | 20d | 2014-03-25 | 2014-04-16 | DUKHCONP1AZ6ELGF4000 FF+5d, DUKHCONP1AZ6ELGF4000 SS+5d, DUKHCONP1AZ5ELGF4005 | 21d |
| DUKHCONP1AZ6ELGF4010 |  | Installation of wiring & Main Cabling | 25d | 2014-04-02 | 2014-04-30 | DUKHCONP1AZ6ELGF4005 SS+7d, DUKHCONP1AZ6ELGF4005 FF+7d | 21d |
| DUKHCONP1AZ6ELGF4015 |  | Install. of CAMS & Fire Fighting Accessories | 25d | 2014-06-04 | 2014-07-02 | DUKHCONP1AZ6ARGF3055 FF+7d, DUKHCONP1AZ6ARGF3060 FF+7d, DUKHCONP1AZ6ARGF3060 SS+7d, DUKHCONP1AZ5ELGF4015, DUKHCONP1AZ6ARGF3055 SS+7d | 6d |
| DUKHCONP1AZ6ELGF4020 |  | Installation of DBS,MCCB Accessories. | 20d | 2014-06-10 | 2014-07-02 | DUKHCONP1AZ6ELGF4010 SS+5d, DUKHCONP1AZ6ARGF3060 SS+7d, DUKHCONP1AZ6ELGF4010 FF+5d, DUKHCONP1AZ6ARGF3055 FF+7d, DUKHCONP1AZ6ARGF3055 SS+7d, DUKHCONP1AZ6ARGF3060 FF+7d | -6d |
| DUKHCONP1AZ6ELGF4025 |  | Installation of Lighting fixtures & Accessories | 25d | 2014-06-22 | 2014-07-20 | DUKHCONP1AZ6ARGF3055 SS+10d, DUKHCONP1AZ6ARGF3060 SS+10d, DUKHCONP1AZ5ELGF4025, DUKHCONP1AZ6ELGF4020 FF+10d, DUKHCONP1AZ6ARGF3055 FF+10d, DUKHCONP1AZ6ARGF3060 FF+10d, DUKHCONP1AZ6ELGF4020 SS+10d | 1d |
| DUKHCONP1AZ6ELGF4030 |  | Installation of Telephone System | 20d | 2014-06-22 | 2014-07-14 | DUKHCONP1AZ5ELGF4030, DUKHCONP1AZ6ELGF4020 SS+10d, DUKHCONP1AZ6ARGF3060 SS+5d, DUKHCONP1AZ6ELGF4020 FF+10d, DUKHCONP1AZ6ARGF3060 FF+5d | -6d |
|  | 15 | **FIRST FLOORS** |  | 2014-04-24 | 2014-08-26 |  |  |
| DUKHCONP1AZ6ELFF4035 |  | Fixing of wall conduits & switch socket boxes | 25d | 2014-04-24 | 2014-05-22 | DUKHCONP1AZ6ARFF3300 FF+5d, DUKHCONP1AZ6ARFF3300 SS+5d | -13d |
| DUKHCONP1AZ6ELFF4040 |  | Cable tray & trunking installation | 20d | 2014-05-06 | 2014-05-28 | DUKHCONP1AZ6ELFF4035 SS+5d, DUKHCONP1AZ6ELFF4035 FF+5d | 5d |
| DUKHCONP1AZ6ELFF4045 |  | Installation of wiring & Main Cabling | 25d | 2014-05-17 | 2014-06-14 | DUKHCONP1AZ6ELFF4040 FF+7d, DUKHCONP1AZ6ELFF4040 SS+7d, DUKHCONP1AZ5ELFF4045 | 3d |
| DUKHCONP1AZ6ELFF4055 |  | Install. of CAMS & Fire Fighting Accessories | 25d | 2014-07-14 | 2014-08-14 | DUKHCONP1AZ6ARFF3360 FF+7d, DUKHCONP1AZ6ELGF4015 FF+5d, DUKHCONP1AZ6ELGF4015 SS+5d, DUKHCONP1AZ6ARFF3360 SS+7d, DUKHCONP1AZ5ELFF4055 | -23d |
| DUKHCONP1AZ6ELFF4050 |  | Installation of Telephone System | 25d | 2014-07-15 | 2014-08-16 | DUKHCONP1AZ6ELGF4030 SS+10d, DUKHCONP1AZ6ARFF3360 SS+5d, DUKHCONP1AZ6MSEX5010, DUKHCONP1AZ6ELGF4030 FF+10d, DUKHCONP1AZ6ARFF3360 FF+5d | -16d |
| DUKHCONP1AZ6ELFF4060 |  | Installation of DBS,MCCB Accessories. | 20d | 2014-07-17 | 2014-08-12 | DUKHCONP1AZ5ELFF4060, DUKHCONP1AZ6ELFF4045 SS+5d, DUKHCONP1AZ6ARFF3360 SS+8d, DUKHCONP1AZ6ELFF4045 FF+5d, DUKHCONP1AZ6ARFF3360 FF+5d | -21d |
| DUKHCONP1AZ6ELFF4065 |  | Installation of Lighting fixtures & Accessories | 25d | 2014-07-26 | 2014-08-26 | DUKHCONP1AZ5ELFF4065, DUKHCONP1AZ6ELFF4060 SS+5d, DUKHCONP1AZ6ELGF4025 FF+5d, DUKHCONP1AZ6ARFF3360 FF+10d, DUKHCONP1AZ6ELGF4025 SS+5d, DUKHCONP1AZ6ELFF4060 FF+5d, DUKHCONP1AZ6ARFF3360 SS+10d | -23d |
|  | 20 | **ROOF** |  | 2014-08-12 | 2014-09-13 |  |  |
| DUKHCONP1AZ6ELRF4070 |  | Installation of Isolator | 18d | 2014-08-12 | 2014-09-01 | DUKHCONP1AZ6ARRF3645 SS+7d, DUKHCONP1AZ6ELFF4045 SS+10d, DUKHCONP1AZ6ELFF4065 SS+5d, DUKHCONP1AZ6ELFF4050 SS+5d, DUKHCONP1AZ6ELFF4045 FF+10d, DUKHCONP1AZ6ELFF4065 FF+5d, DUKHCONP1AZ6ELFF4050 FF+7d, DUKHCONP1AZ6ARRF3645 FF+7d | -23d |
| DUKHCONP1AZ6ELRF4075 |  | Installation of TV Dish Antenna | 23d | 2014-08-18 | 2014-09-13 | DUKHCONP1AZ6ELRF4070 FF+5d, DUKHCONP1AZ6ELRF4070 SS+5d | -23d |
|  | 15 | **PLUMBING, DRAINAGE & FIRE FIGHTING WORKS** |  | 2013-11-30 | 2014-09-13 |  |  |
|  | 10 | **GROUND FLOOR** |  | 2013-11-30 | 2014-07-20 |  |  |
| DUKHCONP1AZ6PLUG4300 |  | Drainage / Storm Pipes in Grade Slab | 16d | 2013-11-30 | 2013-12-17 | DUKHCONP1AZ6STUG1040 FF+11d, DUKHCONP1AZ6STUG1040 SS+11d | -24d |
| DUKHCONP1AZ6PLGF4305 |  | Installation of Plumbing pipes & testing | 18d | 2014-03-24 | 2014-04-13 | DUKHCONP1AZ5PLGF4305, DUKHCONP1AZ6ARGF3000 FF+7d, DUKHCONP1AZ6ARGF3000 SS+7d | -6d |
| DUKHCONP1AZ6PLGF4310 |  | Installation of Drainage pipes &testing | 18d | 2014-03-24 | 2014-04-13 | DUKHCONP1AZ6PLGF4305 FF, DUKHCONP1AZ6ARGF3000 SS+7d, DUKHCONP1AZ6ARGF3000 FF+7d, DUKHCONP1AZ6PLGF4305 SS | -3d |
| DUKHCONP1AZ6PLGF4315 |  | Sanitary Fittings & Accessories | 20d | 2014-06-22 | 2014-07-14 | DUKHCONP1AZ6ARGF3065 FF+5d, DUKHCONP1AZ6PLGF4310 FF+5d, DUKHCONP1AZ6PLGF4310 SS+5d, DUKHCONP1AZ6ARGF3065 SS+5d, DUKHCONP1AZ5PLGF4315 | 21d |
| DUKHCONP1AZ6PLGF4320 |  | Installation of Water Heater | 15d | 2014-07-03 | 2014-07-20 | DUKHCONP1AZ6PLGF4315 FF+5d, DUKHCONP1AZ6ARGF3060 FF+5d, DUKHCONP1AZ5PLGF4320, DUKHCONP1AZ6PLGF4315 SS+5d, DUKHCONP1AZ6ARGF3060 SS+5d | 21d |
|  | 15 | **FIRST FLOORS** |  | 2014-05-06 | 2014-08-21 |  |  |
| DUKHCONP1AZ6PLFF4325 |  | Installation of Plumbing pipes & testing | 18d | 2014-05-06 | 2014-05-26 | DUKHCONP1AZ6ARFF3300 FF+8d, DUKHCONP1AZ6ARFF3300 SS+7d | -24d |
| DUKHCONP1AZ6PLFF4330 |  | Installation of Drainage pipes & testing | 18d | 2014-05-06 | 2014-05-26 | DUKHCONP1AZ6ARFF3300 FF+7d, DUKHCONP1AZ6PLFF4325 FF, DUKHCONP1AZ6ARFF3300 SS+7d, DUKHCONP1AZ6PLFF4325 SS, DUKHCONP1AZ5PLFF4330 | -2d |

| ID | WBS | Task | Duration | Start | Finish | Predecessors | Total float |
| --- | --- | --- | --- | --- | --- | --- | --- |
| DUKHCONP1AZ6PLFF4335 |  | Sanitary Fittings & Accessories | 20d | 2014-07-21 | 2014-08-16 | DUKHCONP1AZ6PLFF4330 FF+5d, DUKHCONP1AZ6ARFF3365 SS, DUKHCONP1AZ6ARFF3365 FF+5d, DUKHCONP1AZ6PLFF4330 SS+5d | -19d |
| DUKHCONP1AZ6PLFF4340 |  | Installation of Water Heater | 15d | 2014-08-05 | 2014-08-21 | DUKHCONP1AZ6ARFF3360 FF+5d, DUKHCONP1AZ6PLFF4335 FF+5d, DUKHCONP1AZ6PLFF4335 SS+5d, DUKHCONP1AZ6ARFF3360 SS+5d, DUKHCONP1AZ5PLFF4340 | -19d |
|  | 20 | **ROOF** |  | 2014-05-25 | 2014-09-13 |  |  |
| DUKHCONP1AZ6PLRF4345 |  | Installation of Plumbing pipes & fittings | 15d | 2014-05-25 | 2014-06-10 | DUKHCONP1AZ6ARRF3605 FF+7d, DUKHCONP1AZ6ARRF3605 SS+7d | 32d |
| DUKHCONP1AZ6PLRF4350 |  | Installation of Rain water Pipes | 15d | 2014-07-08 | 2014-07-24 | DUKHCONP1AZ6PLFF4330 SS+5d, DUKHCONP1AZ6ARRF3645 SS+5d, DUKHCONP1AZ6ARRF3645 FF+5d, DUKHCONP1AZ6PLFF4330 FF+5d, DUKHCONP1AZ6AREL3665 FF+7d, DUKHCONP1AZ6PLRF4345 FF+8d, DUKHCONP1AZ5PLRF4350, DUKHCONP1AZ6PLRF4345 SS+8d, DUKHCONP1AZ6AREL3665 SS+7d | 2d |
| DUKHCONP1AZ6PLRF4355 |  | Roof Water Tank Installation & Connections | 25d | 2014-08-16 | 2014-09-13 | DUKHCONP1AZ6PLRF4350 FF+5d, DUKHCONP1AZ5PLRF4355, DUKHCONP1AZ6PLRF4345 FF+8d, DUKHCONP1AZ6PLRF4350 SS+5d, DUKHCONP1AZ6PLFF4340 FF+5d, DUKHCONP1AZ6ARRF3655 FF+5d, DUKHCONP1AZ6PLRF4345 SS+8d, DUKHCONP1AZ6PLFF4340 SS+5d, DUKHCONP1AZ6ARRF3655 SS+5d | -23d |
|  | 20 | **AC WORKS** |  | 2014-04-13 | 2014-09-10 |  |  |
|  | 10 | **GROUND FLOOR** |  | 2014-04-13 | 2014-07-17 |  |  |
| DUKHCONP1AZ6ACGF4600 |  | Installation AC Pipes | 20d | 2014-04-13 | 2014-05-05 | DUKHCONP1AZ6ARGF3005 SS+7d, DUKHCONP1AZ5ACGF4600, DUKHCONP1AZ6ARGF3005 FF+7d | 25d |
| DUKHCONP1AZ6ACGF4605 |  | Fixing of Ventilation Equipments | 25d | 2014-06-04 | 2014-07-02 | DUKHCONP1AZ6ARGF3060 SS+7d, DUKHCONP1AZ5ACGF4605, DUKHCONP1AZ6ARGF3055 SS+7d, DUKHCONP1AZ6ARGF3055 FF+7d, DUKHCONP1AZ6ACGF4600 FF+10d, DUKHCONP1AZ6ACGF4600 SS+10d, DUKHCONP1AZ6ARGF3060 FF+7d | 8d |
| DUKHCONP1AZ6ACGF4610 |  | Fixing of Split AC | 20d | 2014-06-25 | 2014-07-17 | DUKHCONP1AZ5ACGF4610, DUKHCONP1AZ6ACGF4605 SS+13d, DUKHCONP1AZ6ACGF4605 FF+13d | 8d |
|  | 15 | **FIRST FLOORS** |  | 2014-05-27 | 2014-08-30 |  |  |
| DUKHCONP1AZ6ACFF4615 |  | Installation AC Pipes | 20d | 2014-05-27 | 2014-06-18 | DUKHCONP1AZ6ARFF3305 FF+7d, DUKHCONP1AZ6ARFF3305 SS+7d, DUKHCONP1AZ5ACFF4615 | 3d |
| DUKHCONP1AZ6ACFF4620 |  | Fixing of Ventilation Equipments | 25d | 2014-07-14 | 2014-08-14 | DUKHCONP1AZ5ACFF4620, DUKHCONP1AZ6ACFF4615 FF+10d, DUKHCONP1AZ6ARFF3360 SS+7d, DUKHCONP1AZ6ARFF3360 FF+7d, DUKHCONP1AZ6ACFF4615 SS+10d | -22d |
| DUKHCONP1AZ6ACFF4625 |  | Fixing of Split AC | 20d | 2014-08-07 | 2014-08-30 | DUKHCONP1AZ6ACFF4620 FF+13d, DUKHCONP1AZ6ACFF4620 SS+13d, DUKHCONP1AZ5ACFF4625 | -22d |
|  | 20 | **ROOF** |  | 2014-06-29 | 2014-09-10 |  |  |
| DUKHCONP1AZ6ACRF4630 |  | Installation of Refrigerant Pipes | 25d | 2014-06-29 | 2014-07-27 | DUKHCONP1AZ6ACFF4615 SS+7d, DUKHCONP1AZ6ACFF4615 FF+7d, DUKHCONP1AZ6ACGF4600 FF+7d, DUKHCONP1AZ6ACGF4600 SS+7d, DUKHCONP1AZ6ARRF3645 SS+7d, DUKHCONP1AZ5ACRF4630, DUKHCONP1AZ6ARRF3645 FF+7d | 10d |
| DUKHCONP1AZ6ACRF4635 |  | Installation of Condensing Unit | 25d | 2014-08-13 | 2014-09-10 | DUKHCONP1AZ6ACGF4610 FF+5d, DUKHCONP1AZ5ACRF4635, DUKHCONP1AZ6ACRF4630 FF+5d, DUKHCONP1AZ6ACFF4625 FF+5d, DUKHCONP1AZ6ACRF4630 SS+5d, DUKHCONP1AZ6ACGF4610 SS+5d, DUKHCONP1AZ6ACFF4625 SS+5d | -21d |
|  | 25 | **EXTERNAL WORKS** |  | 2014-04-20 | 2014-09-08 |  |  |
|  | 10 | **MISCELLANEOUS** |  | 2014-04-20 | 2014-09-08 |  |  |
| DUKHCONP1AZ6MSEX5000 |  | Construction of Manholes | 25d | 2014-04-20 | 2014-05-18 | DUKHCONP1AZ6STRF2055 SS+10d, DUKHCONP1AZ6PLGF4310 FF+10d, DUKHCONP1AZ6PLGF4310 SS+10d, DUKHCONP1AZ6STRF2055 FF+10d | -16d |
| DUKHCONP1AZ6MSEX5005 |  | Construction of Soak pit, Chambers | 25d | 2014-05-04 | 2014-06-01 | DUKHCONP1AZ6MSEX5000 FF+12d, DUKHCONP1AZ6MSEX5000 SS+12d | -16d |
| DUKHCONP1AZ6MSEX5015 |  | Construction of grease Trap | 20d | 2014-05-24 | 2014-06-15 | DUKHCONP1AZ6MSEX5005 SS+12d, DUKHCONP1AZ6MSEX5005 FF+12d | -16d |
| DUKHCONP1AZ6MSEX5020 |  | Construction Entrance Ramp | 25d | 2014-06-10 | 2014-07-08 | DUKHCONP1AZ6STRF2055 FF, DUKHCONP1AZ5MSEX5020, DUKHCONP1AZ6STRF2055 SS | -8d |
| DUKHCONP1AZ6MSEX5010 |  | Telephone cable laying | 25d | 2014-06-16 | 2014-07-14 | DUKHCONP1AZ6MSEX5015 | -16d |
| DUKHCONP1AZ6MSEX5025 |  | SS.Handrails and Balustrades | 20d | 2014-06-28 | 2014-07-20 | DUKHCONP1AZ6MSEX5020 SS+10d, DUKHCONP1AZ6MSEX5020 FF+10d | -5d |
| DUKHCONP1AZ6MSEX5335 |  | Aluminum Roll-up Shutter with 2m Wall | 25d | 2014-08-11 | 2014-09-08 | DUKHCONI1AZ3BWGL5325, DUKHCONP1AZ5MSEX5335 SS+7d | 60d |
|  | 15 | **WATER TANK ENCLOSURE** |  | 2014-05-19 | 2014-09-03 |  |  |
| DUKHCONP1AZ6WEEX5030 |  | Excavation | 20d | 2014-05-19 | 2014-06-10 | DUKHCONP1AZ5WEEX5030, DUKHCONP1AZ6STRF2055 SS+5d, DUKHCONP1AZ6STRF2055 FF+5d | 9d |
| DUKHCONP1AZ6WEEX5035 |  | Construction of Raft | 25d | 2014-05-25 | 2014-06-22 | DUKHCONP1AZ6WEEX5030 FF+10d, DUKHCONP1AZ6WEEX5030 SS+5d | 9d |
| DUKHCONP1AZ6WEEX5040 |  | Block works & Plastering | 25d | 2014-06-03 | 2014-07-01 | DUKHCONP1AZ6WEEX5035 FF+8d, DUKHCONP1AZ6WEEX5035 SS+8d | 9d |
| DUKHCONP1AZ6WEEX5045 |  | Flooring & Painting | 25d | 2014-06-10 | 2014-07-08 | DUKHCONP1AZ6WEEX5040 FF+6d, DUKHCONP1AZ6WEEX5040 SS+6d | 9d |
| DUKHCONP1AZ6WEEX5050 |  | Installation of Steel Gate | 20d | 2014-07-09 | 2014-07-31 | DUKHCONP1AZ6WEEX5045 SS+5d, DUKHCONP1AZ6WEEX5045 FF+6d, DUKHCONP1AZ6MSEX5025 FF+10d | -5d |
| DUKHCONP1AZ6WEEX5060 |  | Structural steel & SS Shed cover installation | 25d | 2014-07-26 | 2014-08-26 | DUKHCONP1AZ5WEEX5060, DUKHCONP1AZ6WEEX5050 FF+10d, DUKHCONP1AZ6MSEX5025 FF+10d, DUKHCONP1AZ6WEEX5050 SS+5d | -14d |
| DUKHCONP1AZ6WEEX5065 |  | Install. of Water Tank,Chiller,Pump & Meter | 25d | 2014-08-06 | 2014-09-03 | DUKHCONP1AZ5WEEX5065, DUKHCONP1AZ6WEEX5060 SS+6d, DUKHCONP1AZ6MSEX5015 FF+5d, DUKHCONP1AZ6WEEX5060 FF+6d, DUKHCONP1AZ6MSEX5015 SS+5d, DUKHCONP1AZ6PLRF4350 SS+5d, DUKHCONP1AZ6PLRF4350 FF+5d | -15d |
|  | 20 | **HARD LANDSCAPING** |  | 2014-06-24 | 2014-08-07 |  |  |
| DUKHCONP1AZ6HDEX5090 |  | kerb works | 20d | 2014-06-24 | 2014-07-16 | DUKHCONP1AZ6MSEX5020 SS+7d, DUKHCONP1AZ6MSEX5020 FF+7d, DUKHCONP1AZ5HDEX5090 | -8d |
| DUKHCONP1AZ6HDEX5095 |  | Cobble Stone Works | 20d | 2014-07-06 | 2014-07-28 | DUKHCONP1AZ6HDEX5090 FF+10d, DUKHCONP1AZ6HDEX5090 SS+10d | -8d |
| DUKHCONP1AZ6HDEX5100 |  | Interlock works | 20d | 2014-07-13 | 2014-08-07 | DUKHCONP1AZ6HDEX5095 SS+6d, DUKHCONP1AZ6HDEX5095 FF+6d | -8d |
|  | 25 | **SOFT LANDSCAPING** |  | 2014-07-19 | 2014-08-26 |  |  |
| DUKHCONP1AZ6SLEX5105 |  | Laying of Grass/ green area | 25d | 2014-07-19 | 2014-08-19 | DUKHCONP1AZ6HDEX5100 SS+5d, DUKHCONP1AZ6HDEX5100 FF+5d | -8d |
| DUKHCONP1AZ6SLEX5110 |  | Laying of Palm tree | 25d | 2014-07-26 | 2014-08-26 | DUKHCONP1AZ6SLEX5105 SS+6d, DUKHCONP1AZ6SLEX5105 FF+6d | -8d |
|  | 30 | **TESTING AND COMMISSIONING** |  | 2014-09-15 | 2014-10-15 |  |  |
| DUKHCONP1AZ6ACTC8000 |  | Pre-Commissioning & Testing of AC Works | 25d | 2014-09-15 | 2014-10-15 | DUKHCONP1AZ6HDEX5100, DUKHCONP1AZ6ACRF4635, DUKHCONP1AZ6ARRF3620, DUKHCONP1AZ6AREL3680, DUKHCONP1AZ6ACFF4625, DUKHCONP1AZ6MSEX5005, DUKHCONP1AZ6SLEX5105, DUKHCONP1AZ6ARGF3095, DUKHCONP1AZ6ARRF3660, DUKHCONP1AZ5ACTC8000, DUKHCONP1AZ6SLEX5110, DUKHCONP1AZ6ARFF3395 | -24d |
| DUKHCONP1AZ6ELTC8010 |  | Pre-Commissioning & Testing of Electrical Works | 25d | 2014-09-15 | 2014-10-15 | DUKHCONP1AZ6ELGF4015, DUKHCONP1AZ6ELGF4030, DUKHCONP1AZ6AREL3680, DUKHCONP1AZ6ELFF4065, DUKHCONP1AZ6ARRF3655, DUKHCONP1AZ6MSEX5005, DUKHCONP1AZ6SLEX5105, DUKHCONP1AZ6ELRF4075, DUKHCONP1AZ5ELTC8010, DUKHCONP1AZ6HDEX5100, DUKHCONP1AZ6ELFF4055, DUKHCONP1AZ6ELFF4050, DUKHCONP1AZ6ELGF4025, DUKHCONP1AZ6ARGF3095, DUKHCONP1AZ6ARRF3660, DUKHCONP1AZ6SLEX5110, DUKHCONP1AZ6ARRF3620, DUKHCONP1AZ6ARFF3395 | -24d |
| DUKHCONP1AZ6PLTC8005 |  | Pre-Commissioning & Testing of Plumbing Works | 25d | 2014-09-15 | 2014-10-15 | DUKHCONP1AZ6PLRF4350, DUKHCONP1AZ6PLRF4355, DUKHCONP1AZ6ARFF3395, DUKHCONP1AZ6ARRF3655, DUKHCONP1AZ5PLTC8005, DUKHCONP1AZ6MSEX5005, DUKHCONP1AZ6SLEX5110, DUKHCONP1AZ6ARGF3095, DUKHCONP1AZ6SLEX5105, DUKHCONP1AZ6WEEX5065, DUKHCONP1AZ6HDEX5100, DUKHCONP1AZ6PLGF4320, DUKHCONP1AZ6ARRF3620, DUKHCONP1AZ6ARRF3660, DUKHCONP1AZ6AREL3680 | -24d |
|  | 40 | **ZONE - 7 (4 Twin Villas)** |  | 2013-08-25 | 2014-11-13 |  |  |
|  | 10 | **STRUCTURAL WORKS** |  | 2013-08-25 | 2014-06-17 |  |  |
|  | 10 | **SUB STRUCTURE** |  | 2013-08-25 | 2014-02-05 |  |  |
|  | 10 | **UPTO GRADE SLAB** |  | 2013-08-25 | 2014-02-05 |  |  |
| DUKHCONP1AZ7STUG1000 |  | Footing Excavation | 25d | 2013-08-25 | 2013-09-22 | DUKHCONP1AGNSP005000, DUKHCONP1AZ6STUG1000 | -11d |
| DUKHCONP1AZ7STUG1005 |  | Footing Antitermite | 23d | 2013-09-05 | 2013-10-01 | DUKHCONP1AZ7STUG1000 SS+10d, DUKHCONP1AZ7STUG1000 FF+5d | -11d |
| DUKHCONP1AZ7STUG1010 |  | Footing Blinding | 23d | 2013-09-09 | 2013-10-05 | DUKHCONP1AZ7STUG1005 SS+3d, DUKHCONP1AZ7STUG1005 FF+3d | -11d |
| DUKHCONP1AZ7STUG1015 |  | Footing Waterproofing & Screed | 25d | 2013-09-15 | 2013-10-13 | DUKHCONP1AZ7STUG1010 FF+5d, DUKHCONP1AZ7STUG1010 SS+5d | -11d |
| DUKHCONP1AZ7STUG1020 |  | Construction of foundations | 20d | 2013-09-30 | 2013-10-24 | DUKHCONP1AZ7STUG1015 SS+7d, DUKHCONP1AZ7STUG1015 FF+8d | -11d |
| DUKHCONP1AZ7STUG1025 |  | Construction of neck of columns | 25d | 2013-10-27 | 2013-11-24 | DUKHCONP1AZ7STUG1020 SS+8d, DUKHCONP1AZ7STUG1020 FF+7d, DUKHCONP1AZ6STUG1025 | -24d |
| DUKHCONP1AZ7STUG1030 |  | Waterproofing Footing & Neck Column | 25d | 2013-11-05 | 2013-12-03 | DUKHCONP1AZ7STUG1025 FF+8d, DUKHCONP1AZ7STUG1025 SS+8d | -24d |
| DUKHCONP1AZ7STUG1035 |  | Backfilling Upto Grade Beam Bottom | 25d | 2013-11-19 | 2013-12-17 | DUKHCONP1AZ7STUG1030 FF+12d, DUKHCONP1AZ7STUG1030 SS+12d, DUKHCONP1AZ6STUG1035 | -24d |
| DUKHCONP1AZ7STUG1040 |  | Construction of Grade Beams | 25d | 2013-12-05 | 2014-01-04 | DUKHCONP1AZ7STUG1035 SS+14d, DUKHCONP1AZ7STUG1035 FF+14d | -24d |
| DUKHCONP1AZ7STUG1045 |  | Construction of slab on grade | 25d | 2014-01-08 | 2014-02-05 | DUKHCONP1AZ7PLUG4300 FF+8d, DUKHCONP1AZ6STUG1045, DUKHCONP1AZ7STUG1040 SS+10d, DUKHCONP1AZ7PLUG4300 SS+8d, DUKHCONP1AZ7STUG1040 FF+10d | -24d |
|  | 15 | **SUPERSTRUCTURE** |  | 2014-01-25 | 2014-06-17 |  |  |
|  | 10 | **GROUND FLOOR** |  | 2014-01-25 | 2014-03-22 |  |  |
| DUKHCONP1AZ7STGF2000 |  | Column-Rebar & Formwork | 25d | 2014-01-25 | 2014-02-23 | DUKHCONP1AZ6STGF2000, DUKHCONP1AZ7STUG1045 FF+7d, DUKHCONP1AZ7STUG1045 SS+14d | -24d |
| DUKHCONP1AZ7STGF2005 |  | Column-Concrete | 24d | 2014-02-02 | 2014-03-02 | DUKHCONP1AZ7STGF2000 SS+7d, DUKHCONP1AZ7STGF2000 FF+2d | -22d |
| DUKHCONP1AZ7STGF2010 |  | Beam, Stairs ,Slab-Rebar & Formwork | 25d | 2014-02-18 | 2014-03-18 | DUKHCONP1AZ7STGF2005 FF+14d, DUKHCONP1AZ7STGF2005 SS+2d | -22d |
| DUKHCONP1AZ7STGF2015 |  | Beam, Stairs ,Slab-Concrete | 14d | 2014-03-06 | 2014-03-22 | DUKHCONP1AZ7STGF2010 FF+3d, DUKHCONP1AZ6STGF2015, DUKHCONP1AZ7STGF2010 SS+10d | -22d |
|  | 15 | **FIRST FLOORS** |  | 2014-03-09 | 2014-05-04 |  |  |
| DUKHCONP1AZ7STFF2020 |  | Column-Rebar & Formwork | 25d | 2014-03-09 | 2014-04-06 | DUKHCONP1AZ6STFF2020, DUKHCONP1AZ7STGF2015 SS+2d, DUKHCONP1AZ7STGF2015 FF+5d | -22d |
| DUKHCONP1AZ7STFF2025 |  | Column-Concrete | 24d | 2014-03-18 | 2014-04-14 | DUKHCONP1AZ7STFF2020 FF+2d, DUKHCONP1AZ7STFF2020 SS+8d | -20d |
| DUKHCONP1AZ7STFF2030 |  | Beam, Stairs ,Slab-Rebar & Formwork | 25d | 2014-04-02 | 2014-04-30 | DUKHCONP1AZ7STFF2025 FF+14d, DUKHCONP1AZ7STFF2025 SS+2d | -20d |

| ID | WBS | Task | Duration | Start | Finish | Predecessors | Total float |
| --- | --- | --- | --- | --- | --- | --- | --- |
| DUKHCONP1AZ7STFF2035 |  | Beam, Stairs ,Slab-Concrete | 14d | 2014-04-19 | 2014-05-04 | DUKHCONP1AZ6STFF2035, DUKHCONP1AZ7STFF2030 SS+10d, DUKHCONP1AZ7STFF2030 FF+3d | -20d |
|  | 20 | **ROOF** |  | 2014-04-21 | 2014-06-17 |  |  |
| DUKHCONP1AZ7STRF2040 |  | Column-Rebar & Formwork | 18d | 2014-04-21 | 2014-05-11 | DUKHCONP1AZ7STFF2035 FF+3d, DUKHCONP1AZ7STFF2035 SS+2d, DUKHCONP1AZ6STRF2040 | -16d |
| DUKHCONP1AZ7STRF2045 |  | Column-Concrete | 17d | 2014-04-24 | 2014-05-13 | DUKHCONP1AZ7STRF2040 SS+3d, DUKHCONP1AZ7STRF2040 FF+1d | -16d |
| DUKHCONP1AZ7STRF2050 |  | Slab-Rebar & Formwork - Head Room | 20d | 2014-04-27 | 2014-05-19 | DUKHCONP1AZ7STRF2045 FF+5d, DUKHCONP1AZ7STRF2045 SS+2d | -16d |
| DUKHCONP1AZ7STRF2055 |  | Slab-Concrete-Head room | 13d | 2014-05-07 | 2014-05-21 | DUKHCONP1AZ7STRF2050 FF+2d, DUKHCONP1AZ7STRF2050 SS+5d, DUKHCONP1AZ6STRF2055 | -16d |
| DUKHCONP1AZ7STRF2060 |  | Construction of Parapets | 25d | 2014-05-10 | 2014-06-07 | DUKHCONP1AZ7STRF2055 FF+14d, DUKHCONP1AZ7STRF2055 SS+2d | 32d |
| DUKHCONP1AZ7STRF2065 |  | Construction of up stands/Plinth | 25d | 2014-05-20 | 2014-06-17 | DUKHCONP1AZ7STRF2060 FF+5d, DUKHCONP1AZ7STRF2060 SS+5d, DUKHCONP1AZ6STRF2065 | 28d |
|  | 15 | **FINISHING WORKS** |  | 2014-04-06 | 2014-10-15 |  |  |
|  | 10 | **INTERNAL FINISHES** |  | 2014-04-06 | 2014-10-15 |  |  |
|  | 10 | **GROUND FLOOR** |  | 2014-04-06 | 2014-09-18 |  |  |
| DUKHCONP1AZ7ARGF3000 |  | Block work | 25d | 2014-04-06 | 2014-05-04 | DUKHCONP1AZ6ARGF3000, DUKHCONP1AZ7STGF2015 SS+21d, DUKHCONP1AZ7STGF2015 FF+21d | -6d |
| DUKHCONP1AZ7ARGF3005 |  | Plastering work | 25d | 2014-04-28 | 2014-05-26 | DUKHCONP1AZ7ARGF3000 SS+7d, DUKHCONP1AZ7ARGF3000 FF+7d, DUKHCONP1AZ6ARGF3005, DUKHCONP1AZ7PLGF4305 SS+5d, DUKHCONP1AZ7PLGF4305 FF+5d, DUKHCONP1AZ7ELGF4000 FF+5d, DUKHCONP1AZ7ELGF4000 SS+5d | -6d |
| DUKHCONP1AZ7ARGF3010 |  | Flooring screed | 21d | 2014-05-06 | 2014-05-29 | DUKHCONP1AZ7ARGF3005 SS+7d, DUKHCONP1AZ7ARGF3005 FF+3d | 2d |
| DUKHCONP1AZ7ARGF3015 |  | Wet area waterproofing & Protection Screed | 15d | 2014-05-15 | 2014-06-01 | DUKHCONP1AZ7ARGF3005 FF+5d, DUKHCONP1AZ7ARGF3005 SS+7d, DUKHCONP1AZ6ARGF3015 | -6d |
| DUKHCONP1AZ7ARGF3030 |  | Paint First coat | 25d | 2014-05-18 | 2014-06-15 | DUKHCONP1AZ6ARGF3030, DUKHCONP1AZ7ARGF3005 FF+14d, DUKHCONP1AZ7ARGF3005 SS+14d | 5d |
| DUKHCONP1AZ7ARGF3020 |  | Ceramic Wall Tiling | 25d | 2014-05-21 | 2014-06-18 | DUKHCONP1AZ7PLGF4305 SS+4d, DUKHCONP1AZ7PLGF4310 SS+4d, DUKHCONP1AZ7ARGF3015 FF+5d, DUKHCONP1AZ6ARGF3020, DUKHCONP1AZ7ARGF3015 SS+5d, DUKHCONP1AZ7PLGF4305 FF+4d, DUKHCONP1AZ7PLGF4310 FF+4d | -6d |
| DUKHCONP1AZ7ARGF3025 |  | Porcelain Tile flooring | 25d | 2014-05-27 | 2014-06-24 | DUKHCONP1AZ6ARGF3025, DUKHCONP1AZ7ARGF3020 SS+5d, DUKHCONP1AZ7ARGF3020 FF+5d, DUKHCONP1AZ7ARGF3010 SS+10d, DUKHCONP1AZ7ARGF3010 FF+10d | -6d |
| DUKHCONP1AZ7ARGF3045 |  | Fixing of Suspension systems | 20d | 2014-06-14 | 2014-07-06 | DUKHCONP1AZ7ARGF3025 SS+10d, DUKHCONP1AZ7ARGF3030 FF+7d, DUKHCONP1AZ7ELGF4010 FF+5d, DUKHCONP1AZ7ARGF3030 SS+7d, DUKHCONP1AZ6ARGF3045, DUKHCONP1AZ7ARGF3025 FF+10d, DUKHCONP1AZ7ELGF4010 SS+5d | -6d |
| DUKHCONP1AZ7ARGF3035 |  | Slate Tile Flooring & Skirting | 15d | 2014-06-16 | 2014-07-02 | DUKHCONP1AZ7ARGF3010 FF+13d, DUKHCONP1AZ7ARGF3025 FF+7d, DUKHCONP1AZ7ARGF3010 SS+13d, DUKHCONP1AZ7ARGF3025 SS+13d | -1d |
| DUKHCONP1AZ7ARGF3055 |  | Aluminum tile false ceiling | 25d | 2014-06-22 | 2014-07-20 | DUKHCONP1AZ7ACGF4600 FF+7d, DUKHCONP1AZ7ACGF4600 SS+7d, DUKHCONP1AZ7ARGF3045 FF+7d, DUKHCONP1AZ7ARGF3045 SS+7d | -3d |
| DUKHCONP1AZ7ARGF3040 |  | Cobble Tile flooring | 15d | 2014-06-23 | 2014-07-09 | DUKHCONP1AZ7ARGF3010 FF+13d, DUKHCONP1AZ7ARGF3010 SS+13d, DUKHCONP1AZ7ARGF3035 FF+4d, DUKHCONP1AZ7ARGF3025 SS+13d, DUKHCONP1AZ7ARGF3025 FF+13d, DUKHCONP1AZ7ARGF3035 SS+4d | -3d |
| DUKHCONP1AZ7ARGF3060 |  | Gypsum board false ceiling | 25d | 2014-06-25 | 2014-07-23 | DUKHCONP1AZ7ARGF3045 SS+10d, DUKHCONP1AZ7ACGF4600 SS+7d, DUKHCONP1AZ7ARGF3045 FF+10d, DUKHCONP1AZ7ACGF4600 FF+7d, DUKHCONP1AZ6ARGF3060 | -6d |
| DUKHCONP1AZ7ARGF3050 |  | Granite - Stair case flooring & Skirting | 20d | 2014-07-01 | 2014-07-23 | DUKHCONP1AZ7ARGF3025 SS+13d, DUKHCONP1AZ7ARGF3040 SS+7d, DUKHCONP1AZ7ARGF3040 FF+7d, DUKHCONP1AZ7ARGF3025 FF+13d | -3d |
| DUKHCONP1AZ7ARGF3065 |  | Wooden door & PVC Door | 15d | 2014-07-15 | 2014-07-31 | DUKHCONP1AZ7ARGF3035 FF+7d, DUKHCONP1AZ6ARGF3065, DUKHCONP1AZ7ARGF3050 FF+7d, DUKHCONP1AZ7ARGF3050 SS+7d, DUKHCONP1AZ7ARGF3035 SS+7d | -3d |
| DUKHCONP1AZ7ARGF3070 |  | Aluminum doors | 15d | 2014-07-21 | 2014-08-10 | DUKHCONP1AZ6ARGF3070, DUKHCONP1AZ7ARGF3065 SS+5d, DUKHCONP1AZ7ARGF3065 FF+5d | -3d |
| DUKHCONP1AZ7ARGF3075 |  | Carpentry & Joinery Works | 20d | 2014-07-27 | 2014-08-21 | DUKHCONP1AZ7ARGF3070 SS+5d, DUKHCONP1AZ6ARGF3075, DUKHCONP1AZ7ARGF3070 FF+7d | -3d |
| DUKHCONP1AZ7ARGF3080 |  | Aluminum windows | 20d | 2014-07-28 | 2014-08-23 | DUKHCONP1AZ6ARGF3080, DUKHCONP1AZ7ARGF3070 FF+6d, DUKHCONP1AZ7ARGF3070 SS+6d | 7d |
| DUKHCONP1AZ7ARGF3085 |  | S.S.Balustrade | 20d | 2014-08-07 | 2014-08-30 | DUKHCONP1AZ7ARGF3075 FF+7d, DUKHCONP1AZ7ARGF3075 SS+7d, DUKHCONP1AZ7ARGF3050 FF+7d, DUKHCONP1AZ7ARGF3050 SS+7d | 2d |
| DUKHCONP1AZ7ARGF3090 |  | Installation of Granite Counter Top | 15d | 2014-08-12 | 2014-08-28 | DUKHCONP1AZ7ARGF3075 FF+6d, DUKHCONP1AZ7ARGF3075 SS+7d | -3d |
| DUKHCONP1AZ7ARGF3095 |  | Final Painting | 25d | 2014-08-21 | 2014-09-18 | DUKHCONP1AZ7ARGF3030 FF+10d, DUKHCONP1AZ7ARGF3085 FF+7d, DUKHCONP1AZ7ARGF3080 SS+8d, DUKHCONP1AZ7ARGF3090 SS+8d, DUKHCONP1AZ7ARGF3085 SS+7d, DUKHCONP1AZ7ARGF3035 FF+13d, DUKHCONP1AZ7ARGF3070 FF+5d, DUKHCONP1AZ7ARGF3080 FF+8d, DUKHCONP1AZ7ARGF3090 FF+8d, DUKHCONP1AZ7ARGF3040 FF+13d, DUKHCONP1AZ7ARGF3060 FF+8d, DUKHCONP1AZ7ARGF3030 SS+10d, DUKHCONP1AZ7ARGF3070 SS+5d, DUKHCONP1AZ7ACGF4610 FF+10d, DUKHCONP1AZ6ARGF3095, DUKHCONP1AZ7ARGF3040 SS+13d, DUKHCONP1AZ7ARGF3035 SS+13d, DUKHCONP1AZ7ARGF3060 SS+8d, DUKHCONP1AZ7ACGF4610 SS+10d | -3d |
|  | 15 | **FIRST FLOORS** |  | 2014-05-18 | 2014-10-15 |  |  |
| DUKHCONP1AZ7ARFF3300 |  | Block work | 25d | 2014-05-18 | 2014-06-15 | DUKHCONP1AZ7STFF2035 SS+21d, DUKHCONP1AZ7STFF2035 FF+21d, DUKHCONP1AZ7STFF2020 SS+21d, DUKHCONP1AZ6ARFF3300, DUKHCONP1AZ7STFF2020 FF+21d | -24d |
| DUKHCONP1AZ7ARFF3305 |  | Plastering work | 25d | 2014-06-11 | 2014-07-09 | DUKHCONP1AZ7PLFF4325 SS+6d, DUKHCONP1AZ6ARFF3305, DUKHCONP1AZ7ARFF3300 FF+7d, DUKHCONP1AZ7ARFF3300 SS+7d, DUKHCONP1AZ7ELFF4035 SS+5d, DUKHCONP1AZ7PLFF4325 FF+6d, DUKHCONP1AZ7ELFF4035 FF+5d | -24d |
| DUKHCONP1AZ7ARFF3310 |  | Flooring screed | 21d | 2014-06-19 | 2014-07-13 | DUKHCONP1AZ7ARFF3305 FF+3d, DUKHCONP1AZ7ARFF3305 SS+7d | -12d |
| DUKHCONP1AZ7ARFF3330 |  | Paint First coat | 25d | 2014-06-28 | 2014-07-26 | DUKHCONP1AZ7ARFF3305 FF+14d, DUKHCONP1AZ7ARFF3305 SS+14d | -10d |
| DUKHCONP1AZ7ARFF3315 |  | Wet area waterproofing | 15d | 2014-07-01 | 2014-07-17 | DUKHCONP1AZ6ARFF3315, DUKHCONP1AZ7ARFF3305 SS+7d, DUKHCONP1AZ7ARFF3305 FF+7d | -24d |
| DUKHCONP1AZ7ARFF3320 |  | Ceramic Wall Tiling | 25d | 2014-07-08 | 2014-08-09 | DUKHCONP1AZ6ARFF3320, DUKHCONP1AZ7PLFF4325 SS+4d, DUKHCONP1AZ7ARFF3315 SS+6d, DUKHCONP1AZ7ARFF3315 FF+6d, DUKHCONP1AZ7PLFF4330 FF+7d, DUKHCONP1AZ7PLFF4325 FF+4d, DUKHCONP1AZ7PLFF4330 SS+7d | -24d |
| DUKHCONP1AZ7ARFF3325 |  | Porcelain Tile flooring | 25d | 2014-07-15 | 2014-08-16 | DUKHCONP1AZ7ARFF3320 FF+6d, DUKHCONP1AZ6ARFF3325, DUKHCONP1AZ7ARFF3310 SS+10d, DUKHCONP1AZ7ARFF3310 FF+10d, DUKHCONP1AZ7ARFF3320 SS+6d | -24d |
| DUKHCONP1AZ7ARFF3345 |  | Fixing of Suspension systems | 20d | 2014-07-28 | 2014-08-23 | DUKHCONP1AZ7ELFF4045 FF+5d, DUKHCONP1AZ7ARFF3325 SS+6d, DUKHCONP1AZ7ARFF3330 FF+7d, DUKHCONP1AZ7ARFF3330 SS+7d, DUKHCONP1AZ6ARFF3345, DUKHCONP1AZ7ARFF3325 FF+6d, DUKHCONP1AZ7ELFF4045 SS+5d | -24d |
| DUKHCONP1AZ7ARFF3335 |  | Slate Tile Flooring & Skirting | 15d | 2014-08-05 | 2014-08-21 | DUKHCONP1AZ7ARFF3310 FF+13d, DUKHCONP1AZ7ARFF3325 SS+13d, DUKHCONP1AZ7ARFF3310 SS+13d, DUKHCONP1AZ7ARFF3325 FF+5d | -16d |
| DUKHCONP1AZ7ARFF3360 |  | Gypsum board false ceiling | 25d | 2014-08-07 | 2014-09-04 | DUKHCONP1AZ7ACFF4615 SS+7d, DUKHCONP1AZ7ARFF3345 SS+6d, DUKHCONP1AZ7ARFF3345 FF+6d, DUKHCONP1AZ7ACFF4615 FF+7d, DUKHCONP1AZ6ARFF3360 | -24d |
| DUKHCONP1AZ7ARFF3350 |  | Granite - Stair case flooring & Skirting | 20d | 2014-08-09 | 2014-08-31 | DUKHCONP1AZ7ARFF3325 SS+13d, DUKHCONP1AZ7ARFF3325 FF+13d | -22d |
| DUKHCONP1AZ7ARFF3365 |  | Wooden door | 15d | 2014-08-23 | 2014-09-08 | DUKHCONP1AZ6ARFF3365, DUKHCONP1AZ7ARFF3360 SS+3d, DUKHCONP1AZ7ARFF3335 FF+7d, DUKHCONP1AZ7ARFF3350 SS+5d, DUKHCONP1AZ7ARFF3335 SS+7d, DUKHCONP1AZ7ARFF3360 FF+3d, DUKHCONP1AZ7ARFF3350 FF+5d | -24d |
| DUKHCONP1AZ7ARFF3370 |  | Aluminum Door | 20d | 2014-08-23 | 2014-09-14 | DUKHCONP1AZ7ARFF3365 SS, DUKHCONP1AZ7ARFF3365 FF, DUKHCONP1AZ6ARFF3370 | -24d |
| DUKHCONP1AZ7ARFF3375 |  | Carpentry & Joinery Works | 25d | 2014-08-28 | 2014-09-25 | DUKHCONP1AZ6ARFF3375, DUKHCONP1AZ7ARFF3370 SS+5d, DUKHCONP1AZ7ARFF3370 FF+5d | -24d |
| DUKHCONP1AZ7ARFF3380 |  | Aluminum windows | 20d | 2014-08-30 | 2014-09-21 | DUKHCONP1AZ7ARFF3370 SS+6d, DUKHCONP1AZ7ARFF3370 FF+6d | -20d |
| DUKHCONP1AZ7ARFF3385 |  | Handrail & Balustrade | 20d | 2014-09-09 | 2014-10-01 | DUKHCONP1AZ7ARFF3350 FF+7d, DUKHCONP1AZ7ARFF3350 SS+7d, DUKHCONP1AZ7ARFF3375 FF+5d, DUKHCONP1AZ7ARFF3375 SS+5d | -24d |
| DUKHCONP1AZ7ARFF3390 |  | Installation of Granite Counter Top | 20d | 2014-09-09 | 2014-10-01 | DUKHCONP1AZ7ARFF3375 FF+5d, DUKHCONP1AZ7ARFF3375 SS+6d | -23d |
| DUKHCONP1AZ7ARFF3395 |  | Final Painting | 25d | 2014-09-15 | 2014-10-15 | DUKHCONP1AZ6ARFF3395, DUKHCONP1AZ7ARFF3335 FF+8d, DUKHCONP1AZ7ARFF3360 FF+10d, DUKHCONP1AZ7ARFF3380 SS+10d, DUKHCONP1AZ7ARFF3375 SS+8d, DUKHCONP1AZ7ARFF3390 FF+6d, DUKHCONP1AZ7ARFF3385 FF+5d, DUKHCONP1AZ7ARFF3330 SS+10d, DUKHCONP1AZ7ARFF3360 SS+10d, DUKHCONP1AZ7ARFF3390 SS+4d, DUKHCONP1AZ7ARFF3350 SS+8d, DUKHCONP1AZ7ARFF3385 SS+5d, DUKHCONP1AZ7ARFF3365 FF+8d, DUKHCONP1AZ7ARFF3330 FF+10d, DUKHCONP1AZ7ARFF3335 SS+8d, DUKHCONP1AZ7ARFF3365 SS+8d, DUKHCONP1AZ7ARFF3380 FF+10d, DUKHCONP1AZ7ARFF3350 FF+8d, DUKHCONP1AZ7ARFF3375 FF+8d, DUKHCONP1AZ7ACFF4625 SS+6d, DUKHCONP1AZ7ACFF4625 FF+6d | -24d |
|  | 20 | **ROOF** |  | 2014-06-01 | 2014-08-07 |  |  |
| DUKHCONP1AZ7ARRF3600 |  | Block work | 20d | 2014-06-01 | 2014-06-23 | DUKHCONP1AZ7STRF2055 FF+21d, DUKHCONP1AZ7STRF2055 SS+21d, DUKHCONP1AZ6ARRF3600 | 28d |
| DUKHCONP1AZ7ARRF3605 |  | Plastering work | 20d | 2014-06-09 | 2014-07-01 | DUKHCONP1AZ7ARRF3600 SS+7d, DUKHCONP1AZ7ARRF3600 FF+7d | 28d |
| DUKHCONP1AZ7ARRF3610 |  | Flooring screed | 15d | 2014-06-23 | 2014-07-09 | DUKHCONP1AZ7ARRF3605 SS+7d, DUKHCONP1AZ7ARRF3605 FF+7d | 33d |
| DUKHCONP1AZ7ARRF3695 |  | Painting -Storage area | 20d | 2014-07-01 | 2014-07-23 | DUKHCONP1AZ7ARRF3610 SS+7d, DUKHCONP1AZ7ARRF3610 FF+7d | 33d |
| DUKHCONP1AZ7ARRF3620 |  | Epoxy Painting -Storage area | 15d | 2014-07-19 | 2014-08-07 | DUKHCONP1AZ7ARRF3695 FF+10d, DUKHCONP1AZ7ARRF3695 SS+10d | 33d |
|  | 15 | **EXTERNAL FINISHES** |  | 2014-06-23 | 2014-09-13 |  |  |
|  | 10 | **ROOF** |  | 2014-07-07 | 2014-09-13 |  |  |
| DUKHCONP1AZ7ARRF3630 |  | Leveling Screed for Waterproofing | 25d | 2014-07-07 | 2014-08-07 | DUKHCONP1AZ7STRF2060 SS+10d, DUKHCONP1AZ6ARRF3630, DUKHCONP1AZ7STRF2065 FF+10d, DUKHCONP1AZ7STRF2065 SS+10d, DUKHCONP1AZ7STRF2060 FF+10d | -3d |
| DUKHCONP1AZ7ARRF3635 |  | Laying of Waterproofing Membrane | 25d | 2014-07-10 | 2014-08-11 | DUKHCONP1AZ7ARRF3630 SS+3d, DUKHCONP1AZ7ARRF3630 FF+3d | -3d |
| DUKHCONP1AZ7ARRF3640 |  | Installation of Insulation & Protection | 25d | 2014-07-15 | 2014-08-16 | DUKHCONP1AZ7ARRF3635 SS+4d, DUKHCONP1AZ7ARRF3635 FF+4d | -3d |
| DUKHCONP1AZ7ARRF3645 |  | Lime Stone Chips & Paving slab Installation | 25d | 2014-07-20 | 2014-08-20 | DUKHCONP1AZ7ARRF3640 SS+4d, DUKHCONP1AZ7ARRF3640 FF+4d | -3d |
| DUKHCONP1AZ7ARRF3650 |  | Install. of Gal. Frame & Aluminum Slat Screen | 25d | 2014-07-28 | 2014-08-28 | DUKHCONP1AZ7ARRF3645 SS+7d, DUKHCONP1AZ7ARRF3645 FF+7d | -3d |
| DUKHCONP1AZ7ARRF3655 |  | Installation of Pumps Protection cabinets | 20d | 2014-08-16 | 2014-09-07 | DUKHCONP1AZ7ARRF3650 FF+8d, DUKHCONP1AZ7ARRF3645 SS+7d, DUKHCONP1AZ7ARRF3645 FF+7d, DUKHCONP1AZ6ARRF3655, DUKHCONP1AZ7ARRF3650 SS+8d | -3d |
| DUKHCONP1AZ7ARRF3660 |  | Installation of Access Ladder | 15d | 2014-08-27 | 2014-09-13 | DUKHCONP1AZ7ARRF3655 FF+5d, DUKHCONP1AZ7ARRF3655 SS+5d | 2d |
|  | 15 | **ELEVATION** |  | 2014-06-23 | 2014-08-17 |  |  |
| DUKHCONP1AZ7AREL3665 |  | External Plastering | 25d | 2014-06-23 | 2014-07-21 | DUKHCONP1AZ7ARFF3305 FF+7d, DUKHCONP1AZ7STRF2065 SS+7d, DUKHCONP1AZ7ARFF3305 SS+7d, DUKHCONP1AZ7STRF2065 FF+7d, DUKHCONP1AZ7ARRF3605 SS+7d, DUKHCONP1AZ6AREL3665 | 23d |
| DUKHCONP1AZ7AREL3670 |  | External stone cladding works | 20d | 2014-07-10 | 2014-08-05 | DUKHCONP1AZ7AREL3665 FF+10d, DUKHCONP1AZ7AREL3665 SS+10d, DUKHCONP1AZ6AREL3670 | 25d |
| DUKHCONP1AZ7AREL3680 |  | External Painting | 20d | 2014-07-22 | 2014-08-17 | DUKHCONP1AZ7AREL3670 FF+10d, DUKHCONP1AZ7ARRF3695 SS+4d, DUKHCONP1AZ7AREL3670 SS+10d, DUKHCONP1AZ7ARRF3695 FF+4d, DUKHCONP1AZ6AREL3680 | 25d |
|  | 20 | **MEP WORKS** |  | 2013-12-30 | 2014-10-14 |  |  |

| ID | WBS | Task | Duration | Start | Finish | Predecessors | Total float |
| --- | --- | --- | --- | --- | --- | --- | --- |
|  | 10 | **ELECTRICAL WORKS** |  | 2014-04-12 | 2014-10-14 |  |  |
|  | 10 | **GROUND FLOOR** |  | 2014-04-12 | 2014-08-21 |  |  |
| DUKHCONP1AZ7ELGF4000 |  | Fixing of wall conduits & switch socket boxes | 25d | 2014-04-12 | 2014-05-10 | DUKHCONP1AZ7ARGF3000 FF+5d, DUKHCONP1AZ7ARGF3000 SS+5d | 3d |
| DUKHCONP1AZ7ELGF4005 |  | Cable tray & trunking installation | 20d | 2014-04-23 | 2014-05-15 | DUKHCONP1AZ7ELGF4000 SS+5d, DUKHCONP1AZ7ELGF4000 FF+5d, DUKHCONP1AZ6ELGF4005 | 21d |
| DUKHCONP1AZ7ELGF4010 |  | Installation of wiring & Main Cabling | 25d | 2014-05-01 | 2014-05-29 | DUKHCONP1AZ7ELGF4005 FF+7d, DUKHCONP1AZ7ELGF4005 SS+7d | 21d |
| DUKHCONP1AZ7ELGF4015 |  | Install. of CAMS & Fire Fighting Accessories | 25d | 2014-07-03 | 2014-07-31 | DUKHCONP1AZ6ELGF4015, DUKHCONP1AZ7ARGF3055 SS+7d, DUKHCONP1AZ7ARGF3060 FF+7d, DUKHCONP1AZ7ARGF3055 FF+7d, DUKHCONP1AZ7ARGF3060 SS+7d | 6d |
| DUKHCONP1AZ7ELGF4020 |  | Installation of DBS,MCCB Accessories. | 20d | 2014-07-09 | 2014-07-31 | DUKHCONP1AZ7ARGF3055 SS+7d, DUKHCONP1AZ7ARGF3055 FF+7d, DUKHCONP1AZ7ARGF3060 FF+7d, DUKHCONP1AZ7ELGF4010 SS+5d, DUKHCONP1AZ7ELGF4010 FF+5d, DUKHCONP1AZ7ARGF3060 SS+7d | -6d |
| DUKHCONP1AZ7ELGF4025 |  | Installation of Lighting fixtures & Accessories | 25d | 2014-07-21 | 2014-08-21 | DUKHCONP1AZ7ARGF3055 SS+10d, DUKHCONP1AZ7ARGF3060 FF+10d, DUKHCONP1AZ7ELGF4020 SS+10d, DUKHCONP1AZ7ARGF3055 FF+10d, DUKHCONP1AZ7ARGF3060 SS+10d, DUKHCONP1AZ6ELGF4025, DUKHCONP1AZ7ELGF4020 FF+10d | 1d |
| DUKHCONP1AZ7ELGF4030 |  | Installation of Telephone System | 20d | 2014-07-21 | 2014-08-16 | DUKHCONP1AZ7ELGF4020 SS+10d, DUKHCONP1AZ7ARGF3060 SS+5d, DUKHCONP1AZ7ARGF3060 FF+5d, DUKHCONP1AZ7ELGF4020 FF+10d, DUKHCONP1AZ6ELGF4030 | -6d |
|  | 15 | **FIRST FLOORS** |  | 2014-05-24 | 2014-09-24 |  |  |
| DUKHCONP1AZ7ELFF4035 |  | Fixing of wall conduits & switch socket boxes | 25d | 2014-05-24 | 2014-06-21 | DUKHCONP1AZ7ARFF3300 FF+5d, DUKHCONP1AZ7ARFF3300 SS+5d | -13d |
| DUKHCONP1AZ7ELFF4040 |  | Cable tray & trunking installation | 20d | 2014-06-04 | 2014-06-26 | DUKHCONP1AZ7ELFF4035 FF+5d, DUKHCONP1AZ7ELFF4035 SS+5d | 5d |
| DUKHCONP1AZ7ELFF4045 |  | Installation of wiring & Main Cabling | 25d | 2014-06-15 | 2014-07-13 | DUKHCONP1AZ7ELFF4040 SS+7d, DUKHCONP1AZ6ELFF4045, DUKHCONP1AZ7ELFF4040 FF+7d | 3d |
| DUKHCONP1AZ7ELFF4055 |  | Install. of CAMS & Fire Fighting Accessories | 25d | 2014-08-16 | 2014-09-13 | DUKHCONP1AZ7ARFF3360 SS+7d, DUKHCONP1AZ7ELGF4015 FF+5d, DUKHCONP1AZ7ARFF3360 FF+7d, DUKHCONP1AZ6ELFF4055, DUKHCONP1AZ7ELGF4015 SS+5d | -23d |
| DUKHCONP1AZ7ELFF4050 |  | Installation of Telephone System | 25d | 2014-08-17 | 2014-09-14 | DUKHCONP1AZ7MSEX5010, DUKHCONP1AZ7ARFF3360 SS+5d, DUKHCONP1AZ7ARFF3360 FF+5d, DUKHCONP1AZ7ELGF4030 FF+10d, DUKHCONP1AZ7ELGF4030 SS+10d | -16d |
| DUKHCONP1AZ7ELFF4060 |  | Installation of DBS,MCCB Accessories. | 20d | 2014-08-19 | 2014-09-10 | DUKHCONP1AZ7ARFF3360 FF+5d, DUKHCONP1AZ7ELFF4045 FF+5d, DUKHCONP1AZ7ARFF3360 SS+8d, DUKHCONP1AZ7ELFF4045 SS+5d, DUKHCONP1AZ6ELFF4060 | -21d |
| DUKHCONP1AZ7ELFF4065 |  | Installation of Lighting fixtures & Accessories | 25d | 2014-08-27 | 2014-09-24 | DUKHCONP1AZ7ELGF4025 FF+5d, DUKHCONP1AZ7ARFF3360 FF+10d, DUKHCONP1AZ7ELFF4060 FF+5d, DUKHCONP1AZ6ELFF4065, DUKHCONP1AZ7ELFF4060 SS+5d, DUKHCONP1AZ7ARFF3360 SS+10d, DUKHCONP1AZ7ELGF4025 SS+5d | -23d |
|  | 20 | **ROOF** |  | 2014-09-10 | 2014-10-14 |  |  |
| DUKHCONP1AZ7ELRF4070 |  | Installation of Isolator | 18d | 2014-09-10 | 2014-09-30 | DUKHCONP1AZ7ELFF4050 SS+5d, DUKHCONP1AZ7ELFF4065 FF+5d, DUKHCONP1AZ7ELFF4050 FF+7d, DUKHCONP1AZ7ARRF3645 FF+7d, DUKHCONP1AZ7ARRF3645 SS+7d, DUKHCONP1AZ7ELFF4045 FF+10d, DUKHCONP1AZ7ELFF4045 SS+10d, DUKHCONP1AZ7ELFF4065 SS+5d | -23d |
| DUKHCONP1AZ7ELRF4075 |  | Installation of TV Dish Antenna | 23d | 2014-09-16 | 2014-10-14 | DUKHCONP1AZ7ELRF4070 SS+5d, DUKHCONP1AZ7ELRF4070 FF+5d | -23d |
|  | 15 | **PLUMBING, DRAINAGE & FIRE FIGHTING WORKS** |  | 2013-12-30 | 2014-10-14 |  |  |
|  | 10 | **GROUND FLOOR** |  | 2013-12-30 | 2014-08-21 |  |  |
| DUKHCONP1AZ7PLUG4300 |  | Drainage / Storm Pipes in Grade Slab | 16d | 2013-12-30 | 2014-01-16 | DUKHCONP1AZ7STUG1040 FF+11d, DUKHCONP1AZ7STUG1040 SS+11d | -24d |
| DUKHCONP1AZ7PLGF4305 |  | Installation of Plumbing pipes & testing | 18d | 2014-04-22 | 2014-05-12 | DUKHCONP1AZ6PLGF4305, DUKHCONP1AZ7ARGF3000 SS+7d, DUKHCONP1AZ7ARGF3000 FF+7d | -6d |
| DUKHCONP1AZ7PLGF4310 |  | Installation of Drainage pipes &testing | 18d | 2014-04-22 | 2014-05-12 | DUKHCONP1AZ7PLGF4305 FF, DUKHCONP1AZ7ARGF3000 SS+7d, DUKHCONP1AZ7ARGF3000 FF+7d, DUKHCONP1AZ7PLGF4305 SS | -3d |
| DUKHCONP1AZ7PLGF4315 |  | Sanitary Fittings & Accessories | 20d | 2014-07-21 | 2014-08-16 | DUKHCONP1AZ6PLGF4315, DUKHCONP1AZ7PLGF4310 SS+5d, DUKHCONP1AZ7PLGF4310 FF+5d, DUKHCONP1AZ7ARGF3065 FF+5d, DUKHCONP1AZ7ARGF3065 SS+5d | 21d |
| DUKHCONP1AZ7PLGF4320 |  | Installation of Water Heater | 15d | 2014-08-05 | 2014-08-21 | DUKHCONP1AZ6PLGF4320, DUKHCONP1AZ7PLGF4315 SS+5d, DUKHCONP1AZ7ARGF3060 SS+5d, DUKHCONP1AZ7ARGF3060 FF+5d, DUKHCONP1AZ7PLGF4315 FF+5d | 21d |
|  | 15 | **FIRST FLOORS** |  | 2014-06-04 | 2014-09-20 |  |  |
| DUKHCONP1AZ7PLFF4325 |  | Installation of Plumbing pipes & testing | 18d | 2014-06-04 | 2014-06-24 | DUKHCONP1AZ7ARFF3300 SS+7d, DUKHCONP1AZ7ARFF3300 FF+8d | -24d |
| DUKHCONP1AZ7PLFF4330 |  | Installation of Drainage pipes & testing | 18d | 2014-06-04 | 2014-06-24 | DUKHCONP1AZ7ARFF3300 SS+7d, DUKHCONP1AZ7PLFF4325 SS, DUKHCONP1AZ7PLFF4325 FF, DUKHCONP1AZ7ARFF3300 FF+7d, DUKHCONP1AZ6PLFF4330 | -2d |
| DUKHCONP1AZ7PLFF4335 |  | Sanitary Fittings & Accessories | 20d | 2014-08-23 | 2014-09-14 | DUKHCONP1AZ7ARFF3365 SS, DUKHCONP1AZ7PLFF4330 SS+5d, DUKHCONP1AZ7ARFF3365 FF+5d, DUKHCONP1AZ7PLFF4330 FF+5d | -19d |
| DUKHCONP1AZ7PLFF4340 |  | Installation of Water Heater | 15d | 2014-09-03 | 2014-09-20 | DUKHCONP1AZ7PLFF4335 SS+5d, DUKHCONP1AZ7ARFF3360 SS+5d, DUKHCONP1AZ7ARFF3360 FF+5d, DUKHCONP1AZ6PLFF4340, DUKHCONP1AZ7PLFF4335 FF+5d | -19d |
|  | 20 | **ROOF** |  | 2014-06-23 | 2014-10-14 |  |  |
| DUKHCONP1AZ7PLRF4345 |  | Installation of Plumbing pipes & fittings | 15d | 2014-06-23 | 2014-07-09 | DUKHCONP1AZ7ARRF3605 FF+7d, DUKHCONP1AZ7ARRF3605 SS+7d | 32d |
| DUKHCONP1AZ7PLRF4350 |  | Installation of Rain water Pipes | 15d | 2014-08-10 | 2014-08-26 | DUKHCONP1AZ7ARRF3645 FF+5d, DUKHCONP1AZ7ARRF3645 SS+5d, DUKHCONP1AZ7PLFF4330 FF+5d, DUKHCONP1AZ7PLFF4330 SS+5d, DUKHCONP1AZ7PLRF4345 FF+8d, DUKHCONP1AZ7PLRF4345 SS+8d, DUKHCONP1AZ6PLRF4350, DUKHCONP1AZ7AREL3665 FF+7d, DUKHCONP1AZ7AREL3665 SS+7d | 2d |
| DUKHCONP1AZ7PLRF4355 |  | Roof Water Tank Installation & Connections | 25d | 2014-09-14 | 2014-10-14 | DUKHCONP1AZ6PLRF4355, DUKHCONP1AZ7PLRF4345 SS+8d, DUKHCONP1AZ7PLRF4350 SS+5d, DUKHCONP1AZ7ARRF3655 SS+5d, DUKHCONP1AZ7ARRF3655 FF+5d, DUKHCONP1AZ7PLFF4340 SS+5d, DUKHCONP1AZ7PLFF4340 FF+5d, DUKHCONP1AZ7PLRF4345 FF+8d, DUKHCONP1AZ7PLRF4350 FF+5d | -23d |
|  | 20 | **AC WORKS** |  | 2014-05-12 | 2014-10-12 |  |  |
|  | 10 | **GROUND FLOOR** |  | 2014-05-12 | 2014-08-19 |  |  |
| DUKHCONP1AZ7ACGF4600 |  | Installation AC Pipes | 20d | 2014-05-12 | 2014-06-03 | DUKHCONP1AZ6ACGF4600, DUKHCONP1AZ7ARGF3005 FF+7d, DUKHCONP1AZ7ARGF3005 SS+7d | 25d |
| DUKHCONP1AZ7ACGF4605 |  | Fixing of Ventilation Equipments | 25d | 2014-07-03 | 2014-07-31 | DUKHCONP1AZ7ACGF4600 SS+10d, DUKHCONP1AZ6ACGF4605, DUKHCONP1AZ7ARGF3060 FF+7d, DUKHCONP1AZ7ARGF3055 SS+7d, DUKHCONP1AZ7ARGF3060 SS+7d, DUKHCONP1AZ7ACGF4600 FF+10d, DUKHCONP1AZ7ARGF3055 FF+7d | 8d |
| DUKHCONP1AZ7ACGF4610 |  | Fixing of Split AC | 20d | 2014-07-24 | 2014-08-19 | DUKHCONP1AZ6ACGF4610, DUKHCONP1AZ7ACGF4605 SS+13d, DUKHCONP1AZ7ACGF4605 FF+13d | 8d |
|  | 15 | **FIRST FLOORS** |  | 2014-06-25 | 2014-09-28 |  |  |
| DUKHCONP1AZ7ACFF4615 |  | Installation AC Pipes | 20d | 2014-06-25 | 2014-07-17 | DUKHCONP1AZ6ACFF4615, DUKHCONP1AZ7ARFF3305 SS+7d, DUKHCONP1AZ7ARFF3305 FF+7d | 3d |
| DUKHCONP1AZ7ACFF4620 |  | Fixing of Ventilation Equipments | 25d | 2014-08-16 | 2014-09-13 | DUKHCONP1AZ7ACFF4615 FF+10d, DUKHCONP1AZ7ARFF3360 FF+7d, DUKHCONP1AZ7ACFF4615 SS+10d, DUKHCONP1AZ6ACFF4620, DUKHCONP1AZ7ARFF3360 SS+7d | -22d |
| DUKHCONP1AZ7ACFF4625 |  | Fixing of Split AC | 20d | 2014-09-06 | 2014-09-28 | DUKHCONP1AZ6ACFF4625, DUKHCONP1AZ7ACFF4620 FF+13d, DUKHCONP1AZ7ACFF4620 SS+13d | -22d |
|  | 20 | **ROOF** |  | 2014-07-28 | 2014-10-12 |  |  |
| DUKHCONP1AZ7ACRF4630 |  | Installation of Refrigerant Pipes | 25d | 2014-07-28 | 2014-08-28 | DUKHCONP1AZ6ACRF4630, DUKHCONP1AZ7ACFF4615 FF+7d, DUKHCONP1AZ7ARRF3645 FF+7d, DUKHCONP1AZ7ACGF4600 FF+7d, DUKHCONP1AZ7ARRF3645 SS+7d, DUKHCONP1AZ7ACFF4615 SS+7d, DUKHCONP1AZ7ACGF4600 SS+7d | 10d |
| DUKHCONP1AZ7ACRF4635 |  | Installation of Condensing Unit | 25d | 2014-09-11 | 2014-10-12 | DUKHCONP1AZ7ACFF4625 SS+5d, DUKHCONP1AZ7ACRF4630 SS+5d, DUKHCONP1AZ7ACGF4610 SS+5d, DUKHCONP1AZ7ACFF4625 FF+5d, DUKHCONP1AZ6ACRF4635, DUKHCONP1AZ7ACRF4630 FF+5d, DUKHCONP1AZ7ACGF4610 FF+5d | -21d |
|  | 25 | **EXTERNAL WORKS** |  | 2014-05-19 | 2014-10-13 |  |  |
|  | 10 | **MISCELLANEOUS** |  | 2014-05-19 | 2014-10-13 |  |  |
| DUKHCONP1AZ7MSEX5000 |  | Construction of Manholes | 25d | 2014-05-19 | 2014-06-16 | DUKHCONP1AZ7PLGF4310 SS+10d, DUKHCONP1AZ7PLGF4310 FF+10d, DUKHCONP1AZ7STRF2055 FF+10d, DUKHCONP1AZ7STRF2055 SS+10d | -16d |
| DUKHCONP1AZ7MSEX5005 |  | Construction of Soak pit, Chambers | 25d | 2014-06-02 | 2014-06-30 | DUKHCONP1AZ7MSEX5000 FF+12d, DUKHCONP1AZ7MSEX5000 SS+12d | -16d |
| DUKHCONP1AZ7MSEX5015 |  | Construction of grease Trap | 20d | 2014-06-22 | 2014-07-14 | DUKHCONP1AZ7MSEX5005 FF+12d, DUKHCONP1AZ7MSEX5005 SS+12d | -16d |
| DUKHCONP1AZ7MSEX5020 |  | Construction Entrance Ramp | 25d | 2014-07-09 | 2014-08-10 | DUKHCONP1AZ7STRF2055 FF, DUKHCONP1AZ6MSEX5020, DUKHCONP1AZ7STRF2055 SS | -8d |
| DUKHCONP1AZ7MSEX5010 |  | Telephone cable laying | 25d | 2014-07-15 | 2014-08-16 | DUKHCONP1AZ7MSEX5015 | -16d |
| DUKHCONP1AZ7MSEX5025 |  | SS.Handrails and Balustrades | 20d | 2014-07-27 | 2014-08-21 | DUKHCONP1AZ7MSEX5020 FF+10d, DUKHCONP1AZ7MSEX5020 SS+10d | -5d |
| DUKHCONP1AZ7MSEX5335 |  | Aluminum Roll-up Shutter with 2m Wall | 25d | 2014-09-13 | 2014-10-13 | DUKHCONP1AZ6MSEX5335 SS+7d, DUKHCONI1AZ4BWGL5325 SS+10d | 39d |
|  | 15 | **WATER TANK ENCLOSURE** |  | 2014-06-11 | 2014-10-02 |  |  |
| DUKHCONP1AZ7WEEX5030 |  | Excavation | 20d | 2014-06-11 | 2014-07-03 | DUKHCONP1AZ6WEEX5030, DUKHCONP1AZ7STRF2055 FF+5d, DUKHCONP1AZ7STRF2055 SS+5d | 14d |
| DUKHCONP1AZ7WEEX5035 |  | Construction of Raft | 25d | 2014-06-17 | 2014-07-15 | DUKHCONP1AZ7WEEX5030 FF+10d, DUKHCONP1AZ7WEEX5030 SS+5d | 14d |
| DUKHCONP1AZ7WEEX5040 |  | Block works & Plastering | 25d | 2014-06-26 | 2014-07-24 | DUKHCONP1AZ7WEEX5035 SS+8d, DUKHCONP1AZ7WEEX5035 FF+8d | 14d |
| DUKHCONP1AZ7WEEX5045 |  | Flooring & Painting | 25d | 2014-07-03 | 2014-07-31 | DUKHCONP1AZ7WEEX5040 SS+6d, DUKHCONP1AZ7WEEX5040 FF+6d | 14d |
| DUKHCONP1AZ7WEEX5050 |  | Installation of Steel Gate | 20d | 2014-08-11 | 2014-09-02 | DUKHCONP1AZ7WEEX5045 SS+5d, DUKHCONP1AZ7WEEX5045 FF+6d, DUKHCONP1AZ7MSEX5025 FF+10d | -5d |
| DUKHCONP1AZ7WEEX5060 |  | Structural steel & SS Shed cover installation | 25d | 2014-08-27 | 2014-09-24 | DUKHCONP1AZ7WEEX5050 SS+5d, DUKHCONP1AZ7WEEX5050 FF+10d, DUKHCONP1AZ6WEEX5060, DUKHCONP1AZ7MSEX5025 FF+10d | -14d |
| DUKHCONP1AZ7WEEX5065 |  | Install. of Water Tank,Chiller,Pump & Meter | 25d | 2014-09-04 | 2014-10-02 | DUKHCONP1AZ7WEEX5060 FF+6d, DUKHCONP1AZ6WEEX5065, DUKHCONP1AZ7WEEX5060 SS+6d, DUKHCONP1AZ7MSEX5015 FF+5d, DUKHCONP1AZ7MSEX5015 SS+5d, DUKHCONP1AZ7PLRF4350 FF+5d, DUKHCONP1AZ7PLRF4350 SS+5d | -15d |
|  | 20 | **HARD LANDSCAPING** |  | 2014-07-23 | 2014-09-06 |  |  |
| DUKHCONP1AZ7HDEX5090 |  | kerb works | 20d | 2014-07-23 | 2014-08-18 | DUKHCONP1AZ7MSEX5020 FF+7d, DUKHCONP1AZ6HDEX5090, DUKHCONP1AZ7MSEX5020 SS+7d | -8d |
| DUKHCONP1AZ7HDEX5095 |  | Cobble Stone Works | 20d | 2014-08-07 | 2014-08-30 | DUKHCONP1AZ7HDEX5090 SS+10d, DUKHCONP1AZ7HDEX5090 FF+10d | -8d |
| DUKHCONP1AZ7HDEX5100 |  | Interlock works | 20d | 2014-08-14 | 2014-09-06 | DUKHCONP1AZ7HDEX5095 FF+6d, DUKHCONP1AZ7HDEX5095 SS+6d | -8d |
|  | 25 | **SOFT LANDSCAPING** |  | 2014-08-20 | 2014-09-24 |  |  |

| ID | WBS | Task | Duration | Start | Finish | Predecessors | Total float |
| --- | --- | --- | --- | --- | --- | --- | --- |
| DUKHCONP1AZ7SLEX5105 |  | Laying of Grass/ green area | 25d | 2014-08-20 | 2014-09-17 | DUKHCONP1AZ7HDEX5100 FF+5d, DUKHCONP1AZ7HDEX5100 SS+5d | -8d |
| DUKHCONP1AZ7SLEX5110 |  | Laying of Palm tree | 25d | 2014-08-27 | 2014-09-24 | DUKHCONP1AZ7SLEX5105 SS+6d, DUKHCONP1AZ7SLEX5105 FF+6d | -8d |
|  | 30 | **TESTING AND COMMISSIONING** |  | 2014-10-16 | 2014-11-13 |  |  |
| DUKHCONP1AZ7ACTC8000 |  | Pre-Commissioning & Testing of AC Works | 25d | 2014-10-16 | 2014-11-13 | DUKHCONP1AZ7ARFF3395, DUKHCONP1AZ7HDEX5100, DUKHCONP1AZ7SLEX5105, DUKHCONP1AZ7ARRF3660, DUKHCONP1AZ7ACRF4635, DUKHCONP1AZ7SLEX5110, DUKHCONP1AZ7ARRF3620, DUKHCONP1AZ7ARGF3095, DUKHCONP1AZ6ACTC8000, DUKHCONP1AZ7MSEX5005, DUKHCONP1AZ7AREL3680, DUKHCONP1AZ7ACFF4625 | -24d |
| DUKHCONP1AZ7ELTC8010 |  | Pre-Commissioning & Testing of Electrical Works | 25d | 2014-10-16 | 2014-11-13 | DUKHCONP1AZ7ELFF4055, DUKHCONP1AZ7HDEX5100, DUKHCONP1AZ7SLEX5105, DUKHCONP1AZ7SLEX5110, DUKHCONP1AZ7ELGF4015, DUKHCONP1AZ6ELTC8010, DUKHCONP1AZ7ARRF3655, DUKHCONP1AZ7ARRF3660, DUKHCONP1AZ7ARGF3095, DUKHCONP1AZ7ELGF4030, DUKHCONP1AZ7MSEX5005, DUKHCONP1AZ7ELRF4075, DUKHCONP1AZ7ELFF4050, DUKHCONP1AZ7ELGF4025, DUKHCONP1AZ7AREL3680, DUKHCONP1AZ7ARRF3620, DUKHCONP1AZ7ARFF3395, DUKHCONP1AZ7ELFF4065 | -24d |
| DUKHCONP1AZ7PLTC8005 |  | Pre-Commissioning & Testing of Plumbing Works | 25d | 2014-10-16 | 2014-11-13 | DUKHCONP1AZ7HDEX5100, DUKHCONP1AZ7WEEX5065, DUKHCONP1AZ7ARRF3660, DUKHCONP1AZ7ARFF3395, DUKHCONP1AZ6PLTC8005, DUKHCONP1AZ7AREL3680, DUKHCONP1AZ7PLGF4320, DUKHCONP1AZ7MSEX5005, DUKHCONP1AZ7ARGF3095, DUKHCONP1AZ7ARRF3655, DUKHCONP1AZ7PLRF4355, DUKHCONP1AZ7PLRF4350, DUKHCONP1AZ7SLEX5110, DUKHCONP1AZ7ARRF3620, DUKHCONP1AZ7SLEX5105 | -24d |
|  | 45 | **ZONE - 8 (4 Twin Villas)** |  | 2013-09-23 | 2014-12-13 |  |  |
|  | 10 | **STRUCTURAL WORKS** |  | 2013-09-23 | 2014-07-16 |  |  |
|  | 10 | **SUB STRUCTURE** |  | 2013-09-23 | 2014-03-08 |  |  |
|  | 10 | **UPTO GRADE SLAB** |  | 2013-09-23 | 2014-03-08 |  |  |
| DUKHCONP1AZ8STUG1000 |  | Footing Excavation | 25d | 2013-09-23 | 2013-10-23 | DUKHCONP1AZ7STUG1000, DUKHCONP1AGNSP005000 | -11d |
| DUKHCONP1AZ8STUG1005 |  | Footing Antitermite | 23d | 2013-10-05 | 2013-11-02 | DUKHCONP1AZ8STUG1000 FF+5d, DUKHCONP1AZ8STUG1000 SS+10d | -11d |
| DUKHCONP1AZ8STUG1010 |  | Footing Blinding | 23d | 2013-10-08 | 2013-11-05 | DUKHCONP1AZ8STUG1005 FF+3d, DUKHCONP1AZ8STUG1005 SS+3d | -11d |
| DUKHCONP1AZ8STUG1015 |  | Footing Waterproofing & Screed | 25d | 2013-10-14 | 2013-11-13 | DUKHCONP1AZ8STUG1010 FF+5d, DUKHCONP1AZ8STUG1010 SS+5d | -11d |
| DUKHCONP1AZ8STUG1020 |  | Construction of foundations | 20d | 2013-10-31 | 2013-11-23 | DUKHCONP1AZ8STUG1015 SS+7d, DUKHCONP1AZ8STUG1015 FF+8d | -11d |
| DUKHCONP1AZ8STUG1025 |  | Construction of neck of columns | 25d | 2013-11-25 | 2013-12-24 | DUKHCONP1AZ8STUG1020 FF+7d, DUKHCONP1AZ7STUG1025, DUKHCONP1AZ8STUG1020 SS+8d | -24d |
| DUKHCONP1AZ8STUG1030 |  | Waterproofing Footing & Neck Column | 25d | 2013-12-04 | 2014-01-02 | DUKHCONP1AZ8STUG1025 SS+8d, DUKHCONP1AZ8STUG1025 FF+8d | -24d |
| DUKHCONP1AZ8STUG1035 |  | Backfilling Upto Grade Beam Bottom | 25d | 2013-12-19 | 2014-01-16 | DUKHCONP1AZ8STUG1030 FF+12d, DUKHCONP1AZ8STUG1030 SS+12d, DUKHCONP1AZ7STUG1035 | -24d |
| DUKHCONP1AZ8STUG1040 |  | Construction of Grade Beams | 25d | 2014-01-05 | 2014-02-02 | DUKHCONP1AZ8STUG1035 FF+14d, DUKHCONP1AZ8STUG1035 SS+14d | -24d |
| DUKHCONP1AZ8STUG1045 |  | Construction of slab on grade | 25d | 2014-02-06 | 2014-03-08 | DUKHCONP1AZ8STUG1040 FF+10d, DUKHCONP1AZ8PLUG4300 SS+8d, DUKHCONP1AZ7STUG1045, DUKHCONP1AZ8STUG1040 SS+10d, DUKHCONP1AZ8PLUG4300 FF+8d | -24d |
|  | 15 | **SUPERSTRUCTURE** |  | 2014-02-24 | 2014-07-16 |  |  |
|  | 10 | **GROUND FLOOR** |  | 2014-02-24 | 2014-04-20 |  |  |
| DUKHCONP1AZ8STGF2000 |  | Column-Rebar & Formwork | 25d | 2014-02-24 | 2014-03-24 | DUKHCONP1AZ8STUG1045 FF+7d, DUKHCONP1AZ8STUG1045 SS+14d, DUKHCONP1AZ7STGF2000 | -24d |
| DUKHCONP1AZ8STGF2005 |  | Column-Concrete | 24d | 2014-03-04 | 2014-03-31 | DUKHCONP1AZ8STGF2000 FF+2d, DUKHCONP1AZ8STGF2000 SS+7d | -22d |
| DUKHCONP1AZ8STGF2010 |  | Beam, Stairs ,Slab-Rebar & Formwork | 25d | 2014-03-19 | 2014-04-16 | DUKHCONP1AZ8STGF2005 FF+14d, DUKHCONP1AZ8STGF2005 SS+2d | -22d |
| DUKHCONP1AZ8STGF2015 |  | Beam, Stairs ,Slab-Concrete | 14d | 2014-04-05 | 2014-04-20 | DUKHCONP1AZ8STGF2010 FF+3d, DUKHCONP1AZ7STGF2015, DUKHCONP1AZ8STGF2010 SS+10d | -22d |
|  | 15 | **FIRST FLOORS** |  | 2014-04-07 | 2014-06-02 |  |  |
| DUKHCONP1AZ8STFF2020 |  | Column-Rebar & Formwork | 25d | 2014-04-07 | 2014-05-05 | DUKHCONP1AZ8STGF2015 SS+2d, DUKHCONP1AZ8STGF2015 FF+5d, DUKHCONP1AZ7STFF2020 | -22d |
| DUKHCONP1AZ8STFF2025 |  | Column-Concrete | 24d | 2014-04-16 | 2014-05-13 | DUKHCONP1AZ8STFF2020 SS+8d, DUKHCONP1AZ8STFF2020 FF+2d | -20d |
| DUKHCONP1AZ8STFF2030 |  | Beam, Stairs ,Slab-Rebar & Formwork | 25d | 2014-05-01 | 2014-05-29 | DUKHCONP1AZ8STFF2025 SS+2d, DUKHCONP1AZ8STFF2025 FF+14d | -20d |
| DUKHCONP1AZ8STFF2035 |  | Beam, Stairs ,Slab-Concrete | 14d | 2014-05-18 | 2014-06-02 | DUKHCONP1AZ8STFF2030 FF+3d, DUKHCONP1AZ8STFF2030 SS+10d, DUKHCONP1AZ7STFF2035 | -20d |
|  | 20 | **ROOF** |  | 2014-05-20 | 2014-07-16 |  |  |
| DUKHCONP1AZ8STRF2040 |  | Column-Rebar & Formwork | 18d | 2014-05-20 | 2014-06-09 | DUKHCONP1AZ7STRF2040, DUKHCONP1AZ8STFF2035 SS+2d, DUKHCONP1AZ8STFF2035 FF+3d | -16d |
| DUKHCONP1AZ8STRF2045 |  | Column-Concrete | 17d | 2014-05-24 | 2014-06-11 | DUKHCONP1AZ8STRF2040 SS+3d, DUKHCONP1AZ8STRF2040 FF+1d | -16d |
| DUKHCONP1AZ8STRF2050 |  | Slab-Rebar & Formwork - Head Room | 20d | 2014-05-26 | 2014-06-17 | DUKHCONP1AZ8STRF2045 SS+2d, DUKHCONP1AZ8STRF2045 FF+5d | -16d |
| DUKHCONP1AZ8STRF2055 |  | Slab-Concrete-Head room | 13d | 2014-06-05 | 2014-06-19 | DUKHCONP1AZ7STRF2055, DUKHCONP1AZ8STRF2050 SS+5d, DUKHCONP1AZ8STRF2050 FF+2d | -16d |
| DUKHCONP1AZ8STRF2060 |  | Construction of Parapets | 25d | 2014-06-08 | 2014-07-06 | DUKHCONP1AZ8STRF2055 SS+2d, DUKHCONP1AZ8STRF2055 FF+14d | 32d |
| DUKHCONP1AZ8STRF2065 |  | Construction of up stands/Plinth | 25d | 2014-06-18 | 2014-07-16 | DUKHCONP1AZ7STRF2065, DUKHCONP1AZ8STRF2060 SS+5d, DUKHCONP1AZ8STRF2060 FF+5d | 28d |
|  | 15 | **FINISHING WORKS** |  | 2014-05-05 | 2014-11-13 |  |  |
|  | 10 | **INTERNAL FINISHES** |  | 2014-05-05 | 2014-11-13 |  |  |
|  | 10 | **GROUND FLOOR** |  | 2014-05-05 | 2014-10-20 |  |  |
| DUKHCONP1AZ8ARGF3000 |  | Block work | 25d | 2014-05-05 | 2014-06-02 | DUKHCONP1AZ8STGF2015 FF+21d, DUKHCONP1AZ8STGF2015 SS+21d, DUKHCONP1AZ7ARGF3000 | -6d |
| DUKHCONP1AZ8ARGF3005 |  | Plastering work | 25d | 2014-05-27 | 2014-06-24 | DUKHCONP1AZ8PLGF4305 FF+5d, DUKHCONP1AZ8ARGF3000 SS+7d, DUKHCONP1AZ7ARGF3005, DUKHCONP1AZ8ELGF4000 SS+5d, DUKHCONP1AZ8ARGF3000 FF+7d, DUKHCONP1AZ8PLGF4305 SS+5d, DUKHCONP1AZ8ELGF4000 FF+5d | -6d |
| DUKHCONP1AZ8ARGF3010 |  | Flooring screed | 21d | 2014-06-04 | 2014-06-28 | DUKHCONP1AZ8ARGF3005 SS+7d, DUKHCONP1AZ8ARGF3005 FF+3d | 2d |
| DUKHCONP1AZ8ARGF3015 |  | Wet area waterproofing & Protection Screed | 15d | 2014-06-14 | 2014-06-30 | DUKHCONP1AZ7ARGF3015, DUKHCONP1AZ8ARGF3005 SS+7d, DUKHCONP1AZ8ARGF3005 FF+5d | -6d |
| DUKHCONP1AZ8ARGF3030 |  | Paint First coat | 25d | 2014-06-16 | 2014-07-14 | DUKHCONP1AZ8ARGF3005 FF+14d, DUKHCONP1AZ8ARGF3005 SS+14d, DUKHCONP1AZ7ARGF3030 | 5d |
| DUKHCONP1AZ8ARGF3020 |  | Ceramic Wall Tiling | 25d | 2014-06-19 | 2014-07-17 | DUKHCONP1AZ8PLGF4305 FF+4d, DUKHCONP1AZ8PLGF4310 FF+4d, DUKHCONP1AZ8PLGF4310 SS+4d, DUKHCONP1AZ8PLGF4305 SS+4d, DUKHCONP1AZ8ARGF3015 SS+5d, DUKHCONP1AZ7ARGF3020, DUKHCONP1AZ8ARGF3015 FF+5d | -6d |
| DUKHCONP1AZ8ARGF3025 |  | Porcelain Tile flooring | 25d | 2014-06-25 | 2014-07-23 | DUKHCONP1AZ7ARGF3025, DUKHCONP1AZ8ARGF3020 SS+5d, DUKHCONP1AZ8ARGF3010 FF+10d, DUKHCONP1AZ8ARGF3020 FF+5d, DUKHCONP1AZ8ARGF3010 SS+10d | -6d |
| DUKHCONP1AZ8ARGF3045 |  | Fixing of Suspension systems | 20d | 2014-07-13 | 2014-08-07 | DUKHCONP1AZ8ELGF4010 FF+5d, DUKHCONP1AZ8ARGF3030 SS+7d, DUKHCONP1AZ8ARGF3030 FF+7d, DUKHCONP1AZ8ARGF3025 FF+10d, DUKHCONP1AZ8ELGF4010 SS+5d, DUKHCONP1AZ8ARGF3025 SS+10d, DUKHCONP1AZ7ARGF3045 | -6d |
| DUKHCONP1AZ8ARGF3035 |  | Slate Tile Flooring & Skirting | 15d | 2014-07-15 | 2014-07-31 | DUKHCONP1AZ8ARGF3025 FF+7d, DUKHCONP1AZ8ARGF3025 SS+13d, DUKHCONP1AZ8ARGF3010 SS+13d, DUKHCONP1AZ8ARGF3010 FF+13d | -1d |
| DUKHCONP1AZ8ARGF3055 |  | Aluminum tile false ceiling | 25d | 2014-07-21 | 2014-08-21 | DUKHCONP1AZ8ACGF4600 SS+7d, DUKHCONP1AZ8ARGF3045 SS+7d, DUKHCONP1AZ8ACGF4600 FF+7d, DUKHCONP1AZ8ARGF3045 FF+7d | -3d |
| DUKHCONP1AZ8ARGF3040 |  | Cobble Tile flooring | 15d | 2014-07-22 | 2014-08-11 | DUKHCONP1AZ8ARGF3010 FF+13d, DUKHCONP1AZ8ARGF3025 FF+13d, DUKHCONP1AZ8ARGF3035 FF+4d, DUKHCONP1AZ8ARGF3010 SS+13d, DUKHCONP1AZ8ARGF3025 SS+13d, DUKHCONP1AZ8ARGF3035 SS+4d | -3d |
| DUKHCONP1AZ8ARGF3060 |  | Gypsum board false ceiling | 25d | 2014-07-24 | 2014-08-25 | DUKHCONP1AZ7ARGF3060, DUKHCONP1AZ8ARGF3045 SS+10d, DUKHCONP1AZ8ARGF3045 FF+10d, DUKHCONP1AZ8ACGF4600 FF+7d, DUKHCONP1AZ8ACGF4600 SS+7d | -6d |
| DUKHCONP1AZ8ARGF3050 |  | Granite - Stair case flooring & Skirting | 20d | 2014-07-30 | 2014-08-25 | DUKHCONP1AZ8ARGF3025 FF+13d, DUKHCONP1AZ8ARGF3040 FF+7d, DUKHCONP1AZ8ARGF3025 SS+13d, DUKHCONP1AZ8ARGF3040 SS+7d | -3d |
| DUKHCONP1AZ8ARGF3065 |  | Wooden door & PVC Door | 15d | 2014-08-17 | 2014-09-02 | DUKHCONP1AZ8ARGF3050 SS+7d, DUKHCONP1AZ8ARGF3035 SS+7d, DUKHCONP1AZ8ARGF3035 FF+7d, DUKHCONP1AZ8ARGF3050 FF+7d, DUKHCONP1AZ7ARGF3065 | -3d |
| DUKHCONP1AZ8ARGF3070 |  | Aluminum doors | 15d | 2014-08-23 | 2014-09-08 | DUKHCONP1AZ8ARGF3065 FF+5d, DUKHCONP1AZ8ARGF3065 SS+5d, DUKHCONP1AZ7ARGF3070 | -3d |
| DUKHCONP1AZ8ARGF3075 |  | Carpentry & Joinery Works | 20d | 2014-08-28 | 2014-09-20 | DUKHCONP1AZ8ARGF3070 SS+5d, DUKHCONP1AZ8ARGF3070 FF+7d, DUKHCONP1AZ7ARGF3075 | -3d |
| DUKHCONP1AZ8ARGF3080 |  | Aluminum windows | 20d | 2014-08-30 | 2014-09-21 | DUKHCONP1AZ8ARGF3070 FF+6d, DUKHCONP1AZ8ARGF3070 SS+6d, DUKHCONP1AZ7ARGF3080 | 7d |
| DUKHCONP1AZ8ARGF3085 |  | S.S.Balustrade | 20d | 2014-09-06 | 2014-09-28 | DUKHCONP1AZ8ARGF3075 FF+7d, DUKHCONP1AZ8ARGF3050 FF+7d, DUKHCONP1AZ8ARGF3050 SS+7d, DUKHCONP1AZ8ARGF3075 SS+7d | 2d |
| DUKHCONP1AZ8ARGF3090 |  | Installation of Granite Counter Top | 15d | 2014-09-10 | 2014-09-27 | DUKHCONP1AZ8ARGF3075 SS+7d, DUKHCONP1AZ8ARGF3075 FF+6d | -3d |
| DUKHCONP1AZ8ARGF3095 |  | Final Painting | 25d | 2014-09-20 | 2014-10-20 | DUKHCONP1AZ8ARGF3080 FF+8d, DUKHCONP1AZ8ARGF3040 FF+13d, DUKHCONP1AZ8ARGF3040 SS+13d, DUKHCONP1AZ8ARGF3060 FF+8d, DUKHCONP1AZ8ARGF3080 SS+8d, DUKHCONP1AZ8ARGF3090 FF+8d, DUKHCONP1AZ7ARGF3095, DUKHCONP1AZ8ARGF3035 FF+13d, DUKHCONP1AZ8ARGF3070 SS+5d, DUKHCONP1AZ8ARGF3085 SS+7d, DUKHCONP1AZ8ARGF3030 SS+10d, DUKHCONP1AZ8ARGF3030 FF+10d, DUKHCONP1AZ8ARGF3035 SS+13d, DUKHCONP1AZ8ARGF3060 SS+8d, DUKHCONP1AZ8ACGF4610 FF+10d, DUKHCONP1AZ8ARGF3070 FF+5d, DUKHCONP1AZ8ARGF3090 SS+8d, DUKHCONP1AZ8ACGF4610 SS+10d, DUKHCONP1AZ8ARGF3085 FF+7d | -3d |
|  | 15 | **FIRST FLOORS** |  | 2014-06-16 | 2014-11-13 |  |  |
| DUKHCONP1AZ8ARFF3300 |  | Block work | 25d | 2014-06-16 | 2014-07-14 | DUKHCONP1AZ8STFF2035 FF+21d, DUKHCONP1AZ8STFF2020 SS+21d, DUKHCONP1AZ8STFF2035 SS+21d, DUKHCONP1AZ8STFF2020 FF+21d, DUKHCONP1AZ7ARFF3300 | -24d |
| DUKHCONP1AZ8ARFF3305 |  | Plastering work | 25d | 2014-07-10 | 2014-08-11 | DUKHCONP1AZ8ARFF3300 FF+7d, DUKHCONP1AZ7ARFF3305, DUKHCONP1AZ8PLFF4325 SS+6d, DUKHCONP1AZ8ARFF3300 SS+7d, DUKHCONP1AZ8ELFF4035 SS+5d, DUKHCONP1AZ8PLFF4325 FF+6d, DUKHCONP1AZ8ELFF4035 FF+5d | -24d |
| DUKHCONP1AZ8ARFF3310 |  | Flooring screed | 21d | 2014-07-19 | 2014-08-14 | DUKHCONP1AZ8ARFF3305 SS+7d, DUKHCONP1AZ8ARFF3305 FF+3d | -12d |
| DUKHCONP1AZ8ARFF3330 |  | Paint First coat | 25d | 2014-07-27 | 2014-08-27 | DUKHCONP1AZ8ARFF3305 SS+14d, DUKHCONP1AZ8ARFF3305 FF+14d | -10d |
| DUKHCONP1AZ8ARFF3315 |  | Wet area waterproofing | 15d | 2014-07-30 | 2014-08-19 | DUKHCONP1AZ7ARFF3315, DUKHCONP1AZ8ARFF3305 SS+7d, DUKHCONP1AZ8ARFF3305 FF+7d | -24d |
| DUKHCONP1AZ8ARFF3320 |  | Ceramic Wall Tiling | 25d | 2014-08-10 | 2014-09-07 | DUKHCONP1AZ8PLFF4325 SS+4d, DUKHCONP1AZ8ARFF3315 FF+6d, DUKHCONP1AZ8ARFF3315 SS+6d, DUKHCONP1AZ8PLFF4330 SS+7d, DUKHCONP1AZ7ARFF3320, DUKHCONP1AZ8PLFF4325 FF+4d, DUKHCONP1AZ8PLFF4330 FF+7d | -24d |
| DUKHCONP1AZ8ARFF3325 |  | Porcelain Tile flooring | 25d | 2014-08-17 | 2014-09-14 | DUKHCONP1AZ8ARFF3320 SS+6d, DUKHCONP1AZ7ARFF3325, DUKHCONP1AZ8ARFF3310 FF+10d, DUKHCONP1AZ8ARFF3310 SS+10d, DUKHCONP1AZ8ARFF3320 FF+6d | -24d |
| DUKHCONP1AZ8ARFF3345 |  | Fixing of Suspension systems | 20d | 2014-08-30 | 2014-09-21 | DUKHCONP1AZ8ELFF4045 FF+5d, DUKHCONP1AZ7ARFF3345, DUKHCONP1AZ8ARFF3325 FF+6d, DUKHCONP1AZ8ARFF3330 SS+7d, DUKHCONP1AZ8ARFF3330 FF+7d, DUKHCONP1AZ8ELFF4045 SS+5d, DUKHCONP1AZ8ARFF3325 SS+6d | -24d |

| ID | WBS | Task | Duration | Start | Finish | Predecessors | Total float |
| --- | --- | --- | --- | --- | --- | --- | --- |
| DUKHCONP1AZ8ARFF3335 |  | Slate Tile Flooring & Skirting | 15d | 2014-09-03 | 2014-09-20 | DUKHCONP1AZ8ARFF3310 SS+13d, DUKHCONP1AZ8ARFF3310 FF+13d, DUKHCONP1AZ8ARFF3325 FF+5d, DUKHCONP1AZ8ARFF3325 SS+13d | -16d |
| DUKHCONP1AZ8ARFF3360 |  | Gypsum board false ceiling | 25d | 2014-09-06 | 2014-10-04 | DUKHCONP1AZ8ACFF4615 FF+7d, DUKHCONP1AZ8ARFF3345 SS+6d, DUKHCONP1AZ8ARFF3345 FF+6d, DUKHCONP1AZ8ACFF4615 SS+7d, DUKHCONP1AZ7ARFF3360 | -24d |
| DUKHCONP1AZ8ARFF3350 |  | Granite - Stair case flooring & Skirting | 20d | 2014-09-07 | 2014-09-29 | DUKHCONP1AZ8ARFF3325 FF+13d, DUKHCONP1AZ8ARFF3325 SS+13d | -22d |
| DUKHCONP1AZ8ARFF3365 |  | Wooden door | 15d | 2014-09-21 | 2014-10-07 | DUKHCONP1AZ8ARFF3360 SS+3d, DUKHCONP1AZ8ARFF3350 SS+5d, DUKHCONP1AZ8ARFF3335 SS+7d, DUKHCONP1AZ8ARFF3335 FF+7d, DUKHCONP1AZ8ARFF3350 FF+5d, DUKHCONP1AZ8ARFF3360 FF+3d, DUKHCONP1AZ7ARFF3365 | -24d |
| DUKHCONP1AZ8ARFF3370 |  | Aluminum Door | 20d | 2014-09-21 | 2014-10-15 | DUKHCONP1AZ7ARFF3370, DUKHCONP1AZ8ARFF3365 FF, DUKHCONP1AZ8ARFF3365 SS | -24d |
| DUKHCONP1AZ8ARFF3375 |  | Carpentry & Joinery Works | 25d | 2014-09-27 | 2014-10-27 | DUKHCONP1AZ7ARFF3375, DUKHCONP1AZ8ARFF3370 FF+5d, DUKHCONP1AZ8ARFF3370 SS+5d | -24d |
| DUKHCONP1AZ8ARFF3380 |  | Aluminum windows | 20d | 2014-09-28 | 2014-10-22 | DUKHCONP1AZ8ARFF3370 FF+6d, DUKHCONP1AZ8ARFF3370 SS+6d | -20d |
| DUKHCONP1AZ8ARFF3385 |  | Handrail & Balustrade | 20d | 2014-10-08 | 2014-11-02 | DUKHCONP1AZ8ARFF3350 SS+7d, DUKHCONP1AZ8ARFF3350 FF+7d, DUKHCONP1AZ8ARFF3375 SS+5d, DUKHCONP1AZ8ARFF3375 FF+5d | -24d |
| DUKHCONP1AZ8ARFF3390 |  | Installation of Granite Counter Top | 20d | 2014-10-08 | 2014-11-02 | DUKHCONP1AZ8ARFF3375 FF+5d, DUKHCONP1AZ8ARFF3375 SS+6d | -23d |
| DUKHCONP1AZ8ARFF3395 |  | Final Painting | 25d | 2014-10-16 | 2014-11-13 | DUKHCONP1AZ8ARFF3330 FF+10d, DUKHCONP1AZ8ARFF3375 SS+8d, DUKHCONP1AZ8ARFF3385 FF+5d, DUKHCONP1AZ8ACFF4625 SS+6d, DUKHCONP1AZ8ARFF3360 FF+10d, DUKHCONP1AZ8ARFF3390 SS+4d, DUKHCONP1AZ8ARFF3335 FF+8d, DUKHCONP1AZ7ARFF3395, DUKHCONP1AZ8ARFF3365 SS+8d, DUKHCONP1AZ8ARFF3375 FF+8d, DUKHCONP1AZ8ARFF3335 SS+8d, DUKHCONP1AZ8ARFF3350 FF+8d, DUKHCONP1AZ8ARFF3360 SS+10d, DUKHCONP1AZ8ARFF3380 SS+10d, DUKHCONP1AZ8ARFF3380 FF+10d, DUKHCONP1AZ8ARFF3390 FF+6d, DUKHCONP1AZ8ACFF4625 FF+6d, DUKHCONP1AZ8ARFF3350 SS+8d, DUKHCONP1AZ8ARFF3365 FF+8d, DUKHCONP1AZ8ARFF3330 SS+10d, DUKHCONP1AZ8ARFF3385 SS+5d | -24d |
|  | 20 | **ROOF** |  | 2014-06-30 | 2014-09-06 |  |  |
| DUKHCONP1AZ8ARRF3600 |  | Block work | 20d | 2014-06-30 | 2014-07-22 | DUKHCONP1AZ7ARRF3600, DUKHCONP1AZ8STRF2055 SS+21d, DUKHCONP1AZ8STRF2055 FF+21d | 28d |
| DUKHCONP1AZ8ARRF3605 |  | Plastering work | 20d | 2014-07-08 | 2014-07-30 | DUKHCONP1AZ8ARRF3600 SS+7d, DUKHCONP1AZ8ARRF3600 FF+7d | 28d |
| DUKHCONP1AZ8ARRF3610 |  | Flooring screed | 15d | 2014-07-22 | 2014-08-11 | DUKHCONP1AZ8ARRF3605 SS+7d, DUKHCONP1AZ8ARRF3605 FF+7d | 33d |
| DUKHCONP1AZ8ARRF3695 |  | Painting -Storage area | 20d | 2014-07-30 | 2014-08-25 | DUKHCONP1AZ8ARRF3610 SS+7d, DUKHCONP1AZ8ARRF3610 FF+7d | 33d |
| DUKHCONP1AZ8ARRF3620 |  | Epoxy Painting -Storage area | 15d | 2014-08-20 | 2014-09-06 | DUKHCONP1AZ8ARRF3695 FF+10d, DUKHCONP1AZ8ARRF3695 SS+10d | 33d |
|  | 15 | **EXTERNAL FINISHES** |  | 2014-07-22 | 2014-10-14 |  |  |
|  | 10 | **ROOF** |  | 2014-08-09 | 2014-10-14 |  |  |
| DUKHCONP1AZ8ARRF3630 |  | Leveling Screed for Waterproofing | 25d | 2014-08-09 | 2014-09-06 | DUKHCONP1AZ8STRF2060 FF+10d, DUKHCONP1AZ8STRF2065 SS+10d, DUKHCONP1AZ8STRF2060 SS+10d, DUKHCONP1AZ7ARRF3630, DUKHCONP1AZ8STRF2065 FF+10d | -3d |
| DUKHCONP1AZ8ARRF3635 |  | Laying of Waterproofing Membrane | 25d | 2014-08-12 | 2014-09-09 | DUKHCONP1AZ8ARRF3630 SS+3d, DUKHCONP1AZ8ARRF3630 FF+3d | -3d |
| DUKHCONP1AZ8ARRF3640 |  | Installation of Insulation & Protection | 25d | 2014-08-17 | 2014-09-14 | DUKHCONP1AZ8ARRF3635 SS+4d, DUKHCONP1AZ8ARRF3635 FF+4d | -3d |
| DUKHCONP1AZ8ARRF3645 |  | Lime Stone Chips & Paving slab Installation | 25d | 2014-08-21 | 2014-09-18 | DUKHCONP1AZ8ARRF3640 SS+4d, DUKHCONP1AZ8ARRF3640 FF+4d | -3d |
| DUKHCONP1AZ8ARRF3650 |  | Install. of Gal. Frame & Aluminum Slat Screen | 25d | 2014-08-30 | 2014-09-27 | DUKHCONP1AZ8ARRF3645 FF+7d, DUKHCONP1AZ8ARRF3645 SS+7d | -3d |
| DUKHCONP1AZ8ARRF3655 |  | Installation of Pumps Protection cabinets | 20d | 2014-09-14 | 2014-10-06 | DUKHCONP1AZ8ARRF3645 FF+7d, DUKHCONP1AZ8ARRF3650 FF+8d, DUKHCONP1AZ8ARRF3650 SS+8d, DUKHCONP1AZ8ARRF3645 SS+7d, DUKHCONP1AZ7ARRF3655 | -3d |
| DUKHCONP1AZ8ARRF3660 |  | Installation of Access Ladder | 15d | 2014-09-25 | 2014-10-14 | DUKHCONP1AZ8ARRF3655 SS+5d, DUKHCONP1AZ8ARRF3655 FF+5d | 2d |
|  | 15 | **ELEVATION** |  | 2014-07-22 | 2014-09-15 |  |  |
| DUKHCONP1AZ8AREL3665 |  | External Plastering | 25d | 2014-07-22 | 2014-08-23 | DUKHCONP1AZ8ARRF3605 SS+7d, DUKHCONP1AZ8ARFF3305 FF+7d, DUKHCONP1AZ8ARFF3305 SS+7d, DUKHCONP1AZ7AREL3665, DUKHCONP1AZ8STRF2065 FF+7d, DUKHCONP1AZ8STRF2065 SS+7d | 23d |
| DUKHCONP1AZ8AREL3670 |  | External stone cladding works | 20d | 2014-08-12 | 2014-09-03 | DUKHCONP1AZ8AREL3665 SS+10d, DUKHCONP1AZ8AREL3665 FF+10d, DUKHCONP1AZ7AREL3670 | 25d |
| DUKHCONP1AZ8AREL3680 |  | External Painting | 20d | 2014-08-24 | 2014-09-15 | DUKHCONP1AZ8ARRF3695 FF+4d, DUKHCONP1AZ7AREL3680, DUKHCONP1AZ8ARRF3695 SS+4d, DUKHCONP1AZ8AREL3670 FF+10d, DUKHCONP1AZ8AREL3670 SS+10d | 25d |
|  | 20 | **MEP WORKS** |  | 2014-01-28 | 2014-11-12 |  |  |
|  | 10 | **ELECTRICAL WORKS** |  | 2014-05-11 | 2014-11-12 |  |  |
|  | 10 | **GROUND FLOOR** |  | 2014-05-11 | 2014-09-20 |  |  |
| DUKHCONP1AZ8ELGF4000 |  | Fixing of wall conduits & switch socket boxes | 25d | 2014-05-11 | 2014-06-08 | DUKHCONP1AZ8ARGF3000 FF+5d, DUKHCONP1AZ8ARGF3000 SS+5d | 3d |
| DUKHCONP1AZ8ELGF4005 |  | Cable tray & trunking installation | 20d | 2014-05-22 | 2014-06-14 | DUKHCONP1AZ8ELGF4000 FF+5d, DUKHCONP1AZ7ELGF4005, DUKHCONP1AZ8ELGF4000 SS+5d | 21d |
| DUKHCONP1AZ8ELGF4010 |  | Installation of wiring & Main Cabling | 25d | 2014-05-31 | 2014-06-28 | DUKHCONP1AZ8ELGF4005 FF+7d, DUKHCONP1AZ8ELGF4005 SS+7d | 21d |
| DUKHCONP1AZ8ELGF4015 |  | Install. of CAMS & Fire Fighting Accessories | 25d | 2014-08-05 | 2014-09-02 | DUKHCONP1AZ8ARGF3055 FF+7d, DUKHCONP1AZ8ARGF3060 FF+7d, DUKHCONP1AZ8ARGF3055 SS+7d, DUKHCONP1AZ8ARGF3060 SS+7d, DUKHCONP1AZ7ELGF4015 | 6d |
| DUKHCONP1AZ8ELGF4020 |  | Installation of DBS,MCCB Accessories. | 20d | 2014-08-11 | 2014-09-02 | DUKHCONP1AZ8ARGF3055 FF+7d, DUKHCONP1AZ8ELGF4010 SS+5d, DUKHCONP1AZ8ELGF4010 FF+5d, DUKHCONP1AZ8ARGF3055 SS+7d, DUKHCONP1AZ8ARGF3060 FF+7d, DUKHCONP1AZ8ARGF3060 SS+7d | -6d |
| DUKHCONP1AZ8ELGF4025 |  | Installation of Lighting fixtures & Accessories | 25d | 2014-08-23 | 2014-09-20 | DUKHCONP1AZ8ARGF3060 SS+10d, DUKHCONP1AZ8ARGF3060 FF+10d, DUKHCONP1AZ8ARGF3055 FF+10d, DUKHCONP1AZ8ELGF4020 SS+10d, DUKHCONP1AZ8ARGF3055 SS+10d, DUKHCONP1AZ8ELGF4020 FF+10d, DUKHCONP1AZ7ELGF4025 | 1d |
| DUKHCONP1AZ8ELGF4030 |  | Installation of Telephone System | 20d | 2014-08-23 | 2014-09-14 | DUKHCONP1AZ8ELGF4020 SS+10d, DUKHCONP1AZ8ARGF3060 SS+5d, DUKHCONP1AZ7ELGF4030, DUKHCONP1AZ8ELGF4020 FF+10d, DUKHCONP1AZ8ARGF3060 FF+5d | -6d |
|  | 15 | **FIRST FLOORS** |  | 2014-06-22 | 2014-10-26 |  |  |
| DUKHCONP1AZ8ELFF4035 |  | Fixing of wall conduits & switch socket boxes | 25d | 2014-06-22 | 2014-07-20 | DUKHCONP1AZ8ARFF3300 FF+5d, DUKHCONP1AZ8ARFF3300 SS+5d | -13d |
| DUKHCONP1AZ8ELFF4040 |  | Cable tray & trunking installation | 20d | 2014-07-03 | 2014-07-26 | DUKHCONP1AZ8ELFF4035 SS+5d, DUKHCONP1AZ8ELFF4035 FF+5d | 5d |
| DUKHCONP1AZ8ELFF4045 |  | Installation of wiring & Main Cabling | 25d | 2014-07-14 | 2014-08-14 | DUKHCONP1AZ8ELFF4040 FF+7d, DUKHCONP1AZ8ELFF4040 SS+7d, DUKHCONP1AZ7ELFF4045 | 3d |
| DUKHCONP1AZ8ELFF4055 |  | Install. of CAMS & Fire Fighting Accessories | 25d | 2014-09-14 | 2014-10-14 | DUKHCONP1AZ7ELFF4055, DUKHCONP1AZ8ELGF4015 FF+5d, DUKHCONP1AZ8ARFF3360 SS+7d, DUKHCONP1AZ8ARFF3360 FF+7d, DUKHCONP1AZ8ELGF4015 SS+5d | -23d |
| DUKHCONP1AZ8ELFF4050 |  | Installation of Telephone System | 25d | 2014-09-15 | 2014-10-15 | DUKHCONP1AZ8ELGF4030 SS+10d, DUKHCONP1AZ8ARFF3360 FF+5d, DUKHCONP1AZ8MSEX5010, DUKHCONP1AZ8ELGF4030 FF+10d, DUKHCONP1AZ8ARFF3360 SS+5d | -16d |
| DUKHCONP1AZ8ELFF4060 |  | Installation of DBS,MCCB Accessories. | 20d | 2014-09-17 | 2014-10-12 | DUKHCONP1AZ8ELFF4045 FF+5d, DUKHCONP1AZ8ARFF3360 FF+5d, DUKHCONP1AZ7ELFF4060, DUKHCONP1AZ8ELFF4045 SS+5d, DUKHCONP1AZ8ARFF3360 SS+8d | -21d |
| DUKHCONP1AZ8ELFF4065 |  | Installation of Lighting fixtures & Accessories | 25d | 2014-09-25 | 2014-10-26 | DUKHCONP1AZ8ARFF3360 SS+10d, DUKHCONP1AZ7ELFF4065, DUKHCONP1AZ8ARFF3360 FF+10d, DUKHCONP1AZ8ELGF4025 SS+5d, DUKHCONP1AZ8ELGF4025 FF+5d, DUKHCONP1AZ8ELFF4060 SS+5d, DUKHCONP1AZ8ELFF4060 FF+5d | -23d |
|  | 20 | **ROOF** |  | 2014-10-12 | 2014-11-12 |  |  |
| DUKHCONP1AZ8ELRF4070 |  | Installation of Isolator | 18d | 2014-10-12 | 2014-11-01 | DUKHCONP1AZ8ELFF4045 SS+10d, DUKHCONP1AZ8ELFF4065 SS+5d, DUKHCONP1AZ8ELFF4045 FF+10d, DUKHCONP1AZ8ELFF4050 FF+7d, DUKHCONP1AZ8ELFF4050 SS+5d, DUKHCONP1AZ8ELFF4065 FF+5d, DUKHCONP1AZ8ARRF3645 FF+7d, DUKHCONP1AZ8ARRF3645 SS+7d | -23d |
| DUKHCONP1AZ8ELRF4075 |  | Installation of TV Dish Antenna | 23d | 2014-10-18 | 2014-11-12 | DUKHCONP1AZ8ELRF4070 SS+5d, DUKHCONP1AZ8ELRF4070 FF+5d | -23d |
|  | 15 | **PLUMBING, DRAINAGE & FIRE FIGHTING WORKS** |  | 2014-01-28 | 2014-11-12 |  |  |
|  | 10 | **GROUND FLOOR** |  | 2014-01-28 | 2014-09-20 |  |  |
| DUKHCONP1AZ8PLUG4300 |  | Drainage / Storm Pipes in Grade Slab | 16d | 2014-01-28 | 2014-02-16 | DUKHCONP1AZ8STUG1040 FF+11d, DUKHCONP1AZ8STUG1040 SS+11d | -24d |
| DUKHCONP1AZ8PLGF4305 |  | Installation of Plumbing pipes & testing | 18d | 2014-05-21 | 2014-06-10 | DUKHCONP1AZ7PLGF4305, DUKHCONP1AZ8ARGF3000 FF+7d, DUKHCONP1AZ8ARGF3000 SS+7d | -6d |
| DUKHCONP1AZ8PLGF4310 |  | Installation of Drainage pipes &testing | 18d | 2014-05-21 | 2014-06-10 | DUKHCONP1AZ8ARGF3000 SS+7d, DUKHCONP1AZ8PLGF4305 FF, DUKHCONP1AZ8PLGF4305 SS, DUKHCONP1AZ8ARGF3000 FF+7d | -3d |
| DUKHCONP1AZ8PLGF4315 |  | Sanitary Fittings & Accessories | 20d | 2014-08-23 | 2014-09-14 | DUKHCONP1AZ8PLGF4310 SS+5d, DUKHCONP1AZ8ARGF3065 FF+5d, DUKHCONP1AZ8PLGF4310 FF+5d, DUKHCONP1AZ8ARGF3065 SS+5d, DUKHCONP1AZ7PLGF4315 | 21d |
| DUKHCONP1AZ8PLGF4320 |  | Installation of Water Heater | 15d | 2014-09-03 | 2014-09-20 | DUKHCONP1AZ8PLGF4315 SS+5d, DUKHCONP1AZ8PLGF4315 FF+5d, DUKHCONP1AZ7PLGF4320, DUKHCONP1AZ8ARGF3060 SS+5d, DUKHCONP1AZ8ARGF3060 FF+5d | 21d |
|  | 15 | **FIRST FLOORS** |  | 2014-07-03 | 2014-10-21 |  |  |
| DUKHCONP1AZ8PLFF4325 |  | Installation of Plumbing pipes & testing | 18d | 2014-07-03 | 2014-07-23 | DUKHCONP1AZ8ARFF3300 SS+7d, DUKHCONP1AZ8ARFF3300 FF+8d | -24d |
| DUKHCONP1AZ8PLFF4330 |  | Installation of Drainage pipes & testing | 18d | 2014-07-03 | 2014-07-23 | DUKHCONP1AZ8PLFF4325 SS, DUKHCONP1AZ8ARFF3300 SS+7d, DUKHCONP1AZ7PLFF4330, DUKHCONP1AZ8PLFF4325 FF, DUKHCONP1AZ8ARFF3300 FF+7d | -2d |
| DUKHCONP1AZ8PLFF4335 |  | Sanitary Fittings & Accessories | 20d | 2014-09-21 | 2014-10-15 | DUKHCONP1AZ8ARFF3365 SS, DUKHCONP1AZ8PLFF4330 SS+5d, DUKHCONP1AZ8ARFF3365 FF+5d, DUKHCONP1AZ8PLFF4330 FF+5d | -19d |
| DUKHCONP1AZ8PLFF4340 |  | Installation of Water Heater | 15d | 2014-10-02 | 2014-10-21 | DUKHCONP1AZ8ARFF3360 FF+5d, DUKHCONP1AZ7PLFF4340, DUKHCONP1AZ8PLFF4335 FF+5d, DUKHCONP1AZ8ARFF3360 SS+5d, DUKHCONP1AZ8PLFF4335 SS+5d | -19d |
|  | 20 | **ROOF** |  | 2014-07-22 | 2014-11-12 |  |  |
| DUKHCONP1AZ8PLRF4345 |  | Installation of Plumbing pipes & fittings | 15d | 2014-07-22 | 2014-08-11 | DUKHCONP1AZ8ARRF3605 FF+7d, DUKHCONP1AZ8ARRF3605 SS+7d | 32d |
| DUKHCONP1AZ8PLRF4350 |  | Installation of Rain water Pipes | 15d | 2014-09-08 | 2014-09-24 | DUKHCONP1AZ8PLRF4345 FF+8d, DUKHCONP1AZ7PLRF4350, DUKHCONP1AZ8PLFF4330 SS+5d, DUKHCONP1AZ8ARRF3645 SS+5d, DUKHCONP1AZ8ARRF3645 FF+5d, DUKHCONP1AZ8AREL3665 FF+7d, DUKHCONP1AZ8PLRF4345 SS+8d, DUKHCONP1AZ8AREL3665 SS+7d, DUKHCONP1AZ8PLFF4330 FF+5d | 2d |
| DUKHCONP1AZ8PLRF4355 |  | Roof Water Tank Installation & Connections | 25d | 2014-10-15 | 2014-11-12 | DUKHCONP1AZ8PLRF4345 FF+8d, DUKHCONP1AZ8PLRF4345 SS+8d, DUKHCONP1AZ8ARRF3655 SS+5d, DUKHCONP1AZ8PLRF4350 FF+5d, DUKHCONP1AZ7PLRF4355, DUKHCONP1AZ8PLFF4340 SS+5d, DUKHCONP1AZ8PLRF4350 SS+5d, DUKHCONP1AZ8PLFF4340 FF+5d, DUKHCONP1AZ8ARRF3655 FF+5d | -23d |
|  | 20 | **AC WORKS** |  | 2014-06-10 | 2014-11-10 |  |  |
|  | 10 | **GROUND FLOOR** |  | 2014-06-10 | 2014-09-17 |  |  |
| DUKHCONP1AZ8ACGF4600 |  | Installation AC Pipes | 20d | 2014-06-10 | 2014-07-02 | DUKHCONP1AZ8ARGF3005 SS+7d, DUKHCONP1AZ7ACGF4600, DUKHCONP1AZ8ARGF3005 FF+7d | 25d |
| DUKHCONP1AZ8ACGF4605 |  | Fixing of Ventilation Equipments | 25d | 2014-08-05 | 2014-09-02 | DUKHCONP1AZ8ACGF4600 FF+10d, DUKHCONP1AZ8ARGF3060 SS+7d, DUKHCONP1AZ8ARGF3055 FF+7d, DUKHCONP1AZ8ARGF3060 FF+7d, DUKHCONP1AZ8ARGF3055 SS+7d, DUKHCONP1AZ8ACGF4600 SS+10d, DUKHCONP1AZ7ACGF4605 | 8d |

| ID | WBS | Task | Duration | Start | Finish | Predecessors | Total float |
| --- | --- | --- | --- | --- | --- | --- | --- |
| DUKHCONP1AZ8ACGF4610 |  | Fixing of Split AC | 20d | 2014-08-26 | 2014-09-17 | DUKHCONP1AZ7ACGF4610, DUKHCONP1AZ8ACGF4605 SS+13d, DUKHCONP1AZ8ACGF4605 FF+13d | 8d |
|  | 15 | **FIRST FLOORS** |  | 2014-07-24 | 2014-10-29 |  |  |
| DUKHCONP1AZ8ACFF4615 |  | Installation AC Pipes | 20d | 2014-07-24 | 2014-08-19 | DUKHCONP1AZ7ACFF4615, DUKHCONP1AZ8ARFF3305 SS+7d, DUKHCONP1AZ8ARFF3305 FF+7d | 3d |
| DUKHCONP1AZ8ACFF4620 |  | Fixing of Ventilation Equipments | 25d | 2014-09-14 | 2014-10-14 | DUKHCONP1AZ8ACFF4615 SS+10d, DUKHCONP1AZ8ACFF4615 FF+10d, DUKHCONP1AZ8ARFF3360 FF+7d, DUKHCONP1AZ7ACFF4620, DUKHCONP1AZ8ARFF3360 SS+7d | -22d |
| DUKHCONP1AZ8ACFF4625 |  | Fixing of Split AC | 20d | 2014-10-05 | 2014-10-29 | DUKHCONP1AZ8ACFF4620 SS+13d, DUKHCONP1AZ8ACFF4620 FF+13d, DUKHCONP1AZ7ACFF4625 | -22d |
|  | 20 | **ROOF** |  | 2014-08-30 | 2014-11-10 |  |  |
| DUKHCONP1AZ8ACRF4630 |  | Installation of Refrigerant Pipes | 25d | 2014-08-30 | 2014-09-27 | DUKHCONP1AZ8ACGF4600 FF+7d, DUKHCONP1AZ8ARRF3645 FF+7d, DUKHCONP1AZ8ACFF4615 FF+7d, DUKHCONP1AZ7ACRF4630, DUKHCONP1AZ8ARRF3645 SS+7d, DUKHCONP1AZ8ACFF4615 SS+7d, DUKHCONP1AZ8ACGF4600 SS+7d | 10d |
| DUKHCONP1AZ8ACRF4635 |  | Installation of Condensing Unit | 25d | 2014-10-13 | 2014-11-10 | DUKHCONP1AZ8ACRF4630 SS+5d, DUKHCONP1AZ7ACRF4635, DUKHCONP1AZ8ACGF4610 SS+5d, DUKHCONP1AZ8ACRF4630 FF+5d, DUKHCONP1AZ8ACFF4625 SS+5d, DUKHCONP1AZ8ACGF4610 FF+5d, DUKHCONP1AZ8ACFF4625 FF+5d | -21d |
|  | 25 | **EXTERNAL WORKS** |  | 2014-06-17 | 2014-11-03 |  |  |
|  | 10 | **MISCELLANEOUS** |  | 2014-06-17 | 2014-10-30 |  |  |
| DUKHCONP1AZ8MSEX5000 |  | Construction of Manholes | 25d | 2014-06-17 | 2014-07-15 | DUKHCONP1AZ8STRF2055 SS+10d, DUKHCONP1AZ8PLGF4310 SS+10d, DUKHCONP1AZ8STRF2055 FF+10d, DUKHCONP1AZ8PLGF4310 FF+10d | -16d |
| DUKHCONP1AZ8MSEX5005 |  | Construction of Soak pit, Chambers | 25d | 2014-07-01 | 2014-07-29 | DUKHCONP1AZ8MSEX5000 FF+12d, DUKHCONP1AZ8MSEX5000 SS+12d | -16d |
| DUKHCONP1AZ8MSEX5015 |  | Construction of grease Trap | 20d | 2014-07-21 | 2014-08-16 | DUKHCONP1AZ8MSEX5005 FF+12d, DUKHCONP1AZ8MSEX5005 SS+12d | -16d |
| DUKHCONP1AZ8MSEX5020 |  | Construction Entrance Ramp | 25d | 2014-08-11 | 2014-09-08 | DUKHCONP1AZ7MSEX5020, DUKHCONP1AZ8STRF2055 SS, DUKHCONP1AZ8STRF2055 FF | -8d |
| DUKHCONP1AZ8MSEX5010 |  | Telephone cable laying | 25d | 2014-08-17 | 2014-09-14 | DUKHCONP1AZ8MSEX5015 | -16d |
| DUKHCONP1AZ8MSEX5025 |  | SS.Handrails and Balustrades | 20d | 2014-08-28 | 2014-09-20 | DUKHCONP1AZ8MSEX5020 SS+10d, DUKHCONP1AZ8MSEX5020 FF+10d | -5d |
| DUKHCONP1AZ8MSEX5335 |  | Aluminum Roll-up Shutter with 2m Wall | 25d | 2014-09-30 | 2014-10-30 | DUKHCONP1AZ7MSEX5335 SS+7d, DUKHCONI1AZ4BWGL5325 | 31d |
|  | 15 | **WATER TANK ENCLOSURE** |  | 2014-07-05 | 2014-11-03 |  |  |
| DUKHCONP1AZ8WEEX5030 |  | Excavation | 20d | 2014-07-05 | 2014-07-27 | DUKHCONP1AZ8STRF2055 FF+5d, DUKHCONP1AZ8STRF2055 SS+5d, DUKHCONP1AZ7WEEX5030 | 19d |
| DUKHCONP1AZ8WEEX5035 |  | Construction of Raft | 25d | 2014-07-10 | 2014-08-11 | DUKHCONP1AZ8WEEX5030 FF+10d, DUKHCONP1AZ8WEEX5030 SS+5d | 19d |
| DUKHCONP1AZ8WEEX5040 |  | Block works & Plastering | 25d | 2014-07-20 | 2014-08-20 | DUKHCONP1AZ8WEEX5035 FF+8d, DUKHCONP1AZ8WEEX5035 SS+8d | 19d |
| DUKHCONP1AZ8WEEX5045 |  | Flooring & Painting | 25d | 2014-07-27 | 2014-08-27 | DUKHCONP1AZ8WEEX5040 FF+6d, DUKHCONP1AZ8WEEX5040 SS+6d | 19d |
| DUKHCONP1AZ8WEEX5050 |  | Installation of Steel Gate | 20d | 2014-09-09 | 2014-10-01 | DUKHCONP1AZ8MSEX5025 FF+10d, DUKHCONP1AZ8WEEX5045 FF+6d, DUKHCONP1AZ8WEEX5045 SS+5d | -5d |
| DUKHCONP1AZ8WEEX5060 |  | Structural steel & SS Shed cover installation | 25d | 2014-09-25 | 2014-10-26 | DUKHCONP1AZ7WEEX5060, DUKHCONP1AZ8MSEX5025 FF+10d, DUKHCONP1AZ8WEEX5050 SS+5d, DUKHCONP1AZ8WEEX5050 FF+10d | -14d |
| DUKHCONP1AZ8WEEX5065 |  | Install. of Water Tank,Chiller,Pump & Meter | 25d | 2014-10-04 | 2014-11-03 | DUKHCONP1AZ8MSEX5015 FF+5d, DUKHCONP1AZ8MSEX5015 SS+5d, DUKHCONP1AZ8PLRF4350 FF+5d, DUKHCONP1AZ7WEEX5065, DUKHCONP1AZ8WEEX5060 FF+6d, DUKHCONP1AZ8WEEX5060 SS+6d, DUKHCONP1AZ8PLRF4350 SS+5d | -15d |
|  | 20 | **HARD LANDSCAPING** |  | 2014-08-25 | 2014-10-05 |  |  |
| DUKHCONP1AZ8HDEX5090 |  | kerb works | 20d | 2014-08-25 | 2014-09-16 | DUKHCONP1AZ8MSEX5020 SS+7d, DUKHCONP1AZ8MSEX5020 FF+7d, DUKHCONP1AZ7HDEX5090 | -8d |
| DUKHCONP1AZ8HDEX5095 |  | Cobble Stone Works | 20d | 2014-09-06 | 2014-09-28 | DUKHCONP1AZ8HDEX5090 FF+10d, DUKHCONP1AZ8HDEX5090 SS+10d | -8d |
| DUKHCONP1AZ8HDEX5100 |  | Interlock works | 20d | 2014-09-13 | 2014-10-05 | DUKHCONP1AZ8HDEX5095 FF+6d, DUKHCONP1AZ8HDEX5095 SS+6d | -8d |
|  | 25 | **SOFT LANDSCAPING** |  | 2014-09-18 | 2014-10-26 |  |  |
| DUKHCONP1AZ8SLEX5105 |  | Laying of Grass/ green area | 25d | 2014-09-18 | 2014-10-19 | DUKHCONP1AZ8HDEX5100 SS+5d, DUKHCONP1AZ8HDEX5100 FF+5d | -8d |
| DUKHCONP1AZ8SLEX5110 |  | Laying of Palm tree | 25d | 2014-09-25 | 2014-10-26 | DUKHCONP1AZ8SLEX5105 SS+6d, DUKHCONP1AZ8SLEX5105 FF+6d | -8d |
|  | 30 | **TESTING AND COMMISSIONING** |  | 2014-11-15 | 2014-12-13 |  |  |
| DUKHCONP1AZ8ACTC8000 |  | Pre-Commissioning & Testing of AC Works | 25d | 2014-11-15 | 2014-12-13 | DUKHCONP1AZ8SLEX5110, DUKHCONP1AZ7ACTC8000, DUKHCONP1AZ8HDEX5100, DUKHCONP1AZ8AREL3680, DUKHCONP1AZ8ARRF3620, DUKHCONP1AZ8SLEX5105, DUKHCONP1AZ8PLRF4350, DUKHCONP1AZ8ACFF4625, DUKHCONP1AZ8ARFF3395, DUKHCONP1AZ8ARGF3095, DUKHCONP1AZ8ARRF3660, DUKHCONP1AZ8MSEX5005, DUKHCONP1AZ8PLRF4355, DUKHCONP1AZ8ACRF4635 | -24d |
| DUKHCONP1AZ8ELTC8010 |  | Pre-Commissioning & Testing of Electrical Works | 25d | 2014-11-15 | 2014-12-13 | DUKHCONP1AZ8MSEX5005, DUKHCONP1AZ8ELFF4065, DUKHCONP1AZ8ELFF4055, DUKHCONP1AZ8HDEX5100, DUKHCONP1AZ8ELGF4025, DUKHCONP1AZ8ARRF3655, DUKHCONP1AZ8ARRF3620, DUKHCONP1AZ8SLEX5110, DUKHCONP1AZ8ARRF3660, DUKHCONP1AZ7ELTC8010, DUKHCONP1AZ8ELGF4015, DUKHCONP1AZ8ELRF4075, DUKHCONP1AZ8ARFF3395, DUKHCONP1AZ8ARGF3095, DUKHCONP1AZ8ELGF4030, DUKHCONP1AZ8AREL3680, DUKHCONP1AZ8SLEX5105, DUKHCONP1AZ8ELFF4050 | -24d |
| DUKHCONP1AZ8PLTC8005 |  | Pre-Commissioning & Testing of Plumbing Works | 25d | 2014-11-15 | 2014-12-13 | DUKHCONP1AZ8HDEX5100, DUKHCONP1AZ8SLEX5110, DUKHCONP1AZ8ARRF3620, DUKHCONP1AZ8ARFF3395, DUKHCONP1AZ8SLEX5105, DUKHCONP1AZ8ARRF3660, DUKHCONP1AZ8MSEX5005, DUKHCONP1AZ8PLGF4320, DUKHCONP1AZ8PLRF4350, DUKHCONP1AZ8ARRF3655, DUKHCONP1AZ8ARGF3095, DUKHCONP1AZ8PLRF4355, DUKHCONP1AZ7PLTC8005, DUKHCONP1AZ8WEEX5065, DUKHCONP1AZ8AREL3680 | -24d |
|  | 50 | **ZONE - 9 (5 Twin Villas)** |  | 2013-10-24 | 2015-01-12 |  |  |
|  | 10 | **STRUCTURAL WORKS** |  | 2013-10-24 | 2014-08-18 |  |  |
|  | 10 | **SUB STRUCTURE** |  | 2013-10-24 | 2014-04-06 |  |  |
|  | 10 | **UPTO GRADE SLAB** |  | 2013-10-24 | 2014-04-06 |  |  |
| DUKHCONP1AZ9STUG1000 |  | Footing Excavation | 25d | 2013-10-24 | 2013-11-21 | DUKHCONP1AGNSP005000, DUKHCONP1AZ8STUG1000 | -11d |
| DUKHCONP1AZ9STUG1005 |  | Footing Antitermite | 23d | 2013-11-05 | 2013-12-01 | DUKHCONP1AZ9STUG1000 SS+10d, DUKHCONP1AZ9STUG1000 FF+5d | -11d |
| DUKHCONP1AZ9STUG1010 |  | Footing Blinding | 23d | 2013-11-09 | 2013-12-04 | DUKHCONP1AZ9STUG1005 SS+3d, DUKHCONP1AZ9STUG1005 FF+3d | -11d |
| DUKHCONP1AZ9STUG1015 |  | Footing Waterproofing & Screed | 25d | 2013-11-14 | 2013-12-12 | DUKHCONP1AZ9STUG1010 FF+5d, DUKHCONP1AZ9STUG1010 SS+5d | -11d |
| DUKHCONP1AZ9STUG1020 |  | Construction of foundations | 20d | 2013-11-30 | 2013-12-23 | DUKHCONP1AZ9STUG1015 SS+7d, DUKHCONP1AZ9STUG1015 FF+8d | -11d |
| DUKHCONP1AZ9STUG1025 |  | Construction of neck of columns | 25d | 2013-12-25 | 2014-01-22 | DUKHCONP1AZ8STUG1025, DUKHCONP1AZ9STUG1020 SS+8d, DUKHCONP1AZ9STUG1020 FF+7d | -24d |
| DUKHCONP1AZ9STUG1030 |  | Waterproofing Footing & Neck Column | 25d | 2014-01-04 | 2014-02-01 | DUKHCONP1AZ9STUG1025 FF+8d, DUKHCONP1AZ9STUG1025 SS+8d | -24d |
| DUKHCONP1AZ9STUG1035 |  | Backfilling Upto Grade Beam Bottom | 25d | 2014-01-18 | 2014-02-16 | DUKHCONP1AZ9STUG1030 SS+12d, DUKHCONP1AZ8STUG1035, DUKHCONP1AZ9STUG1030 FF+12d | -24d |
| DUKHCONP1AZ9STUG1040 |  | Construction of Grade Beams | 25d | 2014-02-03 | 2014-03-04 | DUKHCONP1AZ9STUG1035 SS+14d, DUKHCONP1AZ9STUG1035 FF+14d | -24d |
| DUKHCONP1AZ9STUG1045 |  | Construction of slab on grade | 25d | 2014-03-09 | 2014-04-06 | DUKHCONP1AZ8STUG1045, DUKHCONP1AZ9STUG1040 SS+10d, DUKHCONP1AZ9STUG1040 FF+10d, DUKHCONP1AZ9PLUG4300 SS+9d, DUKHCONP1AZ9PLUG4300 FF+9d | -24d |
|  | 15 | **SUPERSTRUCTURE** |  | 2014-03-25 | 2014-08-18 |  |  |
|  | 10 | **GROUND FLOOR** |  | 2014-03-25 | 2014-05-20 |  |  |
| DUKHCONP1AZ9STGF2000 |  | Column-Rebar & Formwork | 25d | 2014-03-25 | 2014-04-22 | DUKHCONP1AZ9STUG1045 FF+7d, DUKHCONP1AZ9STUG1045 SS+14d, DUKHCONP1AZ8STGF2000 | -24d |
| DUKHCONP1AZ9STGF2005 |  | Column-Concrete | 24d | 2014-04-03 | 2014-04-30 | DUKHCONP1AZ9STGF2000 SS+8d, DUKHCONP1AZ9STGF2000 FF+2d | -24d |
| DUKHCONP1AZ9STGF2010 |  | Beam, Stairs ,Slab-Rebar & Formwork | 25d | 2014-04-19 | 2014-05-17 | DUKHCONP1AZ9STGF2005 SS+2d, DUKHCONP1AZ9STGF2005 FF+14d | -24d |
| DUKHCONP1AZ9STGF2015 |  | Beam, Stairs ,Slab-Concrete | 14d | 2014-05-05 | 2014-05-20 | DUKHCONP1AZ9STGF2010 SS+10d, DUKHCONP1AZ9STGF2010 FF+3d, DUKHCONP1AZ8STGF2015 | -24d |
|  | 15 | **FIRST FLOORS** |  | 2014-05-08 | 2014-07-06 |  |  |
| DUKHCONP1AZ9STFF2020 |  | Column-Rebar & Formwork | 25d | 2014-05-08 | 2014-06-05 | DUKHCONP1AZ9STGF2015 FF+5d, DUKHCONP1AZ8STFF2020, DUKHCONP1AZ9STGF2015 SS+3d | -24d |
| DUKHCONP1AZ9STFF2025 |  | Column-Concrete | 24d | 2014-05-20 | 2014-06-16 | DUKHCONP1AZ9STFF2020 FF+2d, DUKHCONP1AZ9STFF2020 SS+10d | -24d |
| DUKHCONP1AZ9STFF2030 |  | Beam, Stairs ,Slab-Rebar & Formwork | 25d | 2014-06-04 | 2014-07-02 | DUKHCONP1AZ9STFF2025 FF+14d, DUKHCONP1AZ9STFF2025 SS+2d | -24d |
| DUKHCONP1AZ9STFF2035 |  | Beam, Stairs ,Slab-Concrete | 14d | 2014-06-21 | 2014-07-06 | DUKHCONP1AZ9STFF2030 FF+3d, DUKHCONP1AZ9STFF2030 SS+10d, DUKHCONP1AZ8STFF2035 | -24d |
|  | 20 | **ROOF** |  | 2014-06-23 | 2014-08-18 |  |  |
| DUKHCONP1AZ9STRF2040 |  | Column-Rebar & Formwork | 18d | 2014-06-23 | 2014-07-13 | DUKHCONP1AZ8STRF2040, DUKHCONP1AZ9STFF2035 SS+2d, DUKHCONP1AZ9STFF2035 FF+3d | -15d |
| DUKHCONP1AZ9STRF2045 |  | Column-Concrete | 17d | 2014-06-26 | 2014-07-15 | DUKHCONP1AZ9STRF2040 SS+3d, DUKHCONP1AZ9STRF2040 FF+1d | -15d |
| DUKHCONP1AZ9STRF2050 |  | Slab-Rebar & Formwork - Head Room | 20d | 2014-06-29 | 2014-07-21 | DUKHCONP1AZ9STRF2045 FF+5d, DUKHCONP1AZ9STRF2045 SS+2d | -15d |
| DUKHCONP1AZ9STRF2055 |  | Slab-Concrete-Head room | 13d | 2014-07-09 | 2014-07-23 | DUKHCONP1AZ9STRF2050 SS+5d, DUKHCONP1AZ8STRF2055, DUKHCONP1AZ9STRF2050 FF+2d | -15d |
| DUKHCONP1AZ9STRF2060 |  | Construction of Parapets | 25d | 2014-07-12 | 2014-08-12 | DUKHCONP1AZ9STRF2055 SS+2d, DUKHCONP1AZ9STRF2055 FF+14d | 28d |
| DUKHCONP1AZ9STRF2065 |  | Construction of up stands/Plinth | 25d | 2014-07-17 | 2014-08-18 | DUKHCONP1AZ9STRF2060 SS+5d, DUKHCONP1AZ8STRF2065, DUKHCONP1AZ9STRF2060 FF+5d | 28d |
|  | 15 | **FINISHING WORKS** |  | 2014-06-03 | 2014-12-13 |  |  |
|  | 10 | **INTERNAL FINISHES** |  | 2014-06-03 | 2014-12-13 |  |  |

| ID | WBS | Task | Duration | Start | Finish | Predecessors | Total float |
| --- | --- | --- | --- | --- | --- | --- | --- |
|  | 10 | **GROUND FLOOR** |  | 2014-06-03 | 2014-11-18 |  |  |
| DUKHCONP1AZ9ARGF3000 |  | Block work | 25d | 2014-06-03 | 2014-07-01 | DUKHCONP1AZ9STGF2015 SS+21d, DUKHCONP1AZ8ARGF3000, DUKHCONP1AZ9STGF2015 FF+21d | -6d |
| DUKHCONP1AZ9ARGF3005 |  | Plastering work | 25d | 2014-06-25 | 2014-07-23 | DUKHCONP1AZ8ARGF3005, DUKHCONP1AZ9PLGF4305 FF+5d, DUKHCONP1AZ9ARGF3000 FF+7d, DUKHCONP1AZ9PLGF4305 SS+5d, DUKHCONP1AZ9ELGF4000 FF+5d, DUKHCONP1AZ9ARGF3000 SS+7d, DUKHCONP1AZ9ELGF4000 SS+5d | -6d |
| DUKHCONP1AZ9ARGF3010 |  | Flooring screed | 21d | 2014-07-03 | 2014-07-27 | DUKHCONP1AZ9ARGF3005 FF+3d, DUKHCONP1AZ9ARGF3005 SS+7d | 2d |
| DUKHCONP1AZ9ARGF3015 |  | Wet area waterproofing & Protection Screed | 15d | 2014-07-13 | 2014-07-29 | DUKHCONP1AZ9ARGF3005 FF+5d, DUKHCONP1AZ9ARGF3005 SS+7d, DUKHCONP1AZ8ARGF3015 | -6d |
| DUKHCONP1AZ9ARGF3030 |  | Paint First coat | 25d | 2014-07-15 | 2014-08-16 | DUKHCONP1AZ9ARGF3005 SS+14d, DUKHCONP1AZ8ARGF3030, DUKHCONP1AZ9ARGF3005 FF+14d | 5d |
| DUKHCONP1AZ9ARGF3020 |  | Ceramic Wall Tiling | 25d | 2014-07-19 | 2014-08-19 | DUKHCONP1AZ9PLGF4305 FF+4d, DUKHCONP1AZ9PLGF4310 FF+4d, DUKHCONP1AZ9ARGF3015 FF+5d, DUKHCONP1AZ9PLGF4305 SS+4d, DUKHCONP1AZ8ARGF3020, DUKHCONP1AZ9PLGF4310 SS+4d, DUKHCONP1AZ9ARGF3015 SS+5d | -6d |
| DUKHCONP1AZ9ARGF3025 |  | Porcelain Tile flooring | 25d | 2014-07-24 | 2014-08-25 | DUKHCONP1AZ9ARGF3020 SS+5d, DUKHCONP1AZ9ARGF3020 FF+5d, DUKHCONP1AZ8ARGF3025, DUKHCONP1AZ9ARGF3010 SS+10d, DUKHCONP1AZ9ARGF3010 FF+10d | -6d |
| DUKHCONP1AZ9ARGF3045 |  | Fixing of Suspension systems | 20d | 2014-08-14 | 2014-09-06 | DUKHCONP1AZ9ARGF3030 FF+7d, DUKHCONP1AZ9ELGF4010 SS+5d, DUKHCONP1AZ9ARGF3025 SS+10d, DUKHCONP1AZ9ELGF4010 FF+5d, DUKHCONP1AZ8ARGF3045, DUKHCONP1AZ9ARGF3030 SS+7d, DUKHCONP1AZ9ARGF3025 FF+10d | -6d |
| DUKHCONP1AZ9ARGF3035 |  | Slate Tile Flooring & Skirting | 15d | 2014-08-17 | 2014-09-02 | DUKHCONP1AZ9ARGF3010 FF+13d, DUKHCONP1AZ9ARGF3025 SS+13d, DUKHCONP1AZ9ARGF3025 FF+7d, DUKHCONP1AZ9ARGF3010 SS+13d | -1d |
| DUKHCONP1AZ9ARGF3055 |  | Aluminum tile false ceiling | 25d | 2014-08-23 | 2014-09-20 | DUKHCONP1AZ9ACGF4600 SS+7d, DUKHCONP1AZ9ACGF4600 FF+7d, DUKHCONP1AZ9ARGF3045 SS+7d, DUKHCONP1AZ9ARGF3045 FF+7d | -3d |
| DUKHCONP1AZ9ARGF3040 |  | Cobble Tile flooring | 15d | 2014-08-24 | 2014-09-09 | DUKHCONP1AZ9ARGF3035 SS+4d, DUKHCONP1AZ9ARGF3035 FF+4d, DUKHCONP1AZ9ARGF3025 SS+13d, DUKHCONP1AZ9ARGF3010 SS+13d, DUKHCONP1AZ9ARGF3010 FF+13d, DUKHCONP1AZ9ARGF3025 FF+13d | -3d |
| DUKHCONP1AZ9ARGF3060 |  | Gypsum board false ceiling | 25d | 2014-08-26 | 2014-09-23 | DUKHCONP1AZ9ARGF3045 SS+10d, DUKHCONP1AZ8ARGF3060, DUKHCONP1AZ9ACGF4600 FF+7d, DUKHCONP1AZ9ACGF4600 SS+7d, DUKHCONP1AZ9ARGF3045 FF+10d | -6d |
| DUKHCONP1AZ9ARGF3050 |  | Granite - Stair case flooring & Skirting | 20d | 2014-09-01 | 2014-09-23 | DUKHCONP1AZ9ARGF3040 FF+7d, DUKHCONP1AZ9ARGF3040 SS+7d, DUKHCONP1AZ9ARGF3025 SS+13d, DUKHCONP1AZ9ARGF3025 FF+13d | -3d |
| DUKHCONP1AZ9ARGF3065 |  | Wooden door & PVC Door | 15d | 2014-09-15 | 2014-10-01 | DUKHCONP1AZ9ARGF3035 SS+7d, DUKHCONP1AZ9ARGF3050 FF+7d, DUKHCONP1AZ9ARGF3050 SS+7d, DUKHCONP1AZ8ARGF3065, DUKHCONP1AZ9ARGF3035 FF+7d | -3d |
| DUKHCONP1AZ9ARGF3070 |  | Aluminum doors | 15d | 2014-09-21 | 2014-10-07 | DUKHCONP1AZ8ARGF3070, DUKHCONP1AZ9ARGF3065 FF+5d, DUKHCONP1AZ9ARGF3065 SS+5d | -3d |
| DUKHCONP1AZ9ARGF3075 |  | Carpentry & Joinery Works | 20d | 2014-09-27 | 2014-10-21 | DUKHCONP1AZ9ARGF3070 SS+5d, DUKHCONP1AZ9ARGF3070 FF+7d, DUKHCONP1AZ8ARGF3075 | -3d |
| DUKHCONP1AZ9ARGF3080 |  | Aluminum windows | 20d | 2014-09-28 | 2014-10-22 | DUKHCONP1AZ9ARGF3070 SS+6d, DUKHCONP1AZ8ARGF3080, DUKHCONP1AZ9ARGF3070 FF+6d | 7d |
| DUKHCONP1AZ9ARGF3085 |  | S.S.Balustrade | 20d | 2014-10-05 | 2014-10-29 | DUKHCONP1AZ9ARGF3075 FF+7d, DUKHCONP1AZ9ARGF3050 SS+7d, DUKHCONP1AZ9ARGF3075 SS+7d, DUKHCONP1AZ9ARGF3050 FF+7d | 2d |
| DUKHCONP1AZ9ARGF3090 |  | Installation of Granite Counter Top | 15d | 2014-10-12 | 2014-10-28 | DUKHCONP1AZ9ARGF3075 FF+6d, DUKHCONP1AZ9ARGF3075 SS+7d | -3d |
| DUKHCONP1AZ9ARGF3095 |  | Final Painting | 25d | 2014-10-21 | 2014-11-18 | DUKHCONP1AZ9ACGF4610 FF+10d, DUKHCONP1AZ9ARGF3030 FF+10d, DUKHCONP1AZ9ARGF3035 SS+13d, DUKHCONP1AZ9ARGF3060 SS+8d, DUKHCONP1AZ9ARGF3070 FF+5d, DUKHCONP1AZ8ARGF3095, DUKHCONP1AZ9ACGF4610 SS+10d, DUKHCONP1AZ9ARGF3060 FF+8d, DUKHCONP1AZ9ARGF3080 SS+8d, DUKHCONP1AZ9ARGF3090 SS+8d, DUKHCONP1AZ9ARGF3040 SS+13d, DUKHCONP1AZ9ARGF3035 FF+13d, DUKHCONP1AZ9ARGF3090 FF+8d, DUKHCONP1AZ9ARGF3030 SS+10d, DUKHCONP1AZ9ARGF3070 SS+5d, DUKHCONP1AZ9ARGF3080 FF+8d, DUKHCONP1AZ9ARGF3085 FF+7d, DUKHCONP1AZ9ARGF3085 SS+7d, DUKHCONP1AZ9ARGF3040 FF+13d | -3d |
|  | 15 | **FIRST FLOORS** |  | 2014-07-15 | 2014-12-13 |  |  |
| DUKHCONP1AZ9ARFF3300 |  | Block work | 25d | 2014-07-15 | 2014-08-16 | DUKHCONP1AZ9STFF2035 SS+21d, DUKHCONP1AZ9STFF2020 FF+21d, DUKHCONP1AZ9STFF2035 FF+21d, DUKHCONP1AZ9STFF2020 SS+21d, DUKHCONP1AZ8ARFF3300 | -24d |
| DUKHCONP1AZ9ARFF3305 |  | Plastering work | 25d | 2014-08-12 | 2014-09-09 | DUKHCONP1AZ9PLFF4325 SS+6d, DUKHCONP1AZ8ARFF3305, DUKHCONP1AZ9ELFF4035 FF+5d, DUKHCONP1AZ9ARFF3300 SS+7d, DUKHCONP1AZ9PLFF4325 FF+6d, DUKHCONP1AZ9ARFF3300 FF+7d, DUKHCONP1AZ9ELFF4035 SS+5d | -24d |
| DUKHCONP1AZ9ARFF3310 |  | Flooring screed | 21d | 2014-08-20 | 2014-09-13 | DUKHCONP1AZ9ARFF3305 FF+3d, DUKHCONP1AZ9ARFF3305 SS+7d | -12d |
| DUKHCONP1AZ9ARFF3330 |  | Paint First coat | 25d | 2014-08-28 | 2014-09-25 | DUKHCONP1AZ9ARFF3305 SS+14d, DUKHCONP1AZ9ARFF3305 FF+14d | -10d |
| DUKHCONP1AZ9ARFF3315 |  | Wet area waterproofing | 15d | 2014-09-01 | 2014-09-17 | DUKHCONP1AZ8ARFF3315, DUKHCONP1AZ9ARFF3305 SS+7d, DUKHCONP1AZ9ARFF3305 FF+7d | -24d |
| DUKHCONP1AZ9ARFF3320 |  | Ceramic Wall Tiling | 25d | 2014-09-08 | 2014-10-06 | DUKHCONP1AZ8ARFF3320, DUKHCONP1AZ9PLFF4325 FF+4d, DUKHCONP1AZ9PLFF4330 FF+7d, DUKHCONP1AZ9ARFF3315 FF+6d, DUKHCONP1AZ9ARFF3315 SS+6d, DUKHCONP1AZ9PLFF4330 SS+7d, DUKHCONP1AZ9PLFF4325 SS+4d | -24d |
| DUKHCONP1AZ9ARFF3325 |  | Porcelain Tile flooring | 25d | 2014-09-15 | 2014-10-15 | DUKHCONP1AZ9ARFF3320 FF+6d, DUKHCONP1AZ9ARFF3320 SS+6d, DUKHCONP1AZ9ARFF3310 FF+10d, DUKHCONP1AZ8ARFF3325, DUKHCONP1AZ9ARFF3310 SS+10d | -24d |
| DUKHCONP1AZ9ARFF3345 |  | Fixing of Suspension systems | 20d | 2014-09-28 | 2014-10-22 | DUKHCONP1AZ8ARFF3345, DUKHCONP1AZ9ARFF3325 FF+6d, DUKHCONP1AZ9ARFF3330 SS+7d, DUKHCONP1AZ9ARFF3325 SS+6d, DUKHCONP1AZ9ELFF4045 FF+5d, DUKHCONP1AZ9ELFF4045 SS+5d, DUKHCONP1AZ9ARFF3330 FF+7d | -24d |
| DUKHCONP1AZ9ARFF3335 |  | Slate Tile Flooring & Skirting | 15d | 2014-10-02 | 2014-10-21 | DUKHCONP1AZ9ARFF3310 SS+13d, DUKHCONP1AZ9ARFF3310 FF+13d, DUKHCONP1AZ9ARFF3325 FF+5d, DUKHCONP1AZ9ARFF3325 SS+13d | -16d |
| DUKHCONP1AZ9ARFF3360 |  | Gypsum board false ceiling | 25d | 2014-10-05 | 2014-11-04 | DUKHCONP1AZ9ACFF4615 SS+7d, DUKHCONP1AZ9ACFF4615 FF+7d, DUKHCONP1AZ8ARFF3360, DUKHCONP1AZ9ARFF3345 FF+6d, DUKHCONP1AZ9ARFF3345 SS+6d | -24d |
| DUKHCONP1AZ9ARFF3350 |  | Granite - Stair case flooring & Skirting | 20d | 2014-10-06 | 2014-10-30 | DUKHCONP1AZ9ARFF3325 SS+13d, DUKHCONP1AZ9ARFF3325 FF+13d | -22d |
| DUKHCONP1AZ9ARFF3365 |  | Wooden door | 15d | 2014-10-22 | 2014-11-08 | DUKHCONP1AZ9ARFF3350 SS+5d, DUKHCONP1AZ9ARFF3360 SS+3d, DUKHCONP1AZ9ARFF3350 FF+5d, DUKHCONP1AZ9ARFF3335 SS+7d, DUKHCONP1AZ9ARFF3360 FF+3d, DUKHCONP1AZ9ARFF3335 FF+7d, DUKHCONP1AZ8ARFF3365 | -24d |
| DUKHCONP1AZ9ARFF3370 |  | Aluminum Door | 20d | 2014-10-22 | 2014-11-13 | DUKHCONP1AZ9ARFF3365 SS, DUKHCONP1AZ8ARFF3370, DUKHCONP1AZ9ARFF3365 FF | -24d |
| DUKHCONP1AZ9ARFF3375 |  | Carpentry & Joinery Works | 25d | 2014-10-28 | 2014-11-25 | DUKHCONP1AZ9ARFF3370 FF+5d, DUKHCONP1AZ9ARFF3370 SS+5d, DUKHCONP1AZ8ARFF3375 | -24d |
| DUKHCONP1AZ9ARFF3380 |  | Aluminum windows | 20d | 2014-10-29 | 2014-11-20 | DUKHCONP1AZ9ARFF3370 FF+6d, DUKHCONP1AZ9ARFF3370 SS+6d | -20d |
| DUKHCONP1AZ9ARFF3385 |  | Handrail & Balustrade | 20d | 2014-11-09 | 2014-12-01 | DUKHCONP1AZ9ARFF3375 FF+5d, DUKHCONP1AZ9ARFF3350 SS+7d, DUKHCONP1AZ9ARFF3350 FF+7d, DUKHCONP1AZ9ARFF3375 SS+5d | -24d |
| DUKHCONP1AZ9ARFF3390 |  | Installation of Granite Counter Top | 20d | 2014-11-09 | 2014-12-01 | DUKHCONP1AZ9ARFF3375 SS+6d, DUKHCONP1AZ9ARFF3375 FF+5d | -23d |
| DUKHCONP1AZ9ARFF3395 |  | Final Painting | 25d | 2014-11-15 | 2014-12-13 | DUKHCONP1AZ8ARFF3395, DUKHCONP1AZ9ARFF3390 SS+4d, DUKHCONP1AZ9ARFF3365 FF+8d, DUKHCONP1AZ9ARFF3380 FF+10d, DUKHCONP1AZ9ARFF3335 FF+8d, DUKHCONP1AZ9ARFF3350 FF+8d, DUKHCONP1AZ9ARFF3390 FF+6d, DUKHCONP1AZ9ARFF3360 SS+10d, DUKHCONP1AZ9ARFF3350 SS+8d, DUKHCONP1AZ9ACFF4625 FF+6d, DUKHCONP1AZ9ARFF3375 FF+8d, DUKHCONP1AZ9ARFF3375 SS+8d, DUKHCONP1AZ9ARFF3385 SS+5d, DUKHCONP1AZ9ARFF3330 SS+10d, DUKHCONP1AZ9ELFF4055, DUKHCONP1AZ9ARFF3380 SS+10d, DUKHCONP1AZ9ARFF3385 FF+5d, DUKHCONP1AZ9ARFF3330 FF+10d, DUKHCONP1AZ9ACFF4625 SS+6d, DUKHCONP1AZ9ARFF3360 FF+10d, DUKHCONP1AZ9ARFF3365 SS+8d, DUKHCONP1AZ9ARFF3335 SS+8d | -24d |
|  | 20 | **ROOF** |  | 2014-08-06 | 2014-10-12 |  |  |
| DUKHCONP1AZ9ARRF3600 |  | Block work | 20d | 2014-08-06 | 2014-08-28 | DUKHCONP1AZ8ARRF3600, DUKHCONP1AZ9STRF2055 FF+21d, DUKHCONP1AZ9STRF2055 SS+21d | 24d |
| DUKHCONP1AZ9ARRF3605 |  | Plastering work | 20d | 2014-08-14 | 2014-09-06 | DUKHCONP1AZ9ARRF3600 SS+7d, DUKHCONP1AZ9ARRF3600 FF+7d | 24d |
| DUKHCONP1AZ9ARRF3610 |  | Flooring screed | 15d | 2014-08-28 | 2014-09-14 | DUKHCONP1AZ9ARRF3605 SS+7d, DUKHCONP1AZ9ARRF3605 FF+7d | 29d |
| DUKHCONP1AZ9ARRF3695 |  | Painting -Storage area | 20d | 2014-09-06 | 2014-09-28 | DUKHCONP1AZ9ARRF3610 SS+7d, DUKHCONP1AZ9ARRF3610 FF+7d | 29d |
| DUKHCONP1AZ9ARRF3620 |  | Epoxy Painting -Storage area | 15d | 2014-09-23 | 2014-10-12 | DUKHCONP1AZ9ARRF3695 FF+10d, DUKHCONP1AZ9ARRF3695 SS+10d | 29d |
|  | 15 | **EXTERNAL FINISHES** |  | 2014-08-24 | 2014-11-12 |  |  |
|  | 10 | **ROOF** |  | 2014-09-07 | 2014-11-12 |  |  |
| DUKHCONP1AZ9ARRF3630 |  | Leveling Screed for Waterproofing | 25d | 2014-09-07 | 2014-10-05 | DUKHCONP1AZ9STRF2065 FF+10d, DUKHCONP1AZ8ARRF3630, DUKHCONP1AZ9STRF2060 SS+10d, DUKHCONP1AZ9STRF2060 FF+10d, DUKHCONP1AZ9STRF2065 SS+10d | -3d |
| DUKHCONP1AZ9ARRF3635 |  | Laying of Waterproofing Membrane | 25d | 2014-09-10 | 2014-10-08 | DUKHCONP1AZ9ARRF3630 SS+3d, DUKHCONP1AZ9ARRF3630 FF+3d | -3d |
| DUKHCONP1AZ9ARRF3640 |  | Installation of Insulation & Protection | 25d | 2014-09-15 | 2014-10-15 | DUKHCONP1AZ9ARRF3635 FF+4d, DUKHCONP1AZ9ARRF3635 SS+4d | -3d |
| DUKHCONP1AZ9ARRF3645 |  | Lime Stone Chips & Paving slab Installation | 25d | 2014-09-20 | 2014-10-20 | DUKHCONP1AZ9ARRF3640 FF+4d, DUKHCONP1AZ9ARRF3640 SS+4d | -3d |
| DUKHCONP1AZ9ARRF3650 |  | Install. of Gal. Frame & Aluminum Slat Screen | 25d | 2014-09-28 | 2014-10-28 | DUKHCONP1AZ9ARRF3645 FF+7d, DUKHCONP1AZ9ARRF3645 SS+7d | -3d |
| DUKHCONP1AZ9ARRF3655 |  | Installation of Pumps Protection cabinets | 20d | 2014-10-15 | 2014-11-06 | DUKHCONP1AZ9ARRF3650 FF+8d, DUKHCONP1AZ8ARRF3655, DUKHCONP1AZ9ARRF3645 FF+7d, DUKHCONP1AZ9ARRF3650 SS+8d, DUKHCONP1AZ9ARRF3645 SS+7d | -3d |
| DUKHCONP1AZ9ARRF3660 |  | Installation of Access Ladder | 15d | 2014-10-27 | 2014-11-12 | DUKHCONP1AZ9ARRF3655 FF+5d, DUKHCONP1AZ9ARRF3655 SS+5d | 2d |
|  | 15 | **ELEVATION** |  | 2014-08-24 | 2014-10-16 |  |  |
| DUKHCONP1AZ9AREL3665 |  | External Plastering | 25d | 2014-08-24 | 2014-09-21 | DUKHCONP1AZ9ARRF3605 SS+7d, DUKHCONP1AZ9STRF2065 FF+7d, DUKHCONP1AZ8AREL3665, DUKHCONP1AZ9STRF2065 SS+7d, DUKHCONP1AZ9ARFF3305 SS+7d, DUKHCONP1AZ9ARFF3305 FF+7d | 23d |
| DUKHCONP1AZ9AREL3670 |  | External stone cladding works | 20d | 2014-09-10 | 2014-10-02 | DUKHCONP1AZ9AREL3665 SS+10d, DUKHCONP1AZ9AREL3665 FF+10d, DUKHCONP1AZ8AREL3670 | 25d |
| DUKHCONP1AZ9AREL3680 |  | External Painting | 20d | 2014-09-22 | 2014-10-16 | DUKHCONP1AZ9AREL3670 SS+10d, DUKHCONP1AZ9ARRF3695 FF+4d, DUKHCONP1AZ8AREL3680, DUKHCONP1AZ9AREL3670 FF+10d, DUKHCONP1AZ9ARRF3695 SS+4d | 25d |
|  | 20 | **MEP WORKS** |  | 2014-02-26 | 2014-12-11 |  |  |
|  | 10 | **ELECTRICAL WORKS** |  | 2014-06-09 | 2014-12-11 |  |  |
|  | 10 | **GROUND FLOOR** |  | 2014-06-09 | 2014-10-21 |  |  |
| DUKHCONP1AZ9ELGF4000 |  | Fixing of wall conduits & switch socket boxes | 25d | 2014-06-09 | 2014-07-07 | DUKHCONP1AZ9ARGF3000 SS+5d, DUKHCONP1AZ9ARGF3000 FF+5d | 3d |
| DUKHCONP1AZ9ELGF4005 |  | Cable tray & trunking installation | 20d | 2014-06-21 | 2014-07-13 | DUKHCONP1AZ8ELGF4005, DUKHCONP1AZ9ELGF4000 SS+5d, DUKHCONP1AZ9ELGF4000 FF+5d | 21d |
| DUKHCONP1AZ9ELGF4010 |  | Installation of wiring & Main Cabling | 25d | 2014-06-29 | 2014-07-27 | DUKHCONP1AZ9ELGF4005 SS+7d, DUKHCONP1AZ9ELGF4005 FF+7d | 21d |
| DUKHCONP1AZ9ELGF4015 |  | Install. of CAMS & Fire Fighting Accessories | 25d | 2014-09-03 | 2014-10-01 | DUKHCONP1AZ9ARGF3055 SS+7d, DUKHCONP1AZ9ARGF3060 FF+7d, DUKHCONP1AZ9ARGF3055 FF+7d, DUKHCONP1AZ9ARGF3060 SS+7d, DUKHCONP1AZ8ELGF4015 | 6d |
| DUKHCONP1AZ9ELGF4020 |  | Installation of DBS,MCCB Accessories. | 20d | 2014-09-09 | 2014-10-01 | DUKHCONP1AZ9ARGF3060 SS+7d, DUKHCONP1AZ9ARGF3055 SS+7d, DUKHCONP1AZ9ELGF4010 FF+5d, DUKHCONP1AZ9ARGF3055 FF+7d, DUKHCONP1AZ9ELGF4010 SS+5d, DUKHCONP1AZ9ARGF3060 FF+7d | -6d |
| DUKHCONP1AZ9ELGF4025 |  | Installation of Lighting fixtures & Accessories | 25d | 2014-09-21 | 2014-10-21 | DUKHCONP1AZ9ARGF3060 FF+10d, DUKHCONP1AZ9ELGF4020 SS+10d, DUKHCONP1AZ9ELGF4020 FF+10d, DUKHCONP1AZ9ARGF3055 SS+10d, DUKHCONP1AZ9ARGF3060 SS+10d, DUKHCONP1AZ9ARGF3055 FF+10d, DUKHCONP1AZ8ELGF4025 | 1d |
| DUKHCONP1AZ9ELGF4030 |  | Installation of Telephone System | 20d | 2014-09-21 | 2014-10-15 | DUKHCONP1AZ9ELGF4020 FF+10d, DUKHCONP1AZ9ARGF3060 FF+5d, DUKHCONP1AZ9ELGF4020 SS+10d, DUKHCONP1AZ9ARGF3060 SS+5d, DUKHCONP1AZ8ELGF4030 | -6d |
|  | 15 | **FIRST FLOORS** |  | 2014-07-21 | 2014-11-24 |  |  |

| ID | WBS | Task | Duration | Start | Finish | Predecessors | Total float |
| --- | --- | --- | --- | --- | --- | --- | --- |
| DUKHCONP1AZ9ELFF4035 |  | Fixing of wall conduits & switch socket boxes | 25d | 2014-07-21 | 2014-08-21 | DUKHCONP1AZ9ARFF3300 SS+5d, DUKHCONP1AZ9ARFF3300 FF+5d | -13d |
| DUKHCONP1AZ9ELFF4040 |  | Cable tray & trunking installation | 20d | 2014-08-05 | 2014-08-27 | DUKHCONP1AZ9ELFF4035 SS+5d, DUKHCONP1AZ9ELFF4035 FF+5d | 5d |
| DUKHCONP1AZ9ELFF4045 |  | Installation of wiring & Main Cabling | 25d | 2014-08-16 | 2014-09-13 | DUKHCONP1AZ8ELFF4045, DUKHCONP1AZ9ELFF4040 SS+7d, DUKHCONP1AZ9ELFF4040 FF+7d | 3d |
| DUKHCONP1AZ9ELFF4050 |  | Installation of Telephone System | 25d | 2014-10-15 | 2014-11-12 | DUKHCONP1AZ9ELGF4030 SS+10d, DUKHCONP1AZ9MSEX5010, DUKHCONP1AZ9ELGF4030 FF+10d, DUKHCONP1AZ9ARFF3360 FF+5d, DUKHCONP1AZ9ARFF3360 SS+5d | -15d |
| DUKHCONP1AZ9ELFF4055 |  | Install. of CAMS & Fire Fighting Accessories | 25d | 2014-10-15 | 2014-11-12 | DUKHCONP1AZ9ARFF3360 FF+7d, DUKHCONP1AZ9ELGF4015 FF+5d, DUKHCONP1AZ8ELFF4055, DUKHCONP1AZ9ARFF3360 SS+7d, DUKHCONP1AZ9ELGF4015 SS+5d | -23d |
| DUKHCONP1AZ9ELFF4060 |  | Installation of DBS,MCCB Accessories. | 20d | 2014-10-19 | 2014-11-10 | DUKHCONP1AZ9ARFF3360 FF+5d, DUKHCONP1AZ8ELFF4060, DUKHCONP1AZ9ELFF4045 SS+5d, DUKHCONP1AZ9ELFF4045 FF+5d, DUKHCONP1AZ9ARFF3360 SS+8d | -21d |
| DUKHCONP1AZ9ELFF4065 |  | Installation of Lighting fixtures & Accessories | 25d | 2014-10-27 | 2014-11-24 | DUKHCONP1AZ9ARFF3360 SS+10d, DUKHCONP1AZ9ARFF3360 FF+10d, DUKHCONP1AZ8ELFF4065, DUKHCONP1AZ9ELGF4025 SS+5d, DUKHCONP1AZ9ELFF4060 FF+5d, DUKHCONP1AZ9ELGF4025 FF+5d, DUKHCONP1AZ9ELFF4060 SS+5d | -23d |
|  | 20 | **ROOF** |  | 2014-11-10 | 2014-12-11 |  |  |
| DUKHCONP1AZ9ELRF4070 |  | Installation of Isolator | 18d | 2014-11-10 | 2014-11-30 | DUKHCONP1AZ9ELFF4065 FF+5d, DUKHCONP1AZ9ELFF4050 SS+5d, DUKHCONP1AZ9ELFF4065 SS+5d, DUKHCONP1AZ9ELFF4045 FF+10d, DUKHCONP1AZ9ARRF3645 FF+7d, DUKHCONP1AZ9ELFF4050 FF+7d, DUKHCONP1AZ9ARRF3645 SS+7d, DUKHCONP1AZ9ELFF4045 SS+10d | -23d |
| DUKHCONP1AZ9ELRF4075 |  | Installation of TV Dish Antenna | 23d | 2014-11-16 | 2014-12-11 | DUKHCONP1AZ9ELRF4070 FF+5d, DUKHCONP1AZ9ELRF4070 SS+5d | -23d |
|  | 15 | **PLUMBING, DRAINAGE & FIRE FIGHTING WORKS** |  | 2014-02-26 | 2014-12-11 |  |  |
|  | 10 | **GROUND FLOOR** |  | 2014-02-26 | 2014-10-21 |  |  |
| DUKHCONP1AZ9PLUG4300 |  | Drainage / Storm Pipes in Grade Slab | 16d | 2014-02-26 | 2014-03-16 | DUKHCONP1AZ9STUG1040 SS+10d, DUKHCONP1AZ9STUG1040 FF+10d | -24d |
| DUKHCONP1AZ9PLGF4305 |  | Installation of Plumbing pipes & testing | 18d | 2014-06-19 | 2014-07-09 | DUKHCONP1AZ9ARGF3000 SS+7d, DUKHCONP1AZ8PLGF4305, DUKHCONP1AZ9ARGF3000 FF+7d | -6d |
| DUKHCONP1AZ9PLGF4310 |  | Installation of Drainage pipes &testing | 18d | 2014-06-19 | 2014-07-09 | DUKHCONP1AZ9ARGF3000 FF+7d, DUKHCONP1AZ9ARGF3000 SS+7d, DUKHCONP1AZ9PLGF4305 SS, DUKHCONP1AZ9PLGF4305 FF | -3d |
| DUKHCONP1AZ9PLGF4315 |  | Sanitary Fittings & Accessories | 20d | 2014-09-21 | 2014-10-15 | DUKHCONP1AZ9PLGF4310 FF+5d, DUKHCONP1AZ8PLGF4315, DUKHCONP1AZ9ARGF3065 SS+5d, DUKHCONP1AZ9PLGF4310 SS+5d, DUKHCONP1AZ9ARGF3065 FF+5d | 21d |
| DUKHCONP1AZ9PLGF4320 |  | Installation of Water Heater | 15d | 2014-10-02 | 2014-10-21 | DUKHCONP1AZ9ARGF3060 SS+5d, DUKHCONP1AZ9PLGF4315 FF+5d, DUKHCONP1AZ9ARGF3060 FF+5d, DUKHCONP1AZ8PLGF4320, DUKHCONP1AZ9PLGF4315 SS+5d | 21d |
|  | 15 | **FIRST FLOORS** |  | 2014-08-05 | 2014-11-19 |  |  |
| DUKHCONP1AZ9PLFF4325 |  | Installation of Plumbing pipes & testing | 18d | 2014-08-05 | 2014-08-25 | DUKHCONP1AZ9ARFF3300 FF+8d, DUKHCONP1AZ9ARFF3300 SS+7d | -24d |
| DUKHCONP1AZ9PLFF4330 |  | Installation of Drainage pipes & testing | 18d | 2014-08-05 | 2014-08-25 | DUKHCONP1AZ9ARFF3300 FF+7d, DUKHCONP1AZ9ARFF3300 SS+7d, DUKHCONP1AZ9PLFF4325 SS, DUKHCONP1AZ8PLFF4330, DUKHCONP1AZ9PLFF4325 FF | -2d |
| DUKHCONP1AZ9PLFF4335 |  | Sanitary Fittings & Accessories | 20d | 2014-10-22 | 2014-11-13 | DUKHCONP1AZ9PLFF4330 SS+5d, DUKHCONP1AZ9ARFF3365 SS, DUKHCONP1AZ9ARFF3365 FF+5d, DUKHCONP1AZ9PLFF4330 FF+5d | -19d |
| DUKHCONP1AZ9PLFF4340 |  | Installation of Water Heater | 15d | 2014-11-03 | 2014-11-19 | DUKHCONP1AZ9PLFF4335 FF+5d, DUKHCONP1AZ9ARFF3360 SS+5d, DUKHCONP1AZ9ARFF3360 FF+5d, DUKHCONP1AZ9PLFF4335 SS+5d, DUKHCONP1AZ8PLFF4340 | -19d |
|  | 20 | **ROOF** |  | 2014-08-28 | 2014-12-11 |  |  |
| DUKHCONP1AZ9PLRF4345 |  | Installation of Plumbing pipes & fittings | 15d | 2014-08-28 | 2014-09-14 | DUKHCONP1AZ9ARRF3605 FF+7d, DUKHCONP1AZ9ARRF3605 SS+7d | 28d |
| DUKHCONP1AZ9PLRF4350 |  | Installation of Rain water Pipes | 15d | 2014-10-07 | 2014-10-26 | DUKHCONP1AZ9PLRF4345 SS+8d, DUKHCONP1AZ9AREL3665 SS+7d, DUKHCONP1AZ9ARRF3645 SS+5d, DUKHCONP1AZ9ARRF3645 FF+5d, DUKHCONP1AZ8PLRF4350, DUKHCONP1AZ9AREL3665 FF+7d, DUKHCONP1AZ9PLFF4330 SS+5d, DUKHCONP1AZ9PLFF4330 FF+5d, DUKHCONP1AZ9PLRF4345 FF+8d | 2d |
| DUKHCONP1AZ9PLRF4355 |  | Roof Water Tank Installation & Connections | 25d | 2014-11-13 | 2014-12-11 | DUKHCONP1AZ9ARRF3655 SS+5d, DUKHCONP1AZ9PLFF4340 FF+5d, DUKHCONP1AZ9ARRF3655 FF+5d, DUKHCONP1AZ9PLRF4345 SS+8d, DUKHCONP1AZ8PLRF4355, DUKHCONP1AZ9PLRF4345 FF+8d, DUKHCONP1AZ9PLFF4340 SS+5d, DUKHCONP1AZ9PLRF4350 SS+5d, DUKHCONP1AZ9PLRF4350 FF+5d | -23d |
|  | 20 | **AC WORKS** |  | 2014-07-09 | 2014-12-09 |  |  |
|  | 10 | **GROUND FLOOR** |  | 2014-07-09 | 2014-10-19 |  |  |
| DUKHCONP1AZ9ACGF4600 |  | Installation AC Pipes | 20d | 2014-07-09 | 2014-07-31 | DUKHCONP1AZ9ARGF3005 SS+7d, DUKHCONP1AZ8ACGF4600, DUKHCONP1AZ9ARGF3005 FF+7d | 25d |
| DUKHCONP1AZ9ACGF4605 |  | Fixing of Ventilation Equipments | 25d | 2014-09-03 | 2014-10-01 | DUKHCONP1AZ9ARGF3055 SS+7d, DUKHCONP1AZ9ARGF3055 FF+7d, DUKHCONP1AZ9ACGF4600 SS+10d, DUKHCONP1AZ8ACGF4605, DUKHCONP1AZ9ACGF4600 FF+10d, DUKHCONP1AZ9ARGF3060 FF+7d, DUKHCONP1AZ9ARGF3060 SS+7d | 8d |
| DUKHCONP1AZ9ACGF4610 |  | Fixing of Split AC | 20d | 2014-09-24 | 2014-10-19 | DUKHCONP1AZ8ACGF4610, DUKHCONP1AZ9ACGF4605 SS+13d, DUKHCONP1AZ9ACGF4605 FF+13d | 8d |
|  | 15 | **FIRST FLOORS** |  | 2014-08-26 | 2014-11-27 |  |  |
| DUKHCONP1AZ9ACFF4615 |  | Installation AC Pipes | 20d | 2014-08-26 | 2014-09-17 | DUKHCONP1AZ8ACFF4615, DUKHCONP1AZ9ARFF3305 FF+7d, DUKHCONP1AZ9ARFF3305 SS+7d | 3d |
| DUKHCONP1AZ9ACFF4620 |  | Fixing of Ventilation Equipments | 25d | 2014-10-15 | 2014-11-12 | DUKHCONP1AZ9ACFF4615 FF+10d, DUKHCONP1AZ8ACFF4620, DUKHCONP1AZ9ACFF4615 SS+10d, DUKHCONP1AZ9ARFF3360 SS+7d, DUKHCONP1AZ9ARFF3360 FF+7d | -22d |
| DUKHCONP1AZ9ACFF4625 |  | Fixing of Split AC | 20d | 2014-11-05 | 2014-11-27 | DUKHCONP1AZ9ACFF4620 SS+13d, DUKHCONP1AZ8ACFF4625, DUKHCONP1AZ9ACFF4620 FF+13d | -22d |
|  | 20 | **ROOF** |  | 2014-09-28 | 2014-12-09 |  |  |
| DUKHCONP1AZ9ACRF4630 |  | Installation of Refrigerant Pipes | 25d | 2014-09-28 | 2014-10-28 | DUKHCONP1AZ9ACGF4600 SS+7d, DUKHCONP1AZ9ACGF4600 FF+7d, DUKHCONP1AZ9ARRF3645 FF+7d, DUKHCONP1AZ8ACRF4630, DUKHCONP1AZ9ACFF4615 FF+7d, DUKHCONP1AZ9ARRF3645 SS+7d, DUKHCONP1AZ9ACFF4615 SS+7d | 10d |
| DUKHCONP1AZ9ACRF4635 |  | Installation of Condensing Unit | 25d | 2014-11-11 | 2014-12-09 | DUKHCONP1AZ9ACGF4610 SS+5d, DUKHCONP1AZ9ACFF4625 SS+5d, DUKHCONP1AZ8ACRF4635, DUKHCONP1AZ9ACRF4630 FF+5d, DUKHCONP1AZ9ACGF4610 FF+5d, DUKHCONP1AZ9ACFF4625 FF+5d, DUKHCONP1AZ9ACRF4630 SS+5d | -21d |
|  | 25 | **EXTERNAL WORKS** |  | 2014-07-15 | 2014-12-02 |  |  |
|  | 10 | **MISCELLANEOUS** |  | 2014-07-15 | 2014-12-02 |  |  |
| DUKHCONP1AZ9MSEX5000 |  | Construction of Manholes | 25d | 2014-07-15 | 2014-08-16 | DUKHCONP1AZ9STRF2055 SS+5d, DUKHCONP1AZ9PLGF4310 SS+10d, DUKHCONP1AZ9PLGF4310 FF+10d, DUKHCONP1AZ9STRF2055 FF+5d | -15d |
| DUKHCONP1AZ9MSEX5005 |  | Construction of Soak pit, Chambers | 25d | 2014-07-29 | 2014-08-30 | DUKHCONP1AZ9MSEX5000 SS+12d, DUKHCONP1AZ9MSEX5000 FF+12d | -15d |
| DUKHCONP1AZ9MSEX5015 |  | Construction of grease Trap | 20d | 2014-08-21 | 2014-09-13 | DUKHCONP1AZ9MSEX5005 FF+12d, DUKHCONP1AZ9MSEX5005 SS+12d | -15d |
| DUKHCONP1AZ9MSEX5020 |  | Construction Entrance Ramp | 25d | 2014-09-09 | 2014-10-07 | DUKHCONP1AZ9STRF2055 SS, DUKHCONP1AZ9STRF2055 FF, DUKHCONP1AZ8MSEX5020 | -8d |
| DUKHCONP1AZ9MSEX5010 |  | Telephone cable laying | 25d | 2014-09-14 | 2014-10-14 | DUKHCONP1AZ9MSEX5015 | -15d |
| DUKHCONP1AZ9MSEX5025 |  | SS.Handrails and Balustrades | 20d | 2014-09-27 | 2014-10-21 | DUKHCONP1AZ9MSEX5020 FF+10d, DUKHCONP1AZ9MSEX5020 SS+10d | -5d |
| DUKHCONP1AZ9MSEX5335 |  | Aluminum Roll-up Shutter with 2m Wall | 25d | 2014-11-04 | 2014-12-02 | DUKHCONP1AZ8MSEX5335 SS+7d, DUKHCONI1AZ5BWGL5325 SS+10d | 10d |
|  | 15 | **WATER TANK ENCLOSURE** |  | 2014-07-28 | 2014-12-02 |  |  |
| DUKHCONP1AZ9WEEX5030 |  | Excavation | 20d | 2014-07-28 | 2014-08-23 | DUKHCONP1AZ9STRF2055 FF+5d, DUKHCONP1AZ9STRF2055 SS+5d, DUKHCONP1AZ8WEEX5030 | 24d |
| DUKHCONP1AZ9WEEX5035 |  | Construction of Raft | 25d | 2014-08-06 | 2014-09-03 | DUKHCONP1AZ9WEEX5030 FF+10d, DUKHCONP1AZ9WEEX5030 SS+5d | 24d |
| DUKHCONP1AZ9WEEX5040 |  | Block works & Plastering | 25d | 2014-08-16 | 2014-09-13 | DUKHCONP1AZ9WEEX5035 SS+8d, DUKHCONP1AZ9WEEX5035 FF+8d | 24d |
| DUKHCONP1AZ9WEEX5045 |  | Flooring & Painting | 25d | 2014-08-23 | 2014-09-20 | DUKHCONP1AZ9WEEX5040 SS+6d, DUKHCONP1AZ9WEEX5040 FF+6d | 24d |
| DUKHCONP1AZ9WEEX5050 |  | Installation of Steel Gate | 20d | 2014-10-08 | 2014-11-02 | DUKHCONP1AZ9MSEX5025 FF+10d, DUKHCONP1AZ9WEEX5045 SS+5d, DUKHCONP1AZ9WEEX5045 FF+6d | -5d |
| DUKHCONP1AZ9WEEX5060 |  | Structural steel & SS Shed cover installation | 25d | 2014-10-27 | 2014-11-24 | DUKHCONP1AZ9WEEX5050 SS+5d, DUKHCONP1AZ9MSEX5025 FF+10d, DUKHCONP1AZ9WEEX5050 FF+10d, DUKHCONP1AZ8WEEX5060 | -14d |
| DUKHCONP1AZ9WEEX5065 |  | Install. of Water Tank,Chiller,Pump & Meter | 25d | 2014-11-04 | 2014-12-02 | DUKHCONP1AZ9MSEX5015 FF+5d, DUKHCONP1AZ9WEEX5060 FF+6d, DUKHCONP1AZ9MSEX5015 SS+5d, DUKHCONP1AZ9PLRF4350 SS+5d, DUKHCONP1AZ8WEEX5065, DUKHCONP1AZ9WEEX5060 SS+6d, DUKHCONP1AZ9PLRF4350 FF+5d | -15d |
|  | 20 | **HARD LANDSCAPING** |  | 2014-09-23 | 2014-11-05 |  |  |
| DUKHCONP1AZ9HDEX5090 |  | kerb works | 20d | 2014-09-23 | 2014-10-18 | DUKHCONP1AZ8HDEX5090, DUKHCONP1AZ9MSEX5020 SS+7d, DUKHCONP1AZ9MSEX5020 FF+7d | -8d |
| DUKHCONP1AZ9HDEX5095 |  | Cobble Stone Works | 20d | 2014-10-05 | 2014-10-29 | DUKHCONP1AZ9HDEX5090 SS+10d, DUKHCONP1AZ9HDEX5090 FF+10d | -8d |
| DUKHCONP1AZ9HDEX5100 |  | Interlock works | 20d | 2014-10-14 | 2014-11-05 | DUKHCONP1AZ9HDEX5095 FF+6d, DUKHCONP1AZ9HDEX5095 SS+6d | -8d |
|  | 25 | **SOFT LANDSCAPING** |  | 2014-10-20 | 2014-11-24 |  |  |
| DUKHCONP1AZ9SLEX5105 |  | Laying of Grass/ green area | 25d | 2014-10-20 | 2014-11-17 | DUKHCONP1AZ9HDEX5100 FF+5d, DUKHCONP1AZ9HDEX5100 SS+5d | -8d |
| DUKHCONP1AZ9SLEX5110 |  | Laying of Palm tree | 25d | 2014-10-27 | 2014-11-24 | DUKHCONP1AZ9SLEX5105 SS+6d, DUKHCONP1AZ9SLEX5105 FF+6d | -8d |
|  | 30 | **TESTING AND COMMISSIONING** |  | 2014-12-14 | 2015-01-12 |  |  |
| DUKHCONP1AZ9ACTC8000 |  | Pre-Commissioning & Testing of AC Works | 25d | 2014-12-14 | 2015-01-12 | DUKHCONP1AZ9ARGF3095, DUKHCONP1AZ8ACTC8000, DUKHCONP1AZ9HDEX5100, DUKHCONP1AZ9SLEX5110, DUKHCONP1AZ9ACFF4625, DUKHCONP1AZ9AREL3680, DUKHCONP1AZ9ACRF4635, DUKHCONP1AZ9ARRF3620, DUKHCONP1AZ9ARFF3395, DUKHCONP1AZ9MSEX5005, DUKHMOBI1APS00002065 FF, DUKHCONP1AZ9SLEX5105, DUKHMOBP1APS00002030 FF | -24d |
| DUKHCONP1AZ9ELTC8010 |  | Pre-Commissioning & Testing of Electrical Works | 25d | 2014-12-14 | 2015-01-12 | DUKHCONP1AZ9SLEX5105, DUKHCONP1AZ9SLEX5110, DUKHCONP1AZ9ARRF3655, DUKHCONP1AZ9ELFF4055, DUKHMOBI1APS00002065 FF, DUKHMOBP1APS00002030 FF, DUKHCONP1AZ9ELGF4030, DUKHCONP1AZ9ELRF4075, DUKHCONP1AZ9ARRF3620, DUKHCONP1AZ8ELTC8010, DUKHCONP1AZ9MSEX5005, DUKHCONP1AZ9ELFF4050, DUKHCONP1AZ9ARRF3660, DUKHCONP1AZ9ARGF3095, DUKHCONP1AZ9ARFF3395, DUKHCONP1AZ9HDEX5100, DUKHCONP1AZ9ELGF4025, DUKHCONP1AZ9ELGF4015, DUKHCONP1AZ9AREL3680, DUKHCONP1AZ9ELFF4065 | -24d |
| DUKHCONP1AZ9PLTC8005 |  | Pre-Commissioning & Testing of Plumbing Works | 25d | 2014-12-14 | 2015-01-12 | DUKHCONP1AZ9ARRF3655, DUKHCONP1AZ9ARRF3620, DUKHCONP1AZ8PLTC8005, DUKHCONP1AZ9PLRF4350, DUKHCONP1AZ9ARRF3660, DUKHCONP1AZ9ARFF3395, DUKHCONP1AZ9MSEX5005, DUKHCONP1AZ9HDEX5100, DUKHCONP1AZ9SLEX5110, DUKHCONP1AZ9PLGF4320, DUKHMOBI1APS00002065 FF, DUKHCONP1AZ9ARGF3095, DUKHCONP1AZ9PLRF4355, DUKHCONP1AZ9AREL3680, DUKHCONP1AZ9WEEX5065, DUKHMOBP1APS00002030 FF, DUKHCONP1AZ9SLEX5105 | -24d |
|  | L20 | **PACKAGE-1A INFRASTRUCTURE WORKS** |  | 2013-09-21 | 2015-01-19 |  |  |
|  | 10 | **ZONE - 1** |  | 2013-09-21 | 2014-06-18 |  |  |
|  | 10 | **INFRASTRUCTURE WORKS** |  | 2013-09-21 | 2014-06-18 |  |  |
|  | 10 | **DRAINAGE LINES** |  | 2013-09-21 | 2013-11-19 |  |  |

| ID | WBS | Task | Duration | Start | Finish | Predecessors | Total float |
| --- | --- | --- | --- | --- | --- | --- | --- |
| DUKHCONI1AZ1DRGL5115 |  | Excavation for Drainage line | 25d | 2013-09-21 | 2013-10-21 | DUKHENGI1ADWDRAP4250, DUKHCONP1AZ2STGF2010 SS | -4d |
| DUKHCONI1AZ1DRGL5120 |  | Laying of Drainage line | 25d | 2013-10-02 | 2013-11-02 | DUKHCONI1AZ1DRGL5115 FF+10d, DUKHCONI1AZ1DRGL5115 SS+10d | -4d |
| DUKHCONI1AZ1DRGL5125 |  | Testing of Drainage line | 25d | 2013-10-14 | 2013-11-13 | DUKHCONI1AZ1DRGL5120 FF+10d, DUKHCONI1AZ1DRGL5120 SS+10d | -4d |
| DUKHCONI1AZ1DRGL5130 |  | Backfilling Drainage line | 15d | 2013-11-03 | 2013-11-19 | DUKHCONI1AZ1DRGL5125 SS+10d, DUKHCONI1AZ1DRGL5125 FF+5d | -4d |
|  | 15 | **MANHOLES & SOAKAWAY** |  | 2013-11-03 | 2014-01-23 |  |  |
| DUKHCONI1AZ1SAGL5135 |  | Construction of manholes Drainage | 25d | 2013-11-03 | 2013-12-01 | DUKHCONI1AZ1DRGL5130 FF+10d, DUKHENGI1ADWDRAP4250, DUKHCONI1AZ1DRGL5115, DUKHENGI03DWDRAP5810 | 68d |
| DUKHCONI1AZ1SAGL5140 |  | Construction of soakaways | 25d | 2013-11-03 | 2013-12-01 | DUKHCONI1AZ1DRGL5115, DUKHCONI1AZ1DRGL5130 FF+10d | -4d |
| DUKHCONI1AZ1SAGL5145 |  | Construction of Road gullies | 25d | 2013-12-02 | 2013-12-31 | DUKHCONI1AZ1SAGL5140 | -4d |
| DUKHCONI1AZ1SAGL5150 |  | Connection with existing sewer manhole | 20d | 2014-01-01 | 2014-01-23 | DUKHCONI1AZ1SAGL5145, DUKHCONI1AZ1SAGL5135 | 43d |
|  | 20 | **WATER SUPPLY SYSTEM** |  | 2013-11-14 | 2014-01-29 |  |  |
| DUKHCONI1AZ1WSGL5155 |  | Excavation for water line | 25d | 2013-11-14 | 2013-12-12 | DUKHCONI1AZ1DRGL5130 SS+10d, DUKHENGI1ADWWSAP4270 | -4d |
| DUKHCONI1AZ1WSGL5160 |  | Laying of water line | 25d | 2013-11-20 | 2013-12-19 | DUKHCONI1AZ1WSGL5155 SS+5d | -4d |
| DUKHCONI1AZ1WSGL5165 |  | Testing of potable water line | 25d | 2013-11-26 | 2013-12-25 | DUKHCONI1AZ1WSGL5160 SS+5d | -4d |
| DUKHCONI1AZ1WSGL5170 |  | Backfilling potable water line | 25d | 2013-12-02 | 2013-12-31 | DUKHCONI1AZ1SAGL5145 FF, DUKHCONI1AZ1WSGL5165 SS+5d | -4d |
| DUKHCONI1AZ1WSGL5175 |  | Construction of valve chambers & Thrust Blocks | 25d | 2013-12-08 | 2014-01-06 | DUKHCONI1AZ1WSGL5170 FF+5d, DUKHCONI1AZ1WSGL5155 SS+10d | 38d |
| DUKHCONI1AZ1WSGL5180 |  | Installation of meter ,Accessories & Connection | 20d | 2014-01-07 | 2014-01-29 | DUKHCONI1AZ1WSGL5175 | 38d |
|  | 25 | **FIREFIGHTING LINES** |  | 2013-12-14 | 2014-02-13 |  |  |
| DUKHCONI1AZ1FFGL5185 |  | Excavation for firefighting line | 25d | 2013-12-14 | 2014-01-12 | DUKHCONI1AZ1WSGL5170 SS+10d, DUKHENGI1ADWFFAP4260 | -4d |
| DUKHCONI1AZ1FFGL5190 |  | Laying of firefighting line | 25d | 2013-12-23 | 2014-01-20 | DUKHCONI1AZ1FFGL5185 SS+7d, DUKHPROGEN00PRDV3540, DUKHPROGEN00PRDV3650 | -4d |
| DUKHCONI1AZ1FFGL5195 |  | Testing of firefighting line | 25d | 2013-12-29 | 2014-01-26 | DUKHCONI1AZ1FFGL5190 SS+5d | -4d |
| DUKHCONI1AZ1FFGL5200 |  | Backfilling firefighting line | 25d | 2014-01-04 | 2014-02-01 | DUKHCONI1AZ1FFGL5195 SS+5d | -4d |
| DUKHCONI1AZ1FFGL5205 |  | Construction of valve chambers & Thrust Blocks | 25d | 2014-01-09 | 2014-02-06 | DUKHCONI1AZ1FFGL5185 SS+10d, DUKHCONI1AZ1FFGL5200 FF+5d, DUKHPROGEN00PRDV3690 | 26d |
| DUKHCONI1AZ1FFGL5210 |  | Connection with existing Firewater System | 25d | 2014-01-15 | 2014-02-13 | DUKHCONI1AZ1FFGL5205 FF+5d, DUKHCONI1AZ1WSGL5180 FF | 26d |
|  | 30 | **ELECTRICAL LINES** |  | 2014-01-12 | 2014-03-12 |  |  |
| DUKHCONI1AZ1ELGL5215 |  | Excavation Cable Trenches & Duct Banks | 25d | 2014-01-12 | 2014-02-09 | DUKHENGI1ADWELAP4280, DUKHCONI1AZ1FFGL5200 SS+7d | 4d |
| DUKHCONI1AZ1ELGL5220 |  | Laying of electrical cables | 25d | 2014-01-18 | 2014-02-16 | DUKHCONI1AZ1ELGL5215 SS+5d | 7d |
| DUKHCONI1AZ1ELGL5225 |  | Backfilling Electrical trench | 25d | 2014-01-26 | 2014-02-24 | DUKHCONI1AZ1ELGL5220 SS+7d, DUKHCONI1AZ1ELGL5215 FF+7d | 7d |
| DUKHCONI1AZ1ELGL5230 |  | Construction of Submain Board & Feeder Pillar | 25d | 2014-02-12 | 2014-03-12 | DUKHCONI1AZ1ELGL5225 FF+14d, DUKHCONI1AZ1ELGL5225 SS | 71d |
|  | 35 | **STREET LIGHTING** |  | 2014-01-12 | 2014-05-05 |  |  |
| DUKHCONI1AZ1STGL5235 |  | Excavation for Street lighting | 25d | 2014-01-12 | 2014-02-09 | DUKHENGI1ADWSTAP4290, DUKHCONI1AZ1ELGL5215 SS | 4d |
| DUKHCONI1AZ1STGL5240 |  | Construction of Duct Banks | 25d | 2014-01-18 | 2014-02-16 | DUKHCONI1AZ1STGL5235 SS+5d | 4d |
| DUKHCONI1AZ1STGL5245 |  | Construction of Foundation | 25d | 2014-01-18 | 2014-02-16 | DUKHCONI1AZ1STGL5240 SS | 4d |
| DUKHCONI1AZ1STGL5250 |  | Backfilling Street Lighting | 25d | 2014-01-23 | 2014-02-22 | DUKHCONI1AZ1STGL5235 FF+5d, DUKHCONI1AZ1STGL5245 SS+5d | 4d |
| DUKHCONI1AZ1STGL5255 |  | Installation of light Post | 25d | 2014-03-01 | 2014-03-29 | DUKHPROGEN00PRDV3250, DUKHCONI1AZ1STGL5250 SS+10d, DUKHPROGEN00PRDV3350, DUKHCONI1AZ1ELGL5230 FF+14d | 71d |
| DUKHCONI1AZ1STGL5260 |  | Electrical Works | 25d | 2014-04-07 | 2014-05-05 | DUKHCONI1AZ1ELGL5230, DUKHCONI1AZ1STGL5255 FS+7d | 71d |
|  | 40 | **IRRIGATION LINES** |  | 2014-02-25 | 2014-05-01 |  |  |
| DUKHCONI1AZ1IRGL5265 |  | Excavation for irrigation line | 25d | 2014-02-25 | 2014-03-25 | DUKHCONI1AZ1ELGL5225, DUKHENGI1ADWIRAP4310 | 29d |
| DUKHCONI1AZ1IRGL5270 |  | Laying of irrigationline | 25d | 2014-03-03 | 2014-03-31 | DUKHPROGEN00PRDV3670, DUKHCONI1AZ1IRGL5265 SS+5d | 29d |
| DUKHCONI1AZ1IRGL5275 |  | Testing of irrigation line | 25d | 2014-03-09 | 2014-04-06 | DUKHCONI1AZ1IRGL5270 SS+5d | 29d |
| DUKHCONI1AZ1IRGL5280 |  | Backfilling irrigation line | 25d | 2014-03-15 | 2014-04-12 | DUKHCONI1AZ1IRGL5275 SS+5d | 29d |
| DUKHCONI1AZ1IRGL5285 |  | Construction of Thrust Blocks,Pull boxes | 25d | 2014-03-26 | 2014-04-23 | DUKHCONI1AZ1IRGL5280 FF+10d, DUKHCONI1AZ1ELGL5225 SS+10d | 49d |
| DUKHCONI1AZ1IRGL5290 |  | Irrigation Fittings (Nozzle,Values) | 25d | 2014-04-03 | 2014-05-01 | DUKHPROGEN00PRDV3860, DUKHCONI1AZ1IRGL5285 SS+7d, DUKHPROGEN00PRDV3830, DUKHPROGEN00PRDV3810, DUKHPROGEN00PRDV3840, DUKHPROGEN00PRDV3870, DUKHPROGEN00PRDV3760, DUKHCONI1AZ1IRGL5280 SS+10d | 49d |
|  | 45 | **TELECOMMUNICATION LINES** |  | 2014-02-04 | 2014-03-23 |  |  |
| DUKHCONI1AZ1TCGL5295 |  | Excavation Telecommunication trenches | 20d | 2014-02-04 | 2014-02-27 | DUKHENGI1ADWTCAP4300, DUKHCONI1AZ1STGL5250 SS+10d | 4d |
| DUKHCONI1AZ1TCGL5300 |  | Laying of cables | 20d | 2014-02-10 | 2014-03-05 | DUKHCONI1AZ1TCGL5295 SS+5d | 4d |
| DUKHCONI1AZ1TCGL5305 |  | Backfilling telecommunication trench | 20d | 2014-02-17 | 2014-03-11 | DUKHCONI1AZ1TCGL5300 SS+5d | 4d |
| DUKHCONI1AZ1TCGL5310 |  | Connection & Installation | 20d | 2014-03-01 | 2014-03-23 | DUKHCONI1AZ1TCGL5305 FF+10d, DUKHCONI1AZ1TCGL5305 SS+10d | 9d |
|  | 50 | **BOUNDARY WALL** |  | 2014-02-04 | 2014-05-01 |  |  |
| DUKHCONI1AZ1BWGL5315 |  | Construction of Boundary Wall (Ht-3m) | 25d | 2014-02-04 | 2014-03-05 | DUKHPROGEN00PRDV3820, DUKHCONI1AZ1STGL5250 SS+10d, DUKHENGI1ADWBWAP4330 | 75d |
| DUKHCONI1AZ1BWGL5320 |  | Install.Steel Gate,Entance Barrier (3m Wall) | 25d | 2014-02-22 | 2014-03-22 | DUKHCONI1AZ1BWGL5315 SS+14d, DUKHPROGEN00PRDV3800 | 75d |
| DUKHCONI1AZ1BWGL5325 |  | Const. of Villa Front Boundary Wall (Ht-2m) | 25d | 2014-03-23 | 2014-04-20 | DUKHCONI1AZ1BWGL5315 SS+5d, DUKHCONI1AZ1BWGL5320 | 75d |
| DUKHCONI1AZ1BWGL5330 |  | Const. of Blockwork fence Wall (Ht-1.85m) | 25d | 2014-04-03 | 2014-05-01 | DUKHCONI1AZ1BWGL5320, DUKHCONI1AZ1BWGL5325 FF+10d, DUKHCONI1AZ1BWGL5325 SS+10d | 75d |
|  | 55 | **ROAD WORKS** |  | 2014-03-12 | 2014-05-26 |  |  |
| DUKHCONI1AZ1RWGL6000 |  | Excavation & Earth Filling | 10d | 2014-03-12 | 2014-03-23 | DUKHCONI1AZ1TCGL5310 SS+5d, DUKHENGI1ADWBWAP4330, DUKHCONI1AZ1STGL5250, DUKHCONI1AZ1ELGL5225, DUKHCONI1AZ1SAGL5150, DUKHCONI1AZ1FFGL5200, DUKHPROGEN00PRDV3750, DUKHCONI1AZ1FFGL5210, DUKHCONI1AZ1TCGL5305 | 4d |
| DUKHCONI1AZ1RWGL6005 |  | Laying of Sub Grade | 25d | 2014-03-24 | 2014-04-21 | DUKHCONI1AZ1RWGL6000 | 4d |
| DUKHCONI1AZ1RWGL6010 |  | Laying of Precast Kerbs | 25d | 2014-04-05 | 2014-05-03 | DUKHCONI1AZ1RWGL6005 SS+10d | 4d |
| DUKHCONI1AZ1RWGL6015 |  | Laying of Granular Sub Base Coarse | 20d | 2014-04-16 | 2014-05-08 | DUKHCONI1AZ1RWGL6010 SS+10d | 4d |
| DUKHCONI1AZ1RWGL6020 |  | Laying of Road Base Asphalt Concrete | 5d | 2014-05-10 | 2014-05-14 | DUKHCONI1AZ1RWGL6015 | 64d |
| DUKHCONI1AZ1RWGL6025 |  | Laying of Asphalt Wearing Coarse | 5d | 2014-05-15 | 2014-05-20 | DUKHCONI1AZ1RWGL6020 | 73d |
| DUKHCONI1AZ1RWGL6030 |  | Traffic Signage & Road Marking | 5d | 2014-05-21 | 2014-05-26 | DUKHPROGEN00PRDV3710, DUKHCONI1AZ1RWGL6025, DUKHPROGEN00PRDV3720, DUKHPROGEN00PRDV3700 | 79d |
|  | 60 | **PARKING SHED** |  | 2014-04-22 | 2014-06-18 |  |  |
| DUKHCONI1AZ1PSGL7000 |  | Excavation | 15d | 2014-04-22 | 2014-05-08 | DUKHENGI1ADWPSAP4340, DUKHCONI1AZ1RWGL6015 SS+5d | 69d |
| DUKHCONI1AZ1PSGL7005 |  | Foundation casting | 15d | 2014-05-04 | 2014-05-20 | DUKHCONI1AZ1PSGL7000 SS+5d, DUKHCONI1AZ1PSGL7000 FF+5d, DUKHCONI1AZ1RWGL6015 FF+10d | 64d |
| DUKHCONI1AZ1PSGL7010 |  | Column, Frame& Fabrics Erection | 25d | 2014-05-15 | 2014-06-12 | DUKHPROGEN00PRDV3730, DUKHCONI1AZ1BWGL5330 FF+10d, DUKHCONI1AZ1PSGL7005 SS+10d, DUKHCONI1AZ1RWGL6020, DUKHCONI1AZ1RWGL6030 FF | 64d |
| DUKHCONI1AZ1PSGL7015 |  | Electrical Works-Parking Shed | 25d | 2014-05-21 | 2014-06-18 | DUKHCONI1AZ1PSGL7010 SS+5d, DUKHCONI1AZ1STGL5260 | 64d |
|  | 65 | **HARD LANDSCAPING** |  | 2014-03-12 | 2014-06-12 |  |  |
| DUKHCONI1AZ1HDGL7020 |  | Precast Concrete Kerbs works | 20d | 2014-03-12 | 2014-04-03 | DUKHENGI1ADWSLAP4320, DUKHCONI1AZ1RWGL6000 SS | 38d |
| DUKHCONI1AZ1HDGL7025 |  | Interlocking for Walkways | 25d | 2014-03-24 | 2014-04-21 | DUKHCONI1AZ1HDGL7020 SS+10d | 38d |
| DUKHCONI1AZ1HDGL7030 |  | Construction of Retaining wall | 25d | 2014-04-05 | 2014-05-03 | DUKHCONI1AZ1HDGL7025 SS+10d | 38d |
| DUKHCONI1AZ1HDGL7035 |  | Construction of Wash Stone Boulders | 25d | 2014-04-05 | 2014-05-03 | DUKHCONI1AZ1HDGL7030 SS, DUKHPROGEN00PRDV3740 | 38d |

| ID | WBS | Task | Duration | Start | Finish | Predecessors | Total float |
| --- | --- | --- | --- | --- | --- | --- | --- |
| DUKHCONI1AZ1HDGL7040 |  | Construction of Speed Humps | 20d | 2014-05-21 | 2014-06-12 | DUKHPROGEN00PRDV3750, DUKHCONI1AZ1RWGL6025, DUKHCONI1AZ1HDGL7035 SS | 73d |
|  | 70 | **SOFT LANDSCAPING** |  | 2014-04-16 | 2014-06-12 |  |  |
| DUKHCONI1AZ1SLGL7200 |  | Excavation | 25d | 2014-04-16 | 2014-05-14 | DUKHCONI1AZ1HDGL7035 SS+10d, DUKHCONI1AZ1IRGL5290 SS, DUKHENGI1ADWSLAP4320 | 38d |
| DUKHCONI1AZ1SLGL7205 |  | Sweet Soil Laying | 25d | 2014-04-28 | 2014-05-26 | DUKHCONI1AZ1SLGL7200 SS+10d, DUKHPROGEN00PRDV3790 | 38d |
| DUKHCONI1AZ1SLGL7210 |  | Plantation works | 25d | 2014-05-15 | 2014-06-12 | DUKHCONI1AZ1HDGL7040 FF, DUKHCONI1AZ1SLGL7205 SS+10d | 73d |
|  | 15 | **ZONE- 2** |  | 2013-12-04 | 2014-08-19 |  |  |
|  | 10 | **INFRASTRUCTURE WORKS** |  | 2013-12-04 | 2014-08-19 |  |  |
|  | 10 | **DRAINAGE LINES** |  | 2013-12-04 | 2014-01-23 |  |  |
| DUKHCONI1AZ2DRGL5115 |  | Excavation for Drainage line | 25d | 2013-12-04 | 2014-01-02 | DUKHCONI1AZ1DRGL5130, DUKHCONP1AZ3STFF2030 SS | -15d |
| DUKHCONI1AZ2DRGL5120 |  | Laying of Drainage line | 25d | 2013-12-11 | 2014-01-09 | DUKHCONI1AZ2DRGL5115 SS+6d, DUKHCONI1AZ2DRGL5115 FF+6d | -15d |
| DUKHCONI1AZ2DRGL5125 |  | Testing of Drainage line | 25d | 2013-12-21 | 2014-01-18 | DUKHCONI1AZ2DRGL5120 FF+7d, DUKHCONI1AZ2DRGL5120 SS+7d | -15d |
| DUKHCONI1AZ2DRGL5130 |  | Backfilling Drainage line | 15d | 2014-01-07 | 2014-01-23 | DUKHCONI1AZ2DRGL5125 SS+10d, DUKHCONI1AZ2DRGL5125 FF+5d | -15d |
|  | 15 | **MANHOLES & SOAKAWAY** |  | 2014-01-05 | 2014-03-27 |  |  |
| DUKHCONI1AZ2SAGL5140 |  | Construction of soakaways | 25d | 2014-01-05 | 2014-02-02 | DUKHCONI1AZ2DRGL5115, DUKHCONI1AZ2DRGL5130 FF+8d | -10d |
| DUKHCONI1AZ2SAGL5135 |  | Construction of manholes Drainage | 25d | 2014-01-07 | 2014-02-04 | DUKHCONI1AZ1SAGL5135, DUKHCONI1AZ2DRGL5130 FF+10d, DUKHCONI1AZ2DRGL5115 | 53d |
| DUKHCONI1AZ2SAGL5145 |  | Construction of Road gullies | 25d | 2014-02-03 | 2014-03-04 | DUKHCONI1AZ1SAGL5145, DUKHCONI1AZ2SAGL5140 | -10d |
| DUKHCONI1AZ2SAGL5150 |  | Connection with existing sewer manhole | 20d | 2014-03-05 | 2014-03-27 | DUKHCONI1AZ2SAGL5135, DUKHCONI1AZ2SAGL5145 | 30d |
|  | 20 | **WATER SUPPLY SYSTEM** |  | 2014-01-19 | 2014-04-05 |  |  |
| DUKHCONI1AZ2WSGL5155 |  | Excavation for water line | 25d | 2014-01-19 | 2014-02-17 | DUKHCONI1AZ1WSGL5170, DUKHCONI1AZ2DRGL5130 SS+10d | -12d |
| DUKHCONI1AZ2WSGL5160 |  | Laying of water line | 25d | 2014-01-25 | 2014-02-23 | DUKHCONI1AZ2WSGL5155 SS+5d | -12d |
| DUKHCONI1AZ2WSGL5165 |  | Testing of potable water line | 25d | 2014-01-30 | 2014-03-01 | DUKHCONI1AZ2WSGL5160 SS+5d | -12d |
| DUKHCONI1AZ2WSGL5170 |  | Backfilling potable water line | 25d | 2014-02-05 | 2014-03-06 | DUKHCONI1AZ2SAGL5145 FF, DUKHCONI1AZ2WSGL5165 SS+5d | -12d |
| DUKHCONI1AZ2WSGL5175 |  | Construction of valve chambers & Thrust Blocks | 25d | 2014-02-12 | 2014-03-12 | DUKHCONI1AZ2WSGL5170 FF+5d, DUKHCONI1AZ1WSGL5175, DUKHCONI1AZ2WSGL5155 SS+10d | 23d |
| DUKHCONI1AZ2WSGL5180 |  | Installation of meter ,Accessories & Connection | 20d | 2014-03-13 | 2014-04-05 | DUKHCONI1AZ2WSGL5175, DUKHCONI1AZ1WSGL5180 | 23d |
|  | 25 | **FIREFIGHTING LINES** |  | 2014-02-12 | 2014-04-13 |  |  |
| DUKHCONI1AZ2FFGL5185 |  | Excavation for firefighting line | 25d | 2014-02-12 | 2014-03-12 | DUKHCONI1AZ2WSGL5170 SS+5d, DUKHCONI1AZ1FFGL5200 | -12d |
| DUKHCONI1AZ2FFGL5190 |  | Laying of firefighting line | 25d | 2014-02-20 | 2014-03-20 | DUKHCONI1AZ2FFGL5185 SS+7d | -12d |
| DUKHCONI1AZ2FFGL5195 |  | Testing of firefighting line | 25d | 2014-02-26 | 2014-03-26 | DUKHCONI1AZ2FFGL5190 SS+5d | -12d |
| DUKHCONI1AZ2FFGL5200 |  | Backfilling firefighting line | 25d | 2014-03-04 | 2014-04-01 | DUKHCONI1AZ2FFGL5195 SS+5d | -12d |
| DUKHCONI1AZ2FFGL5205 |  | Construction of valve chambers & Thrust Blocks | 25d | 2014-03-10 | 2014-04-07 | DUKHCONI1AZ2FFGL5200 FF+5d, DUKHCONI1AZ1FFGL5205, DUKHCONI1AZ2FFGL5185 SS+10d | 16d |
| DUKHCONI1AZ2FFGL5210 |  | Connection with existing Firewater System | 25d | 2014-03-16 | 2014-04-13 | DUKHCONI1AZ1FFGL5210, DUKHCONI1AZ2FFGL5205 FF+5d, DUKHCONI1AZ2WSGL5180 FF | 16d |
|  | 30 | **ELECTRICAL LINES** |  | 2014-03-12 | 2014-05-05 |  |  |
| DUKHCONI1AZ2ELGL5215 |  | Excavation Cable Trenches & Duct Banks | 25d | 2014-03-12 | 2014-04-09 | DUKHCONI1AZ1ELGL5225, DUKHCONI1AZ2FFGL5200 SS+7d | -6d |
| DUKHCONI1AZ2ELGL5220 |  | Laying of electrical cables | 25d | 2014-03-18 | 2014-04-15 | DUKHCONI1AZ2ELGL5215 SS+5d | -3d |
| DUKHCONI1AZ2ELGL5225 |  | Backfilling Electrical trench | 25d | 2014-03-26 | 2014-04-23 | DUKHCONI1AZ2ELGL5215 FF+7d, DUKHCONI1AZ2ELGL5220 SS+7d | -3d |
| DUKHCONI1AZ2ELGL5230 |  | Construction of Submain Board & Feeder Pillar | 25d | 2014-04-07 | 2014-05-05 | DUKHCONI1AZ1ELGL5230, DUKHCONI1AZ2ELGL5225 FF+10d, DUKHCONI1AZ2ELGL5225 SS+10d | 71d |
|  | 35 | **STREET LIGHTING** |  | 2014-03-12 | 2014-06-03 |  |  |
| DUKHCONI1AZ2STGL5235 |  | Excavation for Street lighting | 25d | 2014-03-12 | 2014-04-09 | DUKHCONI1AZ1STGL5250 SS+10d, DUKHCONI1AZ2ELGL5215 SS | -6d |
| DUKHCONI1AZ2STGL5240 |  | Construction of Duct Banks | 25d | 2014-03-18 | 2014-04-15 | DUKHCONI1AZ2STGL5235 SS+5d | -6d |
| DUKHCONI1AZ2STGL5245 |  | Construction of Foundation | 25d | 2014-03-18 | 2014-04-15 | DUKHCONI1AZ2STGL5240 SS | -6d |
| DUKHCONI1AZ2STGL5250 |  | Backfilling Street Lighting | 25d | 2014-03-24 | 2014-04-21 | DUKHCONI1AZ2STGL5245 SS+5d, DUKHCONI1AZ2STGL5235 FF+5d | -6d |
| DUKHCONI1AZ2STGL5255 |  | Installation of light Post | 25d | 2014-04-09 | 2014-05-07 | DUKHCONI1AZ1STGL5255, DUKHCONI1AZ2STGL5250 FF+14d, DUKHCONI1AZ2STGL5250 SS+10d | 69d |
| DUKHCONI1AZ2STGL5260 |  | Electrical Works | 25d | 2014-05-06 | 2014-06-03 | DUKHCONI1AZ1STGL5260, DUKHCONI1AZ2ELGL5230, DUKHCONI1AZ2STGL5255 SS+14d, DUKHCONI1AZ2STGL5255 FF+10d | 71d |
|  | 40 | **IRRIGATION LINES** |  | 2014-04-24 | 2014-06-29 |  |  |
| DUKHCONI1AZ2IRGL5265 |  | Excavation for irrigation line | 25d | 2014-04-24 | 2014-05-22 | DUKHCONI1AZ2ELGL5225, DUKHCONI1AZ1IRGL5280 | 19d |
| DUKHCONI1AZ2IRGL5270 |  | Laying of irrigationline | 25d | 2014-04-30 | 2014-05-28 | DUKHCONI1AZ2IRGL5265 SS+5d | 19d |
| DUKHCONI1AZ2IRGL5275 |  | Testing of irrigation line | 25d | 2014-05-06 | 2014-06-03 | DUKHCONI1AZ2IRGL5270 SS+5d | 19d |
| DUKHCONI1AZ2IRGL5280 |  | Backfilling irrigation line | 25d | 2014-05-12 | 2014-06-09 | DUKHCONI1AZ2IRGL5275 SS+5d | 19d |
| DUKHCONI1AZ2IRGL5285 |  | Construction of Thrust Blocks,Pull boxes | 25d | 2014-05-24 | 2014-06-21 | DUKHCONI1AZ2ELGL5225 SS+10d, DUKHCONI1AZ2IRGL5280 FF+10d | 34d |
| DUKHCONI1AZ2IRGL5290 |  | Irrigation Fittings (Nozzle,Values) | 25d | 2014-06-01 | 2014-06-29 | DUKHCONI1AZ2IRGL5285 SS+7d, DUKHCONI1AZ2IRGL5280 SS+10d | 34d |
|  | 45 | **TELECOMMUNICATION LINES** |  | 2014-04-05 | 2014-05-20 |  |  |
| DUKHCONI1AZ2TCGL5295 |  | Excavation Telecommunication trenches | 20d | 2014-04-05 | 2014-04-27 | DUKHCONI1AZ1TCGL5305, DUKHCONI1AZ2STGL5250 SS+10d | -6d |
| DUKHCONI1AZ2TCGL5300 |  | Laying of cables | 20d | 2014-04-10 | 2014-05-03 | DUKHCONI1AZ2TCGL5295 SS+5d | -6d |
| DUKHCONI1AZ2TCGL5305 |  | Backfilling telecommunication trench | 20d | 2014-04-16 | 2014-05-08 | DUKHCONI1AZ2TCGL5300 SS+5d | -6d |
| DUKHCONI1AZ2TCGL5310 |  | Connection & Installation | 20d | 2014-04-28 | 2014-05-20 | DUKHCONI1AZ1TCGL5310, DUKHCONI1AZ2TCGL5305 SS+10d | 73d |
|  | 50 | **BOUNDARY WALL** |  | 2014-04-05 | 2014-06-29 |  |  |
| DUKHCONI1AZ2BWGL5315 |  | Construction of Boundary Wall (Ht-3m) | 25d | 2014-04-05 | 2014-05-03 | DUKHCONI1AZ2STGL5250 SS+10d, DUKHCONI1AZ1BWGL5315 | 50d |
| DUKHCONI1AZ2BWGL5320 |  | Install.Steel Gate,Entance Barrier (3m Wall) | 25d | 2014-04-21 | 2014-05-19 | DUKHCONI1AZ2BWGL5315 SS+14d | 50d |
| DUKHCONI1AZ2BWGL5325 |  | Const. of Villa Front Boundary Wall (Ht-2m) | 25d | 2014-05-20 | 2014-06-17 | DUKHCONI1AZ2BWGL5320, DUKHCONI1AZ2BWGL5315 SS+5d, DUKHCONI1AZ1BWGL5325 | 50d |
| DUKHCONI1AZ2BWGL5330 |  | Const. of Blockwork fence Wall (Ht-1.85m) | 25d | 2014-06-01 | 2014-06-29 | DUKHCONI1AZ1BWGL5330, DUKHCONI1AZ2BWGL5325 SS+10d | 50d |
|  | 55 | **ROAD WORKS** |  | 2014-05-10 | 2014-07-23 |  |  |
| DUKHCONI1AZ2RWGL6000 |  | Excavation & Earth Filling | 10d | 2014-05-10 | 2014-05-20 | DUKHCONI1AZ1RWGL6015 SS+10d, DUKHCONI1AZ2ELGL5225, DUKHCONI1AZ2STGL5250, DUKHCONI1AZ2FFGL5200, DUKHCONI1AZ2TCGL5305, DUKHCONI1AZ2SAGL5150, DUKHCONI1AZ2FFGL5210 | -6d |
| DUKHCONI1AZ2RWGL6005 |  | Laying of Sub Grade | 25d | 2014-05-21 | 2014-06-18 | DUKHCONI1AZ2RWGL6000 | -6d |
| DUKHCONI1AZ2RWGL6010 |  | Laying of Precast Kerbs | 25d | 2014-06-02 | 2014-06-30 | DUKHCONI1AZ2RWGL6005 SS+10d | -6d |
| DUKHCONI1AZ2RWGL6015 |  | Laying of Granular Sub Base Coarse | 20d | 2014-06-14 | 2014-07-06 | DUKHCONI1AZ2RWGL6010 SS+10d | -6d |
| DUKHCONI1AZ2RWGL6020 |  | Laying of Road Base Asphalt Concrete | 5d | 2014-07-07 | 2014-07-12 | DUKHCONI1AZ2RWGL6015 | 39d |
| DUKHCONI1AZ2RWGL6025 |  | Laying of Asphalt Wearing Coarse | 5d | 2014-07-13 | 2014-07-17 | DUKHCONI1AZ1RWGL6025, DUKHCONI1AZ2RWGL6020 | 54d |
| DUKHCONI1AZ2RWGL6030 |  | Traffic Signage & Road Marking | 5d | 2014-07-19 | 2014-07-23 | DUKHCONI1AZ2RWGL6025, DUKHCONI1AZ1RWGL6030 | 54d |
|  | 60 | **PARKING SHED** |  | 2014-06-19 | 2014-08-19 |  |  |
| DUKHCONI1AZ2PSGL7000 |  | Excavation | 15d | 2014-06-19 | 2014-07-06 | DUKHCONI1AZ1PSGL7005, DUKHCONI1AZ2RWGL6015 SS+5d | 44d |

| ID | WBS | Task | Duration | Start | Finish | Predecessors | Total float |
| --- | --- | --- | --- | --- | --- | --- | --- |
| DUKHCONI1AZ2PSGL7005 |  | Foundation casting | 15d | 2014-07-01 | 2014-07-17 | DUKHCONI1AZ2PSGL7000 FF+5d, DUKHCONI1AZ2PSGL7000 SS+5d, DUKHCONI1AZ2RWGL6015 FF+10d | 39d |
| DUKHCONI1AZ2PSGL7010 |  | Column, Frame& Fabrics Erection | 25d | 2014-07-13 | 2014-08-13 | DUKHCONI1AZ2BWGL5330, DUKHCONI1AZ2PSGL7005 SS+10d, DUKHCONI1AZ2RWGL6020, DUKHCONI1AZ2RWGL6030 FF, DUKHCONI1AZ1PSGL7010 | 39d |
| DUKHCONI1AZ2PSGL7015 |  | Electrical Works-Parking Shed | 25d | 2014-07-19 | 2014-08-19 | DUKHCONI1AZ2PSGL7010 SS+5d, DUKHCONI1AZ2STGL5260, DUKHCONI1AZ1PSGL7015 | 39d |
|  | 65 | **HARD LANDSCAPING** |  | 2014-05-10 | 2014-08-13 |  |  |
| DUKHCONI1AZ2HDGL7020 |  | Precast Concrete Kerbs works | 20d | 2014-05-10 | 2014-06-01 | DUKHCONI1AZ2RWGL6000 SS | 23d |
| DUKHCONI1AZ2HDGL7025 |  | Interlocking for Walkways | 25d | 2014-05-21 | 2014-06-18 | DUKHCONI1AZ2HDGL7020 SS+10d | 23d |
| DUKHCONI1AZ2HDGL7030 |  | Construction of Retaining wall | 25d | 2014-06-02 | 2014-06-30 | DUKHCONI1AZ1HDGL7030, DUKHCONI1AZ2HDGL7025 SS+10d | 23d |
| DUKHCONI1AZ2HDGL7035 |  | Construction of Wash Stone Boulders | 25d | 2014-06-02 | 2014-06-30 | DUKHCONI1AZ2HDGL7030 SS, DUKHCONI1AZ1HDGL7035 | 23d |
| DUKHCONI1AZ2HDGL7040 |  | Construction of Speed Humps | 20d | 2014-07-19 | 2014-08-13 | DUKHCONI1AZ1HDGL7040, DUKHCONI1AZ2RWGL6025, DUKHCONI1AZ2HDGL7035 SS | 73d |
|  | 70 | **SOFT LANDSCAPING** |  | 2014-06-14 | 2014-08-07 |  |  |
| DUKHCONI1AZ2SLGL7200 |  | Excavation | 25d | 2014-06-14 | 2014-07-12 | DUKHCONI1AZ1SLGL7205, DUKHCONI1AZ2IRGL5290 SS, DUKHCONI1AZ2HDGL7035 SS+10d | 23d |
| DUKHCONI1AZ2SLGL7205 |  | Sweet Soil Laying | 25d | 2014-06-25 | 2014-07-23 | DUKHCONI1AZ2SLGL7200 SS+10d | 23d |
| DUKHCONI1AZ2SLGL7210 |  | Plantation works | 25d | 2014-07-07 | 2014-08-07 | DUKHCONI1AZ1SLGL7210, DUKHCONI1AZ2SLGL7205 SS+10d | 53d |
|  | 20 | **ZONE - 3** |  | 2014-01-25 | 2014-10-08 |  |  |
|  | 10 | **INFRASTRUCTURE WORKS** |  | 2014-01-25 | 2014-10-08 |  |  |
|  | 10 | **DRAINAGE LINES** |  | 2014-01-25 | 2014-03-16 |  |  |
| DUKHCONI1AZ3DRGL5115 |  | Excavation for Drainage line | 25d | 2014-01-25 | 2014-02-23 | DUKHCONI1AZ2DRGL5130, DUKHCONP1AZ5STFF2025 SS | -15d |
| DUKHCONI1AZ3DRGL5120 |  | Laying of Drainage line | 25d | 2014-02-01 | 2014-03-02 | DUKHCONI1AZ3DRGL5115 FF+6d, DUKHCONI1AZ3DRGL5115 SS+6d | -15d |
| DUKHCONI1AZ3DRGL5125 |  | Testing of Drainage line | 25d | 2014-02-09 | 2014-03-10 | DUKHCONI1AZ3DRGL5120 SS+7d, DUKHCONI1AZ3DRGL5120 FF+7d | -15d |
| DUKHCONI1AZ3DRGL5130 |  | Backfilling Drainage line | 15d | 2014-02-27 | 2014-03-16 | DUKHCONI1AZ3DRGL5125 FF+5d, DUKHCONI1AZ3DRGL5125 SS+10d | -15d |
|  | 15 | **MANHOLES & SOAKAWAY** |  | 2014-02-25 | 2014-05-17 |  |  |
| DUKHCONI1AZ3SAGL5140 |  | Construction of soakaways | 25d | 2014-02-25 | 2014-03-25 | DUKHCONI1AZ3DRGL5115, DUKHCONI1AZ3DRGL5130 FF+8d | -11d |
| DUKHCONI1AZ3SAGL5135 |  | Construction of manholes Drainage | 25d | 2014-02-27 | 2014-03-27 | DUKHCONI1AZ3DRGL5115, DUKHCONI1AZ2SAGL5135, DUKHCONI1AZ3DRGL5130 FF+10d | 50d |
| DUKHCONI1AZ3SAGL5145 |  | Construction of Road gullies | 25d | 2014-03-26 | 2014-04-23 | DUKHCONI1AZ3SAGL5140, DUKHCONI1AZ2SAGL5145 | -11d |
| DUKHCONI1AZ3SAGL5150 |  | Connection with existing sewer manhole | 20d | 2014-04-24 | 2014-05-17 | DUKHCONI1AZ3SAGL5135, DUKHCONI1AZ3SAGL5145 | 27d |
|  | 20 | **WATER SUPPLY SYSTEM** |  | 2014-03-11 | 2014-05-25 |  |  |
| DUKHCONI1AZ3WSGL5155 |  | Excavation for water line | 25d | 2014-03-11 | 2014-04-08 | DUKHCONI1AZ3DRGL5130 SS+10d, DUKHCONI1AZ2WSGL5170 | -13d |
| DUKHCONI1AZ3WSGL5160 |  | Laying of water line | 25d | 2014-03-17 | 2014-04-14 | DUKHCONI1AZ3WSGL5155 SS+5d | -13d |
| DUKHCONI1AZ3WSGL5165 |  | Testing of potable water line | 25d | 2014-03-23 | 2014-04-20 | DUKHCONI1AZ3WSGL5160 SS+5d | -13d |
| DUKHCONI1AZ3WSGL5170 |  | Backfilling potable water line | 25d | 2014-03-29 | 2014-04-26 | DUKHCONI1AZ3SAGL5145 FF, DUKHCONI1AZ3WSGL5165 SS+5d | -13d |
| DUKHCONI1AZ3WSGL5175 |  | Construction of valve chambers & Thrust Blocks | 25d | 2014-04-03 | 2014-05-01 | DUKHCONI1AZ3WSGL5155 SS+10d, DUKHCONI1AZ3WSGL5170 FF+5d, DUKHCONI1AZ2WSGL5175 | 20d |
| DUKHCONI1AZ3WSGL5180 |  | Installation of meter ,Accessories & Connection | 20d | 2014-05-03 | 2014-05-25 | DUKHCONI1AZ2WSGL5180, DUKHCONI1AZ3WSGL5175 | 20d |
|  | 25 | **FIREFIGHTING LINES** |  | 2014-04-03 | 2014-06-02 |  |  |
| DUKHCONI1AZ3FFGL5185 |  | Excavation for firefighting line | 25d | 2014-04-03 | 2014-05-01 | DUKHCONI1AZ3WSGL5170 SS+5d, DUKHCONI1AZ2FFGL5200 | -13d |
| DUKHCONI1AZ3FFGL5190 |  | Laying of firefighting line | 25d | 2014-04-12 | 2014-05-10 | DUKHCONI1AZ3FFGL5185 SS+7d | -13d |
| DUKHCONI1AZ3FFGL5195 |  | Testing of firefighting line | 25d | 2014-04-17 | 2014-05-15 | DUKHCONI1AZ3FFGL5190 SS+5d | -13d |
| DUKHCONI1AZ3FFGL5200 |  | Backfilling firefighting line | 25d | 2014-04-23 | 2014-05-21 | DUKHCONI1AZ3FFGL5195 SS+5d | -13d |
| DUKHCONI1AZ3FFGL5205 |  | Construction of valve chambers & Thrust Blocks | 25d | 2014-04-29 | 2014-05-27 | DUKHCONI1AZ3FFGL5185 SS+10d, DUKHCONI1AZ2FFGL5205, DUKHCONI1AZ3FFGL5200 FF+5d | 13d |
| DUKHCONI1AZ3FFGL5210 |  | Connection with existing Firewater System | 25d | 2014-05-05 | 2014-06-02 | DUKHCONI1AZ2FFGL5210, DUKHCONI1AZ3FFGL5205 FF+5d, DUKHCONI1AZ3WSGL5180 FF | 13d |
|  | 30 | **ELECTRICAL LINES** |  | 2014-05-01 | 2014-06-24 |  |  |
| DUKHCONI1AZ3ELGL5215 |  | Excavation Cable Trenches & Duct Banks | 25d | 2014-05-01 | 2014-05-29 | DUKHCONI1AZ3FFGL5200 SS+7d, DUKHCONI1AZ2ELGL5225 | -9d |
| DUKHCONI1AZ3ELGL5220 |  | Laying of electrical cables | 25d | 2014-05-07 | 2014-06-04 | DUKHCONI1AZ3ELGL5215 SS+5d | -6d |
| DUKHCONI1AZ3ELGL5225 |  | Backfilling Electrical trench | 25d | 2014-05-15 | 2014-06-12 | DUKHCONI1AZ3ELGL5215 FF+7d, DUKHCONI1AZ3ELGL5220 SS+7d | -6d |
| DUKHCONI1AZ3ELGL5230 |  | Construction of Submain Board & Feeder Pillar | 25d | 2014-05-27 | 2014-06-24 | DUKHCONI1AZ2ELGL5230, DUKHCONI1AZ3ELGL5225 SS+10d, DUKHCONI1AZ3ELGL5225 FF+10d | 53d |
|  | 35 | **STREET LIGHTING** |  | 2014-05-01 | 2014-07-23 |  |  |
| DUKHCONI1AZ3STGL5235 |  | Excavation for Street lighting | 25d | 2014-05-01 | 2014-05-29 | DUKHCONI1AZ3ELGL5215 SS, DUKHCONI1AZ2STGL5250 SS+10d | -9d |
| DUKHCONI1AZ3STGL5240 |  | Construction of Duct Banks | 25d | 2014-05-07 | 2014-06-04 | DUKHCONI1AZ3STGL5235 SS+5d | -9d |
| DUKHCONI1AZ3STGL5245 |  | Construction of Foundation | 25d | 2014-05-07 | 2014-06-04 | DUKHCONI1AZ3STGL5240 SS | -9d |
| DUKHCONI1AZ3STGL5250 |  | Backfilling Street Lighting | 25d | 2014-05-13 | 2014-06-10 | DUKHCONI1AZ3STGL5235 FF+5d, DUKHCONI1AZ3STGL5245 SS+5d | -9d |
| DUKHCONI1AZ3STGL5255 |  | Installation of light Post | 25d | 2014-05-25 | 2014-06-22 | DUKHCONI1AZ2STGL5255, DUKHCONI1AZ3STGL5250 SS+10d | 55d |
| DUKHCONI1AZ3STGL5260 |  | Electrical Works | 25d | 2014-06-25 | 2014-07-23 | DUKHCONI1AZ3ELGL5230, DUKHCONI1AZ2STGL5260, DUKHCONI1AZ3STGL5255 | 53d |
|  | 40 | **IRRIGATION LINES** |  | 2014-06-14 | 2014-08-21 |  |  |
| DUKHCONI1AZ3IRGL5265 |  | Excavation for irrigation line | 25d | 2014-06-14 | 2014-07-12 | DUKHCONI1AZ3ELGL5225, DUKHCONI1AZ2IRGL5280 | 16d |
| DUKHCONI1AZ3IRGL5270 |  | Laying of irrigationline | 25d | 2014-06-19 | 2014-07-17 | DUKHCONI1AZ3IRGL5265 SS+5d | 16d |
| DUKHCONI1AZ3IRGL5275 |  | Testing of irrigation line | 25d | 2014-06-25 | 2014-07-23 | DUKHCONI1AZ3IRGL5270 SS+5d | 16d |
| DUKHCONI1AZ3IRGL5280 |  | Backfilling irrigation line | 25d | 2014-07-01 | 2014-07-29 | DUKHCONI1AZ3IRGL5275 SS+5d | 16d |
| DUKHCONI1AZ3IRGL5285 |  | Construction of Thrust Blocks,Pull boxes | 25d | 2014-07-13 | 2014-08-13 | DUKHCONI1AZ3ELGL5225 SS+10d, DUKHCONI1AZ3IRGL5280 FF+10d | 26d |
| DUKHCONI1AZ3IRGL5290 |  | Irrigation Fittings (Nozzle,Values) | 25d | 2014-07-21 | 2014-08-21 | DUKHCONI1AZ3IRGL5280 SS+10d, DUKHCONI1AZ3IRGL5285 SS+7d | 26d |
|  | 45 | **TELECOMMUNICATION LINES** |  | 2014-05-25 | 2014-07-09 |  |  |
| DUKHCONI1AZ3TCGL5295 |  | Excavation Telecommunication trenches | 20d | 2014-05-25 | 2014-06-16 | DUKHCONI1AZ2TCGL5305, DUKHCONI1AZ3STGL5250 SS+10d | -9d |
| DUKHCONI1AZ3TCGL5300 |  | Laying of cables | 20d | 2014-05-31 | 2014-06-22 | DUKHCONI1AZ3TCGL5295 SS+5d | -9d |
| DUKHCONI1AZ3TCGL5305 |  | Backfilling telecommunication trench | 20d | 2014-06-05 | 2014-06-28 | DUKHCONI1AZ3TCGL5300 SS+5d | -9d |
| DUKHCONI1AZ3TCGL5310 |  | Connection & Installation | 20d | 2014-06-17 | 2014-07-09 | DUKHCONI1AZ3TCGL5305 SS+10d, DUKHCONI1AZ2TCGL5310 | 50d |
|  | 50 | **BOUNDARY WALL** |  | 2014-05-25 | 2014-08-21 |  |  |
| DUKHCONI1AZ3BWGL5315 |  | Construction of Boundary Wall (Ht-3m) | 25d | 2014-05-25 | 2014-06-22 | DUKHCONI1AZ3STGL5250 SS+10d, DUKHCONI1AZ2BWGL5315 | 46d |
| DUKHCONI1AZ3BWGL5320 |  | Install.Steel Gate,Entance Barrier (3m Wall) | 25d | 2014-06-10 | 2014-07-08 | DUKHCONI1AZ3BWGL5315 SS+14d | 46d |
| DUKHCONI1AZ3BWGL5325 |  | Const. of Villa Front Boundary Wall (Ht-2m) | 25d | 2014-07-09 | 2014-08-10 | DUKHCONI1AZ3BWGL5315 SS+5d, DUKHCONI1AZ2BWGL5325, DUKHCONI1AZ3BWGL5320 | 46d |
| DUKHCONI1AZ3BWGL5330 |  | Const. of Blockwork fence Wall (Ht-1.85m) | 25d | 2014-07-21 | 2014-08-21 | DUKHCONI1AZ2BWGL5330, DUKHCONI1AZ3BWGL5325 SS+10d | 57d |
|  | 55 | **ROAD WORKS** |  | 2014-06-29 | 2014-09-15 |  |  |
| DUKHCONI1AZ3RWGL6000 |  | Excavation & Earth Filling | 10d | 2014-06-29 | 2014-07-09 | DUKHCONI1AZ2RWGL6015 SS+10d, DUKHCONI1AZ3ELGL5225, DUKHCONI1AZ3FFGL5200, DUKHCONI1AZ3TCGL5305, DUKHCONI1AZ3SAGL5150, DUKHCONI1AZ3STGL5250, DUKHCONI1AZ3FFGL5210 | -9d |

| ID | WBS | Task | Duration | Start | Finish | Predecessors | Total float |
| --- | --- | --- | --- | --- | --- | --- | --- |
| DUKHCONI1AZ3RWGL6005 |  | Laying of Sub Grade | 25d | 2014-07-10 | 2014-08-11 | DUKHCONI1AZ3RWGL6000 | -9d |
| DUKHCONI1AZ3RWGL6010 |  | Laying of Precast Kerbs | 25d | 2014-07-22 | 2014-08-23 | DUKHCONI1AZ3RWGL6005 SS+10d | -9d |
| DUKHCONI1AZ3RWGL6015 |  | Laying of Granular Sub Base Coarse | 20d | 2014-08-06 | 2014-08-28 | DUKHCONI1AZ3RWGL6010 SS+10d | -9d |
| DUKHCONI1AZ3RWGL6020 |  | Laying of Road Base Asphalt Concrete | 5d | 2014-08-30 | 2014-09-03 | DUKHCONI1AZ3RWGL6015 | 21d |
| DUKHCONI1AZ3RWGL6025 |  | Laying of Asphalt Wearing Coarse | 5d | 2014-09-04 | 2014-09-09 | DUKHCONI1AZ2RWGL6025, DUKHCONI1AZ3RWGL6020 | 36d |
| DUKHCONI1AZ3RWGL6030 |  | Traffic Signage & Road Marking | 5d | 2014-09-10 | 2014-09-15 | DUKHCONI1AZ2RWGL6030, DUKHCONI1AZ3RWGL6025 | 36d |
|  | 60 | **PARKING SHED** |  | 2014-08-12 | 2014-10-08 |  |  |
| DUKHCONI1AZ3PSGL7000 |  | Excavation | 15d | 2014-08-12 | 2014-08-28 | DUKHCONI1AZ2PSGL7005, DUKHCONI1AZ3RWGL6015 SS+5d | 26d |
| DUKHCONI1AZ3PSGL7005 |  | Foundation casting | 15d | 2014-08-24 | 2014-09-09 | DUKHCONI1AZ3PSGL7000 SS+5d, DUKHCONI1AZ3RWGL6015 FF+10d, DUKHCONI1AZ3PSGL7000 FF+5d | 21d |
| DUKHCONI1AZ3PSGL7010 |  | Column, Frame& Fabrics Erection | 25d | 2014-09-04 | 2014-10-02 | DUKHCONI1AZ3RWGL6020, DUKHCONI1AZ3PSGL7005 SS+10d, DUKHCONI1AZ3BWGL5330 FF, DUKHCONI1AZ3RWGL6030 FF, DUKHCONI1AZ2PSGL7010 | 21d |
| DUKHCONI1AZ3PSGL7015 |  | Electrical Works-Parking Shed | 25d | 2014-09-10 | 2014-10-08 | DUKHCONI1AZ3PSGL7010 SS+5d, DUKHCONI1AZ2PSGL7015, DUKHCONI1AZ3STGL5260 | 21d |
|  | 65 | **HARD LANDSCAPING** |  | 2014-06-29 | 2014-09-21 |  |  |
| DUKHCONI1AZ3HDGL7020 |  | Precast Concrete Kerbs works | 20d | 2014-06-29 | 2014-07-21 | DUKHCONI1AZ3RWGL6000 SS | 15d |
| DUKHCONI1AZ3HDGL7025 |  | Interlocking for Walkways | 25d | 2014-07-10 | 2014-08-11 | DUKHCONI1AZ3HDGL7020 SS+10d | 15d |
| DUKHCONI1AZ3HDGL7030 |  | Construction of Retaining wall | 25d | 2014-07-22 | 2014-08-23 | DUKHCONI1AZ2HDGL7030, DUKHCONI1AZ3HDGL7025 SS+10d | 15d |
| DUKHCONI1AZ3HDGL7035 |  | Construction of Wash Stone Boulders | 25d | 2014-07-22 | 2014-08-23 | DUKHCONI1AZ3HDGL7030 SS, DUKHCONI1AZ2HDGL7035 | 15d |
| DUKHCONI1AZ3HDGL7040 |  | Construction of Speed Humps | 10d | 2014-09-10 | 2014-09-21 | DUKHCONI1AZ3HDGL7035 SS, DUKHCONI1AZ2HDGL7040, DUKHCONI1AZ3RWGL6025 | 50d |
|  | 70 | **SOFT LANDSCAPING** |  | 2014-08-06 | 2014-09-27 |  |  |
| DUKHCONI1AZ3SLGL7200 |  | Excavation | 25d | 2014-08-06 | 2014-09-03 | DUKHCONI1AZ3HDGL7035 SS+10d, DUKHCONI1AZ3IRGL5290 SS, DUKHCONI1AZ2SLGL7205 | 15d |
| DUKHCONI1AZ3SLGL7205 |  | Sweet Soil Laying | 25d | 2014-08-18 | 2014-09-15 | DUKHCONI1AZ3SLGL7200 SS+10d | 15d |
| DUKHCONI1AZ3SLGL7210 |  | Plantation works | 25d | 2014-08-30 | 2014-09-27 | DUKHCONI1AZ2SLGL7210, DUKHCONI1AZ3SLGL7205 SS+10d | 35d |
|  | 25 | **ZONE - 4** |  | 2014-03-17 | 2014-11-30 |  |  |
|  | 10 | **INFRASTRUCTURE WORKS** |  | 2014-03-17 | 2014-11-30 |  |  |
|  | 10 | **DRAINAGE LINES** |  | 2014-03-17 | 2014-05-05 |  |  |
| DUKHCONI1AZ4DRGL5115 |  | Excavation for Drainage line | 25d | 2014-03-17 | 2014-04-14 | DUKHCONP1AZ1STGF2005 SS, DUKHCONI1AZ3DRGL5130 | -15d |
| DUKHCONI1AZ4DRGL5120 |  | Laying of Drainage line | 25d | 2014-03-24 | 2014-04-21 | DUKHCONI1AZ4DRGL5115 FF+6d, DUKHCONI1AZ4DRGL5115 SS+6d | -15d |
| DUKHCONI1AZ4DRGL5125 |  | Testing of Drainage line | 25d | 2014-04-01 | 2014-04-29 | DUKHCONI1AZ4DRGL5120 FF+7d, DUKHCONI1AZ4DRGL5120 SS+7d | -15d |
| DUKHCONI1AZ4DRGL5130 |  | Backfilling Drainage line | 15d | 2014-04-19 | 2014-05-05 | DUKHCONI1AZ4DRGL5125 FF+5d, DUKHCONI1AZ4DRGL5125 SS+10d | -15d |
|  | 15 | **MANHOLES & SOAKAWAY** |  | 2014-04-16 | 2014-07-06 |  |  |
| DUKHCONI1AZ4SAGL5140 |  | Construction of soakaways | 25d | 2014-04-16 | 2014-05-14 | DUKHCONI1AZ4DRGL5115, DUKHCONI1AZ4DRGL5130 FF+8d | -12d |
| DUKHCONI1AZ4SAGL5135 |  | Construction of manholes Drainage | 25d | 2014-04-19 | 2014-05-17 | DUKHCONI1AZ4DRGL5130 FF+10d, DUKHCONI1AZ3SAGL5135, DUKHCONI1AZ4DRGL5115 | 47d |
| DUKHCONI1AZ4SAGL5145 |  | Construction of Road gullies | 25d | 2014-05-15 | 2014-06-12 | DUKHCONI1AZ4SAGL5140, DUKHCONI1AZ3SAGL5145 | -12d |
| DUKHCONI1AZ4SAGL5150 |  | Connection with existing sewer manhole | 20d | 2014-06-14 | 2014-07-06 | DUKHCONI1AZ4SAGL5145, DUKHCONI1AZ4SAGL5135 | 24d |
|  | 20 | **WATER SUPPLY SYSTEM** |  | 2014-04-30 | 2014-07-14 |  |  |
| DUKHCONI1AZ4WSGL5155 |  | Excavation for water line | 25d | 2014-04-30 | 2014-05-28 | DUKHCONI1AZ4DRGL5130 SS+10d, DUKHCONI1AZ3WSGL5170 | -14d |
| DUKHCONI1AZ4WSGL5160 |  | Laying of water line | 25d | 2014-05-06 | 2014-06-03 | DUKHCONI1AZ4WSGL5155 SS+5d | -14d |
| DUKHCONI1AZ4WSGL5165 |  | Testing of potable water line | 25d | 2014-05-12 | 2014-06-09 | DUKHCONI1AZ4WSGL5160 SS+5d | -14d |
| DUKHCONI1AZ4WSGL5170 |  | Backfilling potable water line | 25d | 2014-05-18 | 2014-06-15 | DUKHCONI1AZ4WSGL5165 SS+5d, DUKHCONI1AZ4SAGL5145 FF | -14d |
| DUKHCONI1AZ4WSGL5175 |  | Construction of valve chambers & Thrust Blocks | 25d | 2014-05-24 | 2014-06-21 | DUKHCONI1AZ4WSGL5170 FF+5d, DUKHCONI1AZ3WSGL5175, DUKHCONI1AZ4WSGL5155 SS+10d | 17d |
| DUKHCONI1AZ4WSGL5180 |  | Installation of meter ,Accessories & Connection | 20d | 2014-06-22 | 2014-07-14 | DUKHCONI1AZ4WSGL5175, DUKHCONI1AZ3WSGL5180 | 17d |
|  | 25 | **FIREFIGHTING LINES** |  | 2014-05-24 | 2014-07-22 |  |  |
| DUKHCONI1AZ4FFGL5185 |  | Excavation for firefighting line | 25d | 2014-05-24 | 2014-06-21 | DUKHCONI1AZ4WSGL5170 SS+5d, DUKHCONI1AZ3FFGL5200 | -14d |
| DUKHCONI1AZ4FFGL5190 |  | Laying of firefighting line | 25d | 2014-06-01 | 2014-06-29 | DUKHCONI1AZ4FFGL5185 SS+7d | -14d |
| DUKHCONI1AZ4FFGL5195 |  | Testing of firefighting line | 25d | 2014-06-07 | 2014-07-05 | DUKHCONI1AZ4FFGL5190 SS+5d | -14d |
| DUKHCONI1AZ4FFGL5200 |  | Backfilling firefighting line | 25d | 2014-06-12 | 2014-07-10 | DUKHCONI1AZ4FFGL5195 SS+5d | -14d |
| DUKHCONI1AZ4FFGL5205 |  | Construction of valve chambers & Thrust Blocks | 25d | 2014-06-18 | 2014-07-16 | DUKHCONI1AZ4FFGL5200 FF+5d, DUKHCONI1AZ4FFGL5185 SS+10d, DUKHCONI1AZ3FFGL5205 | 10d |
| DUKHCONI1AZ4FFGL5210 |  | Connection with existing Firewater System | 25d | 2014-06-24 | 2014-07-22 | DUKHCONI1AZ3FFGL5210, DUKHCONI1AZ4FFGL5205 FF+5d, DUKHCONI1AZ4WSGL5180 FF | 10d |
|  | 30 | **ELECTRICAL LINES** |  | 2014-06-21 | 2014-08-17 |  |  |
| DUKHCONI1AZ4ELGL5215 |  | Excavation Cable Trenches & Duct Banks | 25d | 2014-06-21 | 2014-07-19 | DUKHCONI1AZ4FFGL5200 SS+7d, DUKHCONI1AZ3ELGL5225 | -12d |
| DUKHCONI1AZ4ELGL5220 |  | Laying of electrical cables | 25d | 2014-06-26 | 2014-07-24 | DUKHCONI1AZ4ELGL5215 SS+5d | -9d |
| DUKHCONI1AZ4ELGL5225 |  | Backfilling Electrical trench | 25d | 2014-07-05 | 2014-08-05 | DUKHCONI1AZ4ELGL5215 FF+7d, DUKHCONI1AZ4ELGL5220 SS+7d | -9d |
| DUKHCONI1AZ4ELGL5230 |  | Construction of Submain Board & Feeder Pillar | 25d | 2014-07-16 | 2014-08-17 | DUKHCONI1AZ4ELGL5225 SS+10d, DUKHCONI1AZ3ELGL5230, DUKHCONI1AZ4ELGL5225 FF+10d | 35d |
|  | 35 | **STREET LIGHTING** |  | 2014-06-21 | 2014-09-15 |  |  |
| DUKHCONI1AZ4STGL5235 |  | Excavation for Street lighting | 25d | 2014-06-21 | 2014-07-19 | DUKHCONI1AZ3STGL5250 SS+10d, DUKHCONI1AZ4ELGL5215 SS | -12d |
| DUKHCONI1AZ4STGL5240 |  | Construction of Duct Banks | 25d | 2014-06-26 | 2014-07-24 | DUKHCONI1AZ4STGL5235 SS+5d | -12d |
| DUKHCONI1AZ4STGL5245 |  | Construction of Foundation | 25d | 2014-06-26 | 2014-07-24 | DUKHCONI1AZ4STGL5240 SS | -12d |
| DUKHCONI1AZ4STGL5250 |  | Backfilling Street Lighting | 25d | 2014-07-02 | 2014-07-30 | DUKHCONI1AZ4STGL5235 FF+5d, DUKHCONI1AZ4STGL5245 SS+5d | -12d |
| DUKHCONI1AZ4STGL5255 |  | Installation of light Post | 25d | 2014-07-14 | 2014-08-14 | DUKHCONI1AZ4STGL5250 SS+10d, DUKHCONI1AZ3STGL5255 | 52d |
| DUKHCONI1AZ4STGL5260 |  | Electrical Works | 25d | 2014-08-18 | 2014-09-15 | DUKHCONI1AZ4STGL5255 SS+7d, DUKHCONI1AZ4ELGL5230, DUKHCONI1AZ3STGL5260 | 35d |
|  | 40 | **IRRIGATION LINES** |  | 2014-08-06 | 2014-10-13 |  |  |
| DUKHCONI1AZ4IRGL5265 |  | Excavation for irrigation line | 25d | 2014-08-06 | 2014-09-03 | DUKHCONI1AZ4ELGL5225, DUKHCONI1AZ3IRGL5280 | 13d |
| DUKHCONI1AZ4IRGL5270 |  | Laying of irrigationline | 25d | 2014-08-12 | 2014-09-09 | DUKHCONI1AZ4IRGL5265 SS+5d | 13d |
| DUKHCONI1AZ4IRGL5275 |  | Testing of irrigation line | 25d | 2014-08-18 | 2014-09-15 | DUKHCONI1AZ4IRGL5270 SS+5d | 13d |
| DUKHCONI1AZ4IRGL5280 |  | Backfilling irrigation line | 25d | 2014-08-24 | 2014-09-21 | DUKHCONI1AZ4IRGL5275 SS+5d | 13d |
| DUKHCONI1AZ4IRGL5285 |  | Construction of Thrust Blocks,Pull boxes | 25d | 2014-09-04 | 2014-10-02 | DUKHCONI1AZ4IRGL5280 FF+10d, DUKHCONI1AZ4ELGL5225 SS+10d | 18d |
| DUKHCONI1AZ4IRGL5290 |  | Irrigation Fittings (Nozzle,Values) | 25d | 2014-09-13 | 2014-10-13 | DUKHCONI1AZ4IRGL5285 SS+7d, DUKHCONI1AZ4IRGL5280 SS+10d | 18d |
|  | 45 | **TELECOMMUNICATION LINES** |  | 2014-07-14 | 2014-09-01 |  |  |
| DUKHCONI1AZ4TCGL5295 |  | Excavation Telecommunication trenches | 20d | 2014-07-14 | 2014-08-09 | DUKHCONI1AZ4STGL5250 SS+10d, DUKHCONI1AZ3TCGL5305 | -12d |
| DUKHCONI1AZ4TCGL5300 |  | Laying of cables | 20d | 2014-07-20 | 2014-08-14 | DUKHCONI1AZ4TCGL5295 SS+5d | -12d |
| DUKHCONI1AZ4TCGL5305 |  | Backfilling telecommunication trench | 20d | 2014-07-26 | 2014-08-20 | DUKHCONI1AZ4TCGL5300 SS+5d | -12d |

| ID | WBS | Task | Duration | Start | Finish | Predecessors | Total float |
| --- | --- | --- | --- | --- | --- | --- | --- |
| DUKHCONI1AZ4TCGL5310 |  | Connection & Installation | 20d | 2014-08-10 | 2014-09-01 | DUKHCONI1AZ3TCGL5310, DUKHCONI1AZ4TCGL5305 SS+10d | 27d |
|  | 50 | **BOUNDARY WALL** |  | 2014-07-14 | 2014-10-13 |  |  |
| DUKHCONI1AZ4BWGL5315 |  | Construction of Boundary Wall (Ht-3m) | 25d | 2014-07-14 | 2014-08-14 | DUKHCONI1AZ3BWGL5315, DUKHCONI1AZ4STGL5250 SS+10d | 28d |
| DUKHCONI1AZ4BWGL5320 |  | Install.Steel Gate,Entance Barrier (3m Wall) | 25d | 2014-07-30 | 2014-08-31 | DUKHCONI1AZ4BWGL5315 SS+14d | 28d |
| DUKHCONI1AZ4BWGL5325 |  | Const. of Villa Front Boundary Wall (Ht-2m) | 25d | 2014-09-01 | 2014-09-29 | DUKHCONI1AZ4BWGL5320, DUKHCONI1AZ4BWGL5315 SS+5d, DUKHCONI1AZ3BWGL5325 | 28d |
| DUKHCONI1AZ4BWGL5330 |  | Const. of Blockwork fence Wall (Ht-1.85m) | 25d | 2014-09-13 | 2014-10-13 | DUKHCONI1AZ3BWGL5330, DUKHCONI1AZ4BWGL5325 SS+10d | 39d |
|  | 55 | **ROAD WORKS** |  | 2014-08-21 | 2014-11-06 |  |  |
| DUKHCONI1AZ4RWGL6000 |  | Excavation & Earth Filling | 10d | 2014-08-21 | 2014-09-01 | DUKHCONI1AZ4SAGL5150, DUKHCONI1AZ2FFGL5210, DUKHCONI1AZ4FFGL5200, DUKHCONI1AZ3RWGL6015 SS+10d, DUKHCONI1AZ4ELGL5225, DUKHCONI1AZ4TCGL5305, DUKHCONI1AZ4FFGL5210, DUKHCONI1AZ4STGL5250 | -12d |
| DUKHCONI1AZ4RWGL6005 |  | Laying of Sub Grade | 25d | 2014-09-02 | 2014-09-30 | DUKHCONI1AZ4RWGL6000 | -12d |
| DUKHCONI1AZ4RWGL6010 |  | Laying of Precast Kerbs | 25d | 2014-09-14 | 2014-10-14 | DUKHCONI1AZ4RWGL6005 SS+10d | -12d |
| DUKHCONI1AZ4RWGL6015 |  | Laying of Granular Sub Base Coarse | 20d | 2014-09-25 | 2014-10-20 | DUKHCONI1AZ4RWGL6010 SS+10d | -12d |
| DUKHCONI1AZ4RWGL6020 |  | Laying of Road Base Asphalt Concrete | 5d | 2014-10-21 | 2014-10-26 | DUKHCONI1AZ4RWGL6015 | 3d |
| DUKHCONI1AZ4RWGL6025 |  | Laying of Asphalt Wearing Coarse | 5d | 2014-10-27 | 2014-11-01 | DUKHCONI1AZ4RWGL6020, DUKHCONI1AZ3RWGL6025 | 17d |
| DUKHCONI1AZ4RWGL6030 |  | Traffic Signage & Road Marking | 5d | 2014-11-02 | 2014-11-06 | DUKHCONI1AZ3RWGL6030, DUKHCONI1AZ4RWGL6025 | 18d |
|  | 60 | **PARKING SHED** |  | 2014-10-01 | 2014-11-30 |  |  |
| DUKHCONI1AZ4PSGL7000 |  | Excavation | 15d | 2014-10-01 | 2014-10-20 | DUKHCONI1AZ4RWGL6015 SS+5d, DUKHCONI1AZ3PSGL7005 | 8d |
| DUKHCONI1AZ4PSGL7005 |  | Foundation casting | 15d | 2014-10-15 | 2014-11-01 | DUKHCONI1AZ4PSGL7000 SS+5d, DUKHCONI1AZ4PSGL7000 FF+5d, DUKHCONI1AZ4RWGL6015 FF+10d | 3d |
| DUKHCONI1AZ4PSGL7010 |  | Column, Frame& Fabrics Erection | 25d | 2014-10-27 | 2014-11-24 | DUKHCONI1AZ4PSGL7005 SS+10d, DUKHCONI1AZ4BWGL5330 FF, DUKHCONI1AZ4RWGL6020, DUKHCONI1AZ4RWGL6030 FF, DUKHCONI1AZ3PSGL7010 | 3d |
| DUKHCONI1AZ4PSGL7015 |  | Electrical Works-Parking Shed | 25d | 2014-11-02 | 2014-11-30 | DUKHCONI1AZ4PSGL7010 SS+5d, DUKHCONI1AZ3PSGL7015, DUKHCONI1AZ4STGL5260 | 3d |
|  | 65 | **HARD LANDSCAPING** |  | 2014-08-21 | 2014-11-12 |  |  |
| DUKHCONI1AZ4HDGL7020 |  | Precast Concrete Kerbs works | 20d | 2014-08-21 | 2014-09-13 | DUKHCONI1AZ4RWGL6000 SS | 7d |
| DUKHCONI1AZ4HDGL7025 |  | Interlocking for Walkways | 25d | 2014-09-02 | 2014-09-30 | DUKHCONI1AZ4HDGL7020 SS+10d | 7d |
| DUKHCONI1AZ4HDGL7030 |  | Construction of Retaining wall | 25d | 2014-09-14 | 2014-10-14 | DUKHCONI1AZ4HDGL7025 SS+10d, DUKHCONI1AZ3HDGL7030 | 7d |
| DUKHCONI1AZ4HDGL7035 |  | Construction of Wash Stone Boulders | 25d | 2014-09-14 | 2014-10-14 | DUKHCONI1AZ3HDGL7035, DUKHCONI1AZ4HDGL7030 SS | 7d |
| DUKHCONI1AZ4HDGL7040 |  | Construction of Speed Humps | 10d | 2014-11-02 | 2014-11-12 | DUKHCONI1AZ4HDGL7035 SS, DUKHCONI1AZ4RWGL6025, DUKHCONI1AZ3HDGL7040 | 17d |
|  | 70 | **SOFT LANDSCAPING** |  | 2014-09-25 | 2014-11-18 |  |  |
| DUKHCONI1AZ4SLGL7200 |  | Excavation | 25d | 2014-09-25 | 2014-10-26 | DUKHCONI1AZ4IRGL5290 SS, DUKHCONI1AZ4HDGL7035 SS+10d, DUKHCONI1AZ3SLGL7205 | 7d |
| DUKHCONI1AZ4SLGL7205 |  | Sweet Soil Laying | 25d | 2014-10-07 | 2014-11-06 | DUKHCONI1AZ4SLGL7200 SS+10d | 7d |
| DUKHCONI1AZ4SLGL7210 |  | Plantation works | 25d | 2014-10-21 | 2014-11-18 | DUKHCONI1AZ3SLGL7210, DUKHCONI1AZ4SLGL7205 SS+10d | 17d |
|  | 30 | **ZONE - 5** |  | 2014-05-06 | 2015-01-19 |  |  |
|  | 10 | **INFRASTRUCTURE WORKS** |  | 2014-05-06 | 2015-01-19 |  |  |
|  | 10 | **DRAINAGE LINES** |  | 2014-05-06 | 2014-06-24 |  |  |
| DUKHCONI1AZ5DRGL5115 |  | Excavation for Drainage line | 25d | 2014-05-06 | 2014-06-03 | DUKHCONP1AZ8STFF2030 SS, DUKHCONI1AZ4DRGL5130 | -15d |
| DUKHCONI1AZ5DRGL5120 |  | Laying of Drainage line | 25d | 2014-05-13 | 2014-06-10 | DUKHCONI1AZ5DRGL5115 SS+6d, DUKHCONI1AZ5DRGL5115 FF+6d | -15d |
| DUKHCONI1AZ5DRGL5125 |  | Testing of Drainage line | 25d | 2014-05-21 | 2014-06-18 | DUKHCONI1AZ5DRGL5120 SS+7d, DUKHCONI1AZ5DRGL5120 FF+7d | -15d |
| DUKHCONI1AZ5DRGL5130 |  | Backfilling Drainage line | 15d | 2014-06-08 | 2014-06-24 | DUKHCONI1AZ5DRGL5125 FF+5d, DUKHCONI1AZ5DRGL5125 SS+10d | -15d |
|  | 15 | **MANHOLES & SOAKAWAY** |  | 2014-06-05 | 2014-08-28 |  |  |
| DUKHCONI1AZ5SAGL5140 |  | Construction of soakaways | 25d | 2014-06-05 | 2014-07-03 | DUKHCONI1AZ5DRGL5130 FF+8d, DUKHCONI1AZ5DRGL5115 | -13d |
| DUKHCONI1AZ5SAGL5135 |  | Construction of manholes Drainage | 25d | 2014-06-08 | 2014-07-06 | DUKHCONI1AZ5DRGL5130 FF+10d, DUKHCONI1AZ4SAGL5135, DUKHCONI1AZ5DRGL5115 | 44d |
| DUKHCONI1AZ5SAGL5145 |  | Construction of Road gullies | 25d | 2014-07-05 | 2014-08-05 | DUKHCONI1AZ4SAGL5145, DUKHCONI1AZ5SAGL5140 | -13d |
| DUKHCONI1AZ5SAGL5150 |  | Connection with existing sewer manhole | 20d | 2014-08-06 | 2014-08-28 | DUKHCONI1AZ5SAGL5135, DUKHCONI1AZ5SAGL5145 | 21d |
|  | 20 | **WATER SUPPLY SYSTEM** |  | 2014-06-19 | 2014-09-06 |  |  |
| DUKHCONI1AZ5WSGL5155 |  | Excavation for water line | 25d | 2014-06-19 | 2014-07-17 | DUKHCONI1AZ4WSGL5170, DUKHCONI1AZ5DRGL5130 SS+10d | -15d |
| DUKHCONI1AZ5WSGL5160 |  | Laying of water line | 25d | 2014-06-25 | 2014-07-23 | DUKHCONI1AZ5WSGL5155 SS+5d | -15d |
| DUKHCONI1AZ5WSGL5165 |  | Testing of potable water line | 25d | 2014-07-01 | 2014-07-29 | DUKHCONI1AZ5WSGL5160 SS+5d | -15d |
| DUKHCONI1AZ5WSGL5170 |  | Backfilling potable water line | 25d | 2014-07-07 | 2014-08-07 | DUKHCONI1AZ5WSGL5165 SS+5d, DUKHCONI1AZ5SAGL5145 FF | -15d |
| DUKHCONI1AZ5WSGL5175 |  | Construction of valve chambers & Thrust Blocks | 25d | 2014-07-13 | 2014-08-13 | DUKHCONI1AZ5WSGL5155 SS+10d, DUKHCONI1AZ5WSGL5170 FF+5d, DUKHCONI1AZ4WSGL5175 | 14d |
| DUKHCONI1AZ5WSGL5180 |  | Installation of meter ,Accessories & Connection | 20d | 2014-08-14 | 2014-09-06 | DUKHCONI1AZ5WSGL5175, DUKHCONI1AZ4WSGL5180 | 14d |
|  | 25 | **FIREFIGHTING LINES** |  | 2014-07-13 | 2014-09-14 |  |  |
| DUKHCONI1AZ5FFGL5185 |  | Excavation for firefighting line | 25d | 2014-07-13 | 2014-08-13 | DUKHCONI1AZ4FFGL5200, DUKHCONI1AZ5WSGL5170 SS+5d | -15d |
| DUKHCONI1AZ5FFGL5190 |  | Laying of firefighting line | 25d | 2014-07-21 | 2014-08-21 | DUKHCONI1AZ5FFGL5185 SS+7d | -15d |
| DUKHCONI1AZ5FFGL5195 |  | Testing of firefighting line | 25d | 2014-07-27 | 2014-08-27 | DUKHCONI1AZ5FFGL5190 SS+5d | -15d |
| DUKHCONI1AZ5FFGL5200 |  | Backfilling firefighting line | 25d | 2014-08-05 | 2014-09-02 | DUKHCONI1AZ5FFGL5195 SS+5d | -15d |
| DUKHCONI1AZ5FFGL5205 |  | Construction of valve chambers & Thrust Blocks | 25d | 2014-08-11 | 2014-09-08 | DUKHCONI1AZ4FFGL5205, DUKHCONI1AZ5FFGL5200 FF+5d, DUKHCONI1AZ5FFGL5185 SS+10d | 7d |
| DUKHCONI1AZ5FFGL5210 |  | Connection with existing Firewater System | 25d | 2014-08-17 | 2014-09-14 | DUKHCONI1AZ5FFGL5205 FF+5d, DUKHCONI1AZ5WSGL5180 FF, DUKHCONI1AZ4FFGL5210 | 7d |
|  | 30 | **ELECTRICAL LINES** |  | 2014-08-13 | 2014-10-06 |  |  |
| DUKHCONI1AZ5ELGL5215 |  | Excavation Cable Trenches & Duct Banks | 25d | 2014-08-13 | 2014-09-10 | DUKHCONI1AZ4ELGL5225, DUKHCONI1AZ5FFGL5200 SS+7d | -15d |
| DUKHCONI1AZ5ELGL5220 |  | Laying of electrical cables | 25d | 2014-08-19 | 2014-09-16 | DUKHCONI1AZ5ELGL5215 SS+5d | -2d |
| DUKHCONI1AZ5ELGL5225 |  | Backfilling Electrical trench | 25d | 2014-08-27 | 2014-09-24 | DUKHCONI1AZ5ELGL5220 SS+7d, DUKHCONI1AZ5ELGL5215 FF+7d | -2d |
| DUKHCONI1AZ5ELGL5230 |  | Construction of Submain Board & Feeder Pillar | 25d | 2014-09-08 | 2014-10-06 | DUKHCONI1AZ5ELGL5225 FF+10d, DUKHCONI1AZ4ELGL5230, DUKHCONI1AZ5ELGL5225 SS+10d | 17d |
|  | 35 | **STREET LIGHTING** |  | 2014-08-13 | 2014-11-06 |  |  |
| DUKHCONI1AZ5STGL5235 |  | Excavation for Street lighting | 25d | 2014-08-13 | 2014-09-10 | DUKHCONI1AZ5ELGL5215 SS, DUKHCONI1AZ4STGL5250 SS+10d | -15d |
| DUKHCONI1AZ5STGL5240 |  | Construction of Duct Banks | 25d | 2014-08-19 | 2014-09-16 | DUKHCONI1AZ5STGL5235 SS+5d | -15d |
| DUKHCONI1AZ5STGL5245 |  | Construction of Foundation | 25d | 2014-08-19 | 2014-09-16 | DUKHCONI1AZ5STGL5240 SS | -15d |
| DUKHCONI1AZ5STGL5250 |  | Backfilling Street Lighting | 25d | 2014-08-25 | 2014-09-22 | DUKHCONI1AZ5STGL5235 FF+5d, DUKHCONI1AZ5STGL5245 SS+5d | -15d |
| DUKHCONI1AZ5STGL5255 |  | Installation of light Post | 25d | 2014-09-06 | 2014-10-04 | DUKHCONI1AZ5STGL5250 SS+10d, DUKHCONI1AZ4STGL5255 | 34d |
| DUKHCONI1AZ5STGL5260 |  | Electrical Works | 25d | 2014-10-07 | 2014-11-06 | DUKHCONI1AZ5STGL5255 FF+10d, DUKHCONI1AZ5STGL5255 SS+7d, DUKHCONI1AZ5ELGL5230, DUKHCONI1AZ4STGL5260 | 17d |
|  | 40 | **IRRIGATION LINES** |  | 2014-09-25 | 2014-12-02 |  |  |
| DUKHCONI1AZ5IRGL5265 |  | Excavation for irrigation line | 25d | 2014-09-25 | 2014-10-26 | DUKHCONI1AZ5ELGL5225, DUKHCONI1AZ4IRGL5280 | 10d |
| DUKHCONI1AZ5IRGL5270 |  | Laying of irrigationline | 25d | 2014-10-01 | 2014-11-01 | DUKHCONI1AZ5IRGL5265 SS+5d | 10d |

| ID | WBS | Task | Duration | Start | Finish | Predecessors | Total float |
| --- | --- | --- | --- | --- | --- | --- | --- |
| DUKHCONI1AZ5IRGL5275 |  | Testing of irrigation line | 25d | 2014-10-07 | 2014-11-06 | DUKHCONI1AZ5IRGL5270 SS+5d | 10d |
| DUKHCONI1AZ5IRGL5280 |  | Backfilling irrigation line | 25d | 2014-10-15 | 2014-11-12 | DUKHCONI1AZ5IRGL5275 SS+5d | 10d |
| DUKHCONI1AZ5IRGL5285 |  | Construction of Thrust Blocks,Pull boxes | 25d | 2014-10-27 | 2014-11-24 | DUKHCONI1AZ5ELGL5225 SS+10d, DUKHCONI1AZ5IRGL5280 FF+10d | 10d |
| DUKHCONI1AZ5IRGL5290 |  | Irrigation Fittings (Nozzle,Values) | 25d | 2014-11-04 | 2014-12-02 | DUKHCONI1AZ5IRGL5280 SS+10d, DUKHCONI1AZ5IRGL5285 SS+7d | 10d |
|  | 45 | **TELECOMMUNICATION LINES** |  | 2014-09-06 | 2014-10-23 |  |  |
| DUKHCONI1AZ5TCGL5295 |  | Excavation Telecommunication trenches | 20d | 2014-09-06 | 2014-09-28 | DUKHCONI1AZ4TCGL5305, DUKHCONI1AZ5STGL5250 SS+10d | -15d |
| DUKHCONI1AZ5TCGL5300 |  | Laying of cables | 20d | 2014-09-11 | 2014-10-04 | DUKHCONI1AZ5TCGL5295 SS+5d | -15d |
| DUKHCONI1AZ5TCGL5305 |  | Backfilling telecommunication trench | 20d | 2014-09-17 | 2014-10-12 | DUKHCONI1AZ5TCGL5300 SS+5d | -15d |
| DUKHCONI1AZ5TCGL5310 |  | Connection & Installation | 20d | 2014-09-29 | 2014-10-23 | DUKHCONI1AZ4TCGL5310, DUKHCONI1AZ5TCGL5305 SS+10d | 4d |
|  | 50 | **BOUNDARY WALL** |  | 2014-09-06 | 2014-12-02 |  |  |
| DUKHCONI1AZ5BWGL5315 |  | Construction of Boundary Wall (Ht-3m) | 25d | 2014-09-06 | 2014-10-04 | DUKHCONI1AZ4BWGL5315, DUKHCONI1AZ5STGL5250 SS+10d | 10d |
| DUKHCONI1AZ5BWGL5320 |  | Install.Steel Gate,Entance Barrier (3m Wall) | 25d | 2014-09-22 | 2014-10-22 | DUKHCONI1AZ5BWGL5315 SS+14d | 10d |
| DUKHCONI1AZ5BWGL5325 |  | Const. of Villa Front Boundary Wall (Ht-2m) | 25d | 2014-10-23 | 2014-11-20 | DUKHCONI1AZ5BWGL5315 SS+5d, DUKHCONI1AZ5BWGL5320, DUKHCONI1AZ4BWGL5325 | 10d |
| DUKHCONI1AZ5BWGL5330 |  | Const. of Blockwork fence Wall (Ht-1.85m) | 25d | 2014-11-04 | 2014-12-02 | DUKHCONI1AZ5BWGL5325 SS+10d, DUKHCONI1AZ4BWGL5330 | 21d |
|  | 55 | **ROAD WORKS** |  | 2014-10-13 | 2014-12-27 |  |  |
| DUKHCONI1AZ5RWGL6000 |  | Excavation & Earth Filling | 10d | 2014-10-13 | 2014-10-23 | DUKHCONI1AZ5SAGL5150, DUKHCONI1AZ4RWGL6015 SS+10d, DUKHCONI1AZ5FFGL5200, DUKHCONI1AZ5ELGL5225, DUKHCONI1AZ5TCGL5305, DUKHCONI1AZ5STGL5250, DUKHCONI1AZ5FFGL5210 | -15d |
| DUKHCONI1AZ5RWGL6005 |  | Laying of Sub Grade | 25d | 2014-10-25 | 2014-11-22 | DUKHCONI1AZ5RWGL6000 | -15d |
| DUKHCONI1AZ5RWGL6010 |  | Laying of Precast Kerbs | 25d | 2014-11-05 | 2014-12-03 | DUKHCONI1AZ5RWGL6005 SS+10d | -15d |
| DUKHCONI1AZ5RWGL6015 |  | Laying of Granular Sub Base Coarse | 20d | 2014-11-16 | 2014-12-08 | DUKHCONI1AZ5RWGL6010 SS+9d | -15d |
| DUKHCONI1AZ5RWGL6020 |  | Laying of Road Base Asphalt Concrete | 5d | 2014-12-09 | 2014-12-14 | DUKHCONI1AZ5RWGL6015 | -15d |
| DUKHCONI1AZ5RWGL6025 |  | Laying of Asphalt Wearing Coarse | 5d | 2014-12-15 | 2014-12-21 | DUKHCONI1AZ5RWGL6020, DUKHCONI1AZ4RWGL6025 | -15d |
| DUKHCONI1AZ5RWGL6030 |  | Traffic Signage & Road Marking | 5d | 2014-12-22 | 2014-12-27 | DUKHCONI1AZ4RWGL6030, DUKHCONI1AZ5RWGL6025 | 1d |
|  | 60 | **PARKING SHED** |  | 2014-11-22 | 2015-01-19 |  |  |
| DUKHCONI1AZ5PSGL7000 |  | Excavation | 15d | 2014-11-22 | 2014-12-08 | DUKHCONI1AZ4PSGL7005, DUKHCONI1AZ5RWGL6015 SS+5d | -9d |
| DUKHCONI1AZ5PSGL7005 |  | Foundation casting | 15d | 2014-12-03 | 2014-12-21 | DUKHCONI1AZ5PSGL7000 SS+5d, DUKHCONI1AZ5PSGL7000 FF+5d, DUKHCONI1AZ5RWGL6015 FF+10d | -14d |
| DUKHCONI1AZ5PSGL7010 |  | Column, Frame& Fabrics Erection | 25d | 2014-12-15 | 2015-01-13 | DUKHCONI1AZ5RWGL6020, DUKHCONI1AZ5PSGL7005 SS+10d, DUKHCONI1AZ5BWGL5330 FF, DUKHCONI1AZ4PSGL7010, DUKHCONI1AZ5RWGL6030 FF | -14d |
| DUKHCONI1AZ5PSGL7015 |  | Electrical Works-Parking Shed | 25d | 2014-12-22 | 2015-01-19 | DUKHCONI1AZ5PSGL7010 SS+5d, DUKHCONI1AZ5STGL5260, DUKHCONI1AZ4PSGL7015 | -14d |
|  | 65 | **HARD LANDSCAPING** |  | 2014-10-13 | 2015-01-01 |  |  |
| DUKHCONI1AZ5HDGL7020 |  | Precast Concrete Kerbs works | 20d | 2014-10-13 | 2014-11-04 | DUKHCONI1AZ5RWGL6000 SS | -1d |
| DUKHCONI1AZ5HDGL7025 |  | Interlocking for Walkways | 25d | 2014-10-25 | 2014-11-22 | DUKHCONI1AZ5HDGL7020 SS+10d, DUKHCONI1ASBGZGL7910 FF | -1d |
| DUKHCONI1AZ5HDGL7030 |  | Construction of Retaining wall | 25d | 2014-11-05 | 2014-12-03 | DUKHCONI1AZ4HDGL7030, DUKHCONI1AZ5HDGL7025 SS+10d | -1d |
| DUKHCONI1AZ5HDGL7035 |  | Construction of Wash Stone Boulders | 25d | 2014-11-05 | 2014-12-03 | DUKHCONI1AZ4HDGL7035, DUKHCONI1AZ5HDGL7030 SS | -1d |
| DUKHCONI1AZ5HDGL7040 |  | Construction of Speed Humps | 10d | 2014-12-22 | 2015-01-01 | DUKHCONI1AZ5RWGL6025, DUKHCONI1AZ5HDGL7035 SS, DUKHCONI1AZ4HDGL7040 | -15d |
|  | 70 | **SOFT LANDSCAPING** |  | 2014-11-17 | 2015-01-08 |  |  |
| DUKHCONI1AZ5SLGL7200 |  | Excavation for Landscaping | 25d | 2014-11-17 | 2014-12-15 | DUKHCONI1AZ5IRGL5290 SS, DUKHCONI1AZ4SLGL7205, DUKHCONI1AZ5HDGL7035 SS+10d | -1d |
| DUKHCONI1AZ5SLGL7205 |  | Sweet Soil Laying | 25d | 2014-11-29 | 2014-12-28 | DUKHCONI1AZ5SLGL7200 SS+10d | -1d |
| DUKHCONI1AZ5SLGL7210 |  | Plantation works | 25d | 2014-12-10 | 2015-01-08 | DUKHCONI1AZ5SLGL7205 SS+10d, DUKHCONI1ASBSSGL7935 FF, DUKHCONI1AZ4SLGL7210 | -1d |
|  | 35 | **SECONDARY BUILDINGS** |  | 2014-06-23 | 2014-12-25 |  |  |
|  | 10 | **INFRASTRUCTURE WORKS** |  | 2014-06-23 | 2014-12-25 |  |  |
|  | 10 | **IRRIGATION WATER TANK & PUMP ROOM** |  | 2014-06-23 | 2014-12-22 |  |  |
| DUKHCONI1ASBIWGL7400 |  | Excavation | 18d | 2014-06-23 | 2014-07-13 | DUKHENGI1ADWIWAP4360, DUKHCONP1AZ9STRF2040 SS | -6d |
| DUKHCONI1ASBIWGL7405 |  | Blinding & base waterproofing | 10d | 2014-07-14 | 2014-07-24 | DUKHCONI1ASBIWGL7400 | -6d |
| DUKHCONI1ASBIWGL7410 |  | Construction of Raft slab | 12d | 2014-07-26 | 2014-08-11 | DUKHCONI1ASBIWGL7405 | -6d |
| DUKHCONI1ASBIWGL7415 |  | Construction of RCC Wall | 25d | 2014-08-12 | 2014-09-09 | DUKHCONI1ASBIWGL7410 | -6d |
| DUKHCONI1ASBIWGL7420 |  | Construction of Roof Slab | 20d | 2014-09-10 | 2014-10-02 | DUKHCONI1ASBIWGL7415 | -6d |
| DUKHCONI1ASBIWGL7425 |  | Waterproofing & Backfilling | 15d | 2014-10-04 | 2014-10-22 | DUKHCONI1ASBIWGL7420 | 0d |
| DUKHCONI1ASBIWGL7950 |  | Laying of Interlock | 10d | 2014-10-23 | 2014-11-03 | DUKHCONI1ASBIWGL7425 | 15d |
| DUKHCONI1ASBIWGL7430 |  | Floor screed | 5d | 2014-10-30 | 2014-11-04 | DUKHCONI1ASBIWGL7425, DUKHCONI1ASBIWGL7420 FS+21d | -6d |
| DUKHCONI1ASBIWGL7435 |  | Installation of Boundary Fences | 15d | 2014-11-04 | 2014-11-20 | DUKHCONI1ASBIWGL7950, DUKHPROGEN00PRDV3850 | 15d |
| DUKHCONI1ASBIWGL7440 |  | Plumbing , Drainage & Firefighting works | 25d | 2014-11-05 | 2014-12-03 | DUKHCONI1ASBIWGL7430, DUKHCONI1AZ3FFGL5210, DUKHCONI1AZ4FFGL5210, DUKHCONI1AZ2FFGL5210, DUKHCONI1AZ5FFGL5210, DUKHCONI1AZ1FFGL5210 | -6d |
| DUKHCONI1ASBIWGL7445 |  | AC Works | 25d | 2014-11-05 | 2014-12-03 | DUKHCONI1ASBIWGL7440 SS | -6d |
| DUKHCONI1ASBIWGL7450 |  | Electrical Works | 25d | 2014-11-05 | 2014-12-03 | DUKHCONI1ASBIWGL7445 SS, DUKHCONI1AZ5TCGL5310, DUKHCONI1AZ5STGL5260 SS, DUKHCONI1AZ5ELGL5230 | -6d |
| DUKHCONI1ASBIWGL7455 |  | Internal epoxy coating & Painting | 5d | 2014-12-04 | 2014-12-09 | DUKHCONI1ASBIWGL7450 | -6d |
| DUKHCONI1ASBIWGL7460 |  | Installation of Steel Ladder | 5d | 2014-12-10 | 2014-12-15 | DUKHPROGEN00PRDV3630, DUKHCONI1ASBIWGL7455 | -6d |
| DUKHCONI1ASBIWGL7465 |  | Installation of G.I Handrails | 5d | 2014-12-16 | 2014-12-22 | DUKHCONI1ASBIWGL7460, DUKHCONI1ASBIWGL7435 | -6d |
|  | 15 | **TELECOMMUNICATION ROOM** |  | 2014-07-14 | 2014-11-30 |  |  |
| DUKHCONI1ASBTRGL7600 |  | Excavation | 10d | 2014-07-14 | 2014-07-24 | DUKHCONI1ASBIWGL7400, DUKHENGI1ADWTRAP4370 | 6d |
| DUKHCONI1ASBTRGL7605 |  | Construction of foundation & Grade slab | 20d | 2014-07-26 | 2014-08-20 | DUKHCONI1ASBTRGL7600 | 16d |
| DUKHCONI1ASBTRGL7610 |  | Construction Column,Beams & Roof Slab | 20d | 2014-08-21 | 2014-09-13 | DUKHCONI1ASBTRGL7605 | 16d |
| DUKHCONI1ASBTRGL7615 |  | Finishing Works | 25d | 2014-10-08 | 2014-11-08 | DUKHCONI1ASBTRGL7610 FS+21d | 16d |
| DUKHCONI1ASBTRGL7620 |  | Plumbing , Drainage & Firefighting works | 25d | 2014-10-27 | 2014-11-24 | DUKHCONI1ASBTRGL7615 SS+10d, DUKHCONI1AZ5IRGL5280 SS+10d | 12d |
| DUKHCONI1ASBTRGL7625 |  | AC Works | 25d | 2014-10-27 | 2014-11-24 | DUKHCONI1ASBTRGL7620 SS | 12d |
| DUKHCONI1ASBTRGL7630 |  | Electrical Works-Telecom Room | 25d | 2014-10-27 | 2014-11-24 | DUKHCONI1AZ2TCGL5310, DUKHCONI1AZ1TCGL5310, DUKHCONI1ASBTRGL7625 SS, DUKHCONI1AZ3TCGL5310, DUKHCONI1AZ4TCGL5310, DUKHCONI1AZ5TCGL5310 | 12d |
| DUKHCONI1ASBTRGL7635 |  | Final Paintings | 5d | 2014-11-25 | 2014-11-30 | DUKHCONI1ASBTRGL7615, DUKHCONI1ASBTRGL7620, DUKHCONI1ASBTRGL7625, DUKHCONI1ASBTRGL7630 | 12d |
|  | 20 | **GUARD HOUSE** |  | 2014-07-26 | 2014-12-07 |  |  |
| DUKHCONI1ASBGHGL7800 |  | Excavation | 10d | 2014-07-26 | 2014-08-09 | DUKHCONI1ASBTRGL7600, DUKHENGI1ADWGHAP4390 | 6d |
| DUKHCONI1ASBGHGL7805 |  | Construction of foundation & Grade slab | 20d | 2014-08-10 | 2014-09-01 | DUKHCONI1ASBGHGL7800 | 6d |
| DUKHCONI1ASBGHGL7810 |  | Construction Column,Beams & Roof Slab | 20d | 2014-09-02 | 2014-09-24 | DUKHCONI1ASBGHGL7805 | 6d |
| DUKHCONI1ASBGHGL7815 |  | Finishing Works | 25d | 2014-10-22 | 2014-11-19 | DUKHCONI1ASBGHGL7810 FS+21d | 6d |
| DUKHCONI1ASBGHGL7820 |  | Plumbing , Drainage & Firefighting works | 25d | 2014-11-03 | 2014-12-01 | DUKHCONI1ASBGHGL7815 SS+10d | 6d |

| ID | WBS | Task | Duration | Start | Finish | Predecessors | Complete | Total float |
| --- | --- | --- | --- | --- | --- | --- | --- | --- |
| DUKHCONI1ASBGHGL7825 |  | AC Works | 25d | 2014-11-03 | 2014-12-01 | DUKHCONI1ASBGHGL7820 SS |  | 6d |
| DUKHCONI1ASBGHGL7830 |  | Electrical Works-Telecom Room | 25d | 2014-11-03 | 2014-12-01 | DUKHCONI1ASBGHGL7825 SS |  | 6d |
| DUKHCONI1ASBGHGL7835 |  | Final Paintings | 5d | 2014-12-02 | 2014-12-07 | DUKHCONI1ASBGHGL7830, DUKHCONI1ASBGHGL7820, DUKHCONI1ASBGHGL7825, DUKHCONI1ASBGHGL7815 |  | 6d |
|  | 25 | **GAZEBO** |  | 2014-09-14 | 2014-11-12 |  |  |  |
| DUKHCONI1ASBGZGL7900 |  | Construction of Concrete structure | 20d | 2014-09-14 | 2014-10-06 | DUKHPROGEN00PRDV3780, DUKHCONI1AZ4HDGL7020, DUKHENGI1ADWGZAP4380 |  | 7d |
| DUKHCONI1ASBGZGL7905 |  | Installation of Wooden Works | 25d | 2014-09-25 | 2014-10-26 | DUKHCONI1ASBGZGL7900 SS+10d |  | 7d |
| DUKHCONI1ASBGZGL7915 |  | Park Benches Installation | 15d | 2014-09-25 | 2014-10-14 | DUKHCONI1ASBGZGL7905 SS |  | 17d |
| DUKHCONI1ASBGZGL7910 |  | Electrical Works-Gazebo | 15d | 2014-10-27 | 2014-11-12 | DUKHCONI1ASBGZGL7915, DUKHCONI1ASBGZGL7905 |  | 7d |
|  | 30 | **SUBSTATION-(LANDSCAPING,FENCES & CHANNEL WORKS)** |  | 2014-10-07 | 2014-12-25 |  |  |  |
| DUKHCONI1ASBSSGL7930 |  | Construction of Drainage Channel | 30d | 2014-10-07 | 2014-11-12 | DUKHCONI1ASBGZGL7900 |  | 11d |
| DUKHCONI1ASBSSGL7920 |  | Hard landscaping around substation | 30d | 2014-10-23 | 2014-11-26 | DUKHCONI1ASBSSGL7930 SS+12d, DUKHCONI1ASBSSGL7930 FF+12d |  | 11d |
| DUKHCONI1ASBSSGL7925 |  | Soft landscaping around substation | 30d | 2014-11-06 | 2014-12-10 | DUKHCONI1ASBSSGL7920 SS+12d, DUKHCONI1ASBSSGL7920 FF+12d |  | 11d |
| DUKHCONI1ASBSSGL7935 |  | Fencing Works | 30d | 2014-11-20 | 2014-12-25 | DUKHCONI1ASBSSGL7925 SS+12d, DUKHCONI1ASBSSGL7925 FF+12d |  | 11d |
|  | L25 | **PACKAGE-1B** |  | 2012-12-01 | 2014-12-24 |  |  |  |
|  | 03 | **SITE PREPARATORY WORKS** |  | 2012-12-01 | 2013-03-30 |  |  |  |
| DUKHCONP1BGNSP001000 |  | Survey works, | 20d | 2012-12-01 A | 2012-12-24 A | DUKHMOBP010000004000 | 100% |  |
| DUKHCONP1BGNSP002000 |  | Scanning for Existing Services for rerouting | 10d | 2012-12-06 A | 2012-12-17 A | DUKHCONP1BGNSP001000 SS+5d | 100% |  |
| DUKHCONP1BGNSP003000 |  | Site stripping | 20d | 2012-12-13 A | 2013-01-06 A | DUKHCONP1BGNSP002000 SS+6d | 100% |  |
| DUKHCONP1BGNSP002100 |  | Submission of Scanning Reports | 5d | 2012-12-19 A | 2012-12-24 A | DUKHCONP1BGNSP002000 | 100% |  |
| DUKHCONP1BGNSP004000 |  | Demolition of Existing building & landscaping | 20d | 2012-12-20 A | 2013-01-12 A | DUKHCONP1BGNSP003000 SS+5d | 100% |  |
| DUKHCONP1BGNSP002200 |  | Information Required for Rerouting | 14d | 2012-12-25 A | 2013-01-09 A | DUKHCONP1BGNSP002100 | 100% |  |
| DUKHCONP1BGNSP005000 |  | Demolition of existing services works | 20d | 2012-12-26 A | 2013-01-17 A | DUKHCONP1BGNSP004000 SS+5d | 100% |  |
| DUKHCONP1BGNSP002300 |  | Preparation & Submission for new Layout for rerouting | 7d | 2013-01-10 A | 2013-01-17 A | DUKHCONP1BGNSP002200 | 100% |  |
| DUKHCONP1BGNSP002400 |  | Approval for new Layout for rerouting | 10d | 2013-01-19 A | 2013-01-29 A | DUKHCONP1BGNSP002300 | 100% |  |
| DUKHCONP1BGNSP002500 |  | Rerouting Works | 25d | 2013-01-30 A | 2013-03-30 A | DUKHCONP1BGNSP002400 | 100% |  |
|  | 10 | **ZONE - 1 (4 Twin Villas)** |  | 2013-04-27 | 2014-07-24 |  |  |  |
|  | 10 | **STRUCTURAL WORKS** |  | 2013-04-27 | 2014-02-03 |  |  |  |
|  | 10 | **SUB STRUCTURE** |  | 2013-04-27 | 2013-09-15 |  |  |  |
|  | 10 | **UPTO GRADE SLAB** |  | 2013-04-27 | 2013-09-15 |  |  |  |
| DUKHCONP1BZ1STUG1000 |  | Footing Excavation | 25d | 2013-04-27 | 2013-05-25 | DUKHCONP1AZ2STUG1000, DUKHCONP1BGNSP005000 SS+5d, DUKHMOBI1BPS00001250, DUKHCONP1BGNSP002500, DUKHMOBI1BPS00002113, DUKHENGP1BDWSTAP4400 |  | -11d |
| DUKHCONP1BZ1STUG1005 |  | Footing Antitermite | 23d | 2013-05-08 | 2013-06-03 | DUKHCONP1BZ1STUG1000 SS+10d, DUKHCONP1BZ1STUG1000 FF+5d |  | -11d |
| DUKHCONP1BZ1STUG1010 |  | Footing Blinding | 23d | 2013-05-12 | 2013-06-06 | DUKHCONP1BZ1STUG1005 SS+3d, DUKHCONP1BZ1STUG1005 FF+3d |  | -11d |
| DUKHCONP1BZ1STUG1015 |  | Footing Waterproofing & Screed | 25d | 2013-05-18 | 2013-06-15 | DUKHCONP1BZ1STUG1010 FF+5d, DUKHCONP1BZ1STUG1010 SS+5d |  | -11d |
| DUKHCONP1BZ1STUG1020 |  | Construction of foundations | 20d | 2013-06-02 | 2013-06-24 | DUKHCONP1BZ1STUG1015 SS+7d, DUKHCONP1BZ1STUG1015 FF+8d |  | -11d |
| DUKHCONP1BZ1STUG1025 |  | Construction of neck of columns | 25d | 2013-06-11 | 2013-07-09 | DUKHCONP1BZ1STUG1020 FF+7d, DUKHCONP1BZ1STUG1020 SS+8d |  | -11d |
| DUKHCONP1BZ1STUG1030 |  | Waterproofing Footing & Neck Column | 25d | 2013-06-20 | 2013-07-18 | DUKHCONP1BZ1STUG1025 SS+8d, DUKHCONP1BZ1STUG1025 FF+8d |  | -11d |
| DUKHCONP1BZ1STUG1035 |  | Backfilling Upto Grade Beam Bottom | 25d | 2013-07-02 | 2013-07-30 | DUKHCONP1BZ1STUG1030 FF+10d, DUKHCONP1BZ1STUG1030 SS+10d |  | -11d |
| DUKHCONP1BZ1STUG1040 |  | Construction of Grade Beams | 25d | 2013-07-18 | 2013-08-19 | DUKHCONP1BZ1STUG1035 FF+14d, DUKHENGP1BDWSTAP4410, DUKHCONP1BZ1STUG1035 SS+14d |  | -11d |
| DUKHCONP1BZ1STUG1045 |  | Construction of slab on grade | 25d | 2013-08-18 | 2013-09-15 | DUKHCONP1BZ1STUG1040 SS+10d, DUKHCONP1BZ1PLUG4300 FF+8d, DUKHENGP1BDWSTAP4410, DUKHCONP1BZ1PLUG4300 SS+8d, DUKHCONP1BZ1STUG1040 FF+10d |  | -11d |
|  | 15 | **SUPERSTRUCTURE** |  | 2013-09-03 | 2014-02-03 |  |  |  |
|  | 10 | **GROUND FLOOR** |  | 2013-09-03 | 2013-10-30 |  |  |  |
| DUKHCONP1BZ1STGF2000 |  | Column-Rebar & Formwork | 25d | 2013-09-03 | 2013-10-01 | DUKHCONP1BZ1STUG1045 FF+7d, DUKHENGP1BDWSTAP4420, DUKHCONP1BZ1STUG1045 SS+14d |  | -11d |
| DUKHCONP1BZ1STGF2005 |  | Column-Concrete | 23d | 2013-09-12 | 2013-10-08 | DUKHCONP1BZ1STGF2000 FF+2d, DUKHCONP1BZ1STGF2000 SS+8d |  | -11d |
| DUKHCONP1BZ1STGF2010 |  | Beam, Stairs ,Slab-Rebar & Formwork | 25d | 2013-09-26 | 2013-10-27 | DUKHCONP1BZ1STGF2005 FF+14d, DUKHENGP1BDWSTAP4430, DUKHCONP1BZ1STGF2005 SS+2d |  | -11d |
| DUKHCONP1BZ1STGF2015 |  | Beam, Stairs ,Slab-Concrete | 14d | 2013-10-13 | 2013-10-30 | DUKHCONP1BZ1STGF2010 SS+10d, DUKHCONP1BZ1STGF2010 FF+3d |  | -11d |
|  | 15 | **FIRST FLOORS** |  | 2013-10-15 | 2013-12-11 |  |  |  |
| DUKHCONP1BZ1STFF2020 |  | Column-Rebar & Formwork | 25d | 2013-10-15 | 2013-11-14 | DUKHENGP1BDWSTAP4440, DUKHCONP1BZ1STGF2015 SS+2d, DUKHCONP1BZ1STGF2015 FF+5d |  | -11d |
| DUKHCONP1BZ1STFF2025 |  | Column-Concrete | 23d | 2013-10-27 | 2013-11-21 | DUKHCONP1BZ1STFF2020 SS+8d, DUKHCONP1BZ1STFF2020 FF+2d |  | -8d |
| DUKHCONP1BZ1STFF2030 |  | Beam, Stairs ,Slab-Rebar & Formwork | 25d | 2013-11-10 | 2013-12-08 | DUKHCONP1BZ1STFF2025 FF+14d, DUKHCONP1BZ1STFF2025 SS+2d |  | -8d |
| DUKHCONP1BZ1STFF2035 |  | Beam, Stairs ,Slab-Concrete | 14d | 2013-11-26 | 2013-12-11 | DUKHCONP1BZ1STFF2030 SS+10d, DUKHCONP1BZ1STFF2030 FF+3d |  | -8d |
|  | 20 | **ROOF** |  | 2013-12-02 | 2014-02-03 |  |  |  |
| DUKHCONP1BZ1STRF2040 |  | Column-Rebar & Formwork | 18d | 2013-12-02 | 2013-12-23 | DUKHCONP1BZ1STFF2035 FF+3d, DUKHCONP1BZ1STFF2035 SS+5d |  | 10d |
| DUKHCONP1BZ1STRF2045 |  | Column-Concrete | 17d | 2013-12-05 | 2013-12-25 | DUKHCONP1BZ1STRF2040 FF+1d, DUKHCONP1BZ1STRF2040 SS+3d |  | 10d |
| DUKHCONP1BZ1STRF2050 |  | Slab-Rebar & Formwork - Head Room | 20d | 2013-12-08 | 2013-12-31 | DUKHCONP1BZ1STRF2045 FF+5d, DUKHCONP1BZ1STRF2045 SS+2d |  | 10d |
| DUKHCONP1BZ1STRF2055 |  | Slab-Concrete-Head room | 13d | 2013-12-23 | 2014-01-06 | DUKHCONP1BZ1STRF2050 FF+5d, DUKHCONP1BZ1STRF2050 SS+5d |  | 10d |
| DUKHCONP1BZ1STRF2060 |  | Construction of Parapets | 25d | 2013-12-25 | 2014-01-22 | DUKHCONP1BZ1STRF2055 SS+2d, DUKHCONP1BZ1STRF2055 FF+14d |  | 40d |
| DUKHCONP1BZ1STRF2065 |  | Construction of up stands/Plinth | 25d | 2014-01-06 | 2014-02-03 | DUKHCONP1BZ1STRF2060 SS+10d, DUKHCONP1BZ1STRF2060 FF+10d |  | 67d |
|  | 15 | **FINISHING WORKS** |  | 2013-11-09 | 2014-06-25 |  |  |  |
|  | 10 | **INTERNAL FINISHES** |  | 2013-11-09 | 2014-06-25 |  |  |  |
|  | 10 | **GROUND FLOOR** |  | 2013-11-09 | 2014-04-22 |  |  |  |
| DUKHCONP1BZ1ARGF3000 |  | Block work | 25d | 2013-11-09 | 2013-12-07 | DUKHCONP1BZ1STGF2015 FF+21d, DUKHCONP1BZ1STGF2015 SS+21d |  | 33d |
| DUKHCONP1BZ1ARGF3005 |  | Plastering work | 25d | 2013-12-01 | 2013-12-30 | DUKHCONP1BZ1ELGF4000 FF+5d, DUKHCONP1BZ1ARGF3000 SS+7d, DUKHCONP1BZ1ELGF4000 SS+5d, DUKHCONP1BZ1PLGF4305 FF+5d, DUKHCONP1BZ1PLGF4305 SS+5d, DUKHCONP1BZ1ARGF3000 FF+7d |  | 39d |
| DUKHCONP1BZ1ARGF3010 |  | Flooring screed | 21d | 2013-12-09 | 2014-01-02 | DUKHCONP1BZ1ARGF3005 FF+3d, DUKHCONP1BZ1ARGF3005 SS+7d |  | 47d |
| DUKHCONP1BZ1ARGF3030 |  | Paint First coat | 25d | 2013-12-17 | 2014-01-15 | DUKHCONP1BZ1ARGF3005 SS+14d, DUKHCONP1BZ1ARGF3005 FF+14d |  | 53d |
| DUKHCONP1BZ1ARGF3015 |  | Wet area waterproofing & Protection Screed | 15d | 2013-12-19 | 2014-01-05 | DUKHCONP1BZ1ARGF3005 FF+5d, DUKHCONP1BZ1ARGF3005 SS+7d |  | 39d |
| DUKHCONP1BZ1ARGF3020 |  | Ceramic Wall Tiling | 25d | 2013-12-25 | 2014-01-22 | DUKHCONP1BZ1PLGF4305 FF+4d, DUKHCONP1BZ1ARGF3015 FF+5d, DUKHCONP1BZ1PLGF4310 SS+4d, DUKHCONP1BZ1ARGF3015 SS+5d, DUKHCONP1BZ1PLGF4305 SS+4d, DUKHCONP1BZ1PLGF4310 FF+4d |  | 39d |
| DUKHCONP1BZ1ARGF3025 |  | Porcelain Tile flooring | 25d | 2013-12-31 | 2014-01-28 | DUKHCONP1BZ1ARGF3010 SS+10d, DUKHCONP1BZ1ARGF3020 FF+5d, DUKHCONP1BZ1ARGF3020 SS+5d, DUKHCONP1BZ1ARGF3010 FF+10d |  | 39d |
| DUKHCONP1BZ1ARGF3045 |  | Fixing of Suspension systems | 20d | 2014-01-18 | 2014-02-09 | DUKHCONP1BZ1ELGF4010 FF+5d, DUKHCONP1BZ1ARGF3030 FF+7d, DUKHCONP1BZ1ARGF3030 SS+7d, DUKHCONP1BZ1ELGF4010 SS+5d, DUKHCONP1BZ1ARGF3025 SS+10d, DUKHCONP1BZ1ARGF3025 FF+10d |  | 39d |
| DUKHCONP1BZ1ARGF3035 |  | Slate Tile Flooring & Skirting | 15d | 2014-01-20 | 2014-02-05 | DUKHCONP1BZ1ARGF3010 FF+13d, DUKHCONP1BZ1ARGF3010 SS+13d, DUKHCONP1BZ1ARGF3025 FF+7d, DUKHCONP1BZ1ARGF3025 SS+13d |  | 49d |
| DUKHCONP1BZ1ARGF3055 |  | Aluminum tile false ceiling | 25d | 2014-01-26 | 2014-02-24 | DUKHCONP1BZ1ACGF4600 FF+7d, DUKHCONP1BZ1ARGF3045 SS+7d, DUKHCONP1BZ1ACGF4600 SS+7d, DUKHCONP1BZ1ARGF3045 FF+7d |  | 42d |

| ID | WBS | Task | Duration | Start | Finish | Predecessors | Total float |
| --- | --- | --- | --- | --- | --- | --- | --- |
| DUKHCONP1BZ1ARGF3040 |  | Cobble Tile flooring | 15d | 2014-01-27 | 2014-02-13 | DUKHCONP1BZ1ARGF3025 FF+13d, DUKHCONP1BZ1ARGF3010 FF+13d, DUKHCONP1BZ1ARGF3035 FF+4d, DUKHCONP1BZ1ARGF3035 SS+4d, DUKHCONP1BZ1ARGF3010 SS+13d, DUKHCONP1BZ1ARGF3025 SS+13d | 47d |
| DUKHCONP1BZ1ARGF3060 |  | Gypsum board false ceiling | 25d | 2014-01-29 | 2014-02-27 | DUKHCONP1BZ1ARGF3045 FF+10d, DUKHCONP1BZ1ARGF3045 SS+10d, DUKHCONP1BZ1ACGF4600 FF+7d, DUKHCONP1BZ1ACGF4600 SS+7d | 39d |
| DUKHCONP1BZ1ARGF3050 |  | Granite - Stair case flooring & Skirting | 20d | 2014-02-04 | 2014-02-27 | DUKHCONP1BZ1ARGF3040 FF+7d, DUKHCONP1BZ1ARGF3025 SS+13d, DUKHCONP1BZ1ARGF3025 FF+13d, DUKHCONP1BZ1ARGF3040 SS+7d | 47d |
| DUKHCONP1BZ1ARGF3065 |  | Wooden door & PVC Door | 15d | 2014-02-19 | 2014-03-08 | DUKHCONP1BZ1ARGF3035 SS+7d, DUKHCONP1BZ1ARGF3050 SS+7d, DUKHCONP1BZ1ARGF3050 FF+7d, DUKHCONP1BZ1ARGF3035 FF+7d | 47d |
| DUKHCONP1BZ1ARGF3070 |  | Aluminum doors | 15d | 2014-02-25 | 2014-03-13 | DUKHCONP1BZ1ARGF3065 SS+5d, DUKHCONP1BZ1ARGF3065 FF+5d | 47d |
| DUKHCONP1BZ1ARGF3075 |  | Carpentry & Joinery Works | 20d | 2014-03-03 | 2014-03-25 | DUKHCONP1BZ1ARGF3070 FF+7d, DUKHCONP1BZ1ARGF3070 SS+5d | 47d |
| DUKHCONP1BZ1ARGF3080 |  | Aluminum windows | 20d | 2014-03-04 | 2014-03-26 | DUKHCONP1BZ1ARGF3070 SS+6d, DUKHCONP1BZ1ARGF3070 FF+6d | 57d |
| DUKHCONP1BZ1ARGF3085 |  | S.S.Balustrade | 20d | 2014-03-11 | 2014-04-02 | DUKHCONP1BZ1ARGF3075 SS+7d, DUKHCONP1BZ1ARGF3075 FF+7d, DUKHCONP1BZ1ARGF3050 SS+7d, DUKHCONP1BZ1ARGF3050 FF+7d | 52d |
| DUKHCONP1BZ1ARGF3090 |  | Installation of Granite Counter Top | 15d | 2014-03-16 | 2014-04-01 | DUKHCONP1BZ1ARGF3075 SS+7d, DUKHCONP1BZ1ARGF3075 FF+6d | 47d |
| DUKHCONP1BZ1ARGF3095 |  | Final Painting | 25d | 2014-03-25 | 2014-04-22 | DUKHCONP1BZ1ARGF3030 SS+10d, DUKHCONP1BZ1ARGF3090 FF+8d, DUKHCONP1BZ1ACGF4610 FF+10d, DUKHCONP1BZ1ARGF3085 SS+7d, DUKHCONP1BZ1ARGF3040 SS+13d, DUKHCONP1BZ1ARGF3060 FF+8d, DUKHCONP1BZ1ARGF3080 FF+8d, DUKHCONP1BZ1ARGF3090 SS+8d, DUKHCONP1BZ1ACGF4610 SS+10d, DUKHCONP1BZ1ARGF3040 FF+13d, DUKHCONP1BZ1ARGF3035 FF+13d, DUKHCONP1BZ1ARGF3030 FF+10d, DUKHCONP1BZ1ARGF3035 SS+13d, DUKHCONP1BZ1ARGF3070 SS+5d, DUKHCONP1BZ1ARGF3060 SS+8d, DUKHCONP1BZ1ARGF3070 FF+5d, DUKHCONP1BZ1ARGF3080 SS+8d, DUKHCONP1BZ1ARGF3085 FF+7d | 47d |
|  | 15 | **FIRST FLOORS** |  | 2013-12-22 | 2014-06-25 |  |  |
| DUKHCONP1BZ1ARFF3300 |  | Block work | 25d | 2013-12-22 | 2014-01-19 | DUKHCONP1BZ1STFF2035 SS+21d, DUKHCONP1BZ1STFF2020 SS+21d, DUKHCONP1BZ1STFF2020 FF+21d, DUKHCONP1BZ1STFF2035 FF+21d | -8d |
| DUKHCONP1BZ1ARFF3305 |  | Plastering work | 25d | 2014-01-18 | 2014-02-16 | DUKHCONP1BZ1PLFF4325 FF+8d, DUKHCONP1BZ1PLFF4325 SS+8d, DUKHCONP1BZ1ELFF4035 SS+5d, DUKHCONP1BZ1ELFF4035 FF+5d, DUKHCONP1BZ1ARFF3300 SS+7d, DUKHCONP1BZ1ARFF3300 FF+7d | -8d |
| DUKHCONP1BZ1ARFF3310 |  | Flooring screed | 21d | 2014-01-26 | 2014-02-19 | DUKHCONP1BZ1ARFF3305 SS+7d, DUKHCONP1BZ1ARFF3305 FF+3d | 9d |
| DUKHCONP1BZ1ARFF3330 |  | Paint First coat | 25d | 2014-02-03 | 2014-03-04 | DUKHCONP1BZ1ARFF3305 FF+14d, DUKHCONP1BZ1ARFF3305 SS+14d | 18d |
| DUKHCONP1BZ1ARFF3315 |  | Wet area waterproofing | 15d | 2014-02-08 | 2014-02-25 | DUKHCONP1BZ1ARFF3305 SS+7d, DUKHCONP1BZ1ARFF3305 FF+8d | -8d |
| DUKHCONP1BZ1ARFF3320 |  | Ceramic Wall Tiling | 25d | 2014-02-18 | 2014-03-18 | DUKHCONP1BZ1PLFF4325 FF+4d, DUKHCONP1BZ1ARFF3315 FF+7d, DUKHCONP1BZ1PLFF4325 SS+4d, DUKHCONP1BZ1PLFF4330 SS+7d, DUKHCONP1BZ1ARFF3315 SS+8d, DUKHCONP1BZ1PLFF4330 FF+7d | -8d |
| DUKHCONP1BZ1ARFF3325 |  | Porcelain Tile flooring | 25d | 2014-02-27 | 2014-03-27 | DUKHCONP1BZ1ARFF3310 SS+10d, DUKHCONP1BZ1ARFF3320 SS+8d, DUKHCONP1BZ1ARFF3310 FF+10d, DUKHCONP1BZ1ARFF3320 FF+8d | -8d |
| DUKHCONP1BZ1ARFF3335 |  | Slate Tile Flooring & Skirting | 15d | 2014-03-17 | 2014-04-02 | DUKHCONP1BZ1ARFF3325 SS+13d, DUKHCONP1BZ1ARFF3310 SS+13d, DUKHCONP1BZ1ARFF3325 FF+5d, DUKHCONP1BZ1ARFF3310 FF+13d | 11d |
| DUKHCONP1BZ1ARFF3345 |  | Fixing of Suspension systems | 20d | 2014-03-20 | 2014-04-12 | DUKHCONP1BZ1ARFF3330 FF+7d, DUKHCONP1BZ1ARFF3325 SS+13d, DUKHCONP1BZ1ELFF4045 SS+5d, DUKHCONP1BZ1ELFF4045 FF+5d, DUKHCONP1BZ1ARFF3325 FF+13d, DUKHCONP1BZ1ARFF3330 SS+7d | -8d |
| DUKHCONP1BZ1ARFF3350 |  | Granite - Stair case flooring & Skirting | 20d | 2014-03-20 | 2014-04-12 | DUKHCONP1BZ1ARFF3325 FF+13d, DUKHCONP1BZ1ARFF3325 SS+13d | 3d |
| DUKHCONP1BZ1ARFF3360 |  | Gypsum board false ceiling | 25d | 2014-04-01 | 2014-04-29 | DUKHCONP1BZ1ARFF3345 FF+10d, DUKHCONP1BZ1ACFF4615 FF+7d, DUKHCONP1BZ1ACFF4615 SS+7d, DUKHCONP1BZ1ARFF3345 SS+10d | -8d |
| DUKHCONP1BZ1ARFF3365 |  | Wooden door | 15d | 2014-04-16 | 2014-05-03 | DUKHCONP1BZ1ARFF3335 SS+7d, DUKHCONP1BZ1ARFF3350 FF+7d, DUKHCONP1BZ1ARFF3360 SS+3d, DUKHCONP1BZ1ARFF3335 FF+7d, DUKHCONP1BZ1ARFF3360 FF+3d, DUKHCONP1BZ1ARFF3350 SS+7d | -8d |
| DUKHCONP1BZ1ARFF3370 |  | Aluminum Door | 20d | 2014-04-24 | 2014-05-17 | DUKHCONP1BZ1ARFF3365 FF+5d, DUKHCONP1BZ1ARFF3365 SS+7d | -8d |
| DUKHCONP1BZ1ARFF3380 |  | Aluminum windows | 20d | 2014-05-01 | 2014-05-24 | DUKHCONP1BZ1ARFF3370 FF+6d, DUKHCONP1BZ1ARFF3370 SS+6d | 5d |
| DUKHCONP1BZ1ARFF3375 |  | Carpentry & Joinery Works | 25d | 2014-05-03 | 2014-05-31 | DUKHCONP1BZ1ARFF3370 FF+5d, DUKHCONP1BZ1ARFF3370 SS+7d | -8d |
| DUKHCONP1BZ1ARFF3385 |  | Handrail & Balustrade | 20d | 2014-05-17 | 2014-06-08 | DUKHCONP1BZ1ARFF3375 SS+7d, DUKHCONP1BZ1ARFF3350 FF+7d, DUKHCONP1BZ1ARFF3350 SS+7d, DUKHCONP1BZ1ARFF3375 FF+7d | -8d |
| DUKHCONP1BZ1ARFF3390 |  | Installation of Granite Counter Top | 20d | 2014-05-17 | 2014-06-08 | DUKHCONP1BZ1ARFF3375 SS+7d, DUKHCONP1BZ1ARFF3375 FF+7d | -6d |
| DUKHCONP1BZ1ARFF3395 |  | Final Painting | 25d | 2014-05-28 | 2014-06-25 | DUKHCONP1BZ1ARFF3335 FF+8d, DUKHCONP1BZ1ARFF3350 FF+8d, DUKHCONP1BZ1ARFF3375 SS+8d, DUKHCONP1BZ1ARFF3390 FF+8d, DUKHCONP1BZ1ARFF3330 SS+10d, DUKHCONP1BZ1ARFF3360 SS+10d, DUKHCONP1BZ1ARFF3380 SS+10d, DUKHCONP1BZ1ARFF3385 FF+10d, DUKHCONP1BZ1ACFF4625 FF+10d, DUKHCONP1BZ1ARFF3330 FF+10d, DUKHCONP1BZ1ARFF3375 FF+8d, DUKHCONP1BZ1ARFF3335 SS+8d, DUKHCONP1BZ1ARFF3380 FF+10d, DUKHCONP1BZ1ARFF3390 SS+8d, DUKHCONP1BZ1ARFF3385 SS+10d, DUKHCONP1BZ1ARFF3365 SS+8d, DUKHCONP1BZ1ARFF3365 FF+8d, DUKHCONP1BZ1ACFF4625 SS+10d, DUKHCONP1BZ1ARFF3350 SS+8d, DUKHCONP1BZ1ARFF3360 FF+10d | -8d |
|  | 20 | **ROOF** |  | 2014-01-16 | 2014-03-26 |  |  |
| DUKHCONP1BZ1ARRF3600 |  | Block work | 20d | 2014-01-16 | 2014-02-08 | DUKHCONP1BZ1STRF2055 SS+21d, DUKHCONP1BZ1STRF2055 FF+21d | 64d |
| DUKHCONP1BZ1ARRF3605 |  | Plastering work | 20d | 2014-01-25 | 2014-02-17 | DUKHCONP1BZ1ARRF3600 SS+7d, DUKHCONP1BZ1ARRF3600 FF+7d | 64d |
| DUKHCONP1BZ1ARRF3610 |  | Flooring screed | 15d | 2014-02-08 | 2014-02-25 | DUKHCONP1BZ1ARRF3605 SS+7d, DUKHCONP1BZ1ARRF3605 FF+7d | 70d |
| DUKHCONP1BZ1ARRF3695 |  | Painting -Storage area | 20d | 2014-02-20 | 2014-03-15 | DUKHCONP1BZ1ARRF3610 FF+10d, DUKHCONP1BZ1ARRF3610 SS+10d | 70d |
| DUKHCONP1BZ1ARRF3620 |  | Epoxy Painting -Storage area | 15d | 2014-03-10 | 2014-03-26 | DUKHCONP1BZ1ARRF3695 FF+10d, DUKHCONP1BZ1ARRF3695 SS+10d | 70d |
|  | 15 | **EXTERNAL FINISHES** |  | 2014-01-18 | 2014-04-01 |  |  |
|  | 10 | **ROOF** |  | 2014-01-18 | 2014-03-26 |  |  |
| DUKHCONP1BZ1ARRF3630 |  | Leveling Screed for Waterproofing | 25d | 2014-01-18 | 2014-02-16 | DUKHCONP1BZ1STRF2060 SS+10d, DUKHCONP1BZ1STRF2065 SS+10d, DUKHCONP1BZ1STRF2065 FF+10d, DUKHCONP1BZ1STRF2060 FF+10d | 67d |
| DUKHCONP1BZ1ARRF3635 |  | Laying of Waterproofing Membrane | 25d | 2014-01-21 | 2014-02-19 | DUKHCONP1BZ1ARRF3630 FF+3d, DUKHCONP1BZ1ARRF3630 SS+3d | 67d |
| DUKHCONP1BZ1ARRF3640 |  | Installation of Insulation & Protection | 25d | 2014-01-26 | 2014-02-24 | DUKHCONP1BZ1ARRF3635 SS+4d, DUKHCONP1BZ1ARRF3635 FF+4d | 67d |
| DUKHCONP1BZ1ARRF3645 |  | Lime Stone Chips & Paving slab Installation | 25d | 2014-01-30 | 2014-03-01 | DUKHCONP1BZ1ARRF3640 FF+4d, DUKHCONP1BZ1ARRF3640 SS+4d | 67d |
| DUKHCONP1BZ1ARRF3650 |  | Install. of Gal. Frame & Aluminum Slat Screen | 25d | 2014-02-08 | 2014-03-09 | DUKHCONP1BZ1ARRF3645 SS+7d, DUKHCONP1BZ1ARRF3645 FF+7d | 67d |
| DUKHCONP1BZ1ARRF3655 |  | Installation of Pumps Protection cabinets | 20d | 2014-02-24 | 2014-03-18 | DUKHCONP1BZ1ARRF3645 FF+7d, DUKHCONP1BZ1ARRF3650 FF+8d, DUKHCONP1BZ1ARRF3645 SS+7d, DUKHCONP1BZ1ARRF3650 SS+8d | 67d |
| DUKHCONP1BZ1ARRF3660 |  | Installation of Access Ladder | 15d | 2014-03-10 | 2014-03-26 | DUKHCONP1BZ1ARRF3655 FF+7d, DUKHCONP1BZ1ARRF3655 SS+7d | 70d |
|  | 15 | **ELEVATION** |  | 2014-02-02 | 2014-04-01 |  |  |
| DUKHCONP1BZ1AREL3665 |  | External Plastering | 25d | 2014-02-02 | 2014-03-03 | DUKHCONP1BZ1ARFF3305 FF+7d, DUKHCONP1BZ1ARFF3305 SS+7d, DUKHCONP1BZ1STRF2065 FF+7d, DUKHCONP1BZ1ARRF3605 SS+7d, DUKHCONP1BZ1STRF2065 SS+7d | 64d |
| DUKHCONP1BZ1AREL3670 |  | External stone cladding works | 20d | 2014-02-20 | 2014-03-15 | DUKHCONP1BZ1AREL3665 SS+10d, DUKHCONP1BZ1AREL3665 FF+10d | 65d |
| DUKHCONP1BZ1AREL3675 |  | GRC works | 20d | 2014-02-26 | 2014-03-20 | DUKHCONP1BZ1AREL3665 FF+10d, DUKHCONP1BZ1AREL3670 SS+5d, DUKHCONP1BZ1AREL3665 SS+10d | 65d |
| DUKHCONP1BZ1AREL3680 |  | External Painting | 20d | 2014-03-10 | 2014-04-01 | DUKHCONP1BZ1AREL3675 FF+10d, DUKHCONP1BZ1ARRF3695 SS+4d, DUKHCONP1BZ1AREL3670 FF+10d, DUKHCONP1BZ1AREL3670 SS+10d, DUKHCONP1BZ1AREL3675 SS+10d, DUKHCONP1BZ1ARRF3695 FF+4d | 65d |
|  | 20 | **MEP WORKS** |  | 2013-08-05 | 2014-06-25 |  |  |
|  | 10 | **ELECTRICAL WORKS** |  | 2013-11-14 | 2014-06-25 |  |  |
|  | 10 | **GROUND FLOOR** |  | 2013-11-14 | 2014-03-25 |  |  |
| DUKHCONP1BZ1ELGF4000 |  | Fixing of wall conduits & switch socket boxes | 25d | 2013-11-14 | 2013-12-12 | DUKHCONP1BZ1ARGF3000 FF+5d, DUKHCONP1BZ1ARGF3000 SS+5d | 48d |
| DUKHCONP1BZ1ELGF4005 |  | Cable tray & trunking installation | 20d | 2013-11-26 | 2013-12-19 | DUKHCONP1BZ1ELGF4000 SS+5d, DUKHCONP1BZ1ELGF4000 FF+5d | 66d |
| DUKHCONP1BZ1ELGF4010 |  | Installation of wiring & Main Cabling | 25d | 2013-12-04 | 2014-01-02 | DUKHCONP1BZ1ELGF4005 FF+7d, DUKHCONP1BZ1ELGF4005 SS+7d | 66d |
| DUKHCONP1BZ1ELGF4015 |  | Install. of CAMS & Fire Fighting Accessories | 25d | 2014-02-06 | 2014-03-08 | DUKHCONP1BZ1ARGF3060 FF+7d, DUKHCONP1BZ1ARGF3055 FF+7d, DUKHCONP1BZ1ARGF3055 SS+7d, DUKHCONP1BZ1ARGF3060 SS+7d | 61d |
| DUKHCONP1BZ1ELGF4020 |  | Installation of DBS,MCCB Accessories. | 20d | 2014-02-13 | 2014-03-08 | DUKHCONP1BZ1ELGF4010 SS+5d, DUKHCONP1BZ1ARGF3055 SS+7d, DUKHCONP1BZ1ARGF3060 SS+7d, DUKHCONP1BZ1ELGF4010 FF+5d, DUKHCONP1BZ1ARGF3055 FF+7d, DUKHCONP1BZ1ARGF3060 FF+7d | 39d |
| DUKHCONP1BZ1ELGF4025 |  | Installation of Lighting fixtures & Accessories | 25d | 2014-02-25 | 2014-03-25 | DUKHCONP1BZ1ARGF3060 FF+10d, DUKHCONP1BZ1ARGF3055 FF+10d, DUKHCONP1BZ1ARGF3060 SS+10d, DUKHCONP1BZ1ELGF4020 FF+10d, DUKHCONP1BZ1ELGF4020 SS+10d, DUKHCONP1BZ1ARGF3055 SS+10d | 41d |
| DUKHCONP1BZ1ELGF4030 |  | Installation of Telephone System | 20d | 2014-02-25 | 2014-03-19 | DUKHCONP1BZ1ARGF3060 FF+5d, DUKHCONP1BZ1ARGF3060 SS+5d, DUKHCONP1BZ1ELGF4020 SS+10d, DUKHCONP1BZ1ELGF4020 FF+10d | 39d |
|  | 15 | **FIRST FLOORS** |  | 2013-12-28 | 2014-05-27 |  |  |
| DUKHCONP1BZ1ELFF4035 |  | Fixing of wall conduits & switch socket boxes | 25d | 2013-12-28 | 2014-01-25 | DUKHCONP1BZ1ARFF3300 SS+5d, DUKHCONP1BZ1ARFF3300 FF+5d | 5d |
| DUKHCONP1BZ1ELFF4040 |  | Cable tray & trunking installation | 20d | 2014-01-08 | 2014-01-30 | DUKHCONP1BZ1ELFF4035 FF+5d, DUKHCONP1BZ1ELFF4035 SS+5d | 35d |
| DUKHCONP1BZ1ELFF4045 |  | Installation of wiring & Main Cabling | 25d | 2014-01-16 | 2014-02-15 | DUKHCONP1BZ1ELFF4040 FF+7d, DUKHCONP1BZ1ELFF4040 SS+7d | 35d |
| DUKHCONP1BZ1ELFF4050 |  | Installation of Telephone System | 25d | 2014-04-07 | 2014-05-05 | DUKHCONP1BZ1ARFF3360 FF+5d, DUKHCONP1BZ1MSEX5010, DUKHCONP1BZ1ARFF3360 SS+5d, DUKHCONP1BZ1ELGF4030 FF+10d, DUKHCONP1BZ1ELGF4030 SS+10d | 14d |
| DUKHCONP1BZ1ELFF4055 |  | Install. of CAMS & Fire Fighting Accessories | 25d | 2014-04-09 | 2014-05-07 | DUKHCONP1BZ1ELGF4015 SS+5d, DUKHCONP1BZ1ELGF4015 FF+5d, DUKHCONP1BZ1ARFF3360 FF+7d, DUKHCONP1BZ1ARFF3360 SS+7d | 34d |
| DUKHCONP1BZ1ELFF4060 |  | Installation of DBS,MCCB Accessories. | 20d | 2014-04-16 | 2014-05-08 | DUKHCONP1BZ1ARFF3360 FF+8d, DUKHCONP1BZ1ARFF3360 SS+8d, DUKHCONP1BZ1ELFF4045 SS+5d, DUKHCONP1BZ1ELFF4045 FF+5d | -8d |
| DUKHCONP1BZ1ELFF4065 |  | Installation of Lighting fixtures & Accessories | 25d | 2014-04-29 | 2014-05-27 | DUKHCONP1BZ1ARFF3360 SS+10d, DUKHCONP1BZ1ELFF4060 FF+11d, DUKHCONP1BZ1ELFF4060 SS+11d, DUKHCONP1BZ1ARFF3360 FF+10d, DUKHCONP1BZ1ELGF4025 SS+5d, DUKHCONP1BZ1ELGF4025 FF+5d | -8d |
|  | 20 | **ROOF** |  | 2014-05-19 | 2014-06-25 |  |  |
| DUKHCONP1BZ1ELRF4070 |  | Installation of Isolator | 18d | 2014-05-19 | 2014-06-08 | DUKHCONP1BZ1ELFF4065 FF+10d, DUKHCONP1BZ1ELFF4065 SS+10d, DUKHCONP1BZ1ELFF4050 SS+5d, DUKHCONP1BZ1ELFF4045 SS+10d, DUKHCONP1BZ1ARRF3645 FF+7d, DUKHCONP1BZ1ARRF3645 SS+7d, DUKHCONP1BZ1ELFF4045 FF+10d, DUKHCONP1BZ1ELFF4050 FF+7d | -8d |
| DUKHCONP1BZ1ELRF4075 |  | Installation of TV Dish Antenna | 23d | 2014-05-31 | 2014-06-25 | DUKHCONP1BZ1ELRF4070 SS+10d, DUKHCONP1BZ1ELRF4070 FF+10d | -8d |

| ID | WBS | Task | Duration | Start | Finish | Predecessors | Total float |
| --- | --- | --- | --- | --- | --- | --- | --- |
|  | 15 | **PLUMBING, DRAINAGE & FIRE FIGHTING WORKS** |  | 2013-08-05 | 2014-06-07 |  |  |
|  | 10 | **GROUND FLOOR** |  | 2013-08-05 | 2014-03-25 |  |  |
| DUKHCONP1BZ1PLUG4300 |  | Drainage / Storm Pipes in Grade Slab | 20d | 2013-08-05 | 2013-08-31 | DUKHCONP1BZ1STUG1040 SS+10d, DUKHCONP1BZ1STUG1040 FF+10d | -11d |
| DUKHCONP1BZ1PLGF4305 |  | Installation of Plumbing pipes & testing | 18d | 2013-11-25 | 2013-12-15 | DUKHCONP1BZ1ARGF3000 SS+7d, DUKHCONP1BZ1ARGF3000 FF+7d | 33d |
| DUKHCONP1BZ1PLGF4310 |  | Installation of Drainage pipes &testing | 18d | 2013-11-25 | 2013-12-15 | DUKHCONP1BZ1ARGF3000 SS+7d, DUKHCONP1BZ1ARGF3000 FF+7d, DUKHCONP1BZ1PLGF4305 FF, DUKHCONP1BZ1PLGF4305 SS | 33d |
| DUKHCONP1BZ1PLGF4315 |  | Sanitary Fittings & Accessories | 20d | 2014-02-25 | 2014-03-19 | DUKHCONP1BZ1PLGF4310 FF+5d, DUKHCONP1BZ1PLGF4310 SS+5d, DUKHCONP1BZ1ARGF3065 SS+5d, DUKHCONP1BZ1ARGF3065 FF+5d | 71d |
| DUKHCONP1BZ1PLGF4320 |  | Installation of Water Heater | 15d | 2014-03-09 | 2014-03-25 | DUKHCONP1BZ1ARGF3060 SS+5d, DUKHCONP1BZ1PLGF4315 SS+5d, DUKHCONP1BZ1PLGF4315 FF+5d, DUKHCONP1BZ1ARGF3060 FF+5d | 71d |
|  | 15 | **FIRST FLOORS** |  | 2014-01-08 | 2014-05-20 |  |  |
| DUKHCONP1BZ1PLFF4325 |  | Installation of Plumbing pipes & testing | 18d | 2014-01-08 | 2014-01-28 | DUKHCONP1BZ1ARFF3300 FF+8d, DUKHCONP1BZ1ARFF3300 SS+8d | -8d |
| DUKHCONP1BZ1PLFF4330 |  | Installation of Drainage pipes & testing | 18d | 2014-01-08 | 2014-01-28 | DUKHCONP1BZ1PLFF4325 FF, DUKHCONP1BZ1ARFF3300 SS+7d, DUKHCONP1BZ1PLFF4325 SS, DUKHCONP1BZ1ARFF3300 FF+7d | 19d |
| DUKHCONP1BZ1PLFF4335 |  | Sanitary Fittings & Accessories | 20d | 2014-04-22 | 2014-05-14 | DUKHCONP1BZ1PLFF4330 FF+5d, DUKHCONP1BZ1PLFF4330 SS+5d, DUKHCONP1BZ1ARFF3365 SS+5d, DUKHCONP1BZ1ARFF3365 FF+5d | 8d |
| DUKHCONP1BZ1PLFF4340 |  | Installation of Water Heater | 15d | 2014-05-04 | 2014-05-20 | DUKHCONP1BZ1ARFF3360 SS+5d, DUKHCONP1BZ1PLFF4335 FF+5d, DUKHCONP1BZ1ARFF3360 FF+5d, DUKHCONP1BZ1PLFF4335 SS+5d | 8d |
|  | 20 | **ROOF** |  | 2014-02-10 | 2014-06-07 |  |  |
| DUKHCONP1BZ1PLRF4345 |  | Installation of Plumbing pipes & fittings | 14d | 2014-02-10 | 2014-02-26 | DUKHCONP1BZ1ARRF3605 SS+8d, DUKHCONP1BZ1ARRF3605 FF+8d | 70d |
| DUKHCONP1BZ1PLRF4350 |  | Installation of Rain water Pipes | 15d | 2014-02-23 | 2014-03-11 | DUKHCONP1BZ1PLRF4345 SS+8d, DUKHCONP1BZ1PLRF4345 FF+8d, DUKHCONP1BZ1ARRF3645 SS+5d, DUKHCONP1BZ1AREL3665 SS+7d, DUKHCONP1BZ1PLFF4330 SS+5d, DUKHCONP1BZ1PLFF4330 FF+5d, DUKHCONP1BZ1AREL3665 FF+7d, DUKHCONP1BZ1ARRF3645 FF+5d | 68d |
| DUKHCONP1BZ1PLRF4355 |  | Roof Water Tank Installation & Connections | 25d | 2014-05-10 | 2014-06-07 | DUKHCONP1BZ1WEEX5065 FF, DUKHCONP1BZ1PLFF4340 FF+5d, DUKHCONP1BZ1PLRF4350 SS+5d, DUKHCONP1BZ1ARRF3655 FF+5d, DUKHCONP1BZ1PLRF4345 SS+8d, DUKHCONP1BZ1PLFF4340 SS+5d, DUKHCONP1BZ1PLRF4350 FF+5d, DUKHCONP1BZ1PLRF4345 FF+8d, DUKHCONP1BZ1ARRF3655 SS+5d | 8d |
|  | 20 | **AC WORKS** |  | 2013-12-15 | 2014-06-03 |  |  |
|  | 10 | **GROUND FLOOR** |  | 2013-12-15 | 2014-03-23 |  |  |
| DUKHCONP1BZ1ACGF4600 |  | Installation AC Pipes | 20d | 2013-12-15 | 2014-01-07 | DUKHCONP1BZ1ARGF3005 SS+7d, DUKHCONP1BZ1ARGF3005 FF+7d | 70d |
| DUKHCONP1BZ1ACGF4605 |  | Fixing of Ventilation Equipments | 25d | 2014-02-06 | 2014-03-08 | DUKHCONP1BZ1ARGF3060 FF+7d, DUKHCONP1BZ1ARGF3060 SS+7d, DUKHCONP1BZ1ACGF4600 SS+10d, DUKHCONP1BZ1ARGF3055 FF+7d, DUKHCONP1BZ1ACGF4600 FF+10d, DUKHCONP1BZ1ARGF3055 SS+7d | 58d |
| DUKHCONP1BZ1ACGF4610 |  | Fixing of Split AC | 20d | 2014-03-01 | 2014-03-23 | DUKHCONP1BZ1ACGF4605 SS+13d, DUKHCONP1BZ1ACGF4605 FF+13d | 58d |
|  | 15 | **FIRST FLOORS** |  | 2014-02-01 | 2014-05-22 |  |  |
| DUKHCONP1BZ1ACFF4615 |  | Installation AC Pipes | 20d | 2014-02-01 | 2014-02-24 | DUKHCONP1BZ1ARFF3305 SS+7d, DUKHCONP1BZ1ARFF3305 FF+7d | 35d |
| DUKHCONP1BZ1ACFF4620 |  | Fixing of Ventilation Equipments | 25d | 2014-04-09 | 2014-05-07 | DUKHCONP1BZ1ARFF3360 SS+7d, DUKHCONP1BZ1ACFF4615 FF+10d, DUKHCONP1BZ1ARFF3360 FF+7d, DUKHCONP1BZ1ACFF4615 SS+10d | 6d |
| DUKHCONP1BZ1ACFF4625 |  | Fixing of Split AC | 20d | 2014-04-30 | 2014-05-22 | DUKHCONP1BZ1ACFF4620 SS+13d, DUKHCONP1BZ1ACFF4620 FF+13d | 6d |
|  | 20 | **ROOF** |  | 2014-02-13 | 2014-06-03 |  |  |
| DUKHCONP1BZ1ACRF4630 |  | Installation of Refrigerant Pipes | 25d | 2014-02-13 | 2014-03-13 | DUKHCONP1BZ1ACGF4600 FF+7d, DUKHCONP1BZ1ACGF4600 SS+7d, DUKHCONP1BZ1ARRF3645 FF+7d, DUKHCONP1BZ1ACFF4615 SS+10d, DUKHCONP1BZ1ARRF3645 SS+7d, DUKHCONP1BZ1ACFF4615 FF+10d | 76d |
| DUKHCONP1BZ1ACRF4635 |  | Installation of Condensing Unit | 25d | 2014-05-06 | 2014-06-03 | DUKHCONP1BZ1ACRF4630 SS+5d, DUKHCONP1BZ1ACGF4610 SS+5d, DUKHCONP1BZ1ACFF4625 FF+5d, DUKHCONP1BZ1ACFF4625 SS+5d, DUKHCONP1BZ1ACGF4610 FF+5d, DUKHCONP1BZ1ACRF4630 FF+5d | 11d |
|  | 25 | **EXTERNAL WORKS** |  | 2013-12-23 | 2014-06-29 |  |  |
|  | 10 | **MISCELLANEOUS** |  | 2013-12-23 | 2014-06-29 |  |  |
| DUKHCONP1BZ1MSEX5020 |  | Construction Entrance Ramp | 25d | 2013-12-23 | 2014-01-20 | DUKHCONP1BZ1STRF2055 SS, DUKHCONP1BZ1STRF2055 FF | 58d |
| DUKHCONP1BZ1MSEX5000 |  | Construction of Manholes | 25d | 2014-01-04 | 2014-02-01 | DUKHCONP1BZ1PLGF4310 SS+10d, DUKHCONP1BZ1PLGF4310 FF+10d, DUKHCONP1BZ1STRF2055 FF+10d, DUKHCONP1BZ1STRF2055 SS+10d | 10d |
| DUKHCONP1BZ1MSEX5025 |  | SS.Handrails and Balustrades | 20d | 2014-01-12 | 2014-02-03 | DUKHCONP1BZ1MSEX5020 SS+12d, DUKHCONP1BZ1MSEX5020 FF+12d | 58d |
| DUKHCONP1BZ1MSEX5005 |  | Construction of Soak pit, Chambers | 25d | 2014-01-18 | 2014-02-16 | DUKHCONP1BZ1MSEX5000 SS+12d, DUKHCONP1BZ1MSEX5000 FF+12d | 19d |
| DUKHCONP1BZ1MSEX5015 |  | Construction of grease Trap | 20d | 2014-02-06 | 2014-03-02 | DUKHCONP1BZ1MSEX5005 FF+12d, DUKHCONP1BZ1MSEX5005 SS+12d | 19d |
| DUKHCONP1BZ1MSEX5010 |  | Telephone cable laying | 25d | 2014-03-03 | 2014-03-31 | DUKHCONP1BZ1MSEX5015 | 19d |
| DUKHCONP1BZ1MSEX5335 |  | Aluminum Roll-up Shutter with 2m Wall | 25d | 2014-06-01 | 2014-06-29 | DUKHCONI1BZ1BWGL5325 SS+7d | 14d |
|  | 15 | **WATER TANK ENCLOSURE** |  | 2014-01-06 | 2014-04-07 |  |  |
| DUKHCONP1BZ1WEEX5030 |  | Excavation | 20d | 2014-01-06 | 2014-01-28 | DUKHCONP1BZ1STRF2060 SS+10d, DUKHCONP1BZ1STRF2060 FF+5d | 40d |
| DUKHCONP1BZ1WEEX5035 |  | Construction of Raft | 25d | 2014-01-12 | 2014-02-09 | DUKHCONP1BZ1WEEX5030 SS+5d, DUKHCONP1BZ1WEEX5030 FF+10d | 60d |
| DUKHCONP1BZ1WEEX5040 |  | Block works & Plastering | 25d | 2014-01-21 | 2014-02-19 | DUKHCONP1BZ1WEEX5035 FF+8d, DUKHCONP1BZ1WEEX5035 SS+8d | 60d |
| DUKHCONP1BZ1WEEX5045 |  | Flooring & Painting | 25d | 2014-02-02 | 2014-03-03 | DUKHCONP1BZ1WEEX5040 SS+10d, DUKHCONP1BZ1WEEX5040 FF+10d | 60d |
| DUKHCONP1BZ1WEEX5050 |  | Installation of Steel Gate | 20d | 2014-02-20 | 2014-03-15 | DUKHCONP1BZ1WEEX5045 FF+10d, DUKHCONP1BZ1WEEX5045 SS+5d, DUKHCONP1BZ1MSEX5025 | 60d |
| DUKHCONP1BZ1WEEX5060 |  | Structural steel & SS Shed cover installation | 25d | 2014-02-26 | 2014-03-26 | DUKHCONP1BZ1WEEX5050 SS+5d, DUKHCONP1BZ1WEEX5050 FF+5d | 60d |
| DUKHCONP1BZ1WEEX5065 |  | Install. of Water Tank,Chiller,Pump & Meter | 25d | 2014-03-10 | 2014-04-07 | DUKHCONP1BZ1WEEX5060 FF+10d, DUKHCONP1BZ1PLRF4350 SS+5d, DUKHCONP1BZ1PLRF4350 FF+5d, DUKHCONP1BZ1MSEX5015 SS+10d, DUKHCONP1BZ1WEEX5060 SS+10d, DUKHCONP1BZ1MSEX5015 FF+10d | 60d |
|  | 20 | **HARD LANDSCAPING** |  | 2014-01-20 | 2014-03-11 |  |  |
| DUKHCONP1BZ1HDEX5090 |  | kerb works | 20d | 2014-01-20 | 2014-02-12 | DUKHCONP1BZ1MSEX5020 FF+7d, DUKHCONP1BZ1MSEX5020 SS+7d, DUKHCONP1BZ1MSEX5025 SS+7d | 58d |
| DUKHCONP1BZ1HDEX5095 |  | Cobble Stone Works | 20d | 2014-02-01 | 2014-02-24 | DUKHCONP1BZ1HDEX5090 SS+10d, DUKHCONP1BZ1HDEX5090 FF+10d | 58d |
| DUKHCONP1BZ1HDEX5100 |  | Interlock works | 20d | 2014-02-17 | 2014-03-11 | DUKHCONP1BZ1HDEX5095 FF+13d, DUKHCONP1BZ1HDEX5095 SS+13d | 58d |
|  | 25 | **SOFT LANDSCAPING** |  | 2014-03-01 | 2014-04-09 |  |  |
| DUKHCONP1BZ1SLEX5105 |  | Laying of Grass/ green area | 25d | 2014-03-01 | 2014-03-29 | DUKHCONP1BZ1HDEX5100 SS+10d, DUKHCONP1BZ1HDEX5100 FF+10d | 58d |
| DUKHCONP1BZ1SLEX5110 |  | Laying of Palm tree | 25d | 2014-03-12 | 2014-04-09 | DUKHCONP1BZ1SLEX5105 FF+10d, DUKHCONP1BZ1SLEX5105 SS+10d | 58d |
|  | 30 | **TESTING AND COMMISSIONING** |  | 2014-06-26 | 2014-07-24 |  |  |
| DUKHCONP1BZ1ACTC8000 |  | Pre-Commissioning & Testing of AC Works | 25d | 2014-06-26 | 2014-07-24 | DUKHCONP1BZ1ARRF3620, DUKHCONP1BZ1ACRF4635, DUKHCONP1BZ1SLEX5105, DUKHCONP1BZ1MSEX5005, DUKHCONP1BZ1HDEX5100, DUKHCONP1BZ1AREL3680, DUKHCONP1BZ1ARRF3660, DUKHCONP1BZ1ARFF3395, DUKHCONP1BZ1ARGF3095, DUKHCONP1BZ1ACFF4625, DUKHCONP1BZ1SLEX5110 | -8d |
| DUKHCONP1BZ1ELTC8010 |  | Pre-Commissioning & Testing of Electrical Works | 25d | 2014-06-26 | 2014-07-24 | DUKHCONP1BZ1HDEX5100, DUKHCONP1BZ1SLEX5105, DUKHCONP1BZ1AREL3680, DUKHCONP1BZ1ARRF3655, DUKHCONP1BZ1ARFF3395, DUKHCONP1BZ1ELFF4055, DUKHCONP1BZ1ARRF3620, DUKHCONP1BZ1ELFF4065, DUKHCONP1BZ1ELGF4030, DUKHCONP1BZ1ELRF4075, DUKHCONP1BZ1ELGF4015, DUKHCONP1BZ1ARGF3095, DUKHCONP1BZ1ARRF3660, DUKHCONP1BZ1ELGF4025, DUKHCONP1BZ1SLEX5110, DUKHCONP1BZ1ELFF4050, DUKHCONP1BZ1MSEX5005 | -8d |
| DUKHCONP1BZ1PLTC8005 |  | Pre-Commissioning & Testing of Plumbing Works | 25d | 2014-06-26 | 2014-07-24 | DUKHCONP1BZ1SLEX5105, DUKHCONP1BZ1AREL3680, DUKHCONP1BZ1ARRF3660, DUKHCONP1BZ1ARFF3395, DUKHCONP1BZ1ARGF3095, DUKHCONP1BZ1MSEX5005, DUKHCONP1BZ1SLEX5110, DUKHCONP1BZ1PLRF4350, DUKHCONP1BZ1ARRF3620, DUKHCONP1BZ1PLGF4320, DUKHCONP1BZ1WEEX5065, DUKHCONP1BZ1ARRF3655, DUKHCONP1BZ1PLRF4355, DUKHCONP1BZ1HDEX5100 | -8d |
|  | 15 | **ZONE - 2 (4 Twin Villas)** |  | 2013-05-26 | 2014-08-26 |  |  |
|  | 10 | **STRUCTURAL WORKS** |  | 2013-05-26 | 2014-03-05 |  |  |
|  | 10 | **SUB STRUCTURE** |  | 2013-05-26 | 2013-10-14 |  |  |
|  | 10 | **UPTO GRADE SLAB** |  | 2013-05-26 | 2013-10-14 |  |  |
| DUKHCONP1BZ2STUG1000 |  | Footing Excavation | 25d | 2013-05-26 | 2013-06-23 | DUKHCONP1BZ1STUG1000 | -11d |
| DUKHCONP1BZ2STUG1005 |  | Footing Antitermite | 23d | 2013-06-06 | 2013-07-02 | DUKHCONP1BZ2STUG1000 FF+5d, DUKHCONP1BZ2STUG1000 SS+10d | -11d |
| DUKHCONP1BZ2STUG1010 |  | Footing Blinding | 23d | 2013-06-10 | 2013-07-06 | DUKHCONP1BZ2STUG1005 SS+3d, DUKHCONP1BZ2STUG1005 FF+3d | -11d |
| DUKHCONP1BZ2STUG1015 |  | Footing Waterproofing & Screed | 25d | 2013-06-16 | 2013-07-14 | DUKHCONP1BZ2STUG1010 FF+5d, DUKHCONP1BZ2STUG1010 SS+5d | -11d |
| DUKHCONP1BZ2STUG1020 |  | Construction of foundations | 20d | 2013-07-01 | 2013-07-23 | DUKHCONP1BZ2STUG1015 FF+8d, DUKHCONP1BZ2STUG1015 SS+7d | -11d |
| DUKHCONP1BZ2STUG1025 |  | Construction of neck of columns | 25d | 2013-07-10 | 2013-08-07 | DUKHCONP1BZ2STUG1020 SS+8d, DUKHCONP1BZ1STUG1025, DUKHCONP1BZ2STUG1020 FF+7d | -11d |
| DUKHCONP1BZ2STUG1030 |  | Waterproofing Footing & Neck Column | 25d | 2013-07-20 | 2013-08-20 | DUKHCONP1BZ2STUG1025 FF+8d, DUKHCONP1BZ2STUG1025 SS+8d | -11d |
| DUKHCONP1BZ2STUG1035 |  | Backfilling Upto Grade Beam Bottom | 25d | 2013-07-31 | 2013-09-01 | DUKHCONP1BZ2STUG1030 SS+10d, DUKHCONP1BZ2STUG1030 FF+10d, DUKHCONP1BZ1STUG1035 | -11d |
| DUKHCONP1BZ2STUG1040 |  | Construction of Grade Beams | 25d | 2013-08-20 | 2013-09-17 | DUKHCONP1BZ2STUG1035 FF+14d, DUKHCONP1BZ2STUG1035 SS+14d | -11d |
| DUKHCONP1BZ2STUG1045 |  | Construction of slab on grade | 25d | 2013-09-16 | 2013-10-14 | DUKHCONP1BZ2STUG1040 SS+10d, DUKHCONP1BZ2STUG1040 FF+10d, DUKHCONP1BZ2PLUG4300 SS+8d, DUKHCONP1BZ1STUG1045, DUKHCONP1BZ2PLUG4300 FF+8d | -11d |

| ID | WBS | Task | Duration | Start | Finish | Predecessors | Total float |
| --- | --- | --- | --- | --- | --- | --- | --- |
|  | 15 | **SUPERSTRUCTURE** |  | 2013-10-02 | 2014-03-05 |  |  |
|  | 10 | **GROUND FLOOR** |  | 2013-10-02 | 2013-11-28 |  |  |
| DUKHCONP1BZ2STGF2000 |  | Column-Rebar & Formwork | 25d | 2013-10-02 | 2013-11-02 | DUKHCONP1BZ2STUG1045 SS+14d, DUKHCONP1BZ1STGF2000, DUKHCONP1BZ2STUG1045 FF+7d | -11d |
| DUKHCONP1BZ2STGF2005 |  | Column-Concrete | 23d | 2013-10-12 | 2013-11-09 | DUKHCONP1BZ2STGF2000 SS+8d, DUKHCONP1BZ2STGF2000 FF+2d | -11d |
| DUKHCONP1BZ2STGF2010 |  | Beam, Stairs ,Slab-Rebar & Formwork | 25d | 2013-10-28 | 2013-11-25 | DUKHCONP1BZ2STGF2005 FF+14d, DUKHCONP1BZ2STGF2005 SS+2d | -11d |
| DUKHCONP1BZ2STGF2015 |  | Beam, Stairs ,Slab-Concrete | 14d | 2013-11-13 | 2013-11-28 | DUKHCONP1BZ2STGF2010 FF+3d, DUKHCONP1BZ2STGF2010 SS+10d, DUKHCONP1BZ1STGF2015 | -11d |
|  | 15 | **FIRST FLOORS** |  | 2013-11-16 | 2013-12-31 |  |  |
| DUKHCONP1BZ2STFF2020 |  | Column-Rebar & Formwork | 25d | 2013-11-16 | 2013-12-14 | DUKHCONP1BZ1STFF2020, DUKHCONP1BZ2STGF2015 FF+5d, DUKHCONP1BZ2STGF2015 SS+2d | -11d |
| DUKHCONP1BZ2STFF2025 |  | Column-Concrete | 23d | 2013-11-25 | 2013-12-22 | DUKHCONP1BZ2STFF2020 SS+8d, DUKHCONP1BZ2STFF2020 FF+2d | -11d |
| DUKHCONP1BZ2STFF2030 |  | Beam, Stairs ,Slab-Rebar & Formwork | 25d | 2013-11-28 | 2013-12-28 | DUKHCONP1BZ2STFF2025 FF+5d, DUKHCONP1BZ2STFF2025 SS+2d | 1d |
| DUKHCONP1BZ2STFF2035 |  | Beam, Stairs ,Slab-Concrete | 14d | 2013-12-15 | 2013-12-31 | DUKHCONP1BZ2STFF2030 SS+10d, DUKHCONP1BZ2STFF2030 FF+3d, DUKHCONP1BZ1STFF2035 | 1d |
|  | 20 | **ROOF** |  | 2013-12-24 | 2014-03-05 |  |  |
| DUKHCONP1BZ2STRF2040 |  | Column-Rebar & Formwork | 18d | 2013-12-24 | 2014-01-13 | DUKHCONP1BZ2STFF2035 SS+5d, DUKHCONP1BZ1STRF2040, DUKHCONP1BZ2STFF2035 FF+3d | 26d |
| DUKHCONP1BZ2STRF2045 |  | Column-Concrete | 17d | 2013-12-28 | 2014-01-15 | DUKHCONP1BZ2STRF2040 SS+3d, DUKHCONP1BZ2STRF2040 FF+1d | 26d |
| DUKHCONP1BZ2STRF2050 |  | Slab-Rebar & Formwork - Head Room | 20d | 2013-12-30 | 2014-01-21 | DUKHCONP1BZ2STRF2045 SS+2d, DUKHCONP1BZ2STRF2045 FF+5d | 26d |
| DUKHCONP1BZ2STRF2055 |  | Slab-Concrete-Head room | 13d | 2014-01-13 | 2014-01-27 | DUKHCONP1BZ1STRF2055, DUKHCONP1BZ2STRF2050 SS+5d, DUKHCONP1BZ2STRF2050 FF+5d | 26d |
| DUKHCONP1BZ2STRF2060 |  | Construction of Parapets | 25d | 2014-01-15 | 2014-02-13 | DUKHCONP1BZ2STRF2055 FF+10d, DUKHCONP1BZ2STRF2055 SS+2d | 50d |
| DUKHCONP1BZ2STRF2065 |  | Construction of up stands/Plinth | 25d | 2014-02-04 | 2014-03-05 | DUKHCONP1BZ1STRF2065, DUKHCONP1BZ2STRF2060 FF+10d, DUKHCONP1BZ2STRF2060 SS+10d | 67d |
|  | 15 | **FINISHING WORKS** |  | 2013-12-08 | 2014-07-24 |  |  |
|  | 10 | **INTERNAL FINISHES** |  | 2013-12-08 | 2014-07-24 |  |  |
|  | 10 | **GROUND FLOOR** |  | 2013-12-08 | 2014-05-21 |  |  |
| DUKHCONP1BZ2ARGF3000 |  | Block work | 25d | 2013-12-08 | 2014-01-06 | DUKHCONP1BZ2STGF2015 SS+21d, DUKHCONP1BZ1ARGF3000, DUKHCONP1BZ2STGF2015 FF+21d | 39d |
| DUKHCONP1BZ2ARGF3005 |  | Plastering work | 25d | 2013-12-31 | 2014-01-28 | DUKHCONP1BZ2PLGF4305 SS+5d, DUKHCONP1BZ2ARGF3000 SS+7d, DUKHCONP1BZ2PLGF4305 FF+5d, DUKHCONP1BZ2ELGF4000 SS+5d, DUKHCONP1BZ2ELGF4000 FF+5d, DUKHCONP1BZ1ARGF3005, DUKHCONP1BZ2ARGF3000 FF+7d | 39d |
| DUKHCONP1BZ2ARGF3010 |  | Flooring screed | 21d | 2014-01-08 | 2014-02-01 | DUKHCONP1BZ2ARGF3005 SS+7d, DUKHCONP1BZ2ARGF3005 FF+3d | 47d |
| DUKHCONP1BZ2ARGF3030 |  | Paint First coat | 25d | 2014-01-16 | 2014-02-15 | DUKHCONP1BZ2ARGF3005 SS+14d, DUKHCONP1BZ1ARGF3030, DUKHCONP1BZ2ARGF3005 FF+14d | 53d |
| DUKHCONP1BZ2ARGF3015 |  | Wet area waterproofing & Protection Screed | 15d | 2014-01-18 | 2014-02-03 | DUKHCONP1BZ2ARGF3005 FF+5d, DUKHCONP1BZ2ARGF3005 SS+7d, DUKHCONP1BZ1ARGF3015 | 39d |
| DUKHCONP1BZ2ARGF3020 |  | Ceramic Wall Tiling | 25d | 2014-01-23 | 2014-02-22 | DUKHCONP1BZ2PLGF4310 FF+4d, DUKHCONP1BZ2ARGF3015 FF+5d, DUKHCONP1BZ2PLGF4305 SS+4d, DUKHCONP1BZ1ARGF3020, DUKHCONP1BZ2PLGF4305 FF+4d, DUKHCONP1BZ2PLGF4310 SS+4d, DUKHCONP1BZ2ARGF3015 SS+5d | 39d |
| DUKHCONP1BZ2ARGF3025 |  | Porcelain Tile flooring | 25d | 2014-01-29 | 2014-02-27 | DUKHCONP1BZ2ARGF3010 FF+10d, DUKHCONP1BZ2ARGF3020 FF+5d, DUKHCONP1BZ2ARGF3010 SS+10d, DUKHCONP1BZ1ARGF3025, DUKHCONP1BZ2ARGF3020 SS+5d | 39d |
| DUKHCONP1BZ2ARGF3045 |  | Fixing of Suspension systems | 20d | 2014-02-17 | 2014-03-11 | DUKHCONP1BZ2ARGF3025 FF+10d, DUKHCONP1BZ2ELGF4010 SS+5d, DUKHCONP1BZ2ARGF3030 SS+7d, DUKHCONP1BZ2ELGF4010 FF+5d, DUKHCONP1BZ1ARGF3045, DUKHCONP1BZ2ARGF3030 FF+7d, DUKHCONP1BZ2ARGF3025 SS+10d | 39d |
| DUKHCONP1BZ2ARGF3035 |  | Slate Tile Flooring & Skirting | 15d | 2014-02-19 | 2014-03-08 | DUKHCONP1BZ2ARGF3010 FF+13d, DUKHCONP1BZ2ARGF3025 SS+13d, DUKHCONP1BZ2ARGF3010 SS+13d, DUKHCONP1BZ2ARGF3025 FF+7d | 49d |
| DUKHCONP1BZ2ARGF3055 |  | Aluminum tile false ceiling | 25d | 2014-02-25 | 2014-03-25 | DUKHCONP1BZ2ACGF4600 FF+7d, DUKHCONP1BZ2ARGF3045 SS+7d, DUKHCONP1BZ2ARGF3045 FF+7d, DUKHCONP1BZ2ACGF4600 SS+7d | 42d |
| DUKHCONP1BZ2ARGF3040 |  | Cobble Tile flooring | 15d | 2014-02-26 | 2014-03-15 | DUKHCONP1BZ2ARGF3010 FF+13d, DUKHCONP1BZ2ARGF3025 FF+13d, DUKHCONP1BZ2ARGF3010 SS+13d, DUKHCONP1BZ2ARGF3025 SS+13d, DUKHCONP1BZ2ARGF3035 FF+4d, DUKHCONP1BZ2ARGF3035 SS+4d | 47d |
| DUKHCONP1BZ2ARGF3060 |  | Gypsum board false ceiling | 25d | 2014-03-01 | 2014-03-29 | DUKHCONP1BZ2ACGF4600 FF+7d, DUKHCONP1BZ1ARGF3060, DUKHCONP1BZ2ACGF4600 SS+7d, DUKHCONP1BZ2ARGF3045 SS+10d, DUKHCONP1BZ2ARGF3045 FF+10d | 39d |
| DUKHCONP1BZ2ARGF3050 |  | Granite - Stair case flooring & Skirting | 20d | 2014-03-06 | 2014-03-29 | DUKHCONP1BZ2ARGF3040 FF+7d, DUKHCONP1BZ2ARGF3025 SS+13d, DUKHCONP1BZ2ARGF3040 SS+7d, DUKHCONP1BZ2ARGF3025 FF+13d | 47d |
| DUKHCONP1BZ2ARGF3065 |  | Wooden door & PVC Door | 15d | 2014-03-20 | 2014-04-06 | DUKHCONP1BZ2ARGF3050 FF+7d, DUKHCONP1BZ2ARGF3035 SS+7d, DUKHCONP1BZ2ARGF3050 SS+7d, DUKHCONP1BZ2ARGF3035 FF+7d, DUKHCONP1BZ1ARGF3065 | 47d |
| DUKHCONP1BZ2ARGF3070 |  | Aluminum doors | 15d | 2014-03-26 | 2014-04-12 | DUKHCONP1BZ2ARGF3065 SS+5d, DUKHCONP1BZ1ARGF3070, DUKHCONP1BZ2ARGF3065 FF+5d | 47d |
| DUKHCONP1BZ2ARGF3075 |  | Carpentry & Joinery Works | 20d | 2014-04-01 | 2014-04-23 | DUKHCONP1BZ1ARGF3075, DUKHCONP1BZ2ARGF3070 SS+5d, DUKHCONP1BZ2ARGF3070 FF+7d | 47d |
| DUKHCONP1BZ2ARGF3080 |  | Aluminum windows | 20d | 2014-04-02 | 2014-04-24 | DUKHCONP1BZ1ARGF3080, DUKHCONP1BZ2ARGF3070 FF+6d, DUKHCONP1BZ2ARGF3070 SS+6d | 57d |
| DUKHCONP1BZ2ARGF3085 |  | S.S.Balustrade | 20d | 2014-04-09 | 2014-05-01 | DUKHCONP1BZ2ARGF3050 FF+7d, DUKHCONP1BZ2ARGF3075 FF+7d, DUKHCONP1BZ2ARGF3075 SS+7d, DUKHCONP1BZ2ARGF3050 SS+7d | 52d |
| DUKHCONP1BZ2ARGF3090 |  | Installation of Granite Counter Top | 15d | 2014-04-14 | 2014-04-30 | DUKHCONP1BZ2ARGF3075 SS+7d, DUKHCONP1BZ2ARGF3075 FF+6d | 47d |
| DUKHCONP1BZ2ARGF3095 |  | Final Painting | 25d | 2014-04-23 | 2014-05-21 | DUKHCONP1BZ2ARGF3030 FF+10d, DUKHCONP1BZ2ARGF3070 FF+5d, DUKHCONP1BZ2ARGF3070 SS+5d, DUKHCONP1BZ2ARGF3060 FF+8d, DUKHCONP1BZ2ARGF3085 FF+7d, DUKHCONP1BZ2ARGF3040 FF+13d, DUKHCONP1BZ2ARGF3080 SS+8d, DUKHCONP1BZ2ARGF3080 FF+8d, DUKHCONP1BZ2ACGF4610 FF+10d, DUKHCONP1BZ2ARGF3060 SS+8d, DUKHCONP1BZ1ARGF3095, DUKHCONP1BZ2ARGF3035 FF+13d, DUKHCONP1BZ2ARGF3085 SS+7d, DUKHCONP1BZ2ARGF3030 SS+10d, DUKHCONP1BZ2ACGF4610 SS+10d, DUKHCONP1BZ2ARGF3040 SS+13d, DUKHCONP1BZ2ARGF3035 SS+13d, DUKHCONP1BZ2ARGF3090 SS+8d, DUKHCONP1BZ2ARGF3090 FF+8d | 47d |
|  | 15 | **FIRST FLOORS** |  | 2014-01-20 | 2014-07-24 |  |  |
| DUKHCONP1BZ2ARFF3300 |  | Block work | 25d | 2014-01-20 | 2014-02-18 | DUKHCONP1BZ2STFF2035 FF+21d, DUKHCONP1BZ2STFF2020 SS+21d, DUKHCONP1BZ2STFF2035 SS+21d, DUKHCONP1BZ2STFF2020 FF+21d, DUKHCONP1BZ1ARFF3300 | -8d |
| DUKHCONP1BZ2ARFF3305 |  | Plastering work | 25d | 2014-02-17 | 2014-03-17 | DUKHCONP1BZ2ELFF4035 FF+5d, DUKHCONP1BZ2PLFF4325 SS+8d, DUKHCONP1BZ2PLFF4325 FF+8d, DUKHCONP1BZ2ELFF4035 SS+5d, DUKHCONP1BZ1ARFF3305, DUKHCONP1BZ2ARFF3300 FF+7d, DUKHCONP1BZ2ARFF3300 SS+7d | -8d |
| DUKHCONP1BZ2ARFF3310 |  | Flooring screed | 21d | 2014-02-25 | 2014-03-20 | DUKHCONP1BZ2ARFF3305 SS+7d, DUKHCONP1BZ2ARFF3305 FF+3d | 9d |
| DUKHCONP1BZ2ARFF3330 |  | Paint First coat | 25d | 2014-03-05 | 2014-04-02 | DUKHCONP1BZ2ARFF3305 SS+14d, DUKHCONP1BZ2ARFF3305 FF+14d | 18d |
| DUKHCONP1BZ2ARFF3315 |  | Wet area waterproofing | 15d | 2014-03-10 | 2014-03-26 | DUKHCONP1BZ2ARFF3305 SS+7d, DUKHCONP1BZ2ARFF3305 FF+8d, DUKHCONP1BZ1ARFF3315 | -8d |
| DUKHCONP1BZ2ARFF3320 |  | Ceramic Wall Tiling | 25d | 2014-03-19 | 2014-04-16 | DUKHCONP1BZ2ARFF3315 FF+7d, DUKHCONP1BZ2PLFF4325 FF+4d, DUKHCONP1BZ2PLFF4330 FF+7d, DUKHCONP1BZ2PLFF4330 SS+7d, DUKHCONP1BZ1ARFF3320, DUKHCONP1BZ2ARFF3315 SS+8d, DUKHCONP1BZ2PLFF4325 SS+4d | -8d |
| DUKHCONP1BZ2ARFF3325 |  | Porcelain Tile flooring | 25d | 2014-03-29 | 2014-04-26 | DUKHCONP1BZ2ARFF3320 FF+8d, DUKHCONP1BZ2ARFF3320 SS+8d, DUKHCONP1BZ2ARFF3310 SS+10d, DUKHCONP1BZ2ARFF3310 FF+10d, DUKHCONP1BZ1ARFF3325 | -8d |
| DUKHCONP1BZ2ARFF3335 |  | Slate Tile Flooring & Skirting | 15d | 2014-04-15 | 2014-05-01 | DUKHCONP1BZ2ARFF3310 FF+13d, DUKHCONP1BZ2ARFF3310 SS+13d, DUKHCONP1BZ2ARFF3325 FF+5d, DUKHCONP1BZ2ARFF3325 SS+13d | 11d |
| DUKHCONP1BZ2ARFF3345 |  | Fixing of Suspension systems | 20d | 2014-04-19 | 2014-05-11 | DUKHCONP1BZ2ARFF3330 SS+7d, DUKHCONP1BZ2ELFF4045 FF+5d, DUKHCONP1BZ2ELFF4045 SS+5d, DUKHCONP1BZ1ARFF3345, DUKHCONP1BZ2ARFF3330 FF+7d, DUKHCONP1BZ2ARFF3325 FF+13d, DUKHCONP1BZ2ARFF3325 SS+13d | -8d |
| DUKHCONP1BZ2ARFF3350 |  | Granite - Stair case flooring & Skirting | 20d | 2014-04-19 | 2014-05-11 | DUKHCONP1BZ2ARFF3325 SS+13d, DUKHCONP1BZ2ARFF3325 FF+13d | 3d |
| DUKHCONP1BZ2ARFF3360 |  | Gypsum board false ceiling | 25d | 2014-04-30 | 2014-05-28 | DUKHCONP1BZ2ACFF4615 FF+7d, DUKHCONP1BZ2ARFF3345 SS+10d, DUKHCONP1BZ2ACFF4615 SS+7d, DUKHCONP1BZ2ARFF3345 FF+10d, DUKHCONP1BZ1ARFF3360 | -8d |
| DUKHCONP1BZ2ARFF3365 |  | Wooden door | 15d | 2014-05-15 | 2014-06-01 | DUKHCONP1BZ2ARFF3350 SS+7d, DUKHCONP1BZ1ARFF3365, DUKHCONP1BZ2ARFF3335 SS+7d, DUKHCONP1BZ2ARFF3350 FF+7d, DUKHCONP1BZ2ARFF3360 FF+3d, DUKHCONP1BZ2ARFF3360 SS+3d, DUKHCONP1BZ2ARFF3335 FF+7d | -8d |
| DUKHCONP1BZ2ARFF3370 |  | Aluminum Door | 20d | 2014-05-24 | 2014-06-15 | DUKHCONP1BZ2ARFF3365 FF+5d, DUKHCONP1BZ1ARFF3370, DUKHCONP1BZ2ARFF3365 SS+7d | -8d |
| DUKHCONP1BZ2ARFF3380 |  | Aluminum windows | 20d | 2014-05-31 | 2014-06-22 | DUKHCONP1BZ2ARFF3370 SS+6d, DUKHCONP1BZ2ARFF3370 FF+6d | 5d |
| DUKHCONP1BZ2ARFF3375 |  | Carpentry & Joinery Works | 25d | 2014-06-01 | 2014-06-29 | DUKHCONP1BZ2ARFF3370 FF+5d, DUKHCONP1BZ2ARFF3370 SS+7d, DUKHCONP1BZ1ARFF3375 | -8d |
| DUKHCONP1BZ2ARFF3385 |  | Handrail & Balustrade | 20d | 2014-06-15 | 2014-07-07 | DUKHCONP1BZ2ARFF3375 FF+7d, DUKHCONP1BZ2ARFF3375 SS+7d, DUKHCONP1BZ2ARFF3350 SS+7d, DUKHCONP1BZ2ARFF3350 FF+7d | -8d |
| DUKHCONP1BZ2ARFF3390 |  | Installation of Granite Counter Top | 20d | 2014-06-15 | 2014-07-07 | DUKHCONP1BZ2ARFF3375 SS+7d, DUKHCONP1BZ2ARFF3375 FF+7d | -6d |
| DUKHCONP1BZ2ARFF3395 |  | Final Painting | 25d | 2014-06-26 | 2014-07-24 | DUKHCONP1BZ2ARFF3335 FF+8d, DUKHCONP1BZ2ARFF3350 FF+8d, DUKHCONP1BZ2ARFF3385 SS+10d, DUKHCONP1BZ2ACFF4625 FF+10d, DUKHCONP1BZ2ARFF3350 SS+8d, DUKHCONP1BZ2ARFF3375 FF+8d, DUKHCONP1BZ2ARFF3385 FF+10d, DUKHCONP1BZ2ARFF3360 SS+10d, DUKHCONP1BZ2ARFF3365 FF+8d, DUKHCONP1BZ2ARFF3380 SS+10d, DUKHCONP1BZ2ACFF4625 SS+10d, DUKHCONP1BZ2ARFF3335 SS+8d, DUKHCONP1BZ2ARFF3365 SS+8d, DUKHCONP1BZ1ARFF3395, DUKHCONP1BZ2ARFF3330 FF+10d, DUKHCONP1BZ2ARFF3330 SS+10d, DUKHCONP1BZ2ARFF3390 SS+8d, DUKHCONP1BZ2ARFF3360 FF+10d, DUKHCONP1BZ2ARFF3380 FF+10d, DUKHCONP1BZ2ARFF3375 SS+8d, DUKHCONP1BZ2ARFF3390 FF+8d | -8d |
|  | 20 | **ROOF** |  | 2014-02-09 | 2014-04-24 |  |  |
| DUKHCONP1BZ2ARRF3600 |  | Block work | 20d | 2014-02-09 | 2014-03-04 | DUKHCONP1BZ2STRF2055 SS+21d, DUKHCONP1BZ1ARRF3600, DUKHCONP1BZ2STRF2055 FF+21d | 69d |
| DUKHCONP1BZ2ARRF3605 |  | Plastering work | 20d | 2014-02-18 | 2014-03-12 | DUKHCONP1BZ2ARRF3600 FF+7d, DUKHCONP1BZ2ARRF3600 SS+7d | 69d |
| DUKHCONP1BZ2ARRF3610 |  | Flooring screed | 15d | 2014-03-09 | 2014-03-25 | DUKHCONP1BZ2ARRF3605 SS+11d, DUKHCONP1BZ2ARRF3605 FF+11d | 70d |
| DUKHCONP1BZ2ARRF3695 |  | Painting -Storage area | 20d | 2014-03-22 | 2014-04-13 | DUKHCONP1BZ2ARRF3610 SS+11d, DUKHCONP1BZ2ARRF3610 FF+11d | 70d |
| DUKHCONP1BZ2ARRF3620 |  | Epoxy Painting -Storage area | 15d | 2014-04-08 | 2014-04-24 | DUKHCONP1BZ2ARRF3695 SS+10d, DUKHCONP1BZ2ARRF3695 FF+10d | 70d |
|  | 15 | **EXTERNAL FINISHES** |  | 2014-02-17 | 2014-04-30 |  |  |
|  | 10 | **ROOF** |  | 2014-02-17 | 2014-04-24 |  |  |
| DUKHCONP1BZ2ARRF3630 |  | Leveling Screed for Waterproofing | 25d | 2014-02-17 | 2014-03-17 | DUKHCONP1BZ2STRF2065 FF+10d, DUKHCONP1BZ2STRF2060 FF+10d, DUKHCONP1BZ1ARRF3630, DUKHCONP1BZ2STRF2060 SS+10d, DUKHCONP1BZ2STRF2065 SS+10d | 67d |
| DUKHCONP1BZ2ARRF3635 |  | Laying of Waterproofing Membrane | 25d | 2014-02-20 | 2014-03-20 | DUKHCONP1BZ2ARRF3630 SS+3d, DUKHCONP1BZ2ARRF3630 FF+3d | 67d |

| ID | WBS | Task | Duration | Start | Finish | Predecessors | Total float |
| --- | --- | --- | --- | --- | --- | --- | --- |
| DUKHCONP1BZ2ARRF3640 |  | Installation of Insulation & Protection | 25d | 2014-02-25 | 2014-03-25 | DUKHCONP1BZ2ARRF3635 FF+4d, DUKHCONP1BZ2ARRF3635 SS+4d | 67d |
| DUKHCONP1BZ2ARRF3645 |  | Lime Stone Chips & Paving slab Installation | 25d | 2014-03-02 | 2014-03-30 | DUKHCONP1BZ2ARRF3640 FF+4d, DUKHCONP1BZ2ARRF3640 SS+4d | 67d |
| DUKHCONP1BZ2ARRF3650 |  | Install. of Gal. Frame & Aluminum Slat Screen | 25d | 2014-03-10 | 2014-04-07 | DUKHCONP1BZ2ARRF3645 SS+7d, DUKHCONP1BZ2ARRF3645 FF+7d | 67d |
| DUKHCONP1BZ2ARRF3655 |  | Installation of Pumps Protection cabinets | 20d | 2014-03-25 | 2014-04-16 | DUKHCONP1BZ2ARRF3645 FF+7d, DUKHCONP1BZ2ARRF3650 SS+8d, DUKHCONP1BZ2ARRF3645 SS+7d, DUKHCONP1BZ1ARRF3655, DUKHCONP1BZ2ARRF3650 FF+8d | 67d |
| DUKHCONP1BZ2ARRF3660 |  | Installation of Access Ladder | 15d | 2014-04-08 | 2014-04-24 | DUKHCONP1BZ2ARRF3655 FF+7d, DUKHCONP1BZ2ARRF3655 SS+7d | 70d |
|  | 15 | **ELEVATION** |  | 2014-03-04 | 2014-04-30 |  |  |
| DUKHCONP1BZ2AREL3665 |  | External Plastering | 25d | 2014-03-04 | 2014-04-01 | DUKHCONP1BZ2STRF2065 SS+7d, DUKHCONP1BZ2STRF2065 FF+7d, DUKHCONP1BZ2ARRF3605 SS+7d, DUKHCONP1BZ1AREL3665, DUKHCONP1BZ2ARFF3305 FF+7d, DUKHCONP1BZ2ARFF3305 SS+7d | 64d |
| DUKHCONP1BZ2AREL3670 |  | External stone cladding works | 20d | 2014-03-22 | 2014-04-13 | DUKHCONP1BZ2AREL3665 SS+10d, DUKHCONP1BZ2AREL3665 FF+10d, DUKHCONP1BZ1AREL3670 | 65d |
| DUKHCONP1BZ2AREL3675 |  | GRC works | 20d | 2014-03-27 | 2014-04-19 | DUKHCONP1BZ2AREL3665 SS+10d, DUKHCONP1BZ2AREL3670 SS+5d, DUKHCONP1BZ1AREL3675, DUKHCONP1BZ2AREL3665 FF+10d | 65d |
| DUKHCONP1BZ2AREL3680 |  | External Painting | 20d | 2014-04-08 | 2014-04-30 | DUKHCONP1BZ2AREL3670 SS+10d, DUKHCONP1BZ2ARRF3695 FF+4d, DUKHCONP1BZ2ARRF3695 SS+4d, DUKHCONP1BZ2AREL3675 FF+10d, DUKHCONP1BZ2AREL3670 FF+10d, DUKHCONP1BZ2AREL3675 SS+10d, DUKHCONP1BZ1AREL3680 | 65d |
|  | 20 | **MEP WORKS** |  | 2013-09-07 | 2014-07-24 |  |  |
|  | 10 | **ELECTRICAL WORKS** |  | 2013-12-14 | 2014-07-24 |  |  |
|  | 10 | **GROUND FLOOR** |  | 2013-12-14 | 2014-04-23 |  |  |
| DUKHCONP1BZ2ELGF4000 |  | Fixing of wall conduits & switch socket boxes | 25d | 2013-12-14 | 2014-01-12 | DUKHCONP1BZ2ARGF3000 FF+5d, DUKHCONP1BZ2ARGF3000 SS+5d | 48d |
| DUKHCONP1BZ2ELGF4005 |  | Cable tray & trunking installation | 20d | 2013-12-26 | 2014-01-18 | DUKHCONP1BZ1ELGF4005, DUKHCONP1BZ2ELGF4000 SS+5d, DUKHCONP1BZ2ELGF4000 FF+5d | 66d |
| DUKHCONP1BZ2ELGF4010 |  | Installation of wiring & Main Cabling | 25d | 2014-01-04 | 2014-02-01 | DUKHCONP1BZ2ELGF4005 FF+7d, DUKHCONP1BZ2ELGF4005 SS+7d | 66d |
| DUKHCONP1BZ2ELGF4015 |  | Install. of CAMS & Fire Fighting Accessories | 25d | 2014-03-09 | 2014-04-06 | DUKHCONP1BZ2ARGF3060 SS+7d, DUKHCONP1BZ2ARGF3060 FF+7d, DUKHCONP1BZ2ARGF3055 SS+7d, DUKHCONP1BZ1ELGF4015, DUKHCONP1BZ2ARGF3055 FF+7d | 61d |
| DUKHCONP1BZ2ELGF4020 |  | Installation of DBS,MCCB Accessories. | 20d | 2014-03-15 | 2014-04-06 | DUKHCONP1BZ2ARGF3055 FF+7d, DUKHCONP1BZ2ARGF3060 SS+7d, DUKHCONP1BZ2ELGF4010 SS+5d, DUKHCONP1BZ2ARGF3060 FF+7d, DUKHCONP1BZ2ARGF3055 SS+7d, DUKHCONP1BZ2ELGF4010 FF+5d | 39d |
| DUKHCONP1BZ2ELGF4025 |  | Installation of Lighting fixtures & Accessories | 25d | 2014-03-26 | 2014-04-23 | DUKHCONP1BZ1ELGF4025, DUKHCONP1BZ2ARGF3055 SS+10d, DUKHCONP1BZ2ELGF4020 FF+10d, DUKHCONP1BZ2ELGF4020 SS+10d, DUKHCONP1BZ2ARGF3055 FF+10d, DUKHCONP1BZ2ARGF3060 SS+10d, DUKHCONP1BZ2ARGF3060 FF+10d | 41d |
| DUKHCONP1BZ2ELGF4030 |  | Installation of Telephone System | 20d | 2014-03-26 | 2014-04-17 | DUKHCONP1BZ2ARGF3060 SS+5d, DUKHCONP1BZ2ARGF3060 FF+5d, DUKHCONP1BZ2ELGF4020 SS+10d, DUKHCONP1BZ1ELGF4030, DUKHCONP1BZ2ELGF4020 FF+10d | 39d |
|  | 15 | **FIRST FLOORS** |  | 2014-01-26 | 2014-06-25 |  |  |
| DUKHCONP1BZ2ELFF4035 |  | Fixing of wall conduits & switch socket boxes | 25d | 2014-01-26 | 2014-02-24 | DUKHCONP1BZ2ARFF3300 SS+5d, DUKHCONP1BZ2ARFF3300 FF+5d | 5d |
| DUKHCONP1BZ2ELFF4040 |  | Cable tray & trunking installation | 20d | 2014-02-06 | 2014-03-02 | DUKHCONP1BZ2ELFF4035 SS+5d, DUKHCONP1BZ2ELFF4035 FF+5d | 35d |
| DUKHCONP1BZ2ELFF4045 |  | Installation of wiring & Main Cabling | 25d | 2014-02-16 | 2014-03-16 | DUKHCONP1BZ2ELFF4040 FF+7d, DUKHCONP1BZ1ELFF4045, DUKHCONP1BZ2ELFF4040 SS+7d | 35d |
| DUKHCONP1BZ2ELFF4050 |  | Installation of Telephone System | 25d | 2014-05-06 | 2014-06-03 | DUKHCONP1BZ2ELGF4030 FF+10d, DUKHCONP1BZ2ELGF4030 SS+10d, DUKHCONP1BZ2ARFF3360 SS+5d, DUKHCONP1BZ2ARFF3360 FF+5d, DUKHCONP1BZ2MSEX5010 | 14d |
| DUKHCONP1BZ2ELFF4055 |  | Install. of CAMS & Fire Fighting Accessories | 25d | 2014-05-08 | 2014-06-05 | DUKHCONP1BZ2ARFF3360 SS+7d, DUKHCONP1BZ2ELGF4015 FF+5d, DUKHCONP1BZ2ARFF3360 FF+7d, DUKHCONP1BZ1ELFF4055, DUKHCONP1BZ2ELGF4015 SS+5d | 34d |
| DUKHCONP1BZ2ELFF4060 |  | Installation of DBS,MCCB Accessories. | 20d | 2014-05-15 | 2014-06-07 | DUKHCONP1BZ2ELFF4045 FF+5d, DUKHCONP1BZ1ELFF4060, DUKHCONP1BZ2ARFF3360 SS+8d, DUKHCONP1BZ2ARFF3360 FF+8d, DUKHCONP1BZ2ELFF4045 SS+5d | -8d |
| DUKHCONP1BZ2ELFF4065 |  | Installation of Lighting fixtures & Accessories | 25d | 2014-05-28 | 2014-06-25 | DUKHCONP1BZ2ELFF4060 FF+11d, DUKHCONP1BZ2ARFF3360 FF+10d, DUKHCONP1BZ2ARFF3360 SS+10d, DUKHCONP1BZ2ELGF4025 FF+5d, DUKHCONP1BZ2ELGF4025 SS+5d, DUKHCONP1BZ2ELFF4060 SS+11d, DUKHCONP1BZ1ELFF4065 | -8d |
|  | 20 | **ROOF** |  | 2014-06-17 | 2014-07-24 |  |  |
| DUKHCONP1BZ2ELRF4070 |  | Installation of Isolator | 18d | 2014-06-17 | 2014-07-07 | DUKHCONP1BZ2ELFF4050 FF+7d, DUKHCONP1BZ2ARRF3645 FF+7d, DUKHCONP1BZ2ELFF4065 SS+10d, DUKHCONP1BZ2ELFF4050 SS+5d, DUKHCONP1BZ2ARRF3645 SS+7d, DUKHCONP1BZ2ELFF4045 FF+10d, DUKHCONP1BZ2ELFF4065 FF+10d, DUKHCONP1BZ2ELFF4045 SS+10d | -8d |
| DUKHCONP1BZ2ELRF4075 |  | Installation of TV Dish Antenna | 23d | 2014-06-29 | 2014-07-24 | DUKHCONP1BZ2ELRF4070 FF+10d, DUKHCONP1BZ2ELRF4070 SS+10d | -8d |
|  | 15 | **PLUMBING, DRAINAGE & FIRE FIGHTING WORKS** |  | 2013-09-07 | 2014-07-06 |  |  |
|  | 10 | **GROUND FLOOR** |  | 2013-09-07 | 2014-04-23 |  |  |
| DUKHCONP1BZ2PLUG4300 |  | Drainage / Storm Pipes in Grade Slab | 20d | 2013-09-07 | 2013-09-29 | DUKHCONP1BZ2STUG1040 FF+10d, DUKHCONP1BZ2STUG1040 SS+10d | -11d |
| DUKHCONP1BZ2PLGF4305 |  | Installation of Plumbing pipes & testing | 18d | 2013-12-25 | 2014-01-14 | DUKHCONP1BZ2ARGF3000 FF+7d, DUKHCONP1BZ2ARGF3000 SS+7d, DUKHCONP1BZ1PLGF4305 | 39d |
| DUKHCONP1BZ2PLGF4310 |  | Installation of Drainage pipes &testing | 18d | 2013-12-25 | 2014-01-14 | DUKHCONP1BZ2PLGF4305 FF, DUKHCONP1BZ2ARGF3000 FF+7d, DUKHCONP1BZ2PLGF4305 SS, DUKHCONP1BZ2ARGF3000 SS+7d | 42d |
| DUKHCONP1BZ2PLGF4315 |  | Sanitary Fittings & Accessories | 20d | 2014-03-26 | 2014-04-17 | DUKHCONP1BZ1PLGF4315, DUKHCONP1BZ2PLGF4310 SS+5d, DUKHCONP1BZ2ARGF3065 SS+5d, DUKHCONP1BZ2ARGF3065 FF+5d, DUKHCONP1BZ2PLGF4310 FF+5d | 71d |
| DUKHCONP1BZ2PLGF4320 |  | Installation of Water Heater | 15d | 2014-04-07 | 2014-04-23 | DUKHCONP1BZ2PLGF4315 SS+5d, DUKHCONP1BZ2ARGF3060 SS+5d, DUKHCONP1BZ1PLGF4320, DUKHCONP1BZ2ARGF3060 FF+5d, DUKHCONP1BZ2PLGF4315 FF+5d | 71d |
|  | 15 | **FIRST FLOORS** |  | 2014-02-06 | 2014-06-18 |  |  |
| DUKHCONP1BZ2PLFF4325 |  | Installation of Plumbing pipes & testing | 18d | 2014-02-06 | 2014-02-27 | DUKHCONP1BZ2ARFF3300 FF+8d, DUKHCONP1BZ2ARFF3300 SS+8d | -8d |
| DUKHCONP1BZ2PLFF4330 |  | Installation of Drainage pipes & testing | 18d | 2014-02-06 | 2014-02-27 | DUKHCONP1BZ2PLFF4325 FF, DUKHCONP1BZ2PLFF4325 SS, DUKHCONP1BZ2ARFF3300 SS+7d, DUKHCONP1BZ2ARFF3300 FF+7d, DUKHCONP1BZ1PLFF4330 | 19d |
| DUKHCONP1BZ2PLFF4335 |  | Sanitary Fittings & Accessories | 20d | 2014-05-21 | 2014-06-12 | DUKHCONP1BZ2PLFF4330 SS+5d, DUKHCONP1BZ2PLFF4330 FF+5d, DUKHCONP1BZ2ARFF3365 FF+5d, DUKHCONP1BZ2ARFF3365 SS+5d | 8d |
| DUKHCONP1BZ2PLFF4340 |  | Installation of Water Heater | 15d | 2014-06-02 | 2014-06-18 | DUKHCONP1BZ2PLFF4335 FF+5d, DUKHCONP1BZ2ARFF3360 SS+5d, DUKHCONP1BZ2PLFF4335 SS+5d, DUKHCONP1BZ1PLFF4340, DUKHCONP1BZ2ARFF3360 FF+5d | 8d |
|  | 20 | **ROOF** |  | 2014-03-06 | 2014-07-06 |  |  |
| DUKHCONP1BZ2PLRF4345 |  | Installation of Plumbing pipes & fittings | 14d | 2014-03-06 | 2014-03-22 | DUKHCONP1BZ2ARRF3605 SS+8d, DUKHCONP1BZ1PLRF4345, DUKHCONP1BZ2ARRF3605 FF+8d | 73d |
| DUKHCONP1BZ2PLRF4350 |  | Installation of Rain water Pipes | 15d | 2014-03-29 | 2014-04-14 | DUKHCONP1BZ2AREL3665 FF+11d, DUKHCONP1BZ2PLFF4330 SS+5d, DUKHCONP1BZ2PLRF4345 SS+10d, DUKHCONP1BZ2PLRF4345 FF+10d, DUKHCONP1BZ1PLRF4350, DUKHCONP1BZ2ARRF3645 SS+5d, DUKHCONP1BZ2AREL3665 SS+11d, DUKHCONP1BZ2ARRF3645 FF+5d, DUKHCONP1BZ2PLFF4330 FF+5d | 64d |
| DUKHCONP1BZ2PLRF4355 |  | Roof Water Tank Installation & Connections | 25d | 2014-06-08 | 2014-07-06 | DUKHCONP1BZ2PLFF4340 FF+5d, DUKHCONP1BZ1PLRF4355, DUKHCONP1BZ2PLFF4340 SS+5d, DUKHCONP1BZ2PLRF4345 FF+10d, DUKHCONP1BZ2PLRF4350 FF+5d, DUKHCONP1BZ2ARRF3655 SS+5d, DUKHCONP1BZ2PLRF4345 SS+10d, DUKHCONP1BZ2PLRF4350 SS+5d, DUKHCONP1BZ2ARRF3655 FF+5d, DUKHCONP1BZ2WEEX5065 FF | 8d |
|  | 20 | **AC WORKS** |  | 2014-01-14 | 2014-07-02 |  |  |
|  | 10 | **GROUND FLOOR** |  | 2014-01-14 | 2014-04-21 |  |  |
| DUKHCONP1BZ2ACGF4600 |  | Installation AC Pipes | 20d | 2014-01-14 | 2014-02-05 | DUKHCONP1BZ2ARGF3005 FF+7d, DUKHCONP1BZ2ARGF3005 SS+7d, DUKHCONP1BZ1ACGF4600 | 70d |
| DUKHCONP1BZ2ACGF4605 |  | Fixing of Ventilation Equipments | 25d | 2014-03-09 | 2014-04-06 | DUKHCONP1BZ2ARGF3055 SS+7d, DUKHCONP1BZ1ACGF4605, DUKHCONP1BZ2ARGF3060 FF+7d, DUKHCONP1BZ2ARGF3055 FF+7d, DUKHCONP1BZ2ACGF4600 SS+10d, DUKHCONP1BZ2ACGF4600 FF+10d, DUKHCONP1BZ2ARGF3060 SS+7d | 58d |
| DUKHCONP1BZ2ACGF4610 |  | Fixing of Split AC | 20d | 2014-03-30 | 2014-04-21 | DUKHCONP1BZ2ACGF4605 SS+13d, DUKHCONP1BZ2ACGF4605 FF+13d, DUKHCONP1BZ1ACGF4610 | 58d |
|  | 15 | **FIRST FLOORS** |  | 2014-03-03 | 2014-06-21 |  |  |
| DUKHCONP1BZ2ACFF4615 |  | Installation AC Pipes | 20d | 2014-03-03 | 2014-03-25 | DUKHCONP1BZ1ACFF4615, DUKHCONP1BZ2ARFF3305 SS+7d, DUKHCONP1BZ2ARFF3305 FF+7d | 35d |
| DUKHCONP1BZ2ACFF4620 |  | Fixing of Ventilation Equipments | 25d | 2014-05-08 | 2014-06-05 | DUKHCONP1BZ2ARFF3360 FF+7d, DUKHCONP1BZ2ACFF4615 FF+10d, DUKHCONP1BZ2ARFF3360 SS+7d, DUKHCONP1BZ2ACFF4615 SS+10d, DUKHCONP1BZ1ACFF4620 | 6d |
| DUKHCONP1BZ2ACFF4625 |  | Fixing of Split AC | 20d | 2014-05-29 | 2014-06-21 | DUKHCONP1BZ1ACFF4625, DUKHCONP1BZ2ACFF4620 FF+13d, DUKHCONP1BZ2ACFF4620 SS+13d | 6d |
|  | 20 | **ROOF** |  | 2014-03-15 | 2014-07-02 |  |  |
| DUKHCONP1BZ2ACRF4630 |  | Installation of Refrigerant Pipes | 25d | 2014-03-15 | 2014-04-12 | DUKHCONP1BZ1ACRF4630, DUKHCONP1BZ2ACGF4600 FF+7d, DUKHCONP1BZ2ACGF4600 SS+7d, DUKHCONP1BZ2ACFF4615 SS+7d, DUKHCONP1BZ2ARRF3645 FF+7d, DUKHCONP1BZ2ACFF4615 FF+7d, DUKHCONP1BZ2ARRF3645 SS+7d | 76d |
| DUKHCONP1BZ2ACRF4635 |  | Installation of Condensing Unit | 25d | 2014-06-04 | 2014-07-02 | DUKHCONP1BZ2ACFF4625 SS+5d, DUKHCONP1BZ2ACRF4630 SS+5d, DUKHCONP1BZ2ACGF4610 SS+5d, DUKHCONP1BZ2ACRF4630 FF+5d, DUKHCONP1BZ2ACFF4625 FF+5d, DUKHCONP1BZ1ACRF4635, DUKHCONP1BZ2ACGF4610 FF+5d | 11d |
|  | 25 | **EXTERNAL WORKS** |  | 2014-01-21 | 2014-07-28 |  |  |
|  | 10 | **MISCELLANEOUS** |  | 2014-01-21 | 2014-07-28 |  |  |
| DUKHCONP1BZ2MSEX5020 |  | Construction Entrance Ramp | 25d | 2014-01-21 | 2014-02-19 | DUKHCONP1BZ2STRF2055 FF, DUKHCONP1BZ2STRF2055 SS, DUKHCONP1BZ1MSEX5020 | 58d |
| DUKHCONP1BZ2MSEX5000 |  | Construction of Manholes | 25d | 2014-01-25 | 2014-02-23 | DUKHCONP1BZ2PLGF4310 FF+10d, DUKHCONP1BZ2STRF2055 FF+10d, DUKHCONP1BZ2STRF2055 SS+10d, DUKHCONP1BZ2PLGF4310 SS+10d | 26d |
| DUKHCONP1BZ2MSEX5005 |  | Construction of Soak pit, Chambers | 25d | 2014-02-08 | 2014-03-09 | DUKHCONP1BZ2MSEX5000 SS+12d, DUKHCONP1BZ2MSEX5000 FF+12d | 26d |
| DUKHCONP1BZ2MSEX5025 |  | SS.Handrails and Balustrades | 20d | 2014-02-10 | 2014-03-05 | DUKHCONP1BZ2MSEX5020 SS+12d, DUKHCONP1BZ2MSEX5020 FF+12d | 58d |
| DUKHCONP1BZ2MSEX5015 |  | Construction of grease Trap | 20d | 2014-03-01 | 2014-03-23 | DUKHCONP1BZ2MSEX5005 SS+12d, DUKHCONP1BZ2MSEX5005 FF+12d | 26d |
| DUKHCONP1BZ2MSEX5010 |  | Telephone cable laying | 25d | 2014-03-24 | 2014-04-21 | DUKHCONP1BZ2MSEX5015 | 26d |
| DUKHCONP1BZ2MSEX5335 |  | Aluminum Roll-up Shutter with 2m Wall | 25d | 2014-06-30 | 2014-07-28 | DUKHCONP1BZ1MSEX5335, DUKHCONI1BZ1BWGL5325 | 14d |
|  | 15 | **WATER TANK ENCLOSURE** |  | 2014-01-29 | 2014-05-06 |  |  |
| DUKHCONP1BZ2WEEX5030 |  | Excavation | 20d | 2014-01-29 | 2014-02-22 | DUKHCONP1BZ2STRF2055 SS+5d, DUKHCONP1BZ1WEEX5030, DUKHCONP1BZ2STRF2055 FF+5d | 40d |

| ID | WBS | Task | Duration | Start | Finish | Predecessors | Total float |
| --- | --- | --- | --- | --- | --- | --- | --- |
| DUKHCONP1BZ2WEEX5035 |  | Construction of Raft | 25d | 2014-02-04 | 2014-03-05 | DUKHCONP1BZ2WEEX5030 SS+5d, DUKHCONP1BZ2WEEX5030 FF+10d | 40d |
| DUKHCONP1BZ2WEEX5040 |  | Block works & Plastering | 25d | 2014-02-17 | 2014-03-17 | DUKHCONP1BZ2WEEX5035 SS+10d, DUKHCONP1BZ2WEEX5035 FF+10d | 63d |
| DUKHCONP1BZ2WEEX5045 |  | Flooring & Painting | 25d | 2014-03-01 | 2014-03-29 | DUKHCONP1BZ2WEEX5040 FF+10d, DUKHCONP1BZ2WEEX5040 SS+10d, DUKHCONP1BZ2MSEX5025 SS+10d | 63d |
| DUKHCONP1BZ2WEEX5050 |  | Installation of Steel Gate | 20d | 2014-03-18 | 2014-04-09 | DUKHCONP1BZ2WEEX5045 SS+5d, DUKHCONP1BZ2MSEX5025 FF+10d, DUKHCONP1BZ2MSEX5015 SS+5d, DUKHCONP1BZ2WEEX5045 FF+10d | 63d |
| DUKHCONP1BZ2WEEX5060 |  | Structural steel & SS Shed cover installation | 25d | 2014-03-27 | 2014-04-24 | DUKHCONP1BZ2MSEX5025 FF+10d, DUKHCONP1BZ2WEEX5050 SS+5d, DUKHCONP1BZ1WEEX5060, DUKHCONP1BZ2WEEX5050 FF+10d | 60d |
| DUKHCONP1BZ2WEEX5065 |  | Install. of Water Tank,Chiller,Pump & Meter | 25d | 2014-04-08 | 2014-05-06 | DUKHCONP1BZ2PLRF4350 FF+5d, DUKHCONP1BZ2WEEX5060 SS+10d, DUKHCONP1BZ2MSEX5015 FF+5d, DUKHCONP1BZ1WEEX5065, DUKHCONP1BZ2PLRF4350 SS+5d, DUKHCONP1BZ2MSEX5015 SS+5d, DUKHCONP1BZ2WEEX5060 FF+10d | 60d |
|  | 20 | **HARD LANDSCAPING** |  | 2014-02-19 | 2014-04-09 |  |  |
| DUKHCONP1BZ2HDEX5090 |  | kerb works | 20d | 2014-02-19 | 2014-03-13 | DUKHCONP1BZ2MSEX5020 SS+7d, DUKHCONP1BZ2MSEX5020 FF+7d, DUKHCONP1BZ2MSEX5025 SS+7d, DUKHCONP1BZ1HDEX5090 | 58d |
| DUKHCONP1BZ2HDEX5095 |  | Cobble Stone Works | 20d | 2014-03-03 | 2014-03-25 | DUKHCONP1BZ2HDEX5090 FF+10d, DUKHCONP1BZ2HDEX5090 SS+10d | 58d |
| DUKHCONP1BZ2HDEX5100 |  | Interlock works | 20d | 2014-03-18 | 2014-04-09 | DUKHCONP1BZ2HDEX5095 SS+13d, DUKHCONP1BZ2HDEX5095 FF+13d | 58d |
|  | 25 | **SOFT LANDSCAPING** |  | 2014-03-30 | 2014-05-08 |  |  |
| DUKHCONP1BZ2SLEX5105 |  | Laying of Grass/ green area | 25d | 2014-03-30 | 2014-04-27 | DUKHCONP1BZ2HDEX5100 SS+10d, DUKHCONP1BZ2HDEX5100 FF+10d | 58d |
| DUKHCONP1BZ2SLEX5110 |  | Laying of Palm tree | 25d | 2014-04-10 | 2014-05-08 | DUKHCONP1BZ2SLEX5105 FF+10d, DUKHCONP1BZ2SLEX5105 SS+10d | 58d |
|  | 30 | **TESTING AND COMMISSIONING** |  | 2014-07-26 | 2014-08-26 |  |  |
| DUKHCONP1BZ2ACTC8000 |  | Pre-Commissioning & Testing of AC Works | 25d | 2014-07-26 | 2014-08-26 | DUKHCONP1BZ2AREL3680, DUKHCONP1BZ2ARFF3395, DUKHCONP1BZ2HDEX5100, DUKHCONP1BZ2SLEX5110, DUKHCONP1BZ2MSEX5005, DUKHCONP1BZ1ACTC8000, DUKHCONP1BZ2ACRF4635, DUKHCONP1BZ2ARRF3620, DUKHCONP1BZ2ACFF4625, DUKHCONP1BZ2SLEX5105, DUKHCONP1BZ2ARGF3095 | -8d |
| DUKHCONP1BZ2ELTC8010 |  | Pre-Commissioning & Testing of Electrical Works | 25d | 2014-07-26 | 2014-08-26 | DUKHCONP1BZ2ELFF4050, DUKHCONP1BZ2MSEX5005, DUKHCONP1BZ1ELTC8010, DUKHCONP1BZ2ELFF4055, DUKHCONP1BZ2AREL3680, DUKHCONP1BZ2ELFF4065, DUKHCONP1BZ2ARRF3620, DUKHCONP1BZ2ELRF4075, DUKHCONP1BZ2SLEX5105, DUKHCONP1BZ2ELGF4015, DUKHCONP1BZ2SLEX5110, DUKHCONP1BZ2ARRF3660, DUKHCONP1BZ2ARFF3395, DUKHCONP1BZ2HDEX5100, DUKHCONP1BZ2ARRF3655, DUKHCONP1BZ2ARGF3095, DUKHCONP1BZ2ELGF4025, DUKHCONP1BZ2ELGF4030 | -8d |
| DUKHCONP1BZ2PLTC8005 |  | Pre-Commissioning & Testing of Plumbing Works | 25d | 2014-07-26 | 2014-08-26 | DUKHCONP1BZ2SLEX5105, DUKHCONP1BZ2MSEX5005, DUKHCONP1BZ2ARRF3620, DUKHCONP1BZ2AREL3680, DUKHCONP1BZ1PLTC8005, DUKHCONP1BZ2WEEX5065, DUKHCONP1BZ2HDEX5100, DUKHCONP1BZ2ARRF3655, DUKHCONP1BZ2ARGF3095, DUKHCONP1BZ2ARFF3395, DUKHCONP1BZ2PLGF4320, DUKHCONP1BZ2ARRF3660, DUKHCONP1BZ2PLRF4350, DUKHCONP1BZ2PLRF4355, DUKHCONP1BZ2SLEX5110 | -8d |
|  | 20 | **ZONE - 3 (4 Twin Villas)** |  | 2013-06-24 | 2014-09-24 |  |  |
|  | 10 | **STRUCTURAL WORKS** |  | 2013-06-24 | 2014-04-03 |  |  |
|  | 10 | **SUB STRUCTURE** |  | 2013-06-24 | 2013-11-16 |  |  |
|  | 10 | **UPTO GRADE SLAB** |  | 2013-06-24 | 2013-11-16 |  |  |
| DUKHCONP1BZ3STUG1000 |  | Footing Excavation | 25d | 2013-06-24 | 2013-07-22 | DUKHCONP1BZ2STUG1000 | 0d |
| DUKHCONP1BZ3STUG1005 |  | Footing Antitermite | 23d | 2013-07-06 | 2013-07-31 | DUKHCONP1BZ3STUG1000 SS+10d, DUKHCONP1BZ3STUG1000 FF+5d | 0d |
| DUKHCONP1BZ3STUG1010 |  | Footing Blinding | 23d | 2013-07-10 | 2013-08-05 | DUKHCONP1BZ3STUG1005 SS+4d, DUKHCONP1BZ3STUG1005 FF+4d | 0d |
| DUKHCONP1BZ3STUG1015 |  | Footing Waterproofing & Screed | 25d | 2013-07-16 | 2013-08-17 | DUKHCONP1BZ3STUG1010 SS+5d, DUKHCONP1BZ3STUG1010 FF+5d | 0d |
| DUKHCONP1BZ3STUG1020 |  | Construction of foundations | 20d | 2013-07-31 | 2013-08-26 | DUKHCONP1BZ3STUG1015 FF+8d, DUKHCONP1BZ3STUG1015 SS+7d | 0d |
| DUKHCONP1BZ3STUG1025 |  | Construction of neck of columns | 25d | 2013-08-13 | 2013-09-10 | DUKHCONP1BZ2STUG1025, DUKHCONP1BZ3STUG1020 FF+7d, DUKHCONP1BZ3STUG1020 SS+8d | 0d |
| DUKHCONP1BZ3STUG1030 |  | Waterproofing Footing & Neck Column | 25d | 2013-08-22 | 2013-09-19 | DUKHCONP1BZ3STUG1025 FF+8d, DUKHCONP1BZ3STUG1025 SS+8d | 0d |
| DUKHCONP1BZ3STUG1035 |  | Backfilling Upto Grade Beam Bottom | 25d | 2013-09-03 | 2013-10-01 | DUKHCONP1BZ2STUG1035, DUKHCONP1BZ3STUG1030 SS+10d, DUKHCONP1BZ3STUG1030 FF+10d | 0d |
| DUKHCONP1BZ3STUG1040 |  | Construction of Grade Beams | 25d | 2013-09-19 | 2013-10-20 | DUKHCONP1BZ3STUG1035 FF+14d, DUKHCONP1BZ3STUG1035 SS+14d | 0d |
| DUKHCONP1BZ3STUG1045 |  | Construction of slab on grade | 25d | 2013-10-16 | 2013-11-16 | DUKHCONP1BZ3PLUG4300 FF+8d, DUKHCONP1BZ3STUG1040 FF+10d, DUKHCONP1BZ2STUG1045, DUKHCONP1BZ3PLUG4300 SS+8d, DUKHCONP1BZ3STUG1040 SS+10d | 0d |
|  | 15 | **SUPERSTRUCTURE** |  | 2013-11-04 | 2014-04-03 |  |  |
|  | 10 | **GROUND FLOOR** |  | 2013-11-04 | 2013-12-30 |  |  |
| DUKHCONP1BZ3STGF2000 |  | Column-Rebar & Formwork | 25d | 2013-11-04 | 2013-12-02 | DUKHCONP1BZ3STUG1045 FF+7d, DUKHCONP1BZ2STGF2000, DUKHCONP1BZ3STUG1045 SS+14d | 0d |
| DUKHCONP1BZ3STGF2005 |  | Column-Concrete | 23d | 2013-11-13 | 2013-12-09 | DUKHCONP1BZ3STGF2000 SS+8d, DUKHCONP1BZ3STGF2000 FF+2d | 0d |
| DUKHCONP1BZ3STGF2010 |  | Beam, Stairs ,Slab-Rebar & Formwork | 25d | 2013-11-27 | 2013-12-26 | DUKHCONP1BZ3STGF2005 SS+2d, DUKHCONP1BZ3STGF2005 FF+14d | 0d |
| DUKHCONP1BZ3STGF2015 |  | Beam, Stairs ,Slab-Concrete | 14d | 2013-12-14 | 2013-12-30 | DUKHCONP1BZ3STGF2010 FF+3d, DUKHCONP1BZ2STGF2015, DUKHCONP1BZ3STGF2010 SS+10d | 0d |
|  | 15 | **FIRST FLOORS** |  | 2013-12-16 | 2014-01-30 |  |  |
| DUKHCONP1BZ3STFF2020 |  | Column-Rebar & Formwork | 25d | 2013-12-16 | 2014-01-14 | DUKHCONP1BZ3STGF2015 SS+2d, DUKHCONP1BZ2STFF2020, DUKHCONP1BZ3STGF2015 FF+5d | 0d |
| DUKHCONP1BZ3STFF2025 |  | Column-Concrete | 23d | 2013-12-26 | 2014-01-21 | DUKHCONP1BZ3STFF2020 SS+8d, DUKHCONP1BZ3STFF2020 FF+2d | 0d |
| DUKHCONP1BZ3STFF2030 |  | Beam, Stairs ,Slab-Rebar & Formwork | 25d | 2013-12-30 | 2014-01-27 | DUKHCONP1BZ3STFF2025 FF+5d, DUKHCONP1BZ3STFF2025 SS+2d | 0d |
| DUKHCONP1BZ3STFF2035 |  | Beam, Stairs ,Slab-Concrete | 14d | 2014-01-15 | 2014-01-30 | DUKHCONP1BZ3STFF2030 FF+3d, DUKHCONP1BZ3STFF2030 SS+10d, DUKHCONP1BZ2STFF2035 | 0d |
|  | 20 | **ROOF** |  | 2014-01-21 | 2014-04-03 |  |  |
| DUKHCONP1BZ3STRF2040 |  | Column-Rebar & Formwork | 18d | 2014-01-21 | 2014-02-10 | DUKHCONP1BZ3STFF2035 SS+5d, DUKHCONP1BZ3STFF2035 FF+3d, DUKHCONP1BZ2STRF2040 | 23d |
| DUKHCONP1BZ3STRF2045 |  | Column-Concrete | 17d | 2014-01-25 | 2014-02-13 | DUKHCONP1BZ3STRF2040 SS+3d, DUKHCONP1BZ3STRF2040 FF+1d | 27d |
| DUKHCONP1BZ3STRF2050 |  | Slab-Rebar & Formwork - Head Room | 20d | 2014-01-27 | 2014-02-19 | DUKHCONP1BZ3STRF2045 SS+2d, DUKHCONP1BZ3STRF2045 FF+5d | 27d |
| DUKHCONP1BZ3STRF2055 |  | Slab-Concrete-Head room | 13d | 2014-02-10 | 2014-02-25 | DUKHCONP1BZ2STRF2055, DUKHCONP1BZ3STRF2050 FF+5d, DUKHCONP1BZ3STRF2050 SS+5d | 27d |
| DUKHCONP1BZ3STRF2060 |  | Construction of Parapets | 25d | 2014-02-15 | 2014-03-15 | DUKHCONP1BZ3STRF2055 FF+14d, DUKHCONP1BZ2STRF2060, DUKHCONP1BZ3STRF2055 SS+2d | 50d |
| DUKHCONP1BZ3STRF2065 |  | Construction of up stands/Plinth | 25d | 2014-03-06 | 2014-04-03 | DUKHCONP1BZ2STRF2065, DUKHCONP1BZ3STRF2060 SS+5d, DUKHCONP1BZ3STRF2060 FF+5d | 67d |
|  | 15 | **FINISHING WORKS** |  | 2014-01-08 | 2014-08-26 |  |  |
|  | 10 | **INTERNAL FINISHES** |  | 2014-01-08 | 2014-08-26 |  |  |
|  | 10 | **GROUND FLOOR** |  | 2014-01-08 | 2014-06-21 |  |  |
| DUKHCONP1BZ3ARGF3000 |  | Block work | 25d | 2014-01-08 | 2014-02-05 | DUKHCONP1BZ2ARGF3000, DUKHCONP1BZ3STGF2015 SS+21d, DUKHCONP1BZ3STGF2015 FF+21d | 38d |
| DUKHCONP1BZ3ARGF3005 |  | Plastering work | 25d | 2014-01-30 | 2014-03-01 | DUKHCONP1BZ3PLGF4305 SS+5d, DUKHCONP1BZ3ARGF3000 FF+7d, DUKHCONP1BZ3ELGF4000 FF+5d, DUKHCONP1BZ3PLGF4305 FF+5d, DUKHCONP1BZ2ARGF3005, DUKHCONP1BZ3ARGF3000 SS+7d, DUKHCONP1BZ3ELGF4000 SS+5d | 38d |
| DUKHCONP1BZ3ARGF3010 |  | Flooring screed | 21d | 2014-02-08 | 2014-03-04 | DUKHCONP1BZ3ARGF3005 FF+3d, DUKHCONP1BZ3ARGF3005 SS+7d | 46d |
| DUKHCONP1BZ3ARGF3030 |  | Paint First coat | 25d | 2014-02-17 | 2014-03-17 | DUKHCONP1BZ3ARGF3005 SS+14d, DUKHCONP1BZ3ARGF3005 FF+14d, DUKHCONP1BZ2ARGF3030 | 52d |
| DUKHCONP1BZ3ARGF3015 |  | Wet area waterproofing & Protection Screed | 15d | 2014-02-18 | 2014-03-06 | DUKHCONP1BZ3ARGF3005 FF+5d, DUKHCONP1BZ3ARGF3005 SS+7d, DUKHCONP1BZ2ARGF3015 | 38d |
| DUKHCONP1BZ3ARGF3020 |  | Ceramic Wall Tiling | 25d | 2014-02-24 | 2014-03-24 | DUKHCONP1BZ3ARGF3015 FF+5d, DUKHCONP1BZ2ARGF3020, DUKHCONP1BZ3PLGF4305 SS+4d, DUKHCONP1BZ3ARGF3015 SS+5d, DUKHCONP1BZ3PLGF4310 SS+4d, DUKHCONP1BZ3PLGF4305 FF+4d, DUKHCONP1BZ3PLGF4310 FF+4d | 38d |
| DUKHCONP1BZ3ARGF3025 |  | Porcelain Tile flooring | 25d | 2014-03-02 | 2014-03-30 | DUKHCONP1BZ3ARGF3010 FF+10d, DUKHCONP1BZ3ARGF3010 SS+10d, DUKHCONP1BZ2ARGF3025, DUKHCONP1BZ3ARGF3020 FF+5d, DUKHCONP1BZ3ARGF3020 SS+5d | 38d |
| DUKHCONP1BZ3ARGF3045 |  | Fixing of Suspension systems | 20d | 2014-03-19 | 2014-04-10 | DUKHCONP1BZ3ARGF3025 FF+10d, DUKHCONP1BZ3ELGF4010 FF+5d, DUKHCONP1BZ3ARGF3030 SS+7d, DUKHCONP1BZ3ELGF4010 SS+5d, DUKHCONP1BZ3ARGF3030 FF+7d, DUKHCONP1BZ2ARGF3045, DUKHCONP1BZ3ARGF3025 SS+10d | 38d |
| DUKHCONP1BZ3ARGF3035 |  | Slate Tile Flooring & Skirting | 15d | 2014-03-22 | 2014-04-07 | DUKHCONP1BZ3ARGF3010 SS+13d, DUKHCONP1BZ3ARGF3025 FF+7d, DUKHCONP1BZ3ARGF3025 SS+13d, DUKHCONP1BZ3ARGF3010 FF+13d | 48d |
| DUKHCONP1BZ3ARGF3055 |  | Aluminum tile false ceiling | 25d | 2014-03-27 | 2014-04-24 | DUKHCONP1BZ3ARGF3045 FF+7d, DUKHCONP1BZ3ACGF4600 SS+7d, DUKHCONP1BZ3ARGF3045 SS+7d, DUKHCONP1BZ3ACGF4600 FF+7d | 41d |
| DUKHCONP1BZ3ARGF3040 |  | Cobble Tile flooring | 15d | 2014-03-29 | 2014-04-14 | DUKHCONP1BZ3ARGF3025 FF+13d, DUKHCONP1BZ3ARGF3010 FF+13d, DUKHCONP1BZ3ARGF3035 SS+4d, DUKHCONP1BZ3ARGF3025 SS+13d, DUKHCONP1BZ3ARGF3035 FF+4d, DUKHCONP1BZ3ARGF3010 SS+13d | 46d |
| DUKHCONP1BZ3ARGF3060 |  | Gypsum board false ceiling | 25d | 2014-03-31 | 2014-04-28 | DUKHCONP1BZ3ACGF4600 SS+7d, DUKHCONP1BZ2ARGF3060, DUKHCONP1BZ3ACGF4600 FF+7d, DUKHCONP1BZ3ARGF3045 FF+10d, DUKHCONP1BZ3ARGF3045 SS+10d | 38d |
| DUKHCONP1BZ3ARGF3050 |  | Granite - Stair case flooring & Skirting | 20d | 2014-04-06 | 2014-04-28 | DUKHCONP1BZ3ARGF3025 FF+13d, DUKHCONP1BZ3ARGF3040 FF+7d, DUKHCONP1BZ3ARGF3025 SS+13d, DUKHCONP1BZ3ARGF3040 SS+7d | 46d |
| DUKHCONP1BZ3ARGF3065 |  | Wooden door & PVC Door | 15d | 2014-04-20 | 2014-05-06 | DUKHCONP1BZ3ARGF3035 FF+7d, DUKHCONP1BZ3ARGF3050 SS+7d, DUKHCONP1BZ3ARGF3035 SS+7d, DUKHCONP1BZ2ARGF3065, DUKHCONP1BZ3ARGF3050 FF+7d | 46d |
| DUKHCONP1BZ3ARGF3070 |  | Aluminum doors | 15d | 2014-04-26 | 2014-05-12 | DUKHCONP1BZ2ARGF3070, DUKHCONP1BZ3ARGF3065 SS+5d, DUKHCONP1BZ3ARGF3065 FF+5d | 46d |
| DUKHCONP1BZ3ARGF3075 |  | Carpentry & Joinery Works | 20d | 2014-05-01 | 2014-05-24 | DUKHCONP1BZ3ARGF3070 FF+7d, DUKHCONP1BZ2ARGF3075, DUKHCONP1BZ3ARGF3070 SS+5d | 46d |
| DUKHCONP1BZ3ARGF3080 |  | Aluminum windows | 20d | 2014-05-03 | 2014-05-25 | DUKHCONP1BZ2ARGF3080, DUKHCONP1BZ3ARGF3070 FF+6d, DUKHCONP1BZ3ARGF3070 SS+6d | 56d |
| DUKHCONP1BZ3ARGF3085 |  | S.S.Balustrade | 20d | 2014-05-10 | 2014-06-01 | DUKHCONP1BZ3ARGF3050 SS+7d, DUKHCONP1BZ3ARGF3050 FF+7d, DUKHCONP1BZ3ARGF3075 FF+7d, DUKHCONP1BZ3ARGF3075 SS+7d | 51d |

| ID | WBS | Task | Duration | Start | Finish | Predecessors | Total float |
| --- | --- | --- | --- | --- | --- | --- | --- |
| DUKHCONP1BZ3ARGF3090 |  | Installation of Granite Counter Top | 15d | 2014-05-14 | 2014-05-31 | DUKHCONP1BZ3ARGF3075 SS+7d, DUKHCONP1BZ3ARGF3075 FF+6d | 46d |
| DUKHCONP1BZ3ARGF3095 |  | Final Painting | 25d | 2014-05-24 | 2014-06-21 | DUKHCONP1BZ2ARGF3095, DUKHCONP1BZ3ARGF3040 FF+13d, DUKHCONP1BZ3ARGF3060 SS+8d, DUKHCONP1BZ3ARGF3040 SS+13d, DUKHCONP1BZ3ARGF3060 FF+8d, DUKHCONP1BZ3ACGF4610 SS+10d, DUKHCONP1BZ3ARGF3080 SS+8d, DUKHCONP1BZ3ARGF3090 FF+8d, DUKHCONP1BZ3ARGF3085 FF+7d, DUKHCONP1BZ3ARGF3090 SS+8d, DUKHCONP1BZ3ARGF3035 SS+13d, DUKHCONP1BZ3ARGF3070 FF+5d, DUKHCONP1BZ3ARGF3070 SS+5d, DUKHCONP1BZ3ARGF3080 FF+8d, DUKHCONP1BZ3ARGF3030 FF+10d, DUKHCONP1BZ3ARGF3030 SS+10d, DUKHCONP1BZ3ARGF3035 FF+13d, DUKHCONP1BZ3ARGF3085 SS+7d, DUKHCONP1BZ3ACGF4610 FF+10d | 46d |
|  | 15 | **FIRST FLOORS** |  | 2014-02-19 | 2014-08-26 |  |  |
| DUKHCONP1BZ3ARFF3300 |  | Block work | 25d | 2014-02-19 | 2014-03-19 | DUKHCONP1BZ3STFF2035 SS+21d, DUKHCONP1BZ3STFF2020 FF+21d, DUKHCONP1BZ2ARFF3300, DUKHCONP1BZ3STFF2035 FF+21d, DUKHCONP1BZ3STFF2020 SS+21d | -8d |
| DUKHCONP1BZ3ARFF3305 |  | Plastering work | 25d | 2014-03-18 | 2014-04-15 | DUKHCONP1BZ3ARFF3300 SS+7d, DUKHCONP1BZ3ARFF3300 FF+7d, DUKHCONP1BZ3ELFF4035 SS+5d, DUKHCONP1BZ3ELFF4035 FF+5d, DUKHCONP1BZ3PLFF4325 SS+8d, DUKHCONP1BZ2ARFF3305, DUKHCONP1BZ3PLFF4325 FF+8d | -8d |
| DUKHCONP1BZ3ARFF3310 |  | Flooring screed | 21d | 2014-03-26 | 2014-04-19 | DUKHCONP1BZ3ARFF3305 FF+3d, DUKHCONP1BZ3ARFF3305 SS+7d | 9d |
| DUKHCONP1BZ3ARFF3330 |  | Paint First coat | 25d | 2014-04-03 | 2014-05-01 | DUKHCONP1BZ3ARFF3305 SS+14d, DUKHCONP1BZ3ARFF3305 FF+14d | 18d |
| DUKHCONP1BZ3ARFF3315 |  | Wet area waterproofing | 15d | 2014-04-08 | 2014-04-24 | DUKHCONP1BZ3ARFF3305 FF+8d, DUKHCONP1BZ2ARFF3315, DUKHCONP1BZ3ARFF3305 SS+7d | -8d |
| DUKHCONP1BZ3ARFF3320 |  | Ceramic Wall Tiling | 25d | 2014-04-17 | 2014-05-15 | DUKHCONP1BZ2ARFF3320, DUKHCONP1BZ3ARFF3315 FF+7d, DUKHCONP1BZ3PLFF4325 SS+4d, DUKHCONP1BZ3PLFF4330 FF+7d, DUKHCONP1BZ3ARFF3315 SS+8d, DUKHCONP1BZ3PLFF4330 SS+7d, DUKHCONP1BZ3PLFF4325 FF+4d | -8d |
| DUKHCONP1BZ3ARFF3325 |  | Porcelain Tile flooring | 25d | 2014-04-27 | 2014-05-25 | DUKHCONP1BZ3ARFF3310 FF+10d, DUKHCONP1BZ3ARFF3320 SS+8d, DUKHCONP1BZ2ARFF3325, DUKHCONP1BZ3ARFF3310 SS+10d, DUKHCONP1BZ3ARFF3320 FF+8d | -8d |
| DUKHCONP1BZ3ARFF3335 |  | Slate Tile Flooring & Skirting | 15d | 2014-05-14 | 2014-05-31 | DUKHCONP1BZ3ARFF3325 FF+5d, DUKHCONP1BZ3ARFF3310 SS+13d, DUKHCONP1BZ3ARFF3325 SS+13d, DUKHCONP1BZ3ARFF3310 FF+13d | 11d |
| DUKHCONP1BZ3ARFF3345 |  | Fixing of Suspension systems | 20d | 2014-05-18 | 2014-06-09 | DUKHCONP1BZ2ARFF3345, DUKHCONP1BZ3ARFF3330 SS+7d, DUKHCONP1BZ3ARFF3325 SS+13d, DUKHCONP1BZ3ELFF4045 SS+5d, DUKHCONP1BZ3ARFF3325 FF+13d, DUKHCONP1BZ3ARFF3330 FF+7d, DUKHCONP1BZ3ELFF4045 FF+5d | -8d |
| DUKHCONP1BZ3ARFF3350 |  | Granite - Stair case flooring & Skirting | 20d | 2014-05-18 | 2014-06-09 | DUKHCONP1BZ3ARFF3325 FF+13d, DUKHCONP1BZ3ARFF3325 SS+13d | 3d |
| DUKHCONP1BZ3ARFF3360 |  | Gypsum board false ceiling | 25d | 2014-05-29 | 2014-06-26 | DUKHCONP1BZ3ARFF3345 FF+10d, DUKHCONP1BZ3ARFF3345 SS+10d, DUKHCONP1BZ3ACFF4615 FF+7d, DUKHCONP1BZ2ARFF3360, DUKHCONP1BZ3ACFF4615 SS+7d | -8d |
| DUKHCONP1BZ3ARFF3365 |  | Wooden door | 15d | 2014-06-14 | 2014-06-30 | DUKHCONP1BZ3ARFF3335 FF+7d, DUKHCONP1BZ3ARFF3350 SS+7d, DUKHCONP1BZ3ARFF3350 FF+7d, DUKHCONP1BZ3ARFF3360 SS+3d, DUKHCONP1BZ3ARFF3335 SS+7d, DUKHCONP1BZ3ARFF3360 FF+3d, DUKHCONP1BZ2ARFF3365 | -8d |
| DUKHCONP1BZ3ARFF3370 |  | Aluminum Door | 20d | 2014-06-22 | 2014-07-14 | DUKHCONP1BZ3ARFF3365 FF+5d, DUKHCONP1BZ3ARFF3365 SS+7d, DUKHCONP1BZ2ARFF3370 | -8d |
| DUKHCONP1BZ3ARFF3380 |  | Aluminum windows | 20d | 2014-06-29 | 2014-07-21 | DUKHCONP1BZ3ARFF3370 SS+6d, DUKHCONP1BZ3ARFF3370 FF+6d | 5d |
| DUKHCONP1BZ3ARFF3375 |  | Carpentry & Joinery Works | 25d | 2014-06-30 | 2014-07-28 | DUKHCONP1BZ3ARFF3370 SS+7d, DUKHCONP1BZ3ARFF3370 FF+5d, DUKHCONP1BZ2ARFF3375 | -8d |
| DUKHCONP1BZ3ARFF3385 |  | Handrail & Balustrade | 20d | 2014-07-14 | 2014-08-09 | DUKHCONP1BZ3ARFF3350 FF+7d, DUKHCONP1BZ3ARFF3375 SS+7d, DUKHCONP1BZ3ARFF3375 FF+7d, DUKHCONP1BZ3ARFF3350 SS+7d | -8d |
| DUKHCONP1BZ3ARFF3390 |  | Installation of Granite Counter Top | 20d | 2014-07-14 | 2014-08-09 | DUKHCONP1BZ3ARFF3375 FF+7d, DUKHCONP1BZ3ARFF3375 SS+7d | -6d |
| DUKHCONP1BZ3ARFF3395 |  | Final Painting | 25d | 2014-07-26 | 2014-08-26 | DUKHCONP1BZ2ARFF3395, DUKHCONP1BZ3ARFF3360 FF+10d, DUKHCONP1BZ3ARFF3380 SS+10d, DUKHCONP1BZ3ARFF3350 SS+8d, DUKHCONP1BZ3ARFF3390 SS+8d, DUKHCONP1BZ3ARFF3335 FF+8d, DUKHCONP1BZ3ARFF3360 SS+10d, DUKHCONP1BZ3ARFF3365 FF+8d, DUKHCONP1BZ3ARFF3365 SS+8d, DUKHCONP1BZ3ARFF3385 FF+10d, DUKHCONP1BZ3ARFF3385 SS+10d, DUKHCONP1BZ3ACFF4625 SS+10d, DUKHCONP1BZ3ARFF3330 FF+10d, DUKHCONP1BZ3ACFF4625 FF+10d, DUKHCONP1BZ3ARFF3330 SS+10d, DUKHCONP1BZ3ARFF3375 FF+8d, DUKHCONP1BZ3ARFF3375 SS+8d, DUKHCONP1BZ3ARFF3335 SS+8d, DUKHCONP1BZ3ARFF3350 FF+8d, DUKHCONP1BZ3ARFF3380 FF+10d, DUKHCONP1BZ3ARFF3390 FF+8d | -8d |
|  | 20 | **ROOF** |  | 2014-03-08 | 2014-05-21 |  |  |
| DUKHCONP1BZ3ARRF3600 |  | Block work | 20d | 2014-03-08 | 2014-03-30 | DUKHCONP1BZ3STRF2055 SS+21d, DUKHCONP1BZ2ARRF3600, DUKHCONP1BZ3STRF2055 FF+21d | 67d |
| DUKHCONP1BZ3ARRF3605 |  | Plastering work | 20d | 2014-03-19 | 2014-04-10 | DUKHCONP1BZ3ARRF3600 SS+10d, DUKHCONP1BZ3ARRF3600 FF+10d | 67d |
| DUKHCONP1BZ3ARRF3610 |  | Flooring screed | 15d | 2014-04-06 | 2014-04-22 | DUKHCONP1BZ3ARRF3605 SS+10d, DUKHCONP1BZ3ARRF3605 FF+10d | 67d |
| DUKHCONP1BZ3ARRF3695 |  | Painting -Storage area | 20d | 2014-04-17 | 2014-05-10 | DUKHCONP1BZ3ARRF3610 SS+10d, DUKHCONP1BZ3ARRF3610 FF+10d | 67d |
| DUKHCONP1BZ3ARRF3620 |  | Epoxy Painting -Storage area | 15d | 2014-05-05 | 2014-05-21 | DUKHCONP1BZ3ARRF3695 SS+10d, DUKHCONP1BZ3ARRF3695 FF+10d | 67d |
|  | 15 | **EXTERNAL FINISHES** |  | 2014-03-18 | 2014-05-29 |  |  |
|  | 10 | **ROOF** |  | 2014-03-18 | 2014-05-27 |  |  |
| DUKHCONP1BZ3ARRF3630 |  | Leveling Screed for Waterproofing | 25d | 2014-03-18 | 2014-04-15 | DUKHCONP1BZ2ARRF3630, DUKHCONP1BZ3STRF2060 FF+10d, DUKHCONP1BZ3STRF2060 SS+10d, DUKHCONP1BZ3STRF2065 FF+10d, DUKHCONP1BZ3STRF2065 SS+10d | 67d |
| DUKHCONP1BZ3ARRF3635 |  | Laying of Waterproofing Membrane | 25d | 2014-03-22 | 2014-04-19 | DUKHCONP1BZ3ARRF3630 FF+3d, DUKHCONP1BZ3ARRF3630 SS+3d | 67d |
| DUKHCONP1BZ3ARRF3640 |  | Installation of Insulation & Protection | 25d | 2014-03-26 | 2014-04-23 | DUKHCONP1BZ3ARRF3635 FF+4d, DUKHCONP1BZ3ARRF3635 SS+4d | 67d |
| DUKHCONP1BZ3ARRF3645 |  | Lime Stone Chips & Paving slab Installation | 25d | 2014-03-31 | 2014-04-28 | DUKHCONP1BZ3ARRF3640 FF+4d, DUKHCONP1BZ3ARRF3640 SS+4d | 67d |
| DUKHCONP1BZ3ARRF3650 |  | Install. of Gal. Frame & Aluminum Slat Screen | 25d | 2014-04-08 | 2014-05-06 | DUKHCONP1BZ3ARRF3645 SS+7d, DUKHCONP1BZ3ARRF3645 FF+7d | 67d |
| DUKHCONP1BZ3ARRF3655 |  | Installation of Pumps Protection cabinets | 20d | 2014-04-23 | 2014-05-15 | DUKHCONP1BZ3ARRF3650 FF+8d, DUKHCONP1BZ2ARRF3655, DUKHCONP1BZ3ARRF3645 SS+7d, DUKHCONP1BZ3ARRF3645 FF+7d, DUKHCONP1BZ3ARRF3650 SS+8d | 67d |
| DUKHCONP1BZ3ARRF3660 |  | Installation of Access Ladder | 15d | 2014-05-11 | 2014-05-27 | DUKHCONP1BZ3ARRF3655 FF+5d, DUKHCONP1BZ3ARRF3655 SS+5d, DUKHCONP1BZ3ARRF3620 SS+5d | 67d |
|  | 15 | **ELEVATION** |  | 2014-04-02 | 2014-05-29 |  |  |
| DUKHCONP1BZ3AREL3665 |  | External Plastering | 25d | 2014-04-02 | 2014-04-30 | DUKHCONP1BZ3STRF2065 SS+7d, DUKHCONP1BZ3ARFF3305 FF+7d, DUKHCONP1BZ3ARRF3605 SS+7d, DUKHCONP1BZ3STRF2065 FF+7d, DUKHCONP1BZ2AREL3665, DUKHCONP1BZ3ARFF3305 SS+7d | 65d |
| DUKHCONP1BZ3AREL3670 |  | External stone cladding works | 20d | 2014-04-20 | 2014-05-12 | DUKHCONP1BZ3AREL3665 FF+10d, DUKHCONP1BZ2AREL3670, DUKHCONP1BZ3AREL3665 SS+10d | 65d |
| DUKHCONP1BZ3AREL3675 |  | GRC works | 20d | 2014-04-26 | 2014-05-18 | DUKHCONP1BZ3AREL3665 FF+10d, DUKHCONP1BZ3AREL3665 SS+10d, DUKHCONP1BZ2AREL3675, DUKHCONP1BZ3AREL3670 SS+5d | 65d |
| DUKHCONP1BZ3AREL3680 |  | External Painting | 20d | 2014-05-07 | 2014-05-29 | DUKHCONP1BZ3AREL3675 SS+10d, DUKHCONP1BZ3AREL3670 FF+10d, DUKHCONP1BZ3ARRF3695 FF+4d, DUKHCONP1BZ2AREL3680, DUKHCONP1BZ3AREL3675 FF+10d, DUKHCONP1BZ3AREL3670 SS+10d, DUKHCONP1BZ3ARRF3695 SS+4d | 65d |
|  | 20 | **MEP WORKS** |  | 2013-10-07 | 2014-08-26 |  |  |
|  | 10 | **ELECTRICAL WORKS** |  | 2014-01-14 | 2014-08-26 |  |  |
|  | 10 | **GROUND FLOOR** |  | 2014-01-14 | 2014-05-24 |  |  |
| DUKHCONP1BZ3ELGF4000 |  | Fixing of wall conduits & switch socket boxes | 25d | 2014-01-14 | 2014-02-12 | DUKHCONP1BZ3ARGF3000 SS+5d, DUKHCONP1BZ3ARGF3000 FF+5d | 47d |
| DUKHCONP1BZ3ELGF4005 |  | Cable tray & trunking installation | 20d | 2014-01-26 | 2014-02-18 | DUKHCONP1BZ3ELGF4000 SS+5d, DUKHCONP1BZ2ELGF4005, DUKHCONP1BZ3ELGF4000 FF+5d | 65d |
| DUKHCONP1BZ3ELGF4010 |  | Installation of wiring & Main Cabling | 25d | 2014-02-03 | 2014-03-04 | DUKHCONP1BZ3ELGF4005 SS+7d, DUKHCONP1BZ3ELGF4005 FF+7d | 65d |
| DUKHCONP1BZ3ELGF4015 |  | Install. of CAMS & Fire Fighting Accessories | 25d | 2014-04-08 | 2014-05-06 | DUKHCONP1BZ3ARGF3055 FF+7d, DUKHCONP1BZ3ARGF3060 SS+7d, DUKHCONP1BZ2ELGF4015, DUKHCONP1BZ3ARGF3060 FF+7d, DUKHCONP1BZ3ARGF3055 SS+7d | 60d |
| DUKHCONP1BZ3ELGF4020 |  | Installation of DBS,MCCB Accessories. | 20d | 2014-04-14 | 2014-05-06 | DUKHCONP1BZ3ARGF3055 FF+7d, DUKHCONP1BZ3ARGF3055 SS+7d, DUKHCONP1BZ3ELGF4010 FF+5d, DUKHCONP1BZ3ARGF3060 FF+7d, DUKHCONP1BZ3ELGF4010 SS+5d, DUKHCONP1BZ3ARGF3060 SS+7d | 38d |
| DUKHCONP1BZ3ELGF4025 |  | Installation of Lighting fixtures & Accessories | 25d | 2014-04-26 | 2014-05-24 | DUKHCONP1BZ3ARGF3055 FF+10d, DUKHCONP1BZ3ARGF3055 SS+10d, DUKHCONP1BZ3ARGF3060 SS+10d, DUKHCONP1BZ2ELGF4025, DUKHCONP1BZ3ARGF3060 FF+10d, DUKHCONP1BZ3ELGF4020 SS+10d, DUKHCONP1BZ3ELGF4020 FF+10d | 40d |
| DUKHCONP1BZ3ELGF4030 |  | Installation of Telephone System | 20d | 2014-04-26 | 2014-05-18 | DUKHCONP1BZ3ARGF3060 SS+5d, DUKHCONP1BZ3ELGF4020 FF+10d, DUKHCONP1BZ2ELGF4030, DUKHCONP1BZ3ARGF3060 FF+5d, DUKHCONP1BZ3ELGF4020 SS+10d | 38d |
|  | 15 | **FIRST FLOORS** |  | 2014-02-25 | 2014-07-24 |  |  |
| DUKHCONP1BZ3ELFF4035 |  | Fixing of wall conduits & switch socket boxes | 25d | 2014-02-25 | 2014-03-25 | DUKHCONP1BZ3ARFF3300 FF+5d, DUKHCONP1BZ3ARFF3300 SS+5d | 5d |
| DUKHCONP1BZ3ELFF4040 |  | Cable tray & trunking installation | 20d | 2014-03-09 | 2014-03-31 | DUKHCONP1BZ3ELFF4035 FF+5d, DUKHCONP1BZ3ELFF4035 SS+5d | 35d |
| DUKHCONP1BZ3ELFF4045 |  | Installation of wiring & Main Cabling | 25d | 2014-03-17 | 2014-04-14 | DUKHCONP1BZ3ELFF4040 FF+7d, DUKHCONP1BZ2ELFF4045, DUKHCONP1BZ3ELFF4040 SS+7d | 35d |
| DUKHCONP1BZ3ELFF4050 |  | Installation of Telephone System | 25d | 2014-06-04 | 2014-07-02 | DUKHCONP1BZ3ELGF4030 FF+10d, DUKHCONP1BZ3MSEX5010, DUKHCONP1BZ3ARFF3360 FF+5d, DUKHCONP1BZ3ARFF3360 SS+5d, DUKHCONP1BZ3ELGF4030 SS+10d | 14d |
| DUKHCONP1BZ3ELFF4055 |  | Install. of CAMS & Fire Fighting Accessories | 25d | 2014-06-07 | 2014-07-05 | DUKHCONP1BZ3ARFF3360 SS+7d, DUKHCONP1BZ3ELGF4015 FF+5d, DUKHCONP1BZ3ELGF4015 SS+5d, DUKHCONP1BZ2ELFF4055, DUKHCONP1BZ3ARFF3360 FF+7d | 34d |
| DUKHCONP1BZ3ELFF4060 |  | Installation of DBS,MCCB Accessories. | 20d | 2014-06-14 | 2014-07-06 | DUKHCONP1BZ3ARFF3360 SS+8d, DUKHCONP1BZ2ELFF4060, DUKHCONP1BZ3ELFF4045 FF+5d, DUKHCONP1BZ3ELFF4045 SS+5d, DUKHCONP1BZ3ARFF3360 FF+8d | -8d |
| DUKHCONP1BZ3ELFF4065 |  | Installation of Lighting fixtures & Accessories | 25d | 2014-06-26 | 2014-07-24 | DUKHCONP1BZ3ARFF3360 SS+10d, DUKHCONP1BZ3ELFF4060 FF+11d, DUKHCONP1BZ3ELGF4025 FF+5d, DUKHCONP1BZ3ELFF4060 SS+11d, DUKHCONP1BZ3ELGF4025 SS+5d, DUKHCONP1BZ2ELFF4065, DUKHCONP1BZ3ARFF3360 FF+10d | -8d |
|  | 20 | **ROOF** |  | 2014-07-16 | 2014-08-26 |  |  |
| DUKHCONP1BZ3ELRF4070 |  | Installation of Isolator | 18d | 2014-07-16 | 2014-08-09 | DUKHCONP1BZ3ELFF4065 SS+10d, DUKHCONP1BZ3ELFF4045 FF+10d, DUKHCONP1BZ3ELFF4045 SS+10d, DUKHCONP1BZ3ELFF4050 FF+7d, DUKHCONP1BZ3ELFF4050 SS+5d, DUKHCONP1BZ3ARRF3645 FF+7d, DUKHCONP1BZ3ARRF3645 SS+7d, DUKHCONP1BZ3ELFF4065 FF+10d | -8d |
| DUKHCONP1BZ3ELRF4075 |  | Installation of TV Dish Antenna | 23d | 2014-07-28 | 2014-08-26 | DUKHCONP1BZ3ELRF4070 FF+10d, DUKHCONP1BZ3ELRF4070 SS+10d | -8d |
|  | 15 | **PLUMBING, DRAINAGE & FIRE FIGHTING WORKS** |  | 2013-10-07 | 2014-08-07 |  |  |
|  | 10 | **GROUND FLOOR** |  | 2013-10-07 | 2014-05-24 |  |  |
| DUKHCONP1BZ3PLUG4300 |  | Drainage / Storm Pipes in Grade Slab | 20d | 2013-10-07 | 2013-10-31 | DUKHCONP1BZ3STUG1040 SS+10d, DUKHCONP1BZ3STUG1040 FF+10d | 0d |
| DUKHCONP1BZ3PLGF4305 |  | Installation of Plumbing pipes & testing | 18d | 2014-01-25 | 2014-02-15 | DUKHCONP1BZ3ARGF3000 SS+7d, DUKHCONP1BZ2PLGF4305, DUKHCONP1BZ3ARGF3000 FF+7d | 38d |
| DUKHCONP1BZ3PLGF4310 |  | Installation of Drainage pipes &testing | 18d | 2014-01-25 | 2014-02-15 | DUKHCONP1BZ3ARGF3000 SS+7d, DUKHCONP1BZ3PLGF4305 SS, DUKHCONP1BZ3PLGF4305 FF, DUKHCONP1BZ3ARGF3000 FF+7d | 41d |
| DUKHCONP1BZ3PLGF4315 |  | Sanitary Fittings & Accessories | 20d | 2014-04-26 | 2014-05-18 | DUKHCONP1BZ3ARGF3065 FF+5d, DUKHCONP1BZ3ARGF3065 SS+5d, DUKHCONP1BZ3PLGF4310 FF+5d, DUKHCONP1BZ3PLGF4310 SS+5d, DUKHCONP1BZ2PLGF4315 | 70d |
| DUKHCONP1BZ3PLGF4320 |  | Installation of Water Heater | 15d | 2014-05-07 | 2014-05-24 | DUKHCONP1BZ3ARGF3060 FF+5d, DUKHCONP1BZ3ARGF3060 SS+5d, DUKHCONP1BZ2PLGF4320, DUKHCONP1BZ3PLGF4315 FF+5d, DUKHCONP1BZ3PLGF4315 SS+5d | 70d |
|  | 15 | **FIRST FLOORS** |  | 2014-03-09 | 2014-07-17 |  |  |

| ID | WBS | Task | Duration | Start | Finish | Predecessors | Total float |
| --- | --- | --- | --- | --- | --- | --- | --- |
| DUKHCONP1BZ3PLFF4325 |  | Installation of Plumbing pipes & testing | 18d | 2014-03-09 | 2014-03-29 | DUKHCONP1BZ3ARFF3300 SS+8d, DUKHCONP1BZ3ARFF3300 FF+8d | -8d |
| DUKHCONP1BZ3PLFF4330 |  | Installation of Drainage pipes & testing | 18d | 2014-03-09 | 2014-03-29 | DUKHCONP1BZ3ARFF3300 SS+7d, DUKHCONP1BZ3PLFF4325 SS, DUKHCONP1BZ3ARFF3300 FF+7d, DUKHCONP1BZ3PLFF4325 FF, DUKHCONP1BZ2PLFF4330 | 19d |
| DUKHCONP1BZ3PLFF4335 |  | Sanitary Fittings & Accessories | 20d | 2014-06-19 | 2014-07-12 | DUKHCONP1BZ3PLFF4330 FF+5d, DUKHCONP1BZ3ARFF3365 FF+5d, DUKHCONP1BZ3ARFF3365 SS+5d, DUKHCONP1BZ3PLFF4330 SS+5d | 8d |
| DUKHCONP1BZ3PLFF4340 |  | Installation of Water Heater | 15d | 2014-07-01 | 2014-07-17 | DUKHCONP1BZ2PLFF4340, DUKHCONP1BZ3ARFF3360 FF+5d, DUKHCONP1BZ3PLFF4335 SS+5d, DUKHCONP1BZ3ARFF3360 SS+5d, DUKHCONP1BZ3PLFF4335 FF+5d | 8d |
|  | 20 | **ROOF** |  | 2014-04-05 | 2014-08-07 |  |  |
| DUKHCONP1BZ3PLRF4345 |  | Installation of Plumbing pipes & fittings | 14d | 2014-04-05 | 2014-04-20 | DUKHCONP1BZ2PLRF4345, DUKHCONP1BZ3ARRF3605 SS+8d, DUKHCONP1BZ3ARRF3605 FF+8d | 73d |
| DUKHCONP1BZ3PLRF4350 |  | Installation of Rain water Pipes | 15d | 2014-04-22 | 2014-05-08 | DUKHCONP1BZ3PLFF4330 FF+5d, DUKHCONP1BZ3PLRF4345 FF+10d, DUKHCONP1BZ3PLRF4345 SS+10d, DUKHCONP1BZ3AREL3665 FF+7d, DUKHCONP1BZ3ARRF3645 FF+5d, DUKHCONP1BZ3ARRF3645 SS+5d, DUKHCONP1BZ3PLFF4330 SS+5d, DUKHCONP1BZ3AREL3665 SS+7d, DUKHCONP1BZ2PLRF4350 | 68d |
| DUKHCONP1BZ3PLRF4355 |  | Roof Water Tank Installation & Connections | 25d | 2014-07-07 | 2014-08-07 | DUKHCONP1BZ3PLFF4340 SS+5d, DUKHCONP1BZ3PLRF4350 FF+5d, DUKHCONP1BZ2PLRF4355, DUKHCONP1BZ3ARRF3655 SS+5d, DUKHCONP1BZ3PLRF4345 FF+10d, DUKHCONP1BZ3PLRF4350 SS+5d, DUKHCONP1BZ3PLRF4345 SS+10d, DUKHCONP1BZ3ARRF3655 FF+5d, DUKHCONP1BZ3PLFF4340 FF+5d | 8d |
|  | 20 | **AC WORKS** |  | 2014-02-15 | 2014-07-31 |  |  |
|  | 10 | **GROUND FLOOR** |  | 2014-02-15 | 2014-05-21 |  |  |
| DUKHCONP1BZ3ACGF4600 |  | Installation AC Pipes | 20d | 2014-02-15 | 2014-03-09 | DUKHCONP1BZ2ACGF4600, DUKHCONP1BZ3ARGF3005 SS+7d, DUKHCONP1BZ3ARGF3005 FF+7d | 69d |
| DUKHCONP1BZ3ACGF4605 |  | Fixing of Ventilation Equipments | 25d | 2014-04-08 | 2014-05-06 | DUKHCONP1BZ3ARGF3055 FF+7d, DUKHCONP1BZ2ACGF4605, DUKHCONP1BZ3ARGF3060 SS+7d, DUKHCONP1BZ3ARGF3055 SS+7d, DUKHCONP1BZ3ARGF3060 FF+7d, DUKHCONP1BZ3ACGF4600 FF+10d, DUKHCONP1BZ3ACGF4600 SS+10d | 57d |
| DUKHCONP1BZ3ACGF4610 |  | Fixing of Split AC | 20d | 2014-04-29 | 2014-05-21 | DUKHCONP1BZ3ACGF4605 SS+13d, DUKHCONP1BZ2ACGF4610, DUKHCONP1BZ3ACGF4605 FF+13d | 57d |
|  | 15 | **FIRST FLOORS** |  | 2014-04-01 | 2014-07-20 |  |  |
| DUKHCONP1BZ3ACFF4615 |  | Installation AC Pipes | 20d | 2014-04-01 | 2014-04-23 | DUKHCONP1BZ3ARFF3305 SS+7d, DUKHCONP1BZ2ACFF4615, DUKHCONP1BZ3ARFF3305 FF+7d | 35d |
| DUKHCONP1BZ3ACFF4620 |  | Fixing of Ventilation Equipments | 25d | 2014-06-07 | 2014-07-05 | DUKHCONP1BZ3ACFF4615 FF+10d, DUKHCONP1BZ2ACFF4620, DUKHCONP1BZ3ARFF3360 SS+7d, DUKHCONP1BZ3ACFF4615 SS+10d, DUKHCONP1BZ3ARFF3360 FF+7d | 6d |
| DUKHCONP1BZ3ACFF4625 |  | Fixing of Split AC | 20d | 2014-06-28 | 2014-07-20 | DUKHCONP1BZ3ACFF4620 FF+13d, DUKHCONP1BZ2ACFF4625, DUKHCONP1BZ3ACFF4620 SS+13d | 6d |
|  | 20 | **ROOF** |  | 2014-04-13 | 2014-07-31 |  |  |
| DUKHCONP1BZ3ACRF4630 |  | Installation of Refrigerant Pipes | 25d | 2014-04-13 | 2014-05-11 | DUKHCONP1BZ3ACGF4600 SS+7d, DUKHCONP1BZ3ACFF4615 FF+7d, DUKHCONP1BZ2ACRF4630, DUKHCONP1BZ3ACFF4615 SS+7d, DUKHCONP1BZ3ARRF3645 FF+7d, DUKHCONP1BZ3ARRF3645 SS+7d, DUKHCONP1BZ3ACGF4600 FF+7d | 76d |
| DUKHCONP1BZ3ACRF4635 |  | Installation of Condensing Unit | 25d | 2014-07-03 | 2014-07-31 | DUKHCONP1BZ3ACFF4625 FF+5d, DUKHCONP1BZ2ACRF4635, DUKHCONP1BZ3ACRF4630 SS+5d, DUKHCONP1BZ3ACGF4610 FF+5d, DUKHCONP1BZ3ACFF4625 SS+5d, DUKHCONP1BZ3ACRF4630 FF+5d, DUKHCONP1BZ3ACGF4610 SS+5d | 11d |
|  | 25 | **EXTERNAL WORKS** |  | 2014-02-20 | 2014-08-30 |  |  |
|  | 10 | **MISCELLANEOUS** |  | 2014-02-20 | 2014-08-30 |  |  |
| DUKHCONP1BZ3MSEX5020 |  | Construction Entrance Ramp | 25d | 2014-02-20 | 2014-03-20 | DUKHCONP1BZ2MSEX5020, DUKHCONP1BZ3STRF2055 FF, DUKHCONP1BZ3STRF2055 SS | 58d |
| DUKHCONP1BZ3MSEX5000 |  | Construction of Manholes | 25d | 2014-02-23 | 2014-03-23 | DUKHCONP1BZ3PLGF4310 FF+10d, DUKHCONP1BZ3PLGF4310 SS+10d, DUKHCONP1BZ3STRF2055 SS+10d, DUKHCONP1BZ3STRF2055 FF+10d | 27d |
| DUKHCONP1BZ3MSEX5005 |  | Construction of Soak pit, Chambers | 25d | 2014-03-09 | 2014-04-06 | DUKHCONP1BZ3MSEX5000 FF+12d, DUKHCONP1BZ3MSEX5000 SS+12d | 27d |
| DUKHCONP1BZ3MSEX5025 |  | SS.Handrails and Balustrades | 20d | 2014-03-10 | 2014-04-01 | DUKHCONP1BZ3MSEX5020 FF+10d, DUKHCONP1BZ3MSEX5020 SS+10d | 60d |
| DUKHCONP1BZ3MSEX5015 |  | Construction of grease Trap | 20d | 2014-03-29 | 2014-04-20 | DUKHCONP1BZ3MSEX5005 SS+12d, DUKHCONP1BZ3MSEX5005 FF+12d | 27d |
| DUKHCONP1BZ3MSEX5010 |  | Telephone cable laying | 25d | 2014-04-21 | 2014-05-19 | DUKHCONP1BZ3MSEX5015 | 27d |
| DUKHCONP1BZ3MSEX5335 |  | Aluminum Roll-up Shutter with 2m Wall | 25d | 2014-07-29 | 2014-08-30 | DUKHCONP1BZ2MSEX5335, DUKHCONI1BZ2BWGL5325 SS+7d | 14d |
|  | 15 | **WATER TANK ENCLOSURE** |  | 2014-03-06 | 2014-06-10 |  |  |
| DUKHCONP1BZ3WEEX5030 |  | Excavation | 20d | 2014-03-06 | 2014-03-29 | DUKHCONP1BZ2WEEX5035, DUKHCONP1BZ3STRF2055 SS+10d, DUKHCONP1BZ3STRF2060 SS+7d, DUKHCONP1BZ3STRF2055 FF+10d | 40d |
| DUKHCONP1BZ3WEEX5035 |  | Construction of Raft | 25d | 2014-03-18 | 2014-04-15 | DUKHCONP1BZ3WEEX5030 FF+10d, DUKHCONP1BZ3WEEX5030 SS+10d | 40d |
| DUKHCONP1BZ3WEEX5040 |  | Block works & Plastering | 25d | 2014-03-27 | 2014-04-24 | DUKHCONP1BZ3WEEX5035 SS+8d, DUKHCONP1BZ3WEEX5035 FF+8d | 55d |
| DUKHCONP1BZ3WEEX5045 |  | Flooring & Painting | 25d | 2014-04-08 | 2014-05-06 | DUKHCONP1BZ3MSEX5025 SS+10d, DUKHCONP1BZ3WEEX5040 SS+10d, DUKHCONP1BZ3WEEX5040 FF+10d | 55d |
| DUKHCONP1BZ3WEEX5050 |  | Installation of Steel Gate | 20d | 2014-04-26 | 2014-05-18 | DUKHCONP1BZ3MSEX5025 FF+10d, DUKHCONP1BZ3MSEX5015 SS+5d, DUKHCONP1BZ3WEEX5045 SS+5d, DUKHCONP1BZ3WEEX5045 FF+10d | 55d |
| DUKHCONP1BZ3WEEX5060 |  | Structural steel & SS Shed cover installation | 25d | 2014-05-01 | 2014-05-29 | DUKHCONP1BZ2WEEX5060, DUKHCONP1BZ3MSEX5025 FF+10d, DUKHCONP1BZ3WEEX5050 SS+5d, DUKHCONP1BZ3WEEX5050 FF+10d | 55d |
| DUKHCONP1BZ3WEEX5065 |  | Install. of Water Tank,Chiller,Pump & Meter | 25d | 2014-05-13 | 2014-06-10 | DUKHCONP1BZ3MSEX5015 SS+5d, DUKHCONP1BZ3PLRF4350 SS+5d, DUKHCONP1BZ3PLRF4350 FF+5d, DUKHCONP1BZ3MSEX5015 FF+5d, DUKHCONP1BZ2WEEX5065, DUKHCONP1BZ3WEEX5060 FF+10d, DUKHCONP1BZ3WEEX5060 SS+10d | 55d |
|  | 20 | **HARD LANDSCAPING** |  | 2014-03-18 | 2014-05-06 |  |  |
| DUKHCONP1BZ3HDEX5090 |  | kerb works | 20d | 2014-03-18 | 2014-04-09 | DUKHCONP1BZ3MSEX5020 FF+7d, DUKHCONP1BZ3MSEX5025 SS+7d, DUKHCONP1BZ2HDEX5090, DUKHCONP1BZ3MSEX5020 SS+7d | 60d |
| DUKHCONP1BZ3HDEX5095 |  | Cobble Stone Works | 20d | 2014-03-30 | 2014-04-21 | DUKHCONP1BZ3HDEX5090 FF+10d, DUKHCONP1BZ3HDEX5090 SS+10d | 60d |
| DUKHCONP1BZ3HDEX5100 |  | Interlock works | 20d | 2014-04-14 | 2014-05-06 | DUKHCONP1BZ3HDEX5095 FF+13d, DUKHCONP1BZ3HDEX5095 SS+13d | 60d |
|  | 25 | **SOFT LANDSCAPING** |  | 2014-04-26 | 2014-06-04 |  |  |
| DUKHCONP1BZ3SLEX5105 |  | Laying of Grass/ green area | 25d | 2014-04-26 | 2014-05-24 | DUKHCONP1BZ3HDEX5100 FF+10d, DUKHCONP1BZ3HDEX5100 SS+10d | 60d |
| DUKHCONP1BZ3SLEX5110 |  | Laying of Palm tree | 25d | 2014-05-07 | 2014-06-04 | DUKHCONP1BZ3SLEX5105 SS+10d, DUKHCONP1BZ3SLEX5105 FF+10d | 60d |
|  | 30 | **TESTING AND COMMISSIONING** |  | 2014-08-27 | 2014-09-24 |  |  |
| DUKHCONP1BZ3ACTC8000 |  | Pre-Commissioning & Testing of AC Works | 25d | 2014-08-27 | 2014-09-24 | DUKHCONP1BZ3ARRF3660, DUKHCONP1BZ3ARFF3395, DUKHCONP1BZ3ARGF3095, DUKHCONP1BZ3HDEX5100, DUKHCONP1BZ3SLEX5110, DUKHCONP1BZ3AREL3680, DUKHCONP1BZ3MSEX5005, DUKHCONP1BZ3SLEX5105, DUKHCONP1BZ2ACTC8000, DUKHCONP1BZ3ARRF3620, DUKHCONP1BZ3ACFF4625, DUKHCONP1BZ3ARRF3655, DUKHCONP1BZ3ACRF4635 | -8d |
| DUKHCONP1BZ3ELTC8010 |  | Pre-Commissioning & Testing of Electrical Works | 25d | 2014-08-27 | 2014-09-24 | DUKHCONP1BZ2ELTC8010, DUKHCONP1BZ3HDEX5100, DUKHCONP1BZ3ARRF3620, DUKHCONP1BZ3ELFF4055, DUKHCONP1BZ3ELGF4015, DUKHCONP1BZ3ELGF4025, DUKHCONP1BZ3ARFF3395, DUKHCONP1BZ3ARGF3095, DUKHCONP1BZ3SLEX5110, DUKHCONP1BZ3ELGF4030, DUKHCONP1BZ3SLEX5105, DUKHCONP1BZ3AREL3680, DUKHCONP1BZ3ELFF4065, DUKHCONP1BZ3MSEX5005, DUKHCONP1BZ3ELFF4050, DUKHCONP1BZ3ARRF3655, DUKHCONP1BZ3ARRF3660, DUKHCONP1BZ3ELRF4075 | -8d |
| DUKHCONP1BZ3PLTC8005 |  | Pre-Commissioning & Testing of Plumbing Works | 25d | 2014-08-27 | 2014-09-24 | DUKHCONP1BZ3MSEX5005, DUKHCONP1BZ3AREL3680, DUKHCONP1BZ3ARGF3095, DUKHCONP1BZ3PLRF4355, DUKHCONP1BZ3HDEX5100, DUKHCONP1BZ3ARFF3395, DUKHCONP1BZ3ARRF3655, DUKHCONP1BZ3ARRF3660, DUKHCONP1BZ2PLTC8005, DUKHCONP1BZ3SLEX5105, DUKHCONP1BZ3PLRF4350, DUKHCONP1BZ3SLEX5110, DUKHCONP1BZ3WEEX5065, DUKHCONP1BZ3ARRF3620, DUKHCONP1BZ3PLGF4320 | -8d |
|  | 25 | **ZONE - 4 (4 Twin Villas)** |  | 2013-07-23 | 2014-10-26 |  |  |
|  | 10 | **STRUCTURAL WORKS** |  | 2013-07-23 | 2014-05-03 |  |  |
|  | 10 | **SUB STRUCTURE** |  | 2013-07-23 | 2013-12-15 |  |  |
|  | 10 | **UPTO GRADE SLAB** |  | 2013-07-23 | 2013-12-15 |  |  |
| DUKHCONP1BZ4STUG1000 |  | Footing Excavation | 25d | 2013-07-23 | 2013-08-24 | DUKHCONP1BZ3STUG1000 | 0d |
| DUKHCONP1BZ4STUG1005 |  | Footing Antitermite | 23d | 2013-08-04 | 2013-09-02 | DUKHCONP1BZ4STUG1000 SS+10d, DUKHCONP1BZ4STUG1000 FF+5d | 0d |
| DUKHCONP1BZ4STUG1010 |  | Footing Blinding | 23d | 2013-08-08 | 2013-09-07 | DUKHCONP1BZ4STUG1005 SS+4d, DUKHCONP1BZ4STUG1005 FF+4d | 0d |
| DUKHCONP1BZ4STUG1015 |  | Footing Waterproofing & Screed | 25d | 2013-08-18 | 2013-09-15 | DUKHCONP1BZ4STUG1010 SS+5d, DUKHCONP1BZ4STUG1010 FF+5d | 0d |
| DUKHCONP1BZ4STUG1020 |  | Construction of foundations | 20d | 2013-09-02 | 2013-09-24 | DUKHCONP1BZ4STUG1015 FF+8d, DUKHCONP1BZ4STUG1015 SS+7d | 0d |
| DUKHCONP1BZ4STUG1025 |  | Construction of neck of columns | 25d | 2013-09-11 | 2013-10-09 | DUKHCONP1BZ3STUG1025, DUKHCONP1BZ4STUG1020 SS+8d, DUKHCONP1BZ4STUG1020 FF+7d | 0d |
| DUKHCONP1BZ4STUG1030 |  | Waterproofing Footing & Neck Column | 25d | 2013-09-21 | 2013-10-21 | DUKHCONP1BZ4STUG1025 SS+8d, DUKHCONP1BZ4STUG1025 FF+8d | 0d |
| DUKHCONP1BZ4STUG1035 |  | Backfilling Upto Grade Beam Bottom | 25d | 2013-10-02 | 2013-11-02 | DUKHCONP1BZ4STUG1030 FF+10d, DUKHCONP1BZ4STUG1030 SS+10d, DUKHCONP1BZ3STUG1035 | 0d |
| DUKHCONP1BZ4STUG1040 |  | Construction of Grade Beams | 25d | 2013-10-21 | 2013-11-18 | DUKHCONP1BZ4STUG1035 SS+14d, DUKHCONP1BZ4STUG1035 FF+14d | 0d |
| DUKHCONP1BZ4STUG1045 |  | Construction of slab on grade | 25d | 2013-11-17 | 2013-12-15 | DUKHCONP1BZ4STUG1040 FF+10d, DUKHCONP1BZ4PLUG4300 SS+8d, DUKHCONP1BZ3STUG1045, DUKHCONP1BZ4PLUG4300 FF+8d, DUKHCONP1BZ4STUG1040 SS+10d | 0d |
|  | 15 | **SUPERSTRUCTURE** |  | 2013-12-03 | 2014-05-03 |  |  |
|  | 10 | **GROUND FLOOR** |  | 2013-12-03 | 2014-01-28 |  |  |
| DUKHCONP1BZ4STGF2000 |  | Column-Rebar & Formwork | 25d | 2013-12-03 | 2014-01-01 | DUKHCONP1BZ4STUG1045 FF+7d, DUKHCONP1BZ3STGF2000, DUKHCONP1BZ4STUG1045 SS+14d | 0d |
| DUKHCONP1BZ4STGF2005 |  | Column-Concrete | 23d | 2013-12-12 | 2014-01-08 | DUKHCONP1BZ4STGF2000 SS+8d, DUKHCONP1BZ4STGF2000 FF+2d | 0d |
| DUKHCONP1BZ4STGF2010 |  | Beam, Stairs ,Slab-Rebar & Formwork | 25d | 2013-12-28 | 2014-01-25 | DUKHCONP1BZ4STGF2005 SS+2d, DUKHCONP1BZ4STGF2005 FF+14d | 0d |
| DUKHCONP1BZ4STGF2015 |  | Beam, Stairs ,Slab-Concrete | 14d | 2014-01-13 | 2014-01-28 | DUKHCONP1BZ4STGF2010 SS+10d, DUKHCONP1BZ4STGF2010 FF+3d, DUKHCONP1BZ3STGF2015 | 0d |
|  | 15 | **FIRST FLOORS** |  | 2014-01-15 | 2014-03-02 |  |  |
| DUKHCONP1BZ4STFF2020 |  | Column-Rebar & Formwork | 25d | 2014-01-15 | 2014-02-13 | DUKHCONP1BZ4STGF2015 SS+2d, DUKHCONP1BZ3STFF2020, DUKHCONP1BZ4STGF2015 FF+5d | 0d |

| ID | WBS | Task | Duration | Start | Finish | Predecessors | Total float |
| --- | --- | --- | --- | --- | --- | --- | --- |
| DUKHCONP1BZ4STFF2025 |  | Column-Concrete | 23d | 2014-01-25 | 2014-02-20 | DUKHCONP1BZ4STFF2020 SS+8d, DUKHCONP1BZ4STFF2020 FF+2d | 0d |
| DUKHCONP1BZ4STFF2030 |  | Beam, Stairs ,Slab-Rebar & Formwork | 25d | 2014-01-28 | 2014-02-26 | DUKHCONP1BZ4STFF2025 FF+5d, DUKHCONP1BZ4STFF2025 SS+2d | 0d |
| DUKHCONP1BZ4STFF2035 |  | Beam, Stairs ,Slab-Concrete | 14d | 2014-02-15 | 2014-03-02 | DUKHCONP1BZ4STFF2030 FF+3d, DUKHCONP1BZ3STFF2035, DUKHCONP1BZ4STFF2030 SS+10d | 0d |
|  | 20 | **ROOF** |  | 2014-02-20 | 2014-05-03 |  |  |
| DUKHCONP1BZ4STRF2040 |  | Column-Rebar & Formwork | 18d | 2014-02-20 | 2014-03-12 | DUKHCONP1BZ3STRF2040, DUKHCONP1BZ4STFF2035 FF+3d, DUKHCONP1BZ4STFF2035 SS+5d | 16d |
| DUKHCONP1BZ4STRF2045 |  | Column-Concrete | 17d | 2014-02-24 | 2014-03-15 | DUKHCONP1BZ4STRF2040 SS+3d, DUKHCONP1BZ4STRF2040 FF+1d | 26d |
| DUKHCONP1BZ4STRF2050 |  | Slab-Rebar & Formwork - Head Room | 20d | 2014-02-26 | 2014-03-20 | DUKHCONP1BZ4STRF2045 SS+2d, DUKHCONP1BZ4STRF2045 FF+5d | 26d |
| DUKHCONP1BZ4STRF2055 |  | Slab-Concrete-Head room | 13d | 2014-03-12 | 2014-03-26 | DUKHCONP1BZ3STRF2055, DUKHCONP1BZ4STRF2050 SS+5d, DUKHCONP1BZ4STRF2050 FF+5d | 26d |
| DUKHCONP1BZ4STRF2060 |  | Construction of Parapets | 25d | 2014-03-19 | 2014-04-16 | DUKHCONP1BZ4STRF2055 SS+6d, DUKHCONP1BZ4STRF2055 FF+10d | 62d |
| DUKHCONP1BZ4STRF2065 |  | Construction of up stands/Plinth | 25d | 2014-04-05 | 2014-05-03 | DUKHCONP1BZ3STRF2065, DUKHCONP1BZ4STRF2060 FF+10d, DUKHCONP1BZ4STRF2060 SS+10d | 67d |
|  | 15 | **FINISHING WORKS** |  | 2014-02-06 | 2014-09-24 |  |  |
|  | 10 | **INTERNAL FINISHES** |  | 2014-02-06 | 2014-09-24 |  |  |
|  | 10 | **GROUND FLOOR** |  | 2014-02-06 | 2014-07-20 |  |  |
| DUKHCONP1BZ4ARGF3000 |  | Block work | 25d | 2014-02-06 | 2014-03-08 | DUKHCONP1BZ4STGF2015 FF+21d, DUKHCONP1BZ3ARGF3000, DUKHCONP1BZ4STGF2015 SS+21d | 38d |
| DUKHCONP1BZ4ARGF3005 |  | Plastering work | 25d | 2014-03-02 | 2014-03-30 | DUKHCONP1BZ4ARGF3000 FF+7d, DUKHCONP1BZ4PLGF4305 SS+5d, DUKHCONP1BZ4ELGF4000 FF+5d, DUKHCONP1BZ4ELGF4000 SS+5d, DUKHCONP1BZ3ARGF3005, DUKHCONP1BZ4PLGF4305 FF+5d, DUKHCONP1BZ4ARGF3000 SS+7d | 38d |
| DUKHCONP1BZ4ARGF3010 |  | Flooring screed | 21d | 2014-03-10 | 2014-04-02 | DUKHCONP1BZ4ARGF3005 FF+3d, DUKHCONP1BZ4ARGF3005 SS+7d | 46d |
| DUKHCONP1BZ4ARGF3030 |  | Paint First coat | 25d | 2014-03-18 | 2014-04-15 | DUKHCONP1BZ4ARGF3005 SS+14d, DUKHCONP1BZ3ARGF3030, DUKHCONP1BZ4ARGF3005 FF+14d | 52d |
| DUKHCONP1BZ4ARGF3015 |  | Wet area waterproofing & Protection Screed | 15d | 2014-03-19 | 2014-04-05 | DUKHCONP1BZ4ARGF3005 FF+5d, DUKHCONP1BZ4ARGF3005 SS+7d, DUKHCONP1BZ3ARGF3015 | 38d |
| DUKHCONP1BZ4ARGF3020 |  | Ceramic Wall Tiling | 25d | 2014-03-25 | 2014-04-22 | DUKHCONP1BZ4PLGF4305 SS+4d, DUKHCONP1BZ4PLGF4310 FF+4d, DUKHCONP1BZ4ARGF3015 FF+5d, DUKHCONP1BZ3ARGF3020, DUKHCONP1BZ4PLGF4305 FF+4d, DUKHCONP1BZ4ARGF3015 SS+5d, DUKHCONP1BZ4PLGF4310 SS+4d | 38d |
| DUKHCONP1BZ4ARGF3025 |  | Porcelain Tile flooring | 25d | 2014-03-31 | 2014-04-28 | DUKHCONP1BZ4ARGF3020 FF+5d, DUKHCONP1BZ4ARGF3010 SS+10d, DUKHCONP1BZ4ARGF3020 SS+5d, DUKHCONP1BZ3ARGF3025, DUKHCONP1BZ4ARGF3010 FF+10d | 38d |
| DUKHCONP1BZ4ARGF3045 |  | Fixing of Suspension systems | 20d | 2014-04-17 | 2014-05-10 | DUKHCONP1BZ4ARGF3030 FF+7d, DUKHCONP1BZ4ELGF4010 FF+5d, DUKHCONP1BZ3ARGF3045, DUKHCONP1BZ4ARGF3025 SS+10d, DUKHCONP1BZ4ARGF3030 SS+7d, DUKHCONP1BZ4ELGF4010 SS+5d, DUKHCONP1BZ4ARGF3025 FF+10d | 38d |
| DUKHCONP1BZ4ARGF3035 |  | Slate Tile Flooring & Skirting | 15d | 2014-04-20 | 2014-05-06 | DUKHCONP1BZ4ARGF3025 FF+7d, DUKHCONP1BZ4ARGF3025 SS+13d, DUKHCONP1BZ4ARGF3010 SS+13d, DUKHCONP1BZ4ARGF3010 FF+13d | 48d |
| DUKHCONP1BZ4ARGF3055 |  | Aluminum tile false ceiling | 25d | 2014-04-26 | 2014-05-24 | DUKHCONP1BZ4ACGF4600 SS+7d, DUKHCONP1BZ4ACGF4600 FF+7d, DUKHCONP1BZ4ARGF3045 FF+7d, DUKHCONP1BZ4ARGF3045 SS+7d | 41d |
| DUKHCONP1BZ4ARGF3040 |  | Cobble Tile flooring | 15d | 2014-04-27 | 2014-05-13 | DUKHCONP1BZ4ARGF3025 SS+13d, DUKHCONP1BZ4ARGF3035 FF+4d, DUKHCONP1BZ4ARGF3010 FF+13d, DUKHCONP1BZ4ARGF3025 FF+13d, DUKHCONP1BZ4ARGF3010 SS+13d, DUKHCONP1BZ4ARGF3035 SS+4d | 46d |
| DUKHCONP1BZ4ARGF3060 |  | Gypsum board false ceiling | 25d | 2014-04-29 | 2014-05-27 | DUKHCONP1BZ3ARGF3060, DUKHCONP1BZ4ARGF3045 SS+10d, DUKHCONP1BZ4ARGF3045 FF+10d, DUKHCONP1BZ4ACGF4600 FF+7d, DUKHCONP1BZ4ACGF4600 SS+7d | 38d |
| DUKHCONP1BZ4ARGF3050 |  | Granite - Stair case flooring & Skirting | 20d | 2014-05-05 | 2014-05-27 | DUKHCONP1BZ4ARGF3040 FF+7d, DUKHCONP1BZ4ARGF3025 SS+13d, DUKHCONP1BZ4ARGF3025 FF+13d, DUKHCONP1BZ4ARGF3040 SS+7d | 46d |
| DUKHCONP1BZ4ARGF3065 |  | Wooden door & PVC Door | 15d | 2014-05-19 | 2014-06-04 | DUKHCONP1BZ3ARGF3065, DUKHCONP1BZ4ARGF3035 FF+7d, DUKHCONP1BZ4ARGF3035 SS+7d, DUKHCONP1BZ4ARGF3050 FF+7d, DUKHCONP1BZ4ARGF3050 SS+7d | 46d |
| DUKHCONP1BZ4ARGF3070 |  | Aluminum doors | 15d | 2014-05-25 | 2014-06-10 | DUKHCONP1BZ4ARGF3065 FF+5d, DUKHCONP1BZ4ARGF3065 SS+5d, DUKHCONP1BZ3ARGF3070 | 46d |
| DUKHCONP1BZ4ARGF3075 |  | Carpentry & Joinery Works | 20d | 2014-05-31 | 2014-06-22 | DUKHCONP1BZ4ARGF3070 FF+7d, DUKHCONP1BZ4ARGF3070 SS+5d, DUKHCONP1BZ3ARGF3075 | 46d |
| DUKHCONP1BZ4ARGF3080 |  | Aluminum windows | 20d | 2014-06-01 | 2014-06-23 | DUKHCONP1BZ4ARGF3070 FF+6d, DUKHCONP1BZ4ARGF3070 SS+6d, DUKHCONP1BZ3ARGF3080 | 56d |
| DUKHCONP1BZ4ARGF3085 |  | S.S.Balustrade | 20d | 2014-06-08 | 2014-06-30 | DUKHCONP1BZ4ARGF3050 FF+7d, DUKHCONP1BZ4ARGF3075 FF+7d, DUKHCONP1BZ4ARGF3050 SS+7d, DUKHCONP1BZ4ARGF3075 SS+7d | 51d |
| DUKHCONP1BZ4ARGF3090 |  | Installation of Granite Counter Top | 15d | 2014-06-12 | 2014-06-29 | DUKHCONP1BZ4ARGF3075 SS+7d, DUKHCONP1BZ4ARGF3075 FF+6d | 46d |
| DUKHCONP1BZ4ARGF3095 |  | Final Painting | 25d | 2014-06-22 | 2014-07-20 | DUKHCONP1BZ4ARGF3090 SS+8d, DUKHCONP1BZ4ARGF3040 FF+13d, DUKHCONP1BZ4ARGF3060 FF+8d, DUKHCONP1BZ4ARGF3035 SS+13d, DUKHCONP1BZ4ARGF3030 FF+10d, DUKHCONP1BZ4ARGF3080 FF+8d, DUKHCONP1BZ4ARGF3085 FF+7d, DUKHCONP1BZ4ACGF4610 SS+10d, DUKHCONP1BZ3ARGF3095, DUKHCONP1BZ4ARGF3040 SS+13d, DUKHCONP1BZ4ARGF3060 SS+8d, DUKHCONP1BZ4ARGF3070 FF+5d, DUKHCONP1BZ4ARGF3080 SS+8d, DUKHCONP1BZ4ACGF4610 FF+10d, DUKHCONP1BZ4ARGF3030 SS+10d, DUKHCONP1BZ4ARGF3035 FF+13d, DUKHCONP1BZ4ARGF3070 SS+5d, DUKHCONP1BZ4ARGF3090 FF+8d, DUKHCONP1BZ4ARGF3085 SS+7d | 46d |
|  | 15 | **FIRST FLOORS** |  | 2014-03-20 | 2014-09-24 |  |  |
| DUKHCONP1BZ4ARFF3300 |  | Block work | 25d | 2014-03-20 | 2014-04-17 | DUKHCONP1BZ4STFF2020 FF+21d, DUKHCONP1BZ4STFF2035 FF+21d, DUKHCONP1BZ4STFF2035 SS+21d, DUKHCONP1BZ3ARFF3300, DUKHCONP1BZ4STFF2020 SS+21d | -8d |
| DUKHCONP1BZ4ARFF3305 |  | Plastering work | 25d | 2014-04-16 | 2014-05-14 | DUKHCONP1BZ4ARFF3300 FF+7d, DUKHCONP1BZ4ARFF3300 SS+7d, DUKHCONP1BZ3ARFF3305, DUKHCONP1BZ4PLFF4325 FF+8d, DUKHCONP1BZ4PLFF4325 SS+8d, DUKHCONP1BZ4ELFF4035 FF+5d, DUKHCONP1BZ4ELFF4035 SS+5d | -8d |
| DUKHCONP1BZ4ARFF3310 |  | Flooring screed | 21d | 2014-04-24 | 2014-05-18 | DUKHCONP1BZ4ARFF3305 FF+3d, DUKHCONP1BZ4ARFF3305 SS+7d | 9d |
| DUKHCONP1BZ4ARFF3330 |  | Paint First coat | 25d | 2014-05-03 | 2014-05-31 | DUKHCONP1BZ4ARFF3305 SS+14d, DUKHCONP1BZ4ARFF3305 FF+14d | 18d |
| DUKHCONP1BZ4ARFF3315 |  | Wet area waterproofing | 15d | 2014-05-07 | 2014-05-24 | DUKHCONP1BZ4ARFF3305 FF+8d, DUKHCONP1BZ3ARFF3315, DUKHCONP1BZ4ARFF3305 SS+7d | -8d |
| DUKHCONP1BZ4ARFF3320 |  | Ceramic Wall Tiling | 25d | 2014-05-17 | 2014-06-14 | DUKHCONP1BZ4PLFF4330 FF+7d, DUKHCONP1BZ4PLFF4325 SS+4d, DUKHCONP1BZ4PLFF4325 FF+4d, DUKHCONP1BZ3ARFF3320, DUKHCONP1BZ4PLFF4330 SS+7d, DUKHCONP1BZ4ARFF3315 FF+7d, DUKHCONP1BZ4ARFF3315 SS+8d | -8d |
| DUKHCONP1BZ4ARFF3325 |  | Porcelain Tile flooring | 25d | 2014-05-26 | 2014-06-23 | DUKHCONP1BZ4ARFF3320 SS+8d, DUKHCONP1BZ4ARFF3310 SS+10d, DUKHCONP1BZ4ARFF3320 FF+8d, DUKHCONP1BZ4ARFF3310 FF+10d, DUKHCONP1BZ3ARFF3325 | -8d |
| DUKHCONP1BZ4ARFF3335 |  | Slate Tile Flooring & Skirting | 15d | 2014-06-12 | 2014-06-29 | DUKHCONP1BZ4ARFF3310 FF+13d, DUKHCONP1BZ4ARFF3310 SS+13d, DUKHCONP1BZ4ARFF3325 SS+13d, DUKHCONP1BZ4ARFF3325 FF+5d | 11d |
| DUKHCONP1BZ4ARFF3345 |  | Fixing of Suspension systems | 20d | 2014-06-16 | 2014-07-08 | DUKHCONP1BZ4ARFF3330 FF+7d, DUKHCONP1BZ4ELFF4045 SS+5d, DUKHCONP1BZ4ARFF3325 FF+13d, DUKHCONP1BZ4ARFF3325 SS+13d, DUKHCONP1BZ4ELFF4045 FF+5d, DUKHCONP1BZ4ARFF3330 SS+7d, DUKHCONP1BZ3ARFF3345 | -8d |
| DUKHCONP1BZ4ARFF3350 |  | Granite - Stair case flooring & Skirting | 20d | 2014-06-16 | 2014-07-08 | DUKHCONP1BZ4ARFF3325 SS+13d, DUKHCONP1BZ4ARFF3325 FF+13d | 3d |
| DUKHCONP1BZ4ARFF3360 |  | Gypsum board false ceiling | 25d | 2014-06-28 | 2014-07-26 | DUKHCONP1BZ4ARFF3345 SS+10d, DUKHCONP1BZ3ARFF3360, DUKHCONP1BZ4ACFF4615 FF+7d, DUKHCONP1BZ4ARFF3345 FF+10d, DUKHCONP1BZ4ACFF4615 SS+7d | -8d |
| DUKHCONP1BZ4ARFF3365 |  | Wooden door | 15d | 2014-07-13 | 2014-07-29 | DUKHCONP1BZ4ARFF3335 FF+7d, DUKHCONP1BZ4ARFF3350 FF+7d, DUKHCONP1BZ4ARFF3350 SS+7d, DUKHCONP1BZ4ARFF3360 FF+3d, DUKHCONP1BZ3ARFF3365, DUKHCONP1BZ4ARFF3335 SS+7d, DUKHCONP1BZ4ARFF3360 SS+3d | -8d |
| DUKHCONP1BZ4ARFF3370 |  | Aluminum Door | 20d | 2014-07-21 | 2014-08-16 | DUKHCONP1BZ3ARFF3370, DUKHCONP1BZ4ARFF3365 SS+7d, DUKHCONP1BZ4ARFF3365 FF+5d | -8d |
| DUKHCONP1BZ4ARFF3380 |  | Aluminum windows | 20d | 2014-07-28 | 2014-08-23 | DUKHCONP1BZ4ARFF3370 FF+6d, DUKHCONP1BZ4ARFF3370 SS+6d | 5d |
| DUKHCONP1BZ4ARFF3375 |  | Carpentry & Joinery Works | 25d | 2014-07-29 | 2014-08-30 | DUKHCONP1BZ4ARFF3370 FF+5d, DUKHCONP1BZ3ARFF3375, DUKHCONP1BZ4ARFF3370 SS+7d | -8d |
| DUKHCONP1BZ4ARFF3385 |  | Handrail & Balustrade | 20d | 2014-08-16 | 2014-09-07 | DUKHCONP1BZ4ARFF3350 FF+7d, DUKHCONP1BZ4ARFF3350 SS+7d, DUKHCONP1BZ4ARFF3375 SS+7d, DUKHCONP1BZ4ARFF3375 FF+7d | -8d |
| DUKHCONP1BZ4ARFF3390 |  | Installation of Granite Counter Top | 20d | 2014-08-16 | 2014-09-07 | DUKHCONP1BZ4ARFF3375 SS+7d, DUKHCONP1BZ4ARFF3375 FF+7d | -6d |
| DUKHCONP1BZ4ARFF3395 |  | Final Painting | 25d | 2014-08-27 | 2014-09-24 | DUKHCONP1BZ4ARFF3385 FF+10d, DUKHCONP1BZ4ARFF3330 FF+10d, DUKHCONP1BZ4ARFF3360 SS+10d, DUKHCONP1BZ4ARFF3375 FF+8d, DUKHCONP1BZ4ARFF3375 SS+8d, DUKHCONP1BZ4ARFF3335 FF+8d, DUKHCONP1BZ4ARFF3385 SS+10d, DUKHCONP1BZ4ARFF3335 SS+8d, DUKHCONP1BZ4ARFF3380 FF+10d, DUKHCONP1BZ4ARFF3350 SS+8d, DUKHCONP1BZ4ARFF3365 FF+8d, DUKHCONP1BZ4ARFF3365 SS+8d, DUKHCONP1BZ4ARFF3390 FF+8d, DUKHCONP1BZ4ARFF3330 SS+10d, DUKHCONP1BZ4ARFF3350 FF+8d, DUKHCONP1BZ4ARFF3390 SS+8d, DUKHCONP1BZ4ACFF4625 FF+10d, DUKHCONP1BZ4ACFF4625 SS+10d, DUKHCONP1BZ3ARFF3395, DUKHCONP1BZ4ARFF3360 FF+10d, DUKHCONP1BZ4ARFF3380 SS+10d | -8d |
|  | 20 | **ROOF** |  | 2014-04-06 | 2014-06-19 |  |  |
| DUKHCONP1BZ4ARRF3600 |  | Block work | 20d | 2014-04-06 | 2014-04-28 | DUKHCONP1BZ4STRF2055 SS+21d, DUKHCONP1BZ3ARRF3600, DUKHCONP1BZ4STRF2055 FF+21d | 67d |
| DUKHCONP1BZ4ARRF3605 |  | Plastering work | 20d | 2014-04-17 | 2014-05-10 | DUKHCONP1BZ4ARRF3600 FF+10d, DUKHCONP1BZ4ARRF3600 SS+10d | 67d |
| DUKHCONP1BZ4ARRF3610 |  | Flooring screed | 15d | 2014-05-05 | 2014-05-21 | DUKHCONP1BZ4ARRF3605 SS+10d, DUKHCONP1BZ4ARRF3605 FF+10d | 67d |
| DUKHCONP1BZ4ARRF3695 |  | Painting -Storage area | 20d | 2014-05-17 | 2014-06-08 | DUKHCONP1BZ4ARRF3610 SS+10d, DUKHCONP1BZ4ARRF3610 FF+10d | 67d |
| DUKHCONP1BZ4ARRF3620 |  | Epoxy Painting -Storage area | 15d | 2014-06-03 | 2014-06-19 | DUKHCONP1BZ4ARRF3695 SS+10d, DUKHCONP1BZ4ARRF3695 FF+10d | 67d |
|  | 15 | **EXTERNAL FINISHES** |  | 2014-04-16 | 2014-06-28 |  |  |
|  | 10 | **ROOF** |  | 2014-04-16 | 2014-06-25 |  |  |
| DUKHCONP1BZ4ARRF3630 |  | Leveling Screed for Waterproofing | 25d | 2014-04-16 | 2014-05-14 | DUKHCONP1BZ3ARRF3630, DUKHCONP1BZ4STRF2065 SS+10d, DUKHCONP1BZ4STRF2060 FF+10d, DUKHCONP1BZ4STRF2060 SS+10d, DUKHCONP1BZ4STRF2065 FF+10d | 67d |
| DUKHCONP1BZ4ARRF3635 |  | Laying of Waterproofing Membrane | 25d | 2014-04-20 | 2014-05-18 | DUKHCONP1BZ4ARRF3630 FF+3d, DUKHCONP1BZ4ARRF3630 SS+3d | 67d |
| DUKHCONP1BZ4ARRF3640 |  | Installation of Insulation & Protection | 25d | 2014-04-24 | 2014-05-22 | DUKHCONP1BZ4ARRF3635 FF+4d, DUKHCONP1BZ4ARRF3635 SS+4d | 67d |
| DUKHCONP1BZ4ARRF3645 |  | Lime Stone Chips & Paving slab Installation | 25d | 2014-04-29 | 2014-05-27 | DUKHCONP1BZ4ARRF3640 SS+4d, DUKHCONP1BZ4ARRF3640 FF+4d | 67d |
| DUKHCONP1BZ4ARRF3650 |  | Install. of Gal. Frame & Aluminum Slat Screen | 25d | 2014-05-07 | 2014-06-04 | DUKHCONP1BZ4ARRF3645 FF+7d, DUKHCONP1BZ4ARRF3645 SS+7d | 67d |
| DUKHCONP1BZ4ARRF3655 |  | Installation of Pumps Protection cabinets | 20d | 2014-05-22 | 2014-06-14 | DUKHCONP1BZ4ARRF3650 SS+8d, DUKHCONP1BZ4ARRF3650 FF+8d, DUKHCONP1BZ3ARRF3655, DUKHCONP1BZ4ARRF3645 FF+7d, DUKHCONP1BZ4ARRF3645 SS+7d | 67d |
| DUKHCONP1BZ4ARRF3660 |  | Installation of Access Ladder | 15d | 2014-06-09 | 2014-06-25 | DUKHCONP1BZ4ARRF3655 SS+10d, DUKHCONP1BZ4ARRF3620 SS+5d, DUKHCONP1BZ4ARRF3655 FF+10d | 67d |
|  | 15 | **ELEVATION** |  | 2014-05-01 | 2014-06-28 |  |  |
| DUKHCONP1BZ4AREL3665 |  | External Plastering | 25d | 2014-05-01 | 2014-05-29 | DUKHCONP1BZ4STRF2065 SS+7d, DUKHCONP1BZ4ARRF3605 SS+7d, DUKHCONP1BZ4STRF2065 FF+7d, DUKHCONP1BZ3AREL3665, DUKHCONP1BZ4ARFF3305 SS+7d, DUKHCONP1BZ4ARFF3305 FF+7d | 65d |
| DUKHCONP1BZ4AREL3670 |  | External stone cladding works | 20d | 2014-05-19 | 2014-06-10 | DUKHCONP1BZ4AREL3665 SS+10d, DUKHCONP1BZ4AREL3665 FF+10d, DUKHCONP1BZ3AREL3670 | 65d |

| ID | WBS | Task | Duration | Start | Finish | Predecessors | Total float |
| --- | --- | --- | --- | --- | --- | --- | --- |
| DUKHCONP1BZ4AREL3675 |  | GRC works | 20d | 2014-05-25 | 2014-06-16 | DUKHCONP1BZ4AREL3670 SS+5d, DUKHCONP1BZ3AREL3675, DUKHCONP1BZ4AREL3665 SS+10d, DUKHCONP1BZ4AREL3665 FF+10d | 65d |
| DUKHCONP1BZ4AREL3680 |  | External Painting | 20d | 2014-06-05 | 2014-06-28 | DUKHCONP1BZ4AREL3670 FF+10d, DUKHCONP1BZ4AREL3675 SS+10d, DUKHCONP1BZ4ARRF3695 SS+4d, DUKHCONP1BZ4ARRF3695 FF+4d, DUKHCONP1BZ3AREL3680, DUKHCONP1BZ4AREL3670 SS+10d, DUKHCONP1BZ4AREL3675 FF+10d | 65d |
|  | 20 | **MEP WORKS** |  | 2013-11-07 | 2014-09-24 |  |  |
|  | 10 | **ELECTRICAL WORKS** |  | 2014-02-13 | 2014-09-24 |  |  |
|  | 10 | **GROUND FLOOR** |  | 2014-02-13 | 2014-06-22 |  |  |
| DUKHCONP1BZ4ELGF4000 |  | Fixing of wall conduits & switch socket boxes | 25d | 2014-02-13 | 2014-03-13 | DUKHCONP1BZ4ARGF3000 SS+5d, DUKHCONP1BZ4ARGF3000 FF+5d | 47d |
| DUKHCONP1BZ4ELGF4005 |  | Cable tray & trunking installation | 20d | 2014-02-25 | 2014-03-19 | DUKHCONP1BZ4ELGF4000 SS+5d, DUKHCONP1BZ4ELGF4000 FF+5d, DUKHCONP1BZ3ELGF4005 | 65d |
| DUKHCONP1BZ4ELGF4010 |  | Installation of wiring & Main Cabling | 25d | 2014-03-05 | 2014-04-02 | DUKHCONP1BZ4ELGF4005 SS+7d, DUKHCONP1BZ4ELGF4005 FF+7d | 65d |
| DUKHCONP1BZ4ELGF4015 |  | Install. of CAMS & Fire Fighting Accessories | 25d | 2014-05-07 | 2014-06-04 | DUKHCONP1BZ4ARGF3055 SS+7d, DUKHCONP1BZ4ARGF3060 SS+7d, DUKHCONP1BZ4ARGF3055 FF+7d, DUKHCONP1BZ4ARGF3060 FF+7d, DUKHCONP1BZ3ELGF4015 | 60d |
| DUKHCONP1BZ4ELGF4020 |  | Installation of DBS,MCCB Accessories. | 20d | 2014-05-13 | 2014-06-04 | DUKHCONP1BZ4ARGF3055 SS+7d, DUKHCONP1BZ4ELGF4010 FF+5d, DUKHCONP1BZ4ELGF4010 SS+5d, DUKHCONP1BZ4ARGF3055 FF+7d, DUKHCONP1BZ4ARGF3060 FF+7d, DUKHCONP1BZ4ARGF3060 SS+7d | 38d |
| DUKHCONP1BZ4ELGF4025 |  | Installation of Lighting fixtures & Accessories | 25d | 2014-05-25 | 2014-06-22 | DUKHCONP1BZ4ARGF3060 SS+10d, DUKHCONP1BZ4ELGF4020 SS+10d, DUKHCONP1BZ3ELGF4025, DUKHCONP1BZ4ARGF3060 FF+10d, DUKHCONP1BZ4ARGF3055 FF+10d, DUKHCONP1BZ4ARGF3055 SS+10d, DUKHCONP1BZ4ELGF4020 FF+10d | 40d |
| DUKHCONP1BZ4ELGF4030 |  | Installation of Telephone System | 20d | 2014-05-25 | 2014-06-16 | DUKHCONP1BZ4ELGF4020 FF+10d, DUKHCONP1BZ4ARGF3060 SS+5d, DUKHCONP1BZ4ARGF3060 FF+5d, DUKHCONP1BZ4ELGF4020 SS+10d, DUKHCONP1BZ3ELGF4030 | 38d |
|  | 15 | **FIRST FLOORS** |  | 2014-03-26 | 2014-08-26 |  |  |
| DUKHCONP1BZ4ELFF4035 |  | Fixing of wall conduits & switch socket boxes | 25d | 2014-03-26 | 2014-04-23 | DUKHCONP1BZ4ARFF3300 SS+5d, DUKHCONP1BZ4ARFF3300 FF+5d | 5d |
| DUKHCONP1BZ4ELFF4040 |  | Cable tray & trunking installation | 20d | 2014-04-07 | 2014-04-29 | DUKHCONP1BZ4ELFF4035 FF+5d, DUKHCONP1BZ4ELFF4035 SS+5d | 35d |
| DUKHCONP1BZ4ELFF4045 |  | Installation of wiring & Main Cabling | 25d | 2014-04-15 | 2014-05-13 | DUKHCONP1BZ3ELFF4045, DUKHCONP1BZ4ELFF4040 FF+7d, DUKHCONP1BZ4ELFF4040 SS+7d | 35d |
| DUKHCONP1BZ4ELFF4050 |  | Installation of Telephone System | 25d | 2014-07-03 | 2014-07-31 | DUKHCONP1BZ4ELGF4030 SS+10d, DUKHCONP1BZ4ELGF4030 FF+10d, DUKHCONP1BZ4MSEX5010, DUKHCONP1BZ4ARFF3360 SS+5d, DUKHCONP1BZ4ARFF3360 FF+5d | 14d |
| DUKHCONP1BZ4ELFF4055 |  | Install. of CAMS & Fire Fighting Accessories | 25d | 2014-07-06 | 2014-08-06 | DUKHCONP1BZ4ARFF3360 FF+7d, DUKHCONP1BZ4ELGF4015 FF+5d, DUKHCONP1BZ3ELFF4055, DUKHCONP1BZ4ELGF4015 SS+5d, DUKHCONP1BZ4ARFF3360 SS+7d | 34d |
| DUKHCONP1BZ4ELFF4060 |  | Installation of DBS,MCCB Accessories. | 20d | 2014-07-13 | 2014-08-07 | DUKHCONP1BZ3ELFF4060, DUKHCONP1BZ4ARFF3360 SS+8d, DUKHCONP1BZ4ARFF3360 FF+8d, DUKHCONP1BZ4ELFF4045 FF+5d, DUKHCONP1BZ4ELFF4045 SS+5d | -8d |
| DUKHCONP1BZ4ELFF4065 |  | Installation of Lighting fixtures & Accessories | 25d | 2014-07-26 | 2014-08-26 | DUKHCONP1BZ4ELGF4025 SS+5d, DUKHCONP1BZ4ARFF3360 FF+10d, DUKHCONP1BZ4ELFF4060 FF+11d, DUKHCONP1BZ3ELFF4065, DUKHCONP1BZ4ELFF4060 SS+11d, DUKHCONP1BZ4ARFF3360 SS+10d, DUKHCONP1BZ4ELGF4025 FF+5d | -8d |
|  | 20 | **ROOF** |  | 2014-08-18 | 2014-09-24 |  |  |
| DUKHCONP1BZ4ELRF4070 |  | Installation of Isolator | 18d | 2014-08-18 | 2014-09-07 | DUKHCONP1BZ4ARRF3645 FF+7d, DUKHCONP1BZ4ELFF4065 FF+10d, DUKHCONP1BZ4ELFF4065 SS+10d, DUKHCONP1BZ4ELFF4050 SS+5d, DUKHCONP1BZ4ELFF4045 SS+10d, DUKHCONP1BZ4ELFF4050 FF+7d, DUKHCONP1BZ4ARRF3645 SS+7d, DUKHCONP1BZ4ELFF4045 FF+10d | -8d |
| DUKHCONP1BZ4ELRF4075 |  | Installation of TV Dish Antenna | 23d | 2014-08-30 | 2014-09-24 | DUKHCONP1BZ4ELRF4070 SS+10d, DUKHCONP1BZ4ELRF4070 FF+10d | -8d |
|  | 15 | **PLUMBING, DRAINAGE & FIRE FIGHTING WORKS** |  | 2013-11-07 | 2014-09-06 |  |  |
|  | 10 | **GROUND FLOOR** |  | 2013-11-07 | 2014-06-22 |  |  |
| DUKHCONP1BZ4PLUG4300 |  | Drainage / Storm Pipes in Grade Slab | 20d | 2013-11-07 | 2013-11-30 | DUKHCONP1BZ4STUG1040 FF+10d, DUKHCONP1BZ4STUG1040 SS+10d | 0d |
| DUKHCONP1BZ4PLGF4305 |  | Installation of Plumbing pipes & testing | 18d | 2014-02-24 | 2014-03-16 | DUKHCONP1BZ4ARGF3000 FF+7d, DUKHCONP1BZ3PLGF4305, DUKHCONP1BZ4ARGF3000 SS+7d | 38d |
| DUKHCONP1BZ4PLGF4310 |  | Installation of Drainage pipes &testing | 18d | 2014-02-24 | 2014-03-16 | DUKHCONP1BZ4PLGF4305 FF, DUKHCONP1BZ4ARGF3000 FF+7d, DUKHCONP1BZ4ARGF3000 SS+7d, DUKHCONP1BZ4PLGF4305 SS | 41d |
| DUKHCONP1BZ4PLGF4315 |  | Sanitary Fittings & Accessories | 20d | 2014-05-25 | 2014-06-16 | DUKHCONP1BZ4PLGF4310 FF+5d, DUKHCONP1BZ4ARGF3065 FF+5d, DUKHCONP1BZ4ARGF3065 SS+5d, DUKHCONP1BZ4PLGF4310 SS+5d, DUKHCONP1BZ3PLGF4315 | 70d |
| DUKHCONP1BZ4PLGF4320 |  | Installation of Water Heater | 15d | 2014-06-05 | 2014-06-22 | DUKHCONP1BZ4PLGF4315 FF+5d, DUKHCONP1BZ3PLGF4320, DUKHCONP1BZ4ARGF3060 FF+5d, DUKHCONP1BZ4ARGF3060 SS+5d, DUKHCONP1BZ4PLGF4315 SS+5d | 70d |
|  | 15 | **FIRST FLOORS** |  | 2014-04-07 | 2014-08-19 |  |  |
| DUKHCONP1BZ4PLFF4325 |  | Installation of Plumbing pipes & testing | 18d | 2014-04-07 | 2014-04-27 | DUKHCONP1BZ4ARFF3300 SS+8d, DUKHCONP1BZ4ARFF3300 FF+8d | -8d |
| DUKHCONP1BZ4PLFF4330 |  | Installation of Drainage pipes & testing | 18d | 2014-04-07 | 2014-04-27 | DUKHCONP1BZ4ARFF3300 SS+7d, DUKHCONP1BZ4ARFF3300 FF+7d, DUKHCONP1BZ3PLFF4330, DUKHCONP1BZ4PLFF4325 FF, DUKHCONP1BZ4PLFF4325 SS | 19d |
| DUKHCONP1BZ4PLFF4335 |  | Sanitary Fittings & Accessories | 20d | 2014-07-19 | 2014-08-13 | DUKHCONP1BZ4PLFF4330 FF+5d, DUKHCONP1BZ4ARFF3365 SS+5d, DUKHCONP1BZ4PLFF4330 SS+5d, DUKHCONP1BZ4ARFF3365 FF+5d | 8d |
| DUKHCONP1BZ4PLFF4340 |  | Installation of Water Heater | 15d | 2014-07-30 | 2014-08-19 | DUKHCONP1BZ4PLFF4335 SS+5d, DUKHCONP1BZ4PLFF4335 FF+5d, DUKHCONP1BZ3PLFF4340, DUKHCONP1BZ4ARFF3360 FF+5d, DUKHCONP1BZ4ARFF3360 SS+5d | 8d |
|  | 20 | **ROOF** |  | 2014-05-04 | 2014-09-06 |  |  |
| DUKHCONP1BZ4PLRF4345 |  | Installation of Plumbing pipes & fittings | 14d | 2014-05-04 | 2014-05-19 | DUKHCONP1BZ4ARRF3605 FF+8d, DUKHCONP1BZ4ARRF3605 SS+8d, DUKHCONP1BZ3PLRF4345 | 75d |
| DUKHCONP1BZ4PLRF4350 |  | Installation of Rain water Pipes | 15d | 2014-05-21 | 2014-06-07 | DUKHCONP1BZ4ARRF3645 SS+5d, DUKHCONP1BZ4PLFF4330 FF+5d, DUKHCONP1BZ4PLFF4330 SS+5d, DUKHCONP1BZ3PLRF4350, DUKHCONP1BZ4ARRF3645 FF+5d, DUKHCONP1BZ4AREL3665 SS+7d, DUKHCONP1BZ4PLRF4345 FF+8d, DUKHCONP1BZ4AREL3665 FF+7d, DUKHCONP1BZ4PLRF4345 SS+8d | 68d |
| DUKHCONP1BZ4PLRF4355 |  | Roof Water Tank Installation & Connections | 25d | 2014-08-09 | 2014-09-06 | DUKHCONP1BZ4PLRF4350 SS+5d, DUKHCONP1BZ4PLFF4340 FF+5d, DUKHCONP1BZ4WEEX5065 FF, DUKHCONP1BZ4ARRF3655 FF+5d, DUKHCONP1BZ4PLRF4350 FF+5d, DUKHCONP1BZ3PLRF4355, DUKHCONP1BZ4ARRF3655 SS+5d, DUKHCONP1BZ4PLFF4340 SS+5d, DUKHCONP1BZ4PLRF4345 FF+8d, DUKHCONP1BZ4PLRF4345 SS+8d | 8d |
|  | 20 | **AC WORKS** |  | 2014-03-16 | 2014-09-02 |  |  |
|  | 10 | **GROUND FLOOR** |  | 2014-03-16 | 2014-06-19 |  |  |
| DUKHCONP1BZ4ACGF4600 |  | Installation AC Pipes | 20d | 2014-03-16 | 2014-04-07 | DUKHCONP1BZ4ARGF3005 FF+7d, DUKHCONP1BZ3ACGF4600, DUKHCONP1BZ4ARGF3005 SS+7d | 69d |
| DUKHCONP1BZ4ACGF4605 |  | Fixing of Ventilation Equipments | 25d | 2014-05-07 | 2014-06-04 | DUKHCONP1BZ4ACGF4600 FF+10d, DUKHCONP1BZ4ARGF3060 SS+7d, DUKHCONP1BZ4ARGF3055 FF+7d, DUKHCONP1BZ3ACGF4605, DUKHCONP1BZ4ACGF4600 SS+10d, DUKHCONP1BZ4ARGF3055 SS+7d, DUKHCONP1BZ4ARGF3060 FF+7d | 57d |
| DUKHCONP1BZ4ACGF4610 |  | Fixing of Split AC | 20d | 2014-05-28 | 2014-06-19 | DUKHCONP1BZ3ACGF4610, DUKHCONP1BZ4ACGF4605 FF+13d, DUKHCONP1BZ4ACGF4605 SS+13d | 57d |
|  | 15 | **FIRST FLOORS** |  | 2014-04-30 | 2014-08-21 |  |  |
| DUKHCONP1BZ4ACFF4615 |  | Installation AC Pipes | 20d | 2014-04-30 | 2014-05-22 | DUKHCONP1BZ4ARFF3305 SS+7d, DUKHCONP1BZ4ARFF3305 FF+7d, DUKHCONP1BZ3ACFF4615 | 35d |
| DUKHCONP1BZ4ACFF4620 |  | Fixing of Ventilation Equipments | 25d | 2014-07-06 | 2014-08-06 | DUKHCONP1BZ4ACFF4615 FF+10d, DUKHCONP1BZ3ACFF4620, DUKHCONP1BZ4ARFF3360 SS+7d, DUKHCONP1BZ4ACFF4615 SS+10d, DUKHCONP1BZ4ARFF3360 FF+7d | 6d |
| DUKHCONP1BZ4ACFF4625 |  | Fixing of Split AC | 20d | 2014-07-27 | 2014-08-21 | DUKHCONP1BZ4ACFF4620 SS+13d, DUKHCONP1BZ3ACFF4625, DUKHCONP1BZ4ACFF4620 FF+13d | 6d |
|  | 20 | **ROOF** |  | 2014-05-12 | 2014-09-02 |  |  |
| DUKHCONP1BZ4ACRF4630 |  | Installation of Refrigerant Pipes | 25d | 2014-05-12 | 2014-06-09 | DUKHCONP1BZ4ACGF4600 SS+7d, DUKHCONP1BZ4ARRF3645 FF+7d, DUKHCONP1BZ4ARRF3645 SS+7d, DUKHCONP1BZ4ACFF4615 SS+7d, DUKHCONP1BZ3ACRF4630, DUKHCONP1BZ4ACFF4615 FF+7d, DUKHCONP1BZ4ACGF4600 FF+7d | 76d |
| DUKHCONP1BZ4ACRF4635 |  | Installation of Condensing Unit | 25d | 2014-08-05 | 2014-09-02 | DUKHCONP1BZ4ACRF4630 SS+5d, DUKHCONP1BZ4ACFF4625 SS+5d, DUKHCONP1BZ4ACGF4610 SS+5d, DUKHCONP1BZ3ACRF4635, DUKHCONP1BZ4ACRF4630 FF+5d, DUKHCONP1BZ4ACGF4610 FF+5d, DUKHCONP1BZ4ACFF4625 FF+5d | 11d |
|  | 25 | **EXTERNAL WORKS** |  | 2014-03-18 | 2014-09-28 |  |  |
|  | 10 | **MISCELLANEOUS** |  | 2014-03-18 | 2014-09-28 |  |  |
| DUKHCONP1BZ4MSEX5000 |  | Construction of Manholes | 25d | 2014-03-18 | 2014-04-15 | DUKHCONP1BZ4PLGF4310 SS+10d, DUKHCONP1BZ4PLGF4310 FF+10d, DUKHCONP1BZ4STRF2055 SS+5d, DUKHCONP1BZ4STRF2055 FF+5d | 32d |
| DUKHCONP1BZ4MSEX5020 |  | Construction Entrance Ramp | 25d | 2014-03-22 | 2014-04-19 | DUKHCONP1BZ4STRF2055 FF, DUKHCONP1BZ4STRF2055 SS, DUKHCONP1BZ3MSEX5020 | 58d |
| DUKHCONP1BZ4MSEX5005 |  | Construction of Soak pit, Chambers | 25d | 2014-04-01 | 2014-04-29 | DUKHCONP1BZ4MSEX5000 SS+12d, DUKHCONP1BZ4MSEX5000 FF+12d | 32d |
| DUKHCONP1BZ4MSEX5025 |  | SS.Handrails and Balustrades | 20d | 2014-04-08 | 2014-04-30 | DUKHCONP1BZ4MSEX5020 FF+10d, DUKHCONP1BZ4MSEX5020 SS+10d | 61d |
| DUKHCONP1BZ4MSEX5015 |  | Construction of grease Trap | 20d | 2014-04-21 | 2014-05-13 | DUKHCONP1BZ4MSEX5005 SS+12d, DUKHCONP1BZ4MSEX5005 FF+12d | 32d |
| DUKHCONP1BZ4MSEX5010 |  | Telephone cable laying | 25d | 2014-05-14 | 2014-06-11 | DUKHCONP1BZ4MSEX5015 | 32d |
| DUKHCONP1BZ4MSEX5335 |  | Aluminum Roll-up Shutter with 2m Wall | 25d | 2014-08-31 | 2014-09-28 | DUKHCONP1BZ3MSEX5335, DUKHCONI1BZ2BWGL5325 | 14d |
|  | 15 | **WATER TANK ENCLOSURE** |  | 2014-04-16 | 2014-07-23 |  |  |
| DUKHCONP1BZ4WEEX5030 |  | Excavation | 20d | 2014-04-16 | 2014-05-08 | DUKHCONP1BZ4STRF2055 SS+5d, DUKHCONP1BZ4STRF2055 FF+5d, DUKHCONP1BZ3WEEX5035 | 40d |
| DUKHCONP1BZ4WEEX5035 |  | Construction of Raft | 25d | 2014-04-22 | 2014-05-20 | DUKHCONP1BZ4WEEX5030 SS+5d, DUKHCONP1BZ4WEEX5030 FF+10d | 43d |
| DUKHCONP1BZ4WEEX5040 |  | Block works & Plastering | 25d | 2014-05-04 | 2014-06-01 | DUKHCONP1BZ4WEEX5035 FF+10d, DUKHCONP1BZ4WEEX5035 SS+10d | 43d |
| DUKHCONP1BZ4WEEX5045 |  | Flooring & Painting | 25d | 2014-05-15 | 2014-06-12 | DUKHCONP1BZ4MSEX5025 SS+5d, DUKHCONP1BZ4WEEX5040 SS+10d, DUKHCONP1BZ4WEEX5040 FF+10d | 43d |
| DUKHCONP1BZ4WEEX5050 |  | Installation of Steel Gate | 20d | 2014-06-02 | 2014-06-24 | DUKHCONP1BZ4WEEX5045 FF+10d, DUKHCONP1BZ4MSEX5025 FF+10d, DUKHCONP1BZ4WEEX5045 SS+10d, DUKHCONP1BZ4MSEX5015 SS+10d | 43d |
| DUKHCONP1BZ4WEEX5060 |  | Structural steel & SS Shed cover installation | 25d | 2014-06-14 | 2014-07-12 | DUKHCONP1BZ4MSEX5025 FF+10d, DUKHCONP1BZ4WEEX5050 SS+10d, DUKHCONP1BZ4WEEX5050 FF+10d, DUKHCONP1BZ3WEEX5060 | 43d |
| DUKHCONP1BZ4WEEX5065 |  | Install. of Water Tank,Chiller,Pump & Meter | 25d | 2014-06-25 | 2014-07-23 | DUKHCONP1BZ4PLRF4350 FF+5d, DUKHCONP1BZ4WEEX5060 SS+10d, DUKHCONP1BZ3WEEX5065, DUKHCONP1BZ4MSEX5015 SS+5d, DUKHCONP1BZ4WEEX5060 FF+10d, DUKHCONP1BZ4PLRF4350 SS+5d, DUKHCONP1BZ4MSEX5015 FF+5d | 43d |
|  | 20 | **HARD LANDSCAPING** |  | 2014-04-16 | 2014-06-03 |  |  |
| DUKHCONP1BZ4HDEX5090 |  | kerb works | 20d | 2014-04-16 | 2014-05-08 | DUKHCONP1BZ4MSEX5020 SS+7d, DUKHCONP1BZ4MSEX5025 SS+7d, DUKHCONP1BZ4MSEX5020 FF+7d, DUKHCONP1BZ3HDEX5090 | 61d |

| ID | WBS | Task | Duration | Start | Finish | Predecessors | Total float |
| --- | --- | --- | --- | --- | --- | --- | --- |
| DUKHCONP1BZ4HDEX5095 |  | Cobble Stone Works | 20d | 2014-04-28 | 2014-05-20 | DUKHCONP1BZ4HDEX5090 SS+10d, DUKHCONP1BZ4HDEX5090 FF+10d | 61d |
| DUKHCONP1BZ4HDEX5100 |  | Interlock works | 20d | 2014-05-12 | 2014-06-03 | DUKHCONP1BZ4HDEX5095 SS+12d, DUKHCONP1BZ4HDEX5095 FF+12d | 61d |
|  | 25 | **SOFT LANDSCAPING** |  | 2014-05-24 | 2014-07-02 |  |  |
| DUKHCONP1BZ4SLEX5105 |  | Laying of Grass/ green area | 25d | 2014-05-24 | 2014-06-21 | DUKHCONP1BZ4HDEX5100 SS+10d, DUKHCONP1BZ4HDEX5100 FF+10d | 61d |
| DUKHCONP1BZ4SLEX5110 |  | Laying of Palm tree | 25d | 2014-06-04 | 2014-07-02 | DUKHCONP1BZ4SLEX5105 SS+10d, DUKHCONP1BZ4SLEX5105 FF+10d | 61d |
|  | 30 | **TESTING AND COMMISSIONING** |  | 2014-09-25 | 2014-10-26 |  |  |
| DUKHCONP1BZ4ACTC8000 |  | Pre-Commissioning & Testing of AC Works | 25d | 2014-09-25 | 2014-10-26 | DUKHCONP1BZ4ACFF4625, DUKHCONP1BZ4HDEX5100, DUKHCONP1BZ4MSEX5005, DUKHCONP1BZ3ACTC8000, DUKHCONP1BZ4ARRF3660, DUKHCONP1BZ4AREL3680, DUKHCONP1BZ4ARFF3395, DUKHCONP1BZ4SLEX5105, DUKHCONP1BZ4ARRF3620, DUKHCONP1BZ4ACRF4635, DUKHCONP1BZ4ARGF3095, DUKHCONP1BZ4SLEX5110 | -8d |
| DUKHCONP1BZ4ELTC8010 |  | Pre-Commissioning & Testing of Electrical Works | 25d | 2014-09-25 | 2014-10-26 | DUKHCONP1BZ4ARGF3095, DUKHCONP1BZ4ELRF4075, DUKHCONP1BZ4ELGF4015, DUKHCONP1BZ4SLEX5105, DUKHCONP1BZ4ARRF3655, DUKHCONP1BZ4ARRF3660, DUKHCONP1BZ4ELFF4065, DUKHCONP1BZ4ELGF4030, DUKHCONP1BZ4MSEX5005, DUKHCONP1BZ4ARFF3395, DUKHCONP1BZ4ELFF4050, DUKHCONP1BZ4ELGF4025, DUKHCONP1BZ3ELTC8010, DUKHCONP1BZ4ELFF4055, DUKHCONP1BZ4SLEX5110, DUKHCONP1BZ4HDEX5100, DUKHCONP1BZ4AREL3680, DUKHCONP1BZ4ARRF3620 | -8d |
| DUKHCONP1BZ4PLTC8005 |  | Pre-Commissioning & Testing of Plumbing Works | 25d | 2014-09-25 | 2014-10-26 | DUKHCONP1BZ4ARRF3655, DUKHCONP1BZ4PLRF4355, DUKHCONP1BZ4AREL3680, DUKHCONP1BZ4PLRF4350, DUKHCONP1BZ4SLEX5105, DUKHCONP1BZ4HDEX5100, DUKHCONP1BZ4SLEX5110, DUKHCONP1BZ4MSEX5005, DUKHCONP1BZ4ARRF3620, DUKHCONP1BZ4PLGF4320, DUKHCONP1BZ4WEEX5065, DUKHCONP1BZ4ARRF3660, DUKHCONP1BZ4ARFF3395, DUKHCONP1BZ4ARGF3095, DUKHCONP1BZ3PLTC8005 | -8d |
|  | 30 | **ZONE - 5 (5 Twin Villas)** |  | 2013-08-25 | 2014-11-24 |  |  |
|  | 10 | **STRUCTURAL WORKS** |  | 2013-08-25 | 2014-06-01 |  |  |
|  | 10 | **SUB STRUCTURE** |  | 2013-08-25 | 2014-01-14 |  |  |
|  | 10 | **UPTO GRADE SLAB** |  | 2013-08-25 | 2014-01-14 |  |  |
| DUKHCONP1BZ5STUG1000 |  | Footing Excavation | 25d | 2013-08-25 | 2013-09-22 | DUKHCONP1BZ4STUG1000 | 0d |
| DUKHCONP1BZ5STUG1005 |  | Footing Antitermite | 23d | 2013-09-05 | 2013-10-01 | DUKHCONP1BZ5STUG1000 SS+10d, DUKHCONP1BZ5STUG1000 FF+5d | 0d |
| DUKHCONP1BZ5STUG1010 |  | Footing Blinding | 23d | 2013-09-10 | 2013-10-06 | DUKHCONP1BZ5STUG1005 FF+4d, DUKHCONP1BZ5STUG1005 SS+4d | 0d |
| DUKHCONP1BZ5STUG1015 |  | Footing Waterproofing & Screed | 25d | 2013-09-16 | 2013-10-14 | DUKHCONP1BZ5STUG1010 SS+5d, DUKHCONP1BZ5STUG1010 FF+5d | 0d |
| DUKHCONP1BZ5STUG1020 |  | Construction of foundations | 20d | 2013-10-01 | 2013-10-26 | DUKHCONP1BZ5STUG1015 FF+8d, DUKHCONP1BZ5STUG1015 SS+7d | 0d |
| DUKHCONP1BZ5STUG1025 |  | Construction of neck of columns | 25d | 2013-10-10 | 2013-11-10 | DUKHCONP1BZ5STUG1020 SS+8d, DUKHCONP1BZ4STUG1025, DUKHCONP1BZ5STUG1020 FF+7d | 0d |
| DUKHCONP1BZ5STUG1030 |  | Waterproofing Footing & Neck Column | 25d | 2013-10-22 | 2013-11-19 | DUKHCONP1BZ5STUG1025 SS+8d, DUKHCONP1BZ5STUG1025 FF+8d | 0d |
| DUKHCONP1BZ5STUG1035 |  | Backfilling Upto Grade Beam Bottom | 25d | 2013-11-03 | 2013-12-01 | DUKHCONP1BZ4STUG1035, DUKHCONP1BZ5STUG1030 FF+10d, DUKHCONP1BZ5STUG1030 SS+10d | 0d |
| DUKHCONP1BZ5STUG1040 |  | Construction of Grade Beams | 25d | 2013-11-19 | 2013-12-17 | DUKHCONP1BZ5STUG1035 FF+14d, DUKHCONP1BZ5STUG1035 SS+14d | 0d |
| DUKHCONP1BZ5STUG1045 |  | Construction of slab on grade | 25d | 2013-12-16 | 2014-01-14 | DUKHCONP1BZ5STUG1040 SS+10d, DUKHCONP1BZ5PLUG4300 SS+8d, DUKHCONP1BZ5STUG1040 FF+10d, DUKHCONP1BZ5PLUG4300 FF+8d, DUKHCONP1BZ4STUG1045 | 0d |
|  | 15 | **SUPERSTRUCTURE** |  | 2014-01-02 | 2014-06-01 |  |  |
|  | 10 | **GROUND FLOOR** |  | 2014-01-02 | 2014-02-27 |  |  |
| DUKHCONP1BZ5STGF2000 |  | Column-Rebar & Formwork | 25d | 2014-01-02 | 2014-01-30 | DUKHCONP1BZ4STGF2000, DUKHCONP1BZ5STUG1045 FF+7d, DUKHCONP1BZ5STUG1045 SS+14d | 0d |
| DUKHCONP1BZ5STGF2005 |  | Column-Concrete | 23d | 2014-01-12 | 2014-02-06 | DUKHCONP1BZ5STGF2000 FF+2d, DUKHCONP1BZ5STGF2000 SS+8d | 0d |
| DUKHCONP1BZ5STGF2010 |  | Beam, Stairs ,Slab-Rebar & Formwork | 25d | 2014-01-26 | 2014-02-24 | DUKHCONP1BZ5STGF2005 SS+2d, DUKHCONP1BZ5STGF2005 FF+14d | 0d |
| DUKHCONP1BZ5STGF2015 |  | Beam, Stairs ,Slab-Concrete | 14d | 2014-02-12 | 2014-02-27 | DUKHCONP1BZ4STGF2015, DUKHCONP1BZ5STGF2010 FF+3d, DUKHCONP1BZ5STGF2010 SS+10d | 0d |
|  | 15 | **FIRST FLOORS** |  | 2014-02-15 | 2014-03-31 |  |  |
| DUKHCONP1BZ5STFF2020 |  | Column-Rebar & Formwork | 25d | 2014-02-15 | 2014-03-15 | DUKHCONP1BZ5STGF2015 SS+2d, DUKHCONP1BZ4STFF2020, DUKHCONP1BZ5STGF2015 FF+5d | 0d |
| DUKHCONP1BZ5STFF2025 |  | Column-Concrete | 23d | 2014-02-24 | 2014-03-22 | DUKHCONP1BZ5STFF2020 SS+8d, DUKHCONP1BZ5STFF2020 FF+2d | 0d |
| DUKHCONP1BZ5STFF2030 |  | Beam, Stairs ,Slab-Rebar & Formwork | 25d | 2014-02-27 | 2014-03-27 | DUKHCONP1BZ5STFF2025 SS+2d, DUKHCONP1BZ5STFF2025 FF+5d | 0d |
| DUKHCONP1BZ5STFF2035 |  | Beam, Stairs ,Slab-Concrete | 14d | 2014-03-16 | 2014-03-31 | DUKHCONP1BZ5STFF2030 SS+10d, DUKHCONP1BZ4STFF2035, DUKHCONP1BZ5STFF2030 FF+3d | 0d |
|  | 20 | **ROOF** |  | 2014-03-22 | 2014-06-01 |  |  |
| DUKHCONP1BZ5STRF2040 |  | Column-Rebar & Formwork | 18d | 2014-03-22 | 2014-04-10 | DUKHCONP1BZ5STFF2035 SS+5d, DUKHCONP1BZ4STRF2040, DUKHCONP1BZ5STFF2035 FF+3d | 9d |
| DUKHCONP1BZ5STRF2045 |  | Column-Concrete | 17d | 2014-03-25 | 2014-04-13 | DUKHCONP1BZ5STRF2040 FF+1d, DUKHCONP1BZ5STRF2040 SS+3d | 14d |
| DUKHCONP1BZ5STRF2050 |  | Slab-Rebar & Formwork - Head Room | 20d | 2014-03-27 | 2014-04-19 | DUKHCONP1BZ5STRF2045 FF+5d, DUKHCONP1BZ5STRF2045 SS+2d | 14d |
| DUKHCONP1BZ5STRF2055 |  | Slab-Concrete-Head room | 13d | 2014-04-10 | 2014-04-24 | DUKHCONP1BZ5STRF2050 SS+5d, DUKHCONP1BZ4STRF2055, DUKHCONP1BZ5STRF2050 FF+5d | 14d |
| DUKHCONP1BZ5STRF2060 |  | Construction of Parapets | 25d | 2014-04-17 | 2014-05-15 | DUKHCONP1BZ4STRF2060, DUKHCONP1BZ5STRF2055 FF+14d, DUKHCONP1BZ5STRF2055 SS+2d | 62d |
| DUKHCONP1BZ5STRF2065 |  | Construction of up stands/Plinth | 25d | 2014-05-04 | 2014-06-01 | DUKHCONP1BZ4STRF2065, DUKHCONP1BZ5STRF2060 SS+5d, DUKHCONP1BZ5STRF2060 FF+5d | 67d |
|  | 15 | **FINISHING WORKS** |  | 2014-03-09 | 2014-10-26 |  |  |
|  | 10 | **INTERNAL FINISHES** |  | 2014-03-09 | 2014-10-26 |  |  |
|  | 10 | **GROUND FLOOR** |  | 2014-03-09 | 2014-08-21 |  |  |
| DUKHCONP1BZ5ARGF3000 |  | Block work | 25d | 2014-03-09 | 2014-04-06 | DUKHCONP1BZ5STGF2015 SS+21d, DUKHCONP1BZ5STGF2015 FF+21d, DUKHCONP1BZ4ARGF3000 | 38d |
| DUKHCONP1BZ5ARGF3005 |  | Plastering work | 25d | 2014-03-31 | 2014-04-28 | DUKHCONP1BZ5ELGF4000 SS+5d, DUKHCONP1BZ5PLGF4305 SS+5d, DUKHCONP1BZ5ARGF3000 FF+7d, DUKHCONP1BZ5ELGF4000 FF+5d, DUKHCONP1BZ4ARGF3005, DUKHCONP1BZ5ARGF3000 SS+7d, DUKHCONP1BZ5PLGF4305 FF+5d | 38d |
| DUKHCONP1BZ5ARGF3010 |  | Flooring screed | 21d | 2014-04-08 | 2014-05-01 | DUKHCONP1BZ5ARGF3005 SS+7d, DUKHCONP1BZ5ARGF3005 FF+3d | 46d |
| DUKHCONP1BZ5ARGF3030 |  | Paint First coat | 25d | 2014-04-16 | 2014-05-14 | DUKHCONP1BZ4ARGF3030, DUKHCONP1BZ5ARGF3005 FF+14d, DUKHCONP1BZ5ARGF3005 SS+14d | 52d |
| DUKHCONP1BZ5ARGF3015 |  | Wet area waterproofing & Protection Screed | 15d | 2014-04-17 | 2014-05-04 | DUKHCONP1BZ5ARGF3005 SS+7d, DUKHCONP1BZ5ARGF3005 FF+5d, DUKHCONP1BZ4ARGF3015 | 38d |
| DUKHCONP1BZ5ARGF3020 |  | Ceramic Wall Tiling | 25d | 2014-04-23 | 2014-05-21 | DUKHCONP1BZ5PLGF4310 SS+4d, DUKHCONP1BZ4ARGF3020, DUKHCONP1BZ5PLGF4310 FF+4d, DUKHCONP1BZ5PLGF4305 FF+4d, DUKHCONP1BZ5ARGF3015 SS+5d, DUKHCONP1BZ5ARGF3015 FF+5d, DUKHCONP1BZ5PLGF4305 SS+4d | 38d |
| DUKHCONP1BZ5ARGF3025 |  | Porcelain Tile flooring | 25d | 2014-04-29 | 2014-05-27 | DUKHCONP1BZ4ARGF3025, DUKHCONP1BZ5ARGF3020 FF+5d, DUKHCONP1BZ5ARGF3010 FF+10d, DUKHCONP1BZ5ARGF3020 SS+5d, DUKHCONP1BZ5ARGF3010 SS+10d | 38d |
| DUKHCONP1BZ5ARGF3045 |  | Fixing of Suspension systems | 20d | 2014-05-17 | 2014-06-08 | DUKHCONP1BZ5ELGF4010 SS+5d, DUKHCONP1BZ5ARGF3025 SS+10d, DUKHCONP1BZ5ELGF4010 FF+5d, DUKHCONP1BZ5ARGF3025 FF+10d, DUKHCONP1BZ4ARGF3045, DUKHCONP1BZ5ARGF3030 FF+7d, DUKHCONP1BZ5ARGF3030 SS+7d | 38d |
| DUKHCONP1BZ5ARGF3035 |  | Slate Tile Flooring & Skirting | 15d | 2014-05-19 | 2014-06-04 | DUKHCONP1BZ5ARGF3010 FF+13d, DUKHCONP1BZ5ARGF3025 FF+7d, DUKHCONP1BZ5ARGF3010 SS+13d, DUKHCONP1BZ5ARGF3025 SS+13d | 48d |
| DUKHCONP1BZ5ARGF3055 |  | Aluminum tile false ceiling | 25d | 2014-05-25 | 2014-06-22 | DUKHCONP1BZ5ACGF4600 SS+7d, DUKHCONP1BZ5ARGF3045 FF+7d, DUKHCONP1BZ5ARGF3045 SS+7d, DUKHCONP1BZ5ACGF4600 FF+7d | 41d |
| DUKHCONP1BZ5ARGF3040 |  | Cobble Tile flooring | 15d | 2014-05-26 | 2014-06-11 | DUKHCONP1BZ5ARGF3025 SS+13d, DUKHCONP1BZ5ARGF3010 SS+13d, DUKHCONP1BZ5ARGF3010 FF+13d, DUKHCONP1BZ5ARGF3025 FF+13d, DUKHCONP1BZ5ARGF3035 FF+4d, DUKHCONP1BZ5ARGF3035 SS+4d | 46d |
| DUKHCONP1BZ5ARGF3060 |  | Gypsum board false ceiling | 25d | 2014-05-28 | 2014-06-25 | DUKHCONP1BZ5ARGF3045 SS+10d, DUKHCONP1BZ5ACGF4600 SS+7d, DUKHCONP1BZ5ACGF4600 FF+7d, DUKHCONP1BZ5ARGF3045 FF+10d, DUKHCONP1BZ4ARGF3060 | 38d |
| DUKHCONP1BZ5ARGF3050 |  | Granite - Stair case flooring & Skirting | 20d | 2014-06-03 | 2014-06-25 | DUKHCONP1BZ5ARGF3025 SS+13d, DUKHCONP1BZ5ARGF3040 SS+7d, DUKHCONP1BZ5ARGF3025 FF+13d, DUKHCONP1BZ5ARGF3040 FF+7d | 46d |
| DUKHCONP1BZ5ARGF3065 |  | Wooden door & PVC Door | 15d | 2014-06-17 | 2014-07-03 | DUKHCONP1BZ4ARGF3065, DUKHCONP1BZ5ARGF3035 SS+7d, DUKHCONP1BZ5ARGF3050 SS+7d, DUKHCONP1BZ5ARGF3050 FF+7d, DUKHCONP1BZ5ARGF3035 FF+7d | 46d |
| DUKHCONP1BZ5ARGF3070 |  | Aluminum doors | 15d | 2014-06-23 | 2014-07-09 | DUKHCONP1BZ5ARGF3065 FF+5d, DUKHCONP1BZ4ARGF3070, DUKHCONP1BZ5ARGF3065 SS+5d | 46d |
| DUKHCONP1BZ5ARGF3075 |  | Carpentry & Joinery Works | 20d | 2014-06-29 | 2014-07-21 | DUKHCONP1BZ5ARGF3070 FF+7d, DUKHCONP1BZ5ARGF3070 SS+5d, DUKHCONP1BZ4ARGF3075 | 46d |
| DUKHCONP1BZ5ARGF3080 |  | Aluminum windows | 20d | 2014-06-30 | 2014-07-22 | DUKHCONP1BZ5ARGF3070 SS+6d, DUKHCONP1BZ4ARGF3080, DUKHCONP1BZ5ARGF3070 FF+6d | 56d |
| DUKHCONP1BZ5ARGF3085 |  | S.S.Balustrade | 20d | 2014-07-07 | 2014-07-29 | DUKHCONP1BZ5ARGF3075 FF+7d, DUKHCONP1BZ5ARGF3050 FF+7d, DUKHCONP1BZ5ARGF3075 SS+7d, DUKHCONP1BZ5ARGF3050 SS+7d | 51d |
| DUKHCONP1BZ5ARGF3090 |  | Installation of Granite Counter Top | 15d | 2014-07-12 | 2014-07-28 | DUKHCONP1BZ5ARGF3075 FF+6d, DUKHCONP1BZ5ARGF3075 SS+7d | 46d |
| DUKHCONP1BZ5ARGF3095 |  | Final Painting | 25d | 2014-07-21 | 2014-08-21 | DUKHCONP1BZ5ARGF3060 SS+8d, DUKHCONP1BZ5ARGF3070 SS+5d, DUKHCONP1BZ5ARGF3030 SS+10d, DUKHCONP1BZ5ARGF3080 FF+8d, DUKHCONP1BZ5ARGF3030 FF+10d, DUKHCONP1BZ5ARGF3085 FF+7d, DUKHCONP1BZ4ARGF3095, DUKHCONP1BZ5ACGF4610 SS+10d, DUKHCONP1BZ5ARGF3090 FF+8d, DUKHCONP1BZ5ACGF4610 FF+10d, DUKHCONP1BZ5ARGF3080 SS+8d, DUKHCONP1BZ5ARGF3090 SS+8d, DUKHCONP1BZ5ARGF3085 SS+7d, DUKHCONP1BZ5ARGF3040 FF+13d, DUKHCONP1BZ5ARGF3035 SS+13d, DUKHCONP1BZ5ARGF3035 FF+13d, DUKHCONP1BZ5ARGF3070 FF+5d, DUKHCONP1BZ5ARGF3040 SS+13d, DUKHCONP1BZ5ARGF3060 FF+8d | 46d |
|  | 15 | **FIRST FLOORS** |  | 2014-04-19 | 2014-10-26 |  |  |
| DUKHCONP1BZ5ARFF3300 |  | Block work | 25d | 2014-04-19 | 2014-05-17 | DUKHCONP1BZ5STFF2020 SS+21d, DUKHCONP1BZ5STFF2035 SS+21d, DUKHCONP1BZ5STFF2020 FF+21d, DUKHCONP1BZ5STFF2035 FF+21d, DUKHCONP1BZ4ARFF3300 | -8d |
| DUKHCONP1BZ5ARFF3305 |  | Plastering work | 25d | 2014-05-15 | 2014-06-12 | DUKHCONP1BZ5PLFF4325 SS+8d, DUKHCONP1BZ5ARFF3300 SS+7d, DUKHCONP1BZ5ELFF4035 SS+5d, DUKHCONP1BZ4ARFF3305, DUKHCONP1BZ5ELFF4035 FF+5d, DUKHCONP1BZ5PLFF4325 FF+8d, DUKHCONP1BZ5ARFF3300 FF+7d | -8d |
| DUKHCONP1BZ5ARFF3310 |  | Flooring screed | 21d | 2014-05-24 | 2014-06-16 | DUKHCONP1BZ5ARFF3305 SS+7d, DUKHCONP1BZ5ARFF3305 FF+3d | 9d |
| DUKHCONP1BZ5ARFF3330 |  | Paint First coat | 25d | 2014-06-01 | 2014-06-29 | DUKHCONP1BZ5ARFF3305 SS+14d, DUKHCONP1BZ5ARFF3305 FF+14d | 18d |
| DUKHCONP1BZ5ARFF3315 |  | Wet area waterproofing | 15d | 2014-06-05 | 2014-06-22 | DUKHCONP1BZ5ARFF3305 FF+8d, DUKHCONP1BZ5ARFF3305 SS+7d, DUKHCONP1BZ4ARFF3315 | -8d |

| ID | WBS | Task | Duration | Start | Finish | Predecessors | Total float |
| --- | --- | --- | --- | --- | --- | --- | --- |
| DUKHCONP1BZ5ARFF3320 |  | Ceramic Wall Tiling | 25d | 2014-06-15 | 2014-07-13 | DUKHCONP1BZ5ARFF3315 FF+7d, DUKHCONP1BZ5ARFF3315 SS+8d, DUKHCONP1BZ5PLFF4330 SS+7d, DUKHCONP1BZ5PLFF4330 FF+7d, DUKHCONP1BZ4ARFF3320, DUKHCONP1BZ5PLFF4325 SS+4d, DUKHCONP1BZ5PLFF4325 FF+4d | -8d |
| DUKHCONP1BZ5ARFF3325 |  | Porcelain Tile flooring | 25d | 2014-06-24 | 2014-07-22 | DUKHCONP1BZ5ARFF3310 FF+10d, DUKHCONP1BZ5ARFF3320 SS+8d, DUKHCONP1BZ4ARFF3325, DUKHCONP1BZ5ARFF3320 FF+8d, DUKHCONP1BZ5ARFF3310 SS+10d | -8d |
| DUKHCONP1BZ5ARFF3335 |  | Slate Tile Flooring & Skirting | 15d | 2014-07-12 | 2014-07-28 | DUKHCONP1BZ5ARFF3325 SS+13d, DUKHCONP1BZ5ARFF3325 FF+5d, DUKHCONP1BZ5ARFF3310 FF+13d, DUKHCONP1BZ5ARFF3310 SS+13d | 11d |
| DUKHCONP1BZ5ARFF3345 |  | Fixing of Suspension systems | 20d | 2014-07-15 | 2014-08-10 | DUKHCONP1BZ5ELFF4045 FF+5d, DUKHCONP1BZ5ELFF4045 SS+5d, DUKHCONP1BZ5ARFF3330 SS+7d, DUKHCONP1BZ5ARFF3325 FF+13d, DUKHCONP1BZ5ARFF3330 FF+7d, DUKHCONP1BZ5ARFF3325 SS+13d, DUKHCONP1BZ4ARFF3345 | -8d |
| DUKHCONP1BZ5ARFF3350 |  | Granite - Stair case flooring & Skirting | 20d | 2014-07-15 | 2014-08-10 | DUKHCONP1BZ5ARFF3325 FF+13d, DUKHCONP1BZ5ARFF3325 SS+13d | 3d |
| DUKHCONP1BZ5ARFF3360 |  | Gypsum board false ceiling | 25d | 2014-07-27 | 2014-08-27 | DUKHCONP1BZ5ARFF3345 FF+10d, DUKHCONP1BZ5ACFF4615 FF+7d, DUKHCONP1BZ5ACFF4615 SS+7d, DUKHCONP1BZ5ARFF3345 SS+10d, DUKHCONP1BZ4ARFF3360 | -8d |
| DUKHCONP1BZ5ARFF3365 |  | Wooden door | 15d | 2014-08-14 | 2014-08-31 | DUKHCONP1BZ5ARFF3360 FF+3d, DUKHCONP1BZ5ARFF3360 SS+3d, DUKHCONP1BZ4ARFF3365, DUKHCONP1BZ5ARFF3335 FF+7d, DUKHCONP1BZ5ARFF3350 SS+7d, DUKHCONP1BZ5ARFF3335 SS+7d, DUKHCONP1BZ5ARFF3350 FF+7d | -8d |
| DUKHCONP1BZ5ARFF3370 |  | Aluminum Door | 20d | 2014-08-23 | 2014-09-14 | DUKHCONP1BZ5ARFF3365 FF+5d, DUKHCONP1BZ4ARFF3370, DUKHCONP1BZ5ARFF3365 SS+7d | -8d |
| DUKHCONP1BZ5ARFF3380 |  | Aluminum windows | 20d | 2014-08-30 | 2014-09-21 | DUKHCONP1BZ5ARFF3370 SS+6d, DUKHCONP1BZ5ARFF3370 FF+6d | 5d |
| DUKHCONP1BZ5ARFF3375 |  | Carpentry & Joinery Works | 25d | 2014-08-31 | 2014-09-28 | DUKHCONP1BZ5ARFF3370 SS+7d, DUKHCONP1BZ5ARFF3370 FF+5d, DUKHCONP1BZ4ARFF3375 | -8d |
| DUKHCONP1BZ5ARFF3385 |  | Handrail & Balustrade | 20d | 2014-09-14 | 2014-10-06 | DUKHCONP1BZ5ARFF3350 FF+7d, DUKHCONP1BZ5ARFF3350 SS+7d, DUKHCONP1BZ5ARFF3375 FF+7d, DUKHCONP1BZ5ARFF3375 SS+7d | -8d |
| DUKHCONP1BZ5ARFF3390 |  | Installation of Granite Counter Top | 20d | 2014-09-14 | 2014-10-06 | DUKHCONP1BZ5ARFF3375 FF+7d, DUKHCONP1BZ5ARFF3375 SS+7d | -6d |
| DUKHCONP1BZ5ARFF3395 |  | Final Painting | 25d | 2014-09-25 | 2014-10-26 | DUKHCONP1BZ5ARFF3390 FF+8d, DUKHCONP1BZ5ARFF3330 SS+10d, DUKHCONP1BZ5ARFF3375 FF+8d, DUKHCONP1BZ5ARFF3365 SS+8d, DUKHCONP1BZ5ARFF3380 SS+10d, DUKHCONP1BZ5ARFF3350 SS+8d, DUKHCONP1BZ5ARFF3390 SS+8d, DUKHCONP1BZ4ARFF3395, DUKHCONP1BZ5ACFF4625 SS+10d, DUKHCONP1BZ5ARFF3365 FF+8d, DUKHCONP1BZ5ARFF3375 SS+8d, DUKHCONP1BZ5ARFF3360 SS+10d, DUKHCONP1BZ5ACFF4625 FF+10d, DUKHCONP1BZ5ARFF3330 FF+10d, DUKHCONP1BZ5ARFF3335 SS+8d, DUKHCONP1BZ5ARFF3350 FF+8d, DUKHCONP1BZ5ARFF3380 FF+10d, DUKHCONP1BZ5ARFF3385 SS+10d, DUKHCONP1BZ5ARFF3335 FF+8d, DUKHCONP1BZ5ARFF3360 FF+10d, DUKHCONP1BZ5ARFF3385 FF+10d | -8d |
|  | 20 | **ROOF** |  | 2014-05-05 | 2014-07-19 |  |  |
| DUKHCONP1BZ5ARRF3600 |  | Block work | 20d | 2014-05-05 | 2014-05-27 | DUKHCONP1BZ5STRF2055 FF+21d, DUKHCONP1BZ4ARRF3600, DUKHCONP1BZ5STRF2055 SS+21d | 67d |
| DUKHCONP1BZ5ARRF3605 |  | Plastering work | 20d | 2014-05-17 | 2014-06-08 | DUKHCONP1BZ5ARRF3600 SS+10d, DUKHCONP1BZ5ARRF3600 FF+10d | 67d |
| DUKHCONP1BZ5ARRF3610 |  | Flooring screed | 15d | 2014-06-03 | 2014-06-19 | DUKHCONP1BZ5ARRF3605 FF+10d, DUKHCONP1BZ5ARRF3605 SS+10d | 67d |
| DUKHCONP1BZ5ARRF3695 |  | Painting -Storage area | 20d | 2014-06-15 | 2014-07-07 | DUKHCONP1BZ5ARRF3610 FF+10d, DUKHCONP1BZ5ARRF3610 SS+10d | 67d |
| DUKHCONP1BZ5ARRF3620 |  | Epoxy Painting -Storage area | 15d | 2014-07-02 | 2014-07-19 | DUKHCONP1BZ5ARRF3695 SS+10d, DUKHCONP1BZ5ARRF3695 FF+10d | 67d |
|  | 15 | **EXTERNAL FINISHES** |  | 2014-05-15 | 2014-07-27 |  |  |
|  | 10 | **ROOF** |  | 2014-05-15 | 2014-07-24 |  |  |
| DUKHCONP1BZ5ARRF3630 |  | Leveling Screed for Waterproofing | 25d | 2014-05-15 | 2014-06-12 | DUKHCONP1BZ5STRF2060 SS+10d, DUKHCONP1BZ5STRF2065 SS+10d, DUKHCONP1BZ5STRF2060 FF+10d, DUKHCONP1BZ5STRF2065 FF+10d, DUKHCONP1BZ4ARRF3630 | 67d |
| DUKHCONP1BZ5ARRF3635 |  | Laying of Waterproofing Membrane | 25d | 2014-05-19 | 2014-06-16 | DUKHCONP1BZ5ARRF3630 SS+3d, DUKHCONP1BZ5ARRF3630 FF+3d | 67d |
| DUKHCONP1BZ5ARRF3640 |  | Installation of Insulation & Protection | 25d | 2014-05-24 | 2014-06-21 | DUKHCONP1BZ5ARRF3635 SS+4d, DUKHCONP1BZ5ARRF3635 FF+4d | 67d |
| DUKHCONP1BZ5ARRF3645 |  | Lime Stone Chips & Paving slab Installation | 25d | 2014-05-28 | 2014-06-25 | DUKHCONP1BZ5ARRF3640 FF+4d, DUKHCONP1BZ5ARRF3640 SS+4d | 67d |
| DUKHCONP1BZ5ARRF3650 |  | Install. of Gal. Frame & Aluminum Slat Screen | 25d | 2014-06-05 | 2014-07-03 | DUKHCONP1BZ5ARRF3645 FF+7d, DUKHCONP1BZ5ARRF3645 SS+7d | 67d |
| DUKHCONP1BZ5ARRF3655 |  | Installation of Pumps Protection cabinets | 20d | 2014-06-21 | 2014-07-13 | DUKHCONP1BZ5ARRF3645 FF+7d, DUKHCONP1BZ5ARRF3650 SS+8d, DUKHCONP1BZ5ARRF3645 SS+7d, DUKHCONP1BZ5ARRF3650 FF+8d, DUKHCONP1BZ4ARRF3655 | 67d |
| DUKHCONP1BZ5ARRF3660 |  | Installation of Access Ladder | 15d | 2014-07-08 | 2014-07-24 | DUKHCONP1BZ5ARRF3655 FF+10d, DUKHCONP1BZ5ARRF3655 SS+10d, DUKHCONP1BZ5ARRF3620 SS+5d | 67d |
|  | 15 | **ELEVATION** |  | 2014-05-31 | 2014-07-27 |  |  |
| DUKHCONP1BZ5AREL3665 |  | External Plastering | 25d | 2014-05-31 | 2014-06-28 | DUKHCONP1BZ4AREL3665, DUKHCONP1BZ5STRF2065 FF+7d, DUKHCONP1BZ5ARRF3605 SS+7d, DUKHCONP1BZ5ARFF3305 SS+7d, DUKHCONP1BZ5STRF2065 SS+7d, DUKHCONP1BZ5ARFF3305 FF+7d | 65d |
| DUKHCONP1BZ5AREL3670 |  | External stone cladding works | 20d | 2014-06-17 | 2014-07-09 | DUKHCONP1BZ4AREL3670, DUKHCONP1BZ5AREL3665 FF+10d, DUKHCONP1BZ5AREL3665 SS+10d | 65d |
| DUKHCONP1BZ5AREL3675 |  | GRC works | 20d | 2014-06-23 | 2014-07-15 | DUKHCONP1BZ5AREL3670 SS+5d, DUKHCONP1BZ5AREL3665 FF+10d, DUKHCONP1BZ4AREL3675, DUKHCONP1BZ5AREL3665 SS+10d | 65d |
| DUKHCONP1BZ5AREL3680 |  | External Painting | 20d | 2014-07-05 | 2014-07-27 | DUKHCONP1BZ5ARRF3695 SS+4d, DUKHCONP1BZ5AREL3670 FF+10d, DUKHCONP1BZ4AREL3680, DUKHCONP1BZ5AREL3670 SS+10d, DUKHCONP1BZ5ARRF3695 FF+4d, DUKHCONP1BZ5AREL3675 FF+10d, DUKHCONP1BZ5AREL3675 SS+10d | 65d |
|  | 20 | **MEP WORKS** |  | 2013-12-07 | 2014-10-26 |  |  |
|  | 10 | **ELECTRICAL WORKS** |  | 2014-03-15 | 2014-10-26 |  |  |
|  | 10 | **GROUND FLOOR** |  | 2014-03-15 | 2014-07-21 |  |  |
| DUKHCONP1BZ5ELGF4000 |  | Fixing of wall conduits & switch socket boxes | 25d | 2014-03-15 | 2014-04-12 | DUKHCONP1BZ5ARGF3000 FF+5d, DUKHCONP1BZ5ARGF3000 SS+5d | 47d |
| DUKHCONP1BZ5ELGF4005 |  | Cable tray & trunking installation | 20d | 2014-03-26 | 2014-04-17 | DUKHCONP1BZ5ELGF4000 SS+5d, DUKHCONP1BZ5ELGF4000 FF+5d, DUKHCONP1BZ4ELGF4005 | 65d |
| DUKHCONP1BZ5ELGF4010 |  | Installation of wiring & Main Cabling | 25d | 2014-04-03 | 2014-05-01 | DUKHCONP1BZ5ELGF4005 FF+7d, DUKHCONP1BZ5ELGF4005 SS+7d | 65d |
| DUKHCONP1BZ5ELGF4015 |  | Install. of CAMS & Fire Fighting Accessories | 25d | 2014-06-05 | 2014-07-03 | DUKHCONP1BZ4ELGF4015, DUKHCONP1BZ5ARGF3055 SS+7d, DUKHCONP1BZ5ARGF3055 FF+7d, DUKHCONP1BZ5ARGF3060 SS+7d, DUKHCONP1BZ5ARGF3060 FF+7d | 60d |
| DUKHCONP1BZ5ELGF4020 |  | Installation of DBS,MCCB Accessories. | 20d | 2014-06-11 | 2014-07-03 | DUKHCONP1BZ5ELGF4010 SS+5d, DUKHCONP1BZ5ARGF3055 FF+7d, DUKHCONP1BZ5ARGF3055 SS+7d, DUKHCONP1BZ5ARGF3060 SS+7d, DUKHCONP1BZ5ELGF4010 FF+5d, DUKHCONP1BZ5ARGF3060 FF+7d | 38d |
| DUKHCONP1BZ5ELGF4025 |  | Installation of Lighting fixtures & Accessories | 25d | 2014-06-23 | 2014-07-21 | DUKHCONP1BZ5ARGF3055 FF+10d, DUKHCONP1BZ5ARGF3055 SS+10d, DUKHCONP1BZ5ARGF3060 SS+10d, DUKHCONP1BZ5ELGF4020 FF+10d, DUKHCONP1BZ5ARGF3060 FF+10d, DUKHCONP1BZ4ELGF4025, DUKHCONP1BZ5ELGF4020 SS+10d | 40d |
| DUKHCONP1BZ5ELGF4030 |  | Installation of Telephone System | 20d | 2014-06-23 | 2014-07-15 | DUKHCONP1BZ5ELGF4020 FF+10d, DUKHCONP1BZ4ELGF4030, DUKHCONP1BZ5ARGF3060 SS+5d, DUKHCONP1BZ5ARGF3060 FF+5d, DUKHCONP1BZ5ELGF4020 SS+10d | 38d |
|  | 15 | **FIRST FLOORS** |  | 2014-04-24 | 2014-09-24 |  |  |
| DUKHCONP1BZ5ELFF4035 |  | Fixing of wall conduits & switch socket boxes | 25d | 2014-04-24 | 2014-05-22 | DUKHCONP1BZ5ARFF3300 FF+5d, DUKHCONP1BZ5ARFF3300 SS+5d | 5d |
| DUKHCONP1BZ5ELFF4040 |  | Cable tray & trunking installation | 20d | 2014-05-06 | 2014-05-28 | DUKHCONP1BZ5ELFF4035 SS+5d, DUKHCONP1BZ5ELFF4035 FF+5d | 35d |
| DUKHCONP1BZ5ELFF4045 |  | Installation of wiring & Main Cabling | 25d | 2014-05-14 | 2014-06-11 | DUKHCONP1BZ4ELFF4045, DUKHCONP1BZ5ELFF4040 SS+7d, DUKHCONP1BZ5ELFF4040 FF+7d | 35d |
| DUKHCONP1BZ5ELFF4050 |  | Installation of Telephone System | 25d | 2014-08-05 | 2014-09-02 | DUKHCONP1BZ5MSEX5010, DUKHCONP1BZ5ELGF4030 FF+10d, DUKHCONP1BZ5ARFF3360 SS+5d, DUKHCONP1BZ5ARFF3360 FF+5d, DUKHCONP1BZ5ELGF4030 SS+10d | 14d |
| DUKHCONP1BZ5ELFF4055 |  | Install. of CAMS & Fire Fighting Accessories | 25d | 2014-08-07 | 2014-09-04 | DUKHCONP1BZ5ELGF4015 SS+5d, DUKHCONP1BZ5ELGF4015 FF+5d, DUKHCONP1BZ4ELFF4055, DUKHCONP1BZ5ARFF3360 SS+7d, DUKHCONP1BZ5ARFF3360 FF+7d | 34d |
| DUKHCONP1BZ5ELFF4060 |  | Installation of DBS,MCCB Accessories. | 20d | 2014-08-14 | 2014-09-06 | DUKHCONP1BZ5ELFF4045 SS+5d, DUKHCONP1BZ5ARFF3360 SS+8d, DUKHCONP1BZ5ELFF4045 FF+5d, DUKHCONP1BZ5ARFF3360 FF+8d, DUKHCONP1BZ4ELFF4060 | -8d |
| DUKHCONP1BZ5ELFF4065 |  | Installation of Lighting fixtures & Accessories | 25d | 2014-08-27 | 2014-09-24 | DUKHCONP1BZ5ELGF4025 SS+5d, DUKHCONP1BZ5ARFF3360 FF+10d, DUKHCONP1BZ5ELFF4060 SS+11d, DUKHCONP1BZ5ARFF3360 SS+10d, DUKHCONP1BZ5ELGF4025 FF+5d, DUKHCONP1BZ4ELFF4065, DUKHCONP1BZ5ELFF4060 FF+11d | -8d |
|  | 20 | **ROOF** |  | 2014-09-16 | 2014-10-26 |  |  |
| DUKHCONP1BZ5ELRF4070 |  | Installation of Isolator | 18d | 2014-09-16 | 2014-10-06 | DUKHCONP1BZ5ELFF4045 SS+10d, DUKHCONP1BZ5ELFF4065 SS+10d, DUKHCONP1BZ5ELFF4045 FF+10d, DUKHCONP1BZ5ELFF4065 FF+10d, DUKHCONP1BZ5ELFF4050 FF+7d, DUKHCONP1BZ5ARRF3645 SS+7d, DUKHCONP1BZ5ARRF3645 FF+7d, DUKHCONP1BZ5ELFF4050 SS+5d | -8d |
| DUKHCONP1BZ5ELRF4075 |  | Installation of TV Dish Antenna | 23d | 2014-09-28 | 2014-10-26 | DUKHCONP1BZ5ELRF4070 SS+10d, DUKHCONP1BZ5ELRF4070 FF+10d | -8d |
|  | 15 | **PLUMBING, DRAINAGE & FIRE FIGHTING WORKS** |  | 2013-12-07 | 2014-10-05 |  |  |
|  | 10 | **GROUND FLOOR** |  | 2013-12-07 | 2014-07-21 |  |  |
| DUKHCONP1BZ5PLUG4300 |  | Drainage / Storm Pipes in Grade Slab | 20d | 2013-12-07 | 2013-12-30 | DUKHCONP1BZ5STUG1040 SS+10d, DUKHCONP1BZ5STUG1040 FF+10d | 0d |
| DUKHCONP1BZ5PLGF4305 |  | Installation of Plumbing pipes & testing | 18d | 2014-03-25 | 2014-04-14 | DUKHCONP1BZ5ARGF3000 FF+7d, DUKHCONP1BZ5ARGF3000 SS+7d, DUKHCONP1BZ4PLGF4305 | 38d |
| DUKHCONP1BZ5PLGF4310 |  | Installation of Drainage pipes &testing | 18d | 2014-03-25 | 2014-04-14 | DUKHCONP1BZ5ARGF3000 FF+7d, DUKHCONP1BZ5PLGF4305 FF, DUKHCONP1BZ5ARGF3000 SS+7d, DUKHCONP1BZ5PLGF4305 SS | 41d |
| DUKHCONP1BZ5PLGF4315 |  | Sanitary Fittings & Accessories | 20d | 2014-06-23 | 2014-07-15 | DUKHCONP1BZ4PLGF4315, DUKHCONP1BZ5PLGF4310 SS+5d, DUKHCONP1BZ5PLGF4310 FF+5d, DUKHCONP1BZ5ARGF3065 FF+5d, DUKHCONP1BZ5ARGF3065 SS+5d | 70d |
| DUKHCONP1BZ5PLGF4320 |  | Installation of Water Heater | 15d | 2014-07-05 | 2014-07-21 | DUKHCONP1BZ5ARGF3060 SS+5d, DUKHCONP1BZ5ARGF3060 FF+5d, DUKHCONP1BZ4PLGF4320, DUKHCONP1BZ5PLGF4315 SS+5d, DUKHCONP1BZ5PLGF4315 FF+5d | 70d |
|  | 15 | **FIRST FLOORS** |  | 2014-05-06 | 2014-09-17 |  |  |
| DUKHCONP1BZ5PLFF4325 |  | Installation of Plumbing pipes & testing | 18d | 2014-05-06 | 2014-05-26 | DUKHCONP1BZ5ARFF3300 FF+8d, DUKHCONP1BZ5ARFF3300 SS+8d | -8d |
| DUKHCONP1BZ5PLFF4330 |  | Installation of Drainage pipes & testing | 18d | 2014-05-06 | 2014-05-26 | DUKHCONP1BZ5ARFF3300 SS+7d, DUKHCONP1BZ5PLFF4325 FF, DUKHCONP1BZ4PLFF4330, DUKHCONP1BZ5PLFF4325 SS, DUKHCONP1BZ5ARFF3300 FF+7d | 19d |
| DUKHCONP1BZ5PLFF4335 |  | Sanitary Fittings & Accessories | 20d | 2014-08-20 | 2014-09-11 | DUKHCONP1BZ5PLFF4330 FF+5d, DUKHCONP1BZ5PLFF4330 SS+5d, DUKHCONP1BZ5ARFF3365 SS+5d, DUKHCONP1BZ5ARFF3365 FF+5d | 8d |
| DUKHCONP1BZ5PLFF4340 |  | Installation of Water Heater | 15d | 2014-09-01 | 2014-09-17 | DUKHCONP1BZ4PLFF4340, DUKHCONP1BZ5ARFF3360 SS+5d, DUKHCONP1BZ5PLFF4335 SS+5d, DUKHCONP1BZ5ARFF3360 FF+5d, DUKHCONP1BZ5PLFF4335 FF+5d | 8d |
|  | 20 | **ROOF** |  | 2014-06-02 | 2014-10-05 |  |  |
| DUKHCONP1BZ5PLRF4345 |  | Installation of Plumbing pipes & fittings | 14d | 2014-06-02 | 2014-06-17 | DUKHCONP1BZ5ARRF3605 SS+8d, DUKHCONP1BZ4PLRF4345, DUKHCONP1BZ5ARRF3605 FF+8d | 75d |
| DUKHCONP1BZ5PLRF4350 |  | Installation of Rain water Pipes | 15d | 2014-06-19 | 2014-07-06 | DUKHCONP1BZ5AREL3665 SS+7d, DUKHCONP1BZ4PLRF4350, DUKHCONP1BZ5PLRF4345 FF+8d, DUKHCONP1BZ5ARRF3645 SS+5d, DUKHCONP1BZ5PLRF4345 SS+8d, DUKHCONP1BZ5ARRF3645 FF+5d, DUKHCONP1BZ5AREL3665 FF+7d, DUKHCONP1BZ5PLFF4330 SS+5d, DUKHCONP1BZ5PLFF4330 FF+5d | 68d |
| DUKHCONP1BZ5PLRF4355 |  | Roof Water Tank Installation & Connections | 25d | 2014-09-07 | 2014-10-05 | DUKHCONP1BZ5PLRF4345 SS+8d, DUKHCONP1BZ4PLRF4355, DUKHCONP1BZ5WEEX5065 FF, DUKHCONP1BZ5ARRF3655 SS+5d, DUKHCONP1BZ5PLFF4340 FF+5d, DUKHCONP1BZ5PLFF4340 SS+5d, DUKHCONP1BZ5PLRF4345 FF+8d, DUKHCONP1BZ5PLRF4350 SS+5d, DUKHCONP1BZ5ARRF3655 FF+5d, DUKHCONP1BZ5PLRF4350 FF+5d | 8d |

| ID | WBS | Task | Duration | Start | Finish | Predecessors | Total float |
| --- | --- | --- | --- | --- | --- | --- | --- |
|  | 20 | **AC WORKS** |  | 2014-04-14 | 2014-10-01 |  |  |
|  | 10 | **GROUND FLOOR** |  | 2014-04-14 | 2014-07-19 |  |  |
| DUKHCONP1BZ5ACGF4600 |  | Installation AC Pipes | 20d | 2014-04-14 | 2014-05-06 | DUKHCONP1BZ5ARGF3005 SS+7d, DUKHCONP1BZ4ACGF4600, DUKHCONP1BZ5ARGF3005 FF+7d | 69d |
| DUKHCONP1BZ5ACGF4605 |  | Fixing of Ventilation Equipments | 25d | 2014-06-05 | 2014-07-03 | DUKHCONP1BZ5ARGF3060 SS+7d, DUKHCONP1BZ5ARGF3060 FF+7d, DUKHCONP1BZ5ACGF4600 SS+10d, DUKHCONP1BZ4ACGF4605, DUKHCONP1BZ5ACGF4600 FF+10d, DUKHCONP1BZ5ARGF3055 SS+7d, DUKHCONP1BZ5ARGF3055 FF+7d | 57d |
| DUKHCONP1BZ5ACGF4610 |  | Fixing of Split AC | 20d | 2014-06-26 | 2014-07-19 | DUKHCONP1BZ5ACGF4605 FF+13d, DUKHCONP1BZ5ACGF4605 SS+13d, DUKHCONP1BZ4ACGF4610 | 57d |
|  | 15 | **FIRST FLOORS** |  | 2014-05-29 | 2014-09-20 |  |  |
| DUKHCONP1BZ5ACFF4615 |  | Installation AC Pipes | 20d | 2014-05-29 | 2014-06-21 | DUKHCONP1BZ5ARFF3305 SS+7d, DUKHCONP1BZ4ACFF4615, DUKHCONP1BZ5ARFF3305 FF+7d | 35d |
| DUKHCONP1BZ5ACFF4620 |  | Fixing of Ventilation Equipments | 25d | 2014-08-07 | 2014-09-04 | DUKHCONP1BZ5ACFF4615 SS+10d, DUKHCONP1BZ5ACFF4615 FF+10d, DUKHCONP1BZ5ARFF3360 FF+7d, DUKHCONP1BZ5ARFF3360 SS+7d, DUKHCONP1BZ4ACFF4620 | 6d |
| DUKHCONP1BZ5ACFF4625 |  | Fixing of Split AC | 20d | 2014-08-28 | 2014-09-20 | DUKHCONP1BZ4ACFF4625, DUKHCONP1BZ5ACFF4620 SS+13d, DUKHCONP1BZ5ACFF4620 FF+13d | 6d |
|  | 20 | **ROOF** |  | 2014-06-10 | 2014-10-01 |  |  |
| DUKHCONP1BZ5ACRF4630 |  | Installation of Refrigerant Pipes | 25d | 2014-06-10 | 2014-07-08 | DUKHCONP1BZ5ARRF3645 SS+7d, DUKHCONP1BZ5ACGF4600 SS+7d, DUKHCONP1BZ5ACGF4600 FF+7d, DUKHCONP1BZ5ACFF4615 SS+7d, DUKHCONP1BZ5ACFF4615 FF+7d, DUKHCONP1BZ5ARRF3645 FF+7d, DUKHCONP1BZ4ACRF4630 | 76d |
| DUKHCONP1BZ5ACRF4635 |  | Installation of Condensing Unit | 25d | 2014-09-03 | 2014-10-01 | DUKHCONP1BZ5ACRF4630 FF+5d, DUKHCONP1BZ5ACRF4630 SS+5d, DUKHCONP1BZ5ACFF4625 SS+5d, DUKHCONP1BZ5ACFF4625 FF+5d, DUKHCONP1BZ5ACGF4610 SS+5d, DUKHCONP1BZ5ACGF4610 FF+5d, DUKHCONP1BZ4ACRF4635 | 11d |
|  | 25 | **EXTERNAL WORKS** |  | 2014-04-16 | 2014-10-29 |  |  |
|  | 10 | **MISCELLANEOUS** |  | 2014-04-16 | 2014-10-29 |  |  |
| DUKHCONP1BZ5MSEX5000 |  | Construction of Manholes | 25d | 2014-04-16 | 2014-05-14 | DUKHCONP1BZ5PLGF4310 FF+10d, DUKHCONP1BZ5PLGF4310 SS+10d, DUKHCONP1BZ5STRF2055 SS+5d, DUKHCONP1BZ5STRF2055 FF+5d | 32d |
| DUKHCONP1BZ5MSEX5020 |  | Construction Entrance Ramp | 25d | 2014-04-20 | 2014-05-18 | DUKHCONP1BZ4MSEX5020, DUKHCONP1BZ5STRF2055 FF, DUKHCONP1BZ5STRF2055 SS | 58d |
| DUKHCONP1BZ5MSEX5005 |  | Construction of Soak pit, Chambers | 25d | 2014-04-30 | 2014-05-28 | DUKHCONP1BZ5MSEX5000 SS+12d, DUKHCONP1BZ5MSEX5000 FF+12d | 32d |
| DUKHCONP1BZ5MSEX5025 |  | SS.Handrails and Balustrades | 20d | 2014-05-07 | 2014-05-29 | DUKHCONP1BZ5MSEX5020 FF+10d, DUKHCONP1BZ5MSEX5020 SS+10d | 60d |
| DUKHCONP1BZ5MSEX5015 |  | Construction of grease Trap | 20d | 2014-05-20 | 2014-06-11 | DUKHCONP1BZ5MSEX5005 FF+12d, DUKHCONP1BZ5MSEX5005 SS+12d | 32d |
| DUKHCONP1BZ5MSEX5010 |  | Telephone cable laying | 25d | 2014-06-12 | 2014-07-10 | DUKHCONP1BZ5MSEX5015 | 32d |
| DUKHCONP1BZ5MSEX5335 |  | Aluminum Roll-up Shutter with 2m Wall | 25d | 2014-09-29 | 2014-10-29 | DUKHCONP1BZ4MSEX5335, DUKHCONI1BZ3BWGL5325 SS+7d | 14d |
|  | 15 | **WATER TANK ENCLOSURE** |  | 2014-05-10 | 2014-08-25 |  |  |
| DUKHCONP1BZ5WEEX5030 |  | Excavation | 20d | 2014-05-10 | 2014-06-01 | DUKHCONP1BZ4WEEX5030, DUKHCONP1BZ5STRF2055 FF+10d, DUKHCONP1BZ5STRF2055 SS+10d | 40d |
| DUKHCONP1BZ5WEEX5035 |  | Construction of Raft | 25d | 2014-05-21 | 2014-06-18 | DUKHCONP1BZ5WEEX5030 FF+10d, DUKHCONP1BZ5WEEX5030 SS+10d | 40d |
| DUKHCONP1BZ5WEEX5040 |  | Block works & Plastering | 25d | 2014-06-02 | 2014-06-30 | DUKHCONP1BZ5WEEX5035 FF+10d, DUKHCONP1BZ5WEEX5035 SS+10d | 48d |
| DUKHCONP1BZ5WEEX5045 |  | Flooring & Painting | 25d | 2014-06-14 | 2014-07-12 | DUKHCONP1BZ5MSEX5025 SS+10d, DUKHCONP1BZ5WEEX5040 FF+10d, DUKHCONP1BZ5WEEX5040 SS+10d | 48d |
| DUKHCONP1BZ5WEEX5050 |  | Installation of Steel Gate | 20d | 2014-07-01 | 2014-07-23 | DUKHCONP1BZ5WEEX5045 SS+10d, DUKHCONP1BZ5MSEX5015 SS+10d, DUKHCONP1BZ5MSEX5025 FF+10d, DUKHCONP1BZ5WEEX5045 FF+10d | 48d |
| DUKHCONP1BZ5WEEX5060 |  | Structural steel & SS Shed cover installation | 25d | 2014-07-13 | 2014-08-13 | DUKHCONP1BZ5WEEX5050 FF+10d, DUKHCONP1BZ5WEEX5050 SS+5d, DUKHCONP1BZ4WEEX5060, DUKHCONP1BZ5MSEX5025 FF+10d | 43d |
| DUKHCONP1BZ5WEEX5065 |  | Install. of Water Tank,Chiller,Pump & Meter | 25d | 2014-07-24 | 2014-08-25 | DUKHCONP1BZ5MSEX5015 FF+5d, DUKHCONP1BZ5MSEX5015 SS+5d, DUKHCONP1BZ5PLRF4350 SS+5d, DUKHCONP1BZ5WEEX5060 FF+10d, DUKHCONP1BZ5PLRF4350 FF+5d, DUKHCONP1BZ5WEEX5060 SS+10d, DUKHCONP1BZ4WEEX5065 | 43d |
|  | 20 | **HARD LANDSCAPING** |  | 2014-05-15 | 2014-07-03 |  |  |
| DUKHCONP1BZ5HDEX5090 |  | kerb works | 20d | 2014-05-15 | 2014-06-07 | DUKHCONP1BZ4HDEX5090, DUKHCONP1BZ5MSEX5020 SS+7d, DUKHCONP1BZ5MSEX5025 SS+7d, DUKHCONP1BZ5MSEX5020 FF+7d | 60d |
| DUKHCONP1BZ5HDEX5095 |  | Cobble Stone Works | 20d | 2014-05-27 | 2014-06-18 | DUKHCONP1BZ5HDEX5090 SS+10d, DUKHCONP1BZ5HDEX5090 FF+10d | 60d |
| DUKHCONP1BZ5HDEX5100 |  | Interlock works | 20d | 2014-06-11 | 2014-07-03 | DUKHCONP1BZ5HDEX5095 SS+13d, DUKHCONP1BZ5HDEX5095 FF+13d | 60d |
|  | 25 | **SOFT LANDSCAPING** |  | 2014-06-23 | 2014-08-05 |  |  |
| DUKHCONP1BZ5SLEX5105 |  | Laying of Grass/ green area | 25d | 2014-06-23 | 2014-07-21 | DUKHCONP1BZ5HDEX5100 FF+10d, DUKHCONP1BZ5HDEX5100 SS+10d | 60d |
| DUKHCONP1BZ5SLEX5110 |  | Laying of Palm tree | 25d | 2014-07-05 | 2014-08-05 | DUKHCONP1BZ5SLEX5105 FF+10d, DUKHCONP1BZ5SLEX5105 SS+10d | 60d |
|  | 30 | **TESTING AND COMMISSIONING** |  | 2014-10-27 | 2014-11-24 |  |  |
| DUKHCONP1BZ5ACTC8000 |  | Pre-Commissioning & Testing of AC Works | 25d | 2014-10-27 | 2014-11-24 | DUKHCONP1BZ5HDEX5100, DUKHCONP1BZ5ARRF3620, DUKHCONP1BZ4ACTC8000, DUKHCONP1BZ5ACFF4625, DUKHCONP1BZ5ARFF3395, DUKHCONP1BZ5ARRF3660, DUKHCONP1BZ5AREL3680, DUKHCONP1BZ5MSEX5005, DUKHCONP1BZ5SLEX5110, DUKHCONP1BZ5ARGF3095, DUKHCONP1BZ5ACRF4635, DUKHCONP1BZ5SLEX5105 | -8d |
| DUKHCONP1BZ5ELTC8010 |  | Pre-Commissioning & Testing of Electrical Works | 25d | 2014-10-27 | 2014-11-24 | DUKHCONP1BZ5ELRF4075, DUKHCONP1BZ4ELTC8010, DUKHCONP1BZ5ELGF4015, DUKHCONP1BZ5SLEX5105, DUKHCONP1BZ5ARFF3395, DUKHCONP1BZ5ARGF3095, DUKHCONP1BZ5ELGF4025, DUKHCONP1BZ5AREL3680, DUKHCONP1BZ5HDEX5100, DUKHCONP1BZ5ARRF3655, DUKHCONP1BZ5ARRF3660, DUKHCONP1BZ5ELGF4030, DUKHCONP1BZ5ELFF4050, DUKHCONP1BZ5MSEX5005, DUKHCONP1BZ5ARRF3620, DUKHCONP1BZ5ELFF4065, DUKHCONP1BZ5ELFF4055, DUKHCONP1BZ5SLEX5110 | -8d |
| DUKHCONP1BZ5PLTC8005 |  | Pre-Commissioning & Testing of Plumbing Works | 25d | 2014-10-27 | 2014-11-24 | DUKHCONP1BZ5SLEX5110, DUKHCONP1BZ5HDEX5100, DUKHCONP1BZ5PLGF4320, DUKHCONP1BZ5SLEX5105, DUKHCONP1BZ5WEEX5065, DUKHCONP1BZ5ARRF3660, DUKHCONP1BZ5ARGF3095, DUKHCONP1BZ5ARFF3395, DUKHCONP1BZ5ARRF3620, DUKHCONP1BZ5ARRF3655, DUKHCONP1BZ4PLTC8005, DUKHCONP1BZ5PLRF4350, DUKHCONP1BZ5PLRF4355, DUKHCONP1BZ5MSEX5005, DUKHCONP1BZ5AREL3680 | -8d |
|  | 35 | **ZONE - 6 (5 Twin Villas)** |  | 2013-09-23 | 2014-12-24 |  |  |
|  | 10 | **STRUCTURAL WORKS** |  | 2013-09-23 | 2014-06-30 |  |  |
|  | 10 | **SUB STRUCTURE** |  | 2013-09-23 | 2014-02-13 |  |  |
|  | 10 | **UPTO GRADE SLAB** |  | 2013-09-23 | 2014-02-13 |  |  |
| DUKHCONP1BZ6STUG1000 |  | Footing Excavation | 25d | 2013-09-23 | 2013-10-23 | DUKHCONP1BZ5STUG1000 | 0d |
| DUKHCONP1BZ6STUG1005 |  | Footing Antitermite | 23d | 2013-10-05 | 2013-11-02 | DUKHCONP1BZ6STUG1000 SS+10d, DUKHCONP1BZ6STUG1000 FF+5d | 0d |
| DUKHCONP1BZ6STUG1010 |  | Footing Blinding | 23d | 2013-10-09 | 2013-11-06 | DUKHCONP1BZ6STUG1005 SS+4d, DUKHCONP1BZ6STUG1005 FF+4d | 0d |
| DUKHCONP1BZ6STUG1015 |  | Footing Waterproofing & Screed | 25d | 2013-10-15 | 2013-11-14 | DUKHCONP1BZ6STUG1010 SS+5d, DUKHCONP1BZ6STUG1010 FF+5d | 0d |
| DUKHCONP1BZ6STUG1020 |  | Construction of foundations | 20d | 2013-11-02 | 2013-11-24 | DUKHCONP1BZ6STUG1015 SS+7d, DUKHCONP1BZ6STUG1015 FF+8d | 0d |
| DUKHCONP1BZ6STUG1025 |  | Construction of neck of columns | 25d | 2013-11-11 | 2013-12-09 | DUKHCONP1BZ5STUG1025, DUKHCONP1BZ6STUG1020 SS+8d, DUKHCONP1BZ6STUG1020 FF+7d | 0d |
| DUKHCONP1BZ6STUG1030 |  | Waterproofing Footing & Neck Column | 25d | 2013-11-20 | 2013-12-19 | DUKHCONP1BZ6STUG1025 FF+8d, DUKHCONP1BZ6STUG1025 SS+8d | 0d |
| DUKHCONP1BZ6STUG1035 |  | Backfilling Upto Grade Beam Bottom | 25d | 2013-12-02 | 2013-12-31 | DUKHCONP1BZ6STUG1030 SS+10d, DUKHCONP1BZ5STUG1035, DUKHCONP1BZ6STUG1030 FF+10d | 0d |
| DUKHCONP1BZ6STUG1040 |  | Construction of Grade Beams | 25d | 2013-12-19 | 2014-01-16 | DUKHCONP1BZ6STUG1035 FF+14d, DUKHCONP1BZ6STUG1035 SS+14d | 0d |
| DUKHCONP1BZ6STUG1045 |  | Construction of slab on grade | 25d | 2014-01-15 | 2014-02-13 | DUKHCONP1BZ6STUG1040 FF+10d, DUKHCONP1BZ6PLUG4300 FF+8d, DUKHCONP1BZ6PLUG4300 SS+8d, DUKHCONP1BZ6STUG1040 SS+10d, DUKHCONP1BZ5STUG1045 | 0d |
|  | 15 | **SUPERSTRUCTURE** |  | 2014-02-01 | 2014-06-30 |  |  |
|  | 10 | **GROUND FLOOR** |  | 2014-02-01 | 2014-03-29 |  |  |
| DUKHCONP1BZ6STGF2000 |  | Column-Rebar & Formwork | 25d | 2014-02-01 | 2014-03-02 | DUKHCONP1BZ5STGF2000, DUKHCONP1BZ6STUG1045 FF+7d, DUKHCONP1BZ6STUG1045 SS+14d | 0d |
| DUKHCONP1BZ6STGF2005 |  | Column-Concrete | 23d | 2014-02-10 | 2014-03-09 | DUKHCONP1BZ6STGF2000 SS+8d, DUKHCONP1BZ6STGF2000 FF+2d | 0d |
| DUKHCONP1BZ6STGF2010 |  | Beam, Stairs ,Slab-Rebar & Formwork | 25d | 2014-02-25 | 2014-03-25 | DUKHCONP1BZ6STGF2005 SS+2d, DUKHCONP1BZ6STGF2005 FF+14d | 0d |
| DUKHCONP1BZ6STGF2015 |  | Beam, Stairs ,Slab-Concrete | 14d | 2014-03-13 | 2014-03-29 | DUKHCONP1BZ6STGF2010 FF+3d, DUKHCONP1BZ5STGF2015, DUKHCONP1BZ6STGF2010 SS+10d | 0d |
|  | 15 | **FIRST FLOORS** |  | 2014-03-16 | 2014-04-29 |  |  |
| DUKHCONP1BZ6STFF2020 |  | Column-Rebar & Formwork | 25d | 2014-03-16 | 2014-04-13 | DUKHCONP1BZ6STGF2015 FF+5d, DUKHCONP1BZ5STFF2020, DUKHCONP1BZ6STGF2015 SS+2d | 0d |
| DUKHCONP1BZ6STFF2025 |  | Column-Concrete | 23d | 2014-03-25 | 2014-04-20 | DUKHCONP1BZ6STFF2020 FF+2d, DUKHCONP1BZ6STFF2020 SS+8d | 0d |
| DUKHCONP1BZ6STFF2030 |  | Beam, Stairs ,Slab-Rebar & Formwork | 25d | 2014-03-29 | 2014-04-26 | DUKHCONP1BZ6STFF2025 SS+2d, DUKHCONP1BZ6STFF2025 FF+5d | 0d |
| DUKHCONP1BZ6STFF2035 |  | Beam, Stairs ,Slab-Concrete | 14d | 2014-04-14 | 2014-04-29 | DUKHCONP1BZ5STFF2035, DUKHCONP1BZ6STFF2030 FF+3d, DUKHCONP1BZ6STFF2030 SS+10d | 0d |
|  | 20 | **ROOF** |  | 2014-04-20 | 2014-06-30 |  |  |
| DUKHCONP1BZ6STRF2040 |  | Column-Rebar & Formwork | 18d | 2014-04-20 | 2014-05-10 | DUKHCONP1BZ5STRF2040, DUKHCONP1BZ6STFF2035 FF+3d, DUKHCONP1BZ6STFF2035 SS+5d | 2d |
| DUKHCONP1BZ6STRF2045 |  | Column-Concrete | 17d | 2014-04-23 | 2014-05-12 | DUKHCONP1BZ6STRF2040 FF+1d, DUKHCONP1BZ6STRF2040 SS+3d | 2d |
| DUKHCONP1BZ6STRF2050 |  | Slab-Rebar & Formwork - Head Room | 20d | 2014-04-26 | 2014-05-18 | DUKHCONP1BZ6STRF2045 FF+5d, DUKHCONP1BZ6STRF2045 SS+2d | 2d |
| DUKHCONP1BZ6STRF2055 |  | Slab-Concrete-Head room | 13d | 2014-05-10 | 2014-05-24 | DUKHCONP1BZ6STRF2050 SS+5d, DUKHCONP1BZ5STRF2055, DUKHCONP1BZ6STRF2050 FF+5d | 2d |

| ID | WBS | Task | Duration | Start | Finish | Predecessors | Total float |
| --- | --- | --- | --- | --- | --- | --- | --- |
| DUKHCONP1BZ6STRF2060 |  | Construction of Parapets | 25d | 2014-05-17 | 2014-06-14 | DUKHCONP1BZ5STRF2060, DUKHCONP1BZ6STRF2055 SS+2d, DUKHCONP1BZ6STRF2055 FF+14d | 62d |
| DUKHCONP1BZ6STRF2065 |  | Construction of up stands/Plinth | 25d | 2014-06-02 | 2014-06-30 | DUKHCONP1BZ5STRF2065, DUKHCONP1BZ6STRF2060 FF+5d, DUKHCONP1BZ6STRF2060 SS+5d | 67d |
|  | 15 | **FINISHING WORKS** |  | 2014-04-07 | 2014-11-24 |  |  |
|  | 10 | **INTERNAL FINISHES** |  | 2014-04-07 | 2014-11-24 |  |  |
|  | 10 | **GROUND FLOOR** |  | 2014-04-07 | 2014-09-20 |  |  |
| DUKHCONP1BZ6ARGF3000 |  | Block work | 25d | 2014-04-07 | 2014-05-05 | DUKHCONP1BZ6STGF2015 SS+21d, DUKHCONP1BZ6STGF2015 FF+21d, DUKHCONP1BZ5ARGF3000 | 38d |
| DUKHCONP1BZ6ARGF3005 |  | Plastering work | 25d | 2014-04-29 | 2014-05-27 | DUKHCONP1BZ6ELGF4000 FF+5d, DUKHCONP1BZ5ARGF3005, DUKHCONP1BZ6ARGF3000 FF+7d, DUKHCONP1BZ6ARGF3000 SS+7d, DUKHCONP1BZ6ELGF4000 SS+5d, DUKHCONP1BZ6PLGF4305 SS+5d, DUKHCONP1BZ6PLGF4305 FF+5d | 38d |
| DUKHCONP1BZ6ARGF3010 |  | Flooring screed | 21d | 2014-05-07 | 2014-05-31 | DUKHCONP1BZ6ARGF3005 SS+7d, DUKHCONP1BZ6ARGF3005 FF+3d | 46d |
| DUKHCONP1BZ6ARGF3030 |  | Paint First coat | 25d | 2014-05-15 | 2014-06-12 | DUKHCONP1BZ5ARGF3030, DUKHCONP1BZ6ARGF3005 FF+14d, DUKHCONP1BZ6ARGF3005 SS+14d | 52d |
| DUKHCONP1BZ6ARGF3015 |  | Wet area waterproofing & Protection Screed | 15d | 2014-05-17 | 2014-06-02 | DUKHCONP1BZ6ARGF3005 FF+5d, DUKHCONP1BZ5ARGF3015, DUKHCONP1BZ6ARGF3005 SS+7d | 38d |
| DUKHCONP1BZ6ARGF3020 |  | Ceramic Wall Tiling | 25d | 2014-05-22 | 2014-06-19 | DUKHCONP1BZ6ARGF3015 SS+5d, DUKHCONP1BZ6PLGF4310 FF+4d, DUKHCONP1BZ5ARGF3020, DUKHCONP1BZ6ARGF3015 FF+5d, DUKHCONP1BZ6PLGF4305 SS+4d, DUKHCONP1BZ6PLGF4305 FF+4d, DUKHCONP1BZ6PLGF4310 SS+4d | 38d |
| DUKHCONP1BZ6ARGF3025 |  | Porcelain Tile flooring | 25d | 2014-05-28 | 2014-06-25 | DUKHCONP1BZ6ARGF3020 FF+5d, DUKHCONP1BZ5ARGF3025, DUKHCONP1BZ6ARGF3010 FF+10d, DUKHCONP1BZ6ARGF3020 SS+5d, DUKHCONP1BZ6ARGF3010 SS+10d | 38d |
| DUKHCONP1BZ6ARGF3045 |  | Fixing of Suspension systems | 20d | 2014-06-15 | 2014-07-07 | DUKHCONP1BZ6ARGF3025 FF+10d, DUKHCONP1BZ6ELGF4010 SS+5d, DUKHCONP1BZ6ARGF3030 FF+7d, DUKHCONP1BZ5ARGF3045, DUKHCONP1BZ6ARGF3025 SS+10d, DUKHCONP1BZ6ARGF3030 SS+7d, DUKHCONP1BZ6ELGF4010 FF+5d | 38d |
| DUKHCONP1BZ6ARGF3035 |  | Slate Tile Flooring & Skirting | 15d | 2014-06-17 | 2014-07-03 | DUKHCONP1BZ6ARGF3010 SS+13d, DUKHCONP1BZ6ARGF3010 FF+13d, DUKHCONP1BZ6ARGF3025 FF+7d, DUKHCONP1BZ6ARGF3025 SS+13d | 48d |
| DUKHCONP1BZ6ARGF3055 |  | Aluminum tile false ceiling | 25d | 2014-06-23 | 2014-07-21 | DUKHCONP1BZ6ACGF4600 FF+7d, DUKHCONP1BZ6ACGF4600 SS+7d, DUKHCONP1BZ6ARGF3045 FF+7d, DUKHCONP1BZ6ARGF3045 SS+7d | 41d |
| DUKHCONP1BZ6ARGF3040 |  | Cobble Tile flooring | 15d | 2014-06-24 | 2014-07-10 | DUKHCONP1BZ6ARGF3010 FF+13d, DUKHCONP1BZ6ARGF3035 FF+4d, DUKHCONP1BZ6ARGF3025 SS+13d, DUKHCONP1BZ6ARGF3010 SS+13d, DUKHCONP1BZ6ARGF3025 FF+13d, DUKHCONP1BZ6ARGF3035 SS+4d | 46d |
| DUKHCONP1BZ6ARGF3060 |  | Gypsum board false ceiling | 25d | 2014-06-26 | 2014-07-24 | DUKHCONP1BZ6ACGF4600 SS+7d, DUKHCONP1BZ5ARGF3060, DUKHCONP1BZ6ACGF4600 FF+7d, DUKHCONP1BZ6ARGF3045 FF+10d, DUKHCONP1BZ6ARGF3045 SS+10d | 38d |
| DUKHCONP1BZ6ARGF3050 |  | Granite - Stair case flooring & Skirting | 20d | 2014-07-02 | 2014-07-24 | DUKHCONP1BZ6ARGF3040 SS+7d, DUKHCONP1BZ6ARGF3025 FF+13d, DUKHCONP1BZ6ARGF3040 FF+7d, DUKHCONP1BZ6ARGF3025 SS+13d | 46d |
| DUKHCONP1BZ6ARGF3065 |  | Wooden door & PVC Door | 15d | 2014-07-16 | 2014-08-05 | DUKHCONP1BZ6ARGF3035 FF+7d, DUKHCONP1BZ5ARGF3065, DUKHCONP1BZ6ARGF3035 SS+7d, DUKHCONP1BZ6ARGF3050 SS+7d, DUKHCONP1BZ6ARGF3050 FF+7d | 46d |
| DUKHCONP1BZ6ARGF3070 |  | Aluminum doors | 15d | 2014-07-22 | 2014-08-11 | DUKHCONP1BZ5ARGF3070, DUKHCONP1BZ6ARGF3065 SS+5d, DUKHCONP1BZ6ARGF3065 FF+5d | 46d |
| DUKHCONP1BZ6ARGF3075 |  | Carpentry & Joinery Works | 20d | 2014-07-28 | 2014-08-23 | DUKHCONP1BZ5ARGF3075, DUKHCONP1BZ6ARGF3070 SS+5d, DUKHCONP1BZ6ARGF3070 FF+7d | 46d |
| DUKHCONP1BZ6ARGF3080 |  | Aluminum windows | 20d | 2014-07-29 | 2014-08-24 | DUKHCONP1BZ6ARGF3070 FF+6d, DUKHCONP1BZ6ARGF3070 SS+6d, DUKHCONP1BZ5ARGF3080 | 56d |
| DUKHCONP1BZ6ARGF3085 |  | S.S.Balustrade | 20d | 2014-08-09 | 2014-08-31 | DUKHCONP1BZ6ARGF3050 SS+7d, DUKHCONP1BZ6ARGF3075 FF+7d, DUKHCONP1BZ6ARGF3075 SS+7d, DUKHCONP1BZ6ARGF3050 FF+7d | 51d |
| DUKHCONP1BZ6ARGF3090 |  | Installation of Granite Counter Top | 15d | 2014-08-13 | 2014-08-30 | DUKHCONP1BZ6ARGF3075 FF+6d, DUKHCONP1BZ6ARGF3075 SS+7d | 46d |
| DUKHCONP1BZ6ARGF3095 |  | Final Painting | 25d | 2014-08-23 | 2014-09-20 | DUKHCONP1BZ6ARGF3080 FF+8d, DUKHCONP1BZ6ARGF3090 FF+8d, DUKHCONP1BZ6ARGF3085 FF+7d, DUKHCONP1BZ6ACGF4610 SS+10d, DUKHCONP1BZ6ARGF3040 SS+13d, DUKHCONP1BZ6ARGF3040 FF+13d, DUKHCONP1BZ6ARGF3035 FF+13d, DUKHCONP1BZ6ARGF3060 FF+8d, DUKHCONP1BZ6ARGF3090 SS+8d, DUKHCONP1BZ5ARGF3095, DUKHCONP1BZ6ARGF3030 SS+10d, DUKHCONP1BZ6ARGF3030 FF+10d, DUKHCONP1BZ6ARGF3080 SS+8d, DUKHCONP1BZ6ARGF3085 SS+7d, DUKHCONP1BZ6ARGF3070 SS+5d, DUKHCONP1BZ6ARGF3070 FF+5d, DUKHCONP1BZ6ARGF3035 SS+13d, DUKHCONP1BZ6ACGF4610 FF+10d, DUKHCONP1BZ6ARGF3060 SS+8d | 46d |
|  | 15 | **FIRST FLOORS** |  | 2014-05-18 | 2014-11-24 |  |  |
| DUKHCONP1BZ6ARFF3300 |  | Block work | 25d | 2014-05-18 | 2014-06-15 | DUKHCONP1BZ6STFF2020 SS+21d, DUKHCONP1BZ6STFF2035 FF+21d, DUKHCONP1BZ6STFF2020 FF+21d, DUKHCONP1BZ6STFF2035 SS+21d, DUKHCONP1BZ5ARFF3300 | -8d |
| DUKHCONP1BZ6ARFF3305 |  | Plastering work | 25d | 2014-06-14 | 2014-07-12 | DUKHCONP1BZ6PLFF4325 SS+8d, DUKHCONP1BZ6ELFF4035 FF+5d, DUKHCONP1BZ6ELFF4035 SS+5d, DUKHCONP1BZ6PLFF4325 FF+8d, DUKHCONP1BZ5ARFF3305, DUKHCONP1BZ6ARFF3300 SS+7d, DUKHCONP1BZ6ARFF3300 FF+7d | -8d |
| DUKHCONP1BZ6ARFF3310 |  | Flooring screed | 21d | 2014-06-22 | 2014-07-15 | DUKHCONP1BZ6ARFF3305 FF+3d, DUKHCONP1BZ6ARFF3305 SS+7d | 9d |
| DUKHCONP1BZ6ARFF3330 |  | Paint First coat | 25d | 2014-06-30 | 2014-07-28 | DUKHCONP1BZ6ARFF3305 FF+14d, DUKHCONP1BZ6ARFF3305 SS+14d | 18d |
| DUKHCONP1BZ6ARFF3315 |  | Wet area waterproofing | 15d | 2014-07-05 | 2014-07-21 | DUKHCONP1BZ5ARFF3315, DUKHCONP1BZ6ARFF3305 SS+7d, DUKHCONP1BZ6ARFF3305 FF+8d | -8d |
| DUKHCONP1BZ6ARFF3320 |  | Ceramic Wall Tiling | 25d | 2014-07-14 | 2014-08-14 | DUKHCONP1BZ6ARFF3315 SS+8d, DUKHCONP1BZ6PLFF4330 FF+7d, DUKHCONP1BZ6PLFF4325 SS+4d, DUKHCONP1BZ6ARFF3315 FF+7d, DUKHCONP1BZ6PLFF4330 SS+7d, DUKHCONP1BZ5ARFF3320, DUKHCONP1BZ6PLFF4325 FF+4d | -8d |
| DUKHCONP1BZ6ARFF3325 |  | Porcelain Tile flooring | 25d | 2014-07-23 | 2014-08-24 | DUKHCONP1BZ6ARFF3320 SS+8d, DUKHCONP1BZ6ARFF3320 FF+8d, DUKHCONP1BZ6ARFF3310 SS+10d, DUKHCONP1BZ6ARFF3310 FF+10d, DUKHCONP1BZ5ARFF3325 | -8d |
| DUKHCONP1BZ6ARFF3335 |  | Slate Tile Flooring & Skirting | 15d | 2014-08-13 | 2014-08-30 | DUKHCONP1BZ6ARFF3310 SS+13d, DUKHCONP1BZ6ARFF3325 FF+5d, DUKHCONP1BZ6ARFF3310 FF+13d, DUKHCONP1BZ6ARFF3325 SS+13d | 11d |
| DUKHCONP1BZ6ARFF3345 |  | Fixing of Suspension systems | 20d | 2014-08-17 | 2014-09-08 | DUKHCONP1BZ6ARFF3330 SS+7d, DUKHCONP1BZ6ELFF4045 FF+5d, DUKHCONP1BZ6ELFF4045 SS+5d, DUKHCONP1BZ6ARFF3330 FF+7d, DUKHCONP1BZ5ARFF3345, DUKHCONP1BZ6ARFF3325 FF+13d, DUKHCONP1BZ6ARFF3325 SS+13d | -8d |
| DUKHCONP1BZ6ARFF3350 |  | Granite - Stair case flooring & Skirting | 20d | 2014-08-17 | 2014-09-08 | DUKHCONP1BZ6ARFF3325 SS+13d, DUKHCONP1BZ6ARFF3325 FF+13d | 3d |
| DUKHCONP1BZ6ARFF3360 |  | Gypsum board false ceiling | 25d | 2014-08-28 | 2014-09-25 | DUKHCONP1BZ6ACFF4615 FF+7d, DUKHCONP1BZ6ACFF4615 SS+7d, DUKHCONP1BZ6ARFF3345 FF+10d, DUKHCONP1BZ6ARFF3345 SS+10d, DUKHCONP1BZ5ARFF3360 | -8d |
| DUKHCONP1BZ6ARFF3365 |  | Wooden door | 15d | 2014-09-13 | 2014-09-29 | DUKHCONP1BZ5ARFF3365, DUKHCONP1BZ6ARFF3335 SS+7d, DUKHCONP1BZ6ARFF3335 FF+7d, DUKHCONP1BZ6ARFF3350 SS+7d, DUKHCONP1BZ6ARFF3350 FF+7d, DUKHCONP1BZ6ARFF3360 SS+3d, DUKHCONP1BZ6ARFF3360 FF+3d | -8d |
| DUKHCONP1BZ6ARFF3370 |  | Aluminum Door | 20d | 2014-09-21 | 2014-10-15 | DUKHCONP1BZ6ARFF3365 SS+7d, DUKHCONP1BZ6ARFF3365 FF+5d, DUKHCONP1BZ5ARFF3370 | -8d |
| DUKHCONP1BZ6ARFF3380 |  | Aluminum windows | 20d | 2014-09-28 | 2014-10-22 | DUKHCONP1BZ6ARFF3370 SS+6d, DUKHCONP1BZ6ARFF3370 FF+6d | 5d |
| DUKHCONP1BZ6ARFF3375 |  | Carpentry & Joinery Works | 25d | 2014-09-29 | 2014-10-29 | DUKHCONP1BZ6ARFF3370 SS+7d, DUKHCONP1BZ5ARFF3375, DUKHCONP1BZ6ARFF3370 FF+5d | -8d |
| DUKHCONP1BZ6ARFF3385 |  | Handrail & Balustrade | 20d | 2014-10-15 | 2014-11-06 | DUKHCONP1BZ6ARFF3350 FF+7d, DUKHCONP1BZ6ARFF3375 SS+7d, DUKHCONP1BZ6ARFF3350 SS+7d, DUKHCONP1BZ6ARFF3375 FF+7d | -8d |
| DUKHCONP1BZ6ARFF3390 |  | Installation of Granite Counter Top | 20d | 2014-10-15 | 2014-11-06 | DUKHCONP1BZ6ARFF3375 SS+7d, DUKHCONP1BZ6ARFF3375 FF+7d | -6d |
| DUKHCONP1BZ6ARFF3395 |  | Final Painting | 25d | 2014-10-27 | 2014-11-24 | DUKHCONP1BZ5ARFF3395, DUKHCONP1BZ6ACFF4625 FF+10d, DUKHCONP1BZ6ARFF3350 SS+8d, DUKHCONP1BZ6ARFF3360 SS+10d, DUKHCONP1BZ6ARFF3390 SS+8d, DUKHCONP1BZ6ARFF3360 FF+10d, DUKHCONP1BZ6ARFF3380 FF+10d, DUKHCONP1BZ6ARFF3330 SS+10d, DUKHCONP1BZ6ARFF3350 FF+8d, DUKHCONP1BZ6ARFF3365 FF+8d, DUKHCONP1BZ6ARFF3375 FF+8d, DUKHCONP1BZ6ARFF3365 SS+8d, DUKHCONP1BZ6ARFF3390 FF+8d, DUKHCONP1BZ6ACFF4625 SS+10d, DUKHCONP1BZ6ARFF3380 SS+10d, DUKHCONP1BZ6ARFF3385 FF+10d, DUKHCONP1BZ6ARFF3335 FF+8d, DUKHCONP1BZ6ARFF3375 SS+8d, DUKHCONP1BZ6ARFF3385 SS+10d, DUKHCONP1BZ6ARFF3330 FF+10d, DUKHCONP1BZ6ARFF3335 SS+8d | -8d |
|  | 20 | **ROOF** |  | 2014-06-03 | 2014-08-20 |  |  |
| DUKHCONP1BZ6ARRF3600 |  | Block work | 20d | 2014-06-03 | 2014-06-25 | DUKHCONP1BZ6STRF2055 SS+21d, DUKHCONP1BZ5ARRF3600, DUKHCONP1BZ6STRF2055 FF+21d | 67d |
| DUKHCONP1BZ6ARRF3605 |  | Plastering work | 20d | 2014-06-15 | 2014-07-07 | DUKHCONP1BZ6ARRF3600 SS+10d, DUKHCONP1BZ6ARRF3600 FF+10d | 67d |
| DUKHCONP1BZ6ARRF3610 |  | Flooring screed | 15d | 2014-07-02 | 2014-07-19 | DUKHCONP1BZ6ARRF3605 SS+10d, DUKHCONP1BZ6ARRF3605 FF+10d | 67d |
| DUKHCONP1BZ6ARRF3695 |  | Painting -Storage area | 20d | 2014-07-14 | 2014-08-09 | DUKHCONP1BZ6ARRF3610 FF+10d, DUKHCONP1BZ6ARRF3610 SS+10d | 67d |
| DUKHCONP1BZ6ARRF3620 |  | Epoxy Painting -Storage area | 15d | 2014-07-31 | 2014-08-20 | DUKHCONP1BZ6ARRF3695 FF+10d, DUKHCONP1BZ6ARRF3695 SS+10d | 67d |
|  | 15 | **EXTERNAL FINISHES** |  | 2014-06-14 | 2014-08-28 |  |  |
|  | 10 | **ROOF** |  | 2014-06-14 | 2014-08-26 |  |  |
| DUKHCONP1BZ6ARRF3630 |  | Leveling Screed for Waterproofing | 25d | 2014-06-14 | 2014-07-12 | DUKHCONP1BZ5ARRF3630, DUKHCONP1BZ6STRF2065 FF+10d, DUKHCONP1BZ6STRF2060 FF+10d, DUKHCONP1BZ6STRF2060 SS+10d, DUKHCONP1BZ6STRF2065 SS+10d | 67d |
| DUKHCONP1BZ6ARRF3635 |  | Laying of Waterproofing Membrane | 25d | 2014-06-17 | 2014-07-15 | DUKHCONP1BZ6ARRF3630 FF+3d, DUKHCONP1BZ6ARRF3630 SS+3d | 67d |
| DUKHCONP1BZ6ARRF3640 |  | Installation of Insulation & Protection | 25d | 2014-06-22 | 2014-07-20 | DUKHCONP1BZ6ARRF3635 SS+4d, DUKHCONP1BZ6ARRF3635 FF+4d | 67d |
| DUKHCONP1BZ6ARRF3645 |  | Lime Stone Chips & Paving slab Installation | 25d | 2014-06-26 | 2014-07-24 | DUKHCONP1BZ6ARRF3640 SS+4d, DUKHCONP1BZ6ARRF3640 FF+4d | 67d |
| DUKHCONP1BZ6ARRF3650 |  | Install. of Gal. Frame & Aluminum Slat Screen | 25d | 2014-07-05 | 2014-08-05 | DUKHCONP1BZ6ARRF3645 FF+7d, DUKHCONP1BZ6ARRF3645 SS+7d | 67d |
| DUKHCONP1BZ6ARRF3655 |  | Installation of Pumps Protection cabinets | 20d | 2014-07-20 | 2014-08-14 | DUKHCONP1BZ6ARRF3650 FF+8d, DUKHCONP1BZ5ARRF3655, DUKHCONP1BZ6ARRF3645 FF+7d, DUKHCONP1BZ6ARRF3650 SS+8d, DUKHCONP1BZ6ARRF3645 SS+7d | 67d |
| DUKHCONP1BZ6ARRF3660 |  | Installation of Access Ladder | 15d | 2014-08-10 | 2014-08-26 | DUKHCONP1BZ6ARRF3655 FF+10d, DUKHCONP1BZ6ARRF3620 SS+5d, DUKHCONP1BZ6ARRF3655 SS+10d | 67d |
|  | 15 | **ELEVATION** |  | 2014-06-29 | 2014-08-28 |  |  |
| DUKHCONP1BZ6AREL3665 |  | External Plastering | 25d | 2014-06-29 | 2014-07-27 | DUKHCONP1BZ6ARFF3305 SS+7d, DUKHCONP1BZ6STRF2065 SS+7d, DUKHCONP1BZ6STRF2065 FF+7d, DUKHCONP1BZ6ARFF3305 FF+7d, DUKHCONP1BZ5AREL3665, DUKHCONP1BZ6ARRF3605 SS+7d | 65d |
| DUKHCONP1BZ6AREL3670 |  | External stone cladding works | 20d | 2014-07-16 | 2014-08-11 | DUKHCONP1BZ5AREL3670, DUKHCONP1BZ6AREL3665 FF+10d, DUKHCONP1BZ6AREL3665 SS+10d | 65d |
| DUKHCONP1BZ6AREL3675 |  | GRC works | 20d | 2014-07-22 | 2014-08-17 | DUKHCONP1BZ5AREL3675, DUKHCONP1BZ6AREL3665 FF+10d, DUKHCONP1BZ6AREL3670 SS+5d, DUKHCONP1BZ6AREL3665 SS+10d | 65d |
| DUKHCONP1BZ6AREL3680 |  | External Painting | 20d | 2014-08-06 | 2014-08-28 | DUKHCONP1BZ6AREL3670 SS+10d, DUKHCONP1BZ6AREL3675 SS+10d, DUKHCONP1BZ6AREL3670 FF+10d, DUKHCONP1BZ6ARRF3695 FF+4d, DUKHCONP1BZ6AREL3675 FF+10d, DUKHCONP1BZ5AREL3680, DUKHCONP1BZ6ARRF3695 SS+4d | 65d |
|  | 20 | **MEP WORKS** |  | 2014-01-06 | 2014-11-24 |  |  |
|  | 10 | **ELECTRICAL WORKS** |  | 2014-04-13 | 2014-11-24 |  |  |
|  | 10 | **GROUND FLOOR** |  | 2014-04-13 | 2014-08-23 |  |  |
| DUKHCONP1BZ6ELGF4000 |  | Fixing of wall conduits & switch socket boxes | 25d | 2014-04-13 | 2014-05-11 | DUKHCONP1BZ6ARGF3000 SS+5d, DUKHCONP1BZ6ARGF3000 FF+5d | 47d |
| DUKHCONP1BZ6ELGF4005 |  | Cable tray & trunking installation | 20d | 2014-04-24 | 2014-05-17 | DUKHCONP1BZ6ELGF4000 SS+5d, DUKHCONP1BZ6ELGF4000 FF+5d, DUKHCONP1BZ5ELGF4005 | 65d |
| DUKHCONP1BZ6ELGF4010 |  | Installation of wiring & Main Cabling | 25d | 2014-05-03 | 2014-05-31 | DUKHCONP1BZ6ELGF4005 SS+7d, DUKHCONP1BZ6ELGF4005 FF+7d | 65d |

| ID | WBS | Task | Duration | Start | Finish | Predecessors | Total float |
| --- | --- | --- | --- | --- | --- | --- | --- |
| DUKHCONP1BZ6ELGF4015 |  | Install. of CAMS & Fire Fighting Accessories | 25d | 2014-07-05 | 2014-08-05 | DUKHCONP1BZ6ARGF3060 SS+7d, DUKHCONP1BZ6ARGF3055 SS+7d, DUKHCONP1BZ6ARGF3060 FF+7d, DUKHCONP1BZ5ELGF4015, DUKHCONP1BZ6ARGF3055 FF+7d | 60d |
| DUKHCONP1BZ6ELGF4020 |  | Installation of DBS,MCCB Accessories. | 20d | 2014-07-10 | 2014-08-05 | DUKHCONP1BZ6ARGF3055 SS+7d, DUKHCONP1BZ6ELGF4010 SS+5d, DUKHCONP1BZ6ARGF3060 SS+7d, DUKHCONP1BZ6ARGF3060 FF+7d, DUKHCONP1BZ6ELGF4010 FF+5d, DUKHCONP1BZ6ARGF3055 FF+7d | 38d |
| DUKHCONP1BZ6ELGF4025 |  | Installation of Lighting fixtures & Accessories | 25d | 2014-07-22 | 2014-08-23 | DUKHCONP1BZ6ARGF3055 FF+10d, DUKHCONP1BZ6ARGF3060 SS+10d, DUKHCONP1BZ6ARGF3055 SS+10d, DUKHCONP1BZ6ELGF4020 SS+10d, DUKHCONP1BZ6ELGF4020 FF+10d, DUKHCONP1BZ5ELGF4025, DUKHCONP1BZ6ARGF3060 FF+10d | 40d |
| DUKHCONP1BZ6ELGF4030 |  | Installation of Telephone System | 20d | 2014-07-22 | 2014-08-17 | DUKHCONP1BZ6ELGF4020 FF+10d, DUKHCONP1BZ6ARGF3060 SS+5d, DUKHCONP1BZ6ELGF4020 SS+10d, DUKHCONP1BZ5ELGF4030, DUKHCONP1BZ6ARGF3060 FF+5d | 38d |
|  | 15 | **FIRST FLOORS** |  | 2014-05-24 | 2014-10-26 |  |  |
| DUKHCONP1BZ6ELFF4035 |  | Fixing of wall conduits & switch socket boxes | 25d | 2014-05-24 | 2014-06-21 | DUKHCONP1BZ6ARFF3300 SS+5d, DUKHCONP1BZ6ARFF3300 FF+5d | 5d |
| DUKHCONP1BZ6ELFF4040 |  | Cable tray & trunking installation | 20d | 2014-06-04 | 2014-06-26 | DUKHCONP1BZ6ELFF4035 FF+5d, DUKHCONP1BZ6ELFF4035 SS+5d | 35d |
| DUKHCONP1BZ6ELFF4045 |  | Installation of wiring & Main Cabling | 25d | 2014-06-12 | 2014-07-10 | DUKHCONP1BZ5ELFF4045, DUKHCONP1BZ6ELFF4040 SS+7d, DUKHCONP1BZ6ELFF4040 FF+7d | 35d |
| DUKHCONP1BZ6ELFF4050 |  | Installation of Telephone System | 25d | 2014-09-03 | 2014-10-01 | DUKHCONP1BZ6ARFF3360 FF+5d, DUKHCONP1BZ6ELGF4030 SS+10d, DUKHCONP1BZ6MSEX5010, DUKHCONP1BZ6ARFF3360 SS+5d, DUKHCONP1BZ6ELGF4030 FF+10d | 14d |
| DUKHCONP1BZ6ELFF4055 |  | Install. of CAMS & Fire Fighting Accessories | 25d | 2014-09-06 | 2014-10-04 | DUKHCONP1BZ6ELGF4015 SS+5d, DUKHCONP1BZ6ARFF3360 SS+7d, DUKHCONP1BZ6ELGF4015, DUKHCONP1BZ6ARFF3360 FF+7d, DUKHCONP1BZ5ELFF4055, DUKHCONP1BZ6ELGF4015 FF+5d | 34d |
| DUKHCONP1BZ6ELFF4060 |  | Installation of DBS,MCCB Accessories. | 20d | 2014-09-13 | 2014-10-05 | DUKHCONP1BZ6ELFF4045 SS+5d, DUKHCONP1BZ6ARFF3360 FF+8d, DUKHCONP1BZ5ELFF4060, DUKHCONP1BZ6ARFF3360 SS+8d, DUKHCONP1BZ6ELFF4045 FF+5d | -8d |
| DUKHCONP1BZ6ELFF4065 |  | Installation of Lighting fixtures & Accessories | 25d | 2014-09-25 | 2014-10-26 | DUKHCONP1BZ6ARFF3360 SS+10d, DUKHCONP1BZ6ELFF4060 FF+11d, DUKHCONP1BZ6ARFF3360 FF+10d, DUKHCONP1BZ6ELFF4060 SS+11d, DUKHCONP1BZ6ELGF4025 SS+5d, DUKHCONP1BZ6ELGF4025 FF+5d, DUKHCONP1BZ5ELFF4065 | -8d |
|  | 20 | **ROOF** |  | 2014-10-18 | 2014-11-24 |  |  |
| DUKHCONP1BZ6ELRF4070 |  | Installation of Isolator | 18d | 2014-10-18 | 2014-11-06 | DUKHCONP1BZ6ELFF4045 SS+10d, DUKHCONP1BZ6ELFF4065 FF+10d, DUKHCONP1BZ6ARRF3645 FF+7d, DUKHCONP1BZ6ELFF4050 SS+5d, DUKHCONP1BZ6ARRF3645 SS+7d, DUKHCONP1BZ6ELFF4065 SS+10d, DUKHCONP1BZ6ELFF4045 FF+10d, DUKHCONP1BZ6ELFF4050 FF+7d | -8d |
| DUKHCONP1BZ6ELRF4075 |  | Installation of TV Dish Antenna | 23d | 2014-10-29 | 2014-11-24 | DUKHCONP1BZ6ELRF4070 FF+10d, DUKHCONP1BZ6ELRF4070 SS+10d | -8d |
|  | 15 | **PLUMBING, DRAINAGE & FIRE FIGHTING WORKS** |  | 2014-01-06 | 2014-11-05 |  |  |
|  | 10 | **GROUND FLOOR** |  | 2014-01-06 | 2014-08-23 |  |  |
| DUKHCONP1BZ6PLUG4300 |  | Drainage / Storm Pipes in Grade Slab | 20d | 2014-01-06 | 2014-01-28 | DUKHCONP1BZ6STUG1040 FF+10d, DUKHCONP1BZ6STUG1040 SS+10d | 0d |
| DUKHCONP1BZ6PLGF4305 |  | Installation of Plumbing pipes & testing | 18d | 2014-04-23 | 2014-05-13 | DUKHCONP1BZ6ARGF3000 FF+7d, DUKHCONP1BZ6ARGF3000 SS+7d, DUKHCONP1BZ5PLGF4305 | 38d |
| DUKHCONP1BZ6PLGF4310 |  | Installation of Drainage pipes &testing | 18d | 2014-04-23 | 2014-05-13 | DUKHCONP1BZ6PLGF4305 FF, DUKHCONP1BZ6ARGF3000 SS+7d, DUKHCONP1BZ6PLGF4305 SS, DUKHCONP1BZ6ARGF3000 FF+7d | 41d |
| DUKHCONP1BZ6PLGF4315 |  | Sanitary Fittings & Accessories | 20d | 2014-07-22 | 2014-08-17 | DUKHCONP1BZ6PLGF4310 FF+5d, DUKHCONP1BZ6PLGF4310 SS+5d, DUKHCONP1BZ6ARGF3065 FF+5d, DUKHCONP1BZ5PLGF4315, DUKHCONP1BZ6ARGF3065 SS+5d | 70d |
| DUKHCONP1BZ6PLGF4320 |  | Installation of Water Heater | 15d | 2014-08-06 | 2014-08-23 | DUKHCONP1BZ6PLGF4315 SS+5d, DUKHCONP1BZ6ARGF3060 SS+5d, DUKHCONP1BZ5PLGF4320, DUKHCONP1BZ6PLGF4315 FF+5d, DUKHCONP1BZ6ARGF3060 FF+5d | 70d |
|  | 15 | **FIRST FLOORS** |  | 2014-06-04 | 2014-10-19 |  |  |
| DUKHCONP1BZ6PLFF4325 |  | Installation of Plumbing pipes & testing | 18d | 2014-06-04 | 2014-06-24 | DUKHCONP1BZ6ARFF3300 FF+8d, DUKHCONP1BZ6ARFF3300 SS+8d | -8d |
| DUKHCONP1BZ6PLFF4330 |  | Installation of Drainage pipes & testing | 18d | 2014-06-04 | 2014-06-24 | DUKHCONP1BZ6PLFF4325 FF, DUKHCONP1BZ6PLFF4325 SS, DUKHCONP1BZ5PLFF4330, DUKHCONP1BZ6ARFF3300 FF+7d, DUKHCONP1BZ6ARFF3300 SS+7d | 19d |
| DUKHCONP1BZ6PLFF4335 |  | Sanitary Fittings & Accessories | 20d | 2014-09-18 | 2014-10-13 | DUKHCONP1BZ6PLFF4330 SS+5d, DUKHCONP1BZ6PLFF4330 FF+5d, DUKHCONP1BZ6ARFF3365 SS+5d, DUKHCONP1BZ6ARFF3365 FF+5d | 8d |
| DUKHCONP1BZ6PLFF4340 |  | Installation of Water Heater | 15d | 2014-09-30 | 2014-10-19 | DUKHCONP1BZ5PLFF4340, DUKHCONP1BZ6ARFF3360 FF+5d, DUKHCONP1BZ6PLFF4335 SS+5d, DUKHCONP1BZ6ARFF3360 SS+5d, DUKHCONP1BZ6PLFF4335 FF+5d | 8d |
|  | 20 | **ROOF** |  | 2014-07-01 | 2014-11-05 |  |  |
| DUKHCONP1BZ6PLRF4345 |  | Installation of Plumbing pipes & fittings | 14d | 2014-07-01 | 2014-07-16 | DUKHCONP1BZ6ARRF3605 FF+8d, DUKHCONP1BZ5PLRF4345, DUKHCONP1BZ6ARRF3605 SS+8d | 75d |
| DUKHCONP1BZ6PLRF4350 |  | Installation of Rain water Pipes | 15d | 2014-07-19 | 2014-08-07 | DUKHCONP1BZ6AREL3665 SS+7d, DUKHCONP1BZ6PLFF4330 SS+5d, DUKHCONP1BZ5PLRF4350, DUKHCONP1BZ6AREL3665 FF+7d, DUKHCONP1BZ6ARRF3645 FF+5d, DUKHCONP1BZ6PLRF4345 SS+8d, DUKHCONP1BZ6PLFF4330 FF+5d, DUKHCONP1BZ6PLRF4345 FF+8d, DUKHCONP1BZ6ARRF3645 SS+5d | 68d |
| DUKHCONP1BZ6PLRF4355 |  | Roof Water Tank Installation & Connections | 25d | 2014-10-06 | 2014-11-05 | DUKHCONP1BZ5PLRF4355, DUKHCONP1BZ6PLFF4340 FF+5d, DUKHCONP1BZ6WEEX5065 FF, DUKHCONP1BZ6ARRF3655 FF+5d, DUKHCONP1BZ6PLFF4340 SS+5d, DUKHCONP1BZ6PLRF4350 FF+5d, DUKHCONP1BZ6PLRF4350 SS+5d, DUKHCONP1BZ6PLRF4345 SS+8d, DUKHCONP1BZ6ARRF3655 SS+5d, DUKHCONP1BZ6PLRF4345 FF+8d | 8d |
|  | 20 | **AC WORKS** |  | 2014-05-13 | 2014-11-02 |  |  |
|  | 10 | **GROUND FLOOR** |  | 2014-05-13 | 2014-08-20 |  |  |
| DUKHCONP1BZ6ACGF4600 |  | Installation AC Pipes | 20d | 2014-05-13 | 2014-06-04 | DUKHCONP1BZ5ACGF4600, DUKHCONP1BZ6ARGF3005 SS+7d, DUKHCONP1BZ6ARGF3005 FF+7d | 69d |
| DUKHCONP1BZ6ACGF4605 |  | Fixing of Ventilation Equipments | 25d | 2014-07-05 | 2014-08-05 | DUKHCONP1BZ5ACGF4605, DUKHCONP1BZ6ARGF3055 FF+7d, DUKHCONP1BZ6ARGF3060 SS+7d, DUKHCONP1BZ6ACGF4600 SS+10d, DUKHCONP1BZ6ARGF3060 FF+7d, DUKHCONP1BZ6ACGF4600 FF+10d, DUKHCONP1BZ6ARGF3055 SS+7d | 57d |
| DUKHCONP1BZ6ACGF4610 |  | Fixing of Split AC | 20d | 2014-07-26 | 2014-08-20 | DUKHCONP1BZ5ACGF4610, DUKHCONP1BZ6ACGF4605 FF+13d, DUKHCONP1BZ6ACGF4605 SS+13d | 57d |
|  | 15 | **FIRST FLOORS** |  | 2014-06-28 | 2014-10-21 |  |  |
| DUKHCONP1BZ6ACFF4615 |  | Installation AC Pipes | 20d | 2014-06-28 | 2014-07-20 | DUKHCONP1BZ6ARFF3305 FF+7d, DUKHCONP1BZ5ACFF4615, DUKHCONP1BZ6ARFF3305 SS+7d | 35d |
| DUKHCONP1BZ6ACFF4620 |  | Fixing of Ventilation Equipments | 25d | 2014-09-06 | 2014-10-04 | DUKHCONP1BZ5ACFF4620, DUKHCONP1BZ6ACFF4615 SS+10d, DUKHCONP1BZ6ARFF3360 FF+7d, DUKHCONP1BZ6ARFF3360 SS+7d, DUKHCONP1BZ6ACFF4615 FF+10d | 6d |
| DUKHCONP1BZ6ACFF4625 |  | Fixing of Split AC | 20d | 2014-09-27 | 2014-10-21 | DUKHCONP1BZ6ACFF4620 FF+13d, DUKHCONP1BZ5ACFF4625, DUKHCONP1BZ6ACFF4620 SS+13d | 6d |
|  | 20 | **ROOF** |  | 2014-07-09 | 2014-11-02 |  |  |
| DUKHCONP1BZ6ACRF4630 |  | Installation of Refrigerant Pipes | 25d | 2014-07-09 | 2014-08-10 | DUKHCONP1BZ6ARRF3645 FF+7d, DUKHCONP1BZ6ARRF3645 SS+7d, DUKHCONP1BZ5ACRF4630, DUKHCONP1BZ6ACGF4600 SS+7d, DUKHCONP1BZ6ACGF4600 FF+7d, DUKHCONP1BZ6ACFF4615 SS+7d, DUKHCONP1BZ6ACFF4615 FF+7d | 76d |
| DUKHCONP1BZ6ACRF4635 |  | Installation of Condensing Unit | 25d | 2014-10-02 | 2014-11-02 | DUKHCONP1BZ6ACGF4610 FF+5d, DUKHCONP1BZ5ACRF4635, DUKHCONP1BZ6ACFF4625 FF+5d, DUKHCONP1BZ6ACGF4610 SS+5d, DUKHCONP1BZ6ACRF4630 FF+5d, DUKHCONP1BZ6ACFF4625 SS+5d, DUKHCONP1BZ6ACRF4630 SS+5d | 11d |
|  | 25 | **EXTERNAL WORKS** |  | 2014-05-19 | 2014-11-27 |  |  |
|  | 10 | **MISCELLANEOUS** |  | 2014-05-19 | 2014-11-27 |  |  |
| DUKHCONP1BZ6MSEX5020 |  | Construction Entrance Ramp | 25d | 2014-05-19 | 2014-06-16 | DUKHCONP1BZ6STRF2055 SS, DUKHCONP1BZ6STRF2055 FF, DUKHCONP1BZ5MSEX5020 | 58d |
| DUKHCONP1BZ6MSEX5000 |  | Construction of Manholes | 25d | 2014-05-21 | 2014-06-18 | DUKHCONP1BZ6PLGF4310 SS+10d, DUKHCONP1BZ6STRF2055 SS+10d, DUKHCONP1BZ6STRF2055 FF+10d, DUKHCONP1BZ6PLGF4310 FF+10d | 27d |
| DUKHCONP1BZ6MSEX5005 |  | Construction of Soak pit, Chambers | 25d | 2014-06-04 | 2014-07-02 | DUKHCONP1BZ6MSEX5000 SS+12d, DUKHCONP1BZ6MSEX5000 FF+12d | 27d |
| DUKHCONP1BZ6MSEX5025 |  | SS.Handrails and Balustrades | 20d | 2014-06-08 | 2014-06-30 | DUKHCONP1BZ6MSEX5020 SS+12d, DUKHCONP1BZ6MSEX5020 FF+12d | 58d |
| DUKHCONP1BZ6MSEX5015 |  | Construction of grease Trap | 20d | 2014-06-24 | 2014-07-16 | DUKHCONP1BZ6MSEX5005 FF+12d, DUKHCONP1BZ6MSEX5005 SS+12d | 27d |
| DUKHCONP1BZ6MSEX5010 |  | Telephone cable laying | 25d | 2014-07-17 | 2014-08-18 | DUKHCONP1BZ6MSEX5015 | 27d |
| DUKHCONP1BZ6MSEX5335 |  | Aluminum Roll-up Shutter with 2m Wall | 25d | 2014-10-30 | 2014-11-27 | DUKHCONI1BZ4BWGL5325 SS+7d, DUKHCONP1BZ5MSEX5335 | 14d |
|  | 15 | **WATER TANK ENCLOSURE** |  | 2014-06-19 | 2014-09-27 |  |  |
| DUKHCONP1BZ6WEEX5030 |  | Excavation | 20d | 2014-06-19 | 2014-07-12 | DUKHCONP1BZ5WEEX5035, DUKHCONP1BZ6STRF2060 SS+7d, DUKHCONP1BZ6STRF2055 FF+10d, DUKHCONP1BZ6STRF2055 SS+10d | 40d |
| DUKHCONP1BZ6WEEX5035 |  | Construction of Raft | 25d | 2014-07-01 | 2014-07-29 | DUKHCONP1BZ6WEEX5030 SS+10d, DUKHCONP1BZ6WEEX5030 FF+10d | 40d |
| DUKHCONP1BZ6WEEX5040 |  | Block works & Plastering | 25d | 2014-07-10 | 2014-08-11 | DUKHCONP1BZ6WEEX5035 SS+8d, DUKHCONP1BZ6WEEX5035 FF+8d | 40d |
| DUKHCONP1BZ6WEEX5045 |  | Flooring & Painting | 25d | 2014-07-22 | 2014-08-23 | DUKHCONP1BZ6WEEX5040 FF+10d, DUKHCONP1BZ6MSEX5025 SS+5d, DUKHCONP1BZ6WEEX5040 SS+10d | 40d |
| DUKHCONP1BZ6WEEX5050 |  | Installation of Steel Gate | 20d | 2014-08-12 | 2014-09-03 | DUKHCONP1BZ6MSEX5025 FF+10d, DUKHCONP1BZ6MSEX5015 SS+5d, DUKHCONP1BZ6WEEX5045 SS+5d, DUKHCONP1BZ6WEEX5045 FF+10d | 40d |
| DUKHCONP1BZ6WEEX5060 |  | Structural steel & SS Shed cover installation | 25d | 2014-08-18 | 2014-09-15 | DUKHCONP1BZ6WEEX5050 FF+10d, DUKHCONP1BZ6WEEX5050 SS+5d, DUKHCONP1BZ6MSEX5025 FF+10d, DUKHCONP1BZ5WEEX5060 | 40d |
| DUKHCONP1BZ6WEEX5065 |  | Install. of Water Tank,Chiller,Pump & Meter | 25d | 2014-08-30 | 2014-09-27 | DUKHCONP1BZ6MSEX5015 FF+5d, DUKHCONP1BZ6PLRF4350 SS+5d, DUKHCONP1BZ5WEEX5065, DUKHCONP1BZ6WEEX5060 FF+10d, DUKHCONP1BZ6MSEX5015 SS+5d, DUKHCONP1BZ6WEEX5060 SS+10d, DUKHCONP1BZ6PLRF4350 FF+5d | 40d |
|  | 20 | **HARD LANDSCAPING** |  | 2014-06-16 | 2014-08-07 |  |  |
| DUKHCONP1BZ6HDEX5090 |  | kerb works | 20d | 2014-06-16 | 2014-07-08 | DUKHCONP1BZ6MSEX5025 SS+7d, DUKHCONP1BZ5HDEX5090, DUKHCONP1BZ6MSEX5020 FF+7d, DUKHCONP1BZ6MSEX5020 SS+7d | 58d |
| DUKHCONP1BZ6HDEX5095 |  | Cobble Stone Works | 20d | 2014-06-28 | 2014-07-20 | DUKHCONP1BZ6HDEX5090 FF+10d, DUKHCONP1BZ6HDEX5090 SS+10d | 58d |
| DUKHCONP1BZ6HDEX5100 |  | Interlock works | 20d | 2014-07-13 | 2014-08-07 | DUKHCONP1BZ6HDEX5095 FF+13d, DUKHCONP1BZ6HDEX5095 SS+13d | 58d |
|  | 25 | **SOFT LANDSCAPING** |  | 2014-07-24 | 2014-09-06 |  |  |
| DUKHCONP1BZ6SLEX5105 |  | Laying of Grass/ green area | 25d | 2014-07-24 | 2014-08-25 | DUKHCONP1BZ6HDEX5100 FF+10d, DUKHCONP1BZ6HDEX5100 SS+10d | 58d |
| DUKHCONP1BZ6SLEX5110 |  | Laying of Palm tree | 25d | 2014-08-09 | 2014-09-06 | DUKHCONP1BZ6SLEX5105 FF+10d, DUKHCONP1BZ6SLEX5105 SS+10d | 58d |
|  | 30 | **TESTING AND COMMISSIONING** |  | 2014-11-25 | 2014-12-24 |  |  |
| DUKHCONP1BZ6ACTC8000 |  | Pre-Commissioning & Testing of AC Works | 25d | 2014-11-25 | 2014-12-24 | DUKHCONP1BZ5ACTC8000, DUKHCONP1BZ6SLEX5105, DUKHMOBI1BPS00002135 FF, DUKHCONP1BZ6AREL3680, DUKHCONP1BZ6MSEX5005, DUKHCONP1BZ6ARFF3395, DUKHCONP1BZ6ARGF3095, DUKHCONP1BZ6ACRF4635, DUKHMOBP1BPS00002100 FF, DUKHCONP1BZ6SLEX5110, DUKHCONP1BZ6HDEX5100, DUKHCONP1BZ6ACFF4625, DUKHCONP1BZ6ARRF3620 | -8d |
| DUKHCONP1BZ6ELTC8010 |  | Pre-Commissioning & Testing of Electrical Works | 25d | 2014-11-25 | 2014-12-24 | DUKHCONP1BZ6HDEX5100, DUKHCONP1BZ6MSEX5005, DUKHCONP1BZ6ARRF3660, DUKHCONP1BZ6ARGF3095, DUKHCONP1BZ6ARRF3620, DUKHCONP1BZ6ELGF4025, DUKHMOBI1BPS00002135 FF, DUKHCONP1BZ6ELFF4050, DUKHMOBP1BPS00002100 FF, DUKHCONP1BZ6ARRF3655, DUKHCONP1BZ5ELTC8010, DUKHCONP1BZ6SLEX5110, DUKHCONP1BZ6AREL3680, DUKHCONP1BZ6ARFF3395, DUKHCONP1BZ6ELFF4065, DUKHCONP1BZ6ELRF4075, DUKHCONP1BZ6ELGF4015, DUKHCONP1BZ6ELGF4030, DUKHCONP1BZ6SLEX5105, DUKHCONP1BZ6ELFF4055 | -8d |

| ID | WBS | Task | Duration | Start | Finish | Predecessors | Total float |
| --- | --- | --- | --- | --- | --- | --- | --- |
| DUKHCONP1BZ6PLTC8005 |  | Pre-Commissioning & Testing of Plumbing Works | 25d | 2014-11-25 | 2014-12-24 | DUKHCONP1BZ6SLEX5110, DUKHCONP1BZ6MSEX5005, DUKHCONP1BZ6PLGF4320, DUKHCONP1BZ6ARRF3620, DUKHCONP1BZ6SLEX5105, DUKHCONP1BZ6WEEX5065, DUKHCONP1BZ6ARRF3660, DUKHCONP1BZ6ARFF3395, DUKHCONP1BZ6ARGF3095, DUKHCONP1BZ6HDEX5100, DUKHCONP1BZ6PLRF4355, DUKHCONP1BZ6PLRF4350, DUKHMOBP1BPS00002100 FF, DUKHCONP1BZ5PLTC8005, DUKHCONP1BZ6AREL3680, DUKHCONP1BZ6ARRF3655, DUKHMOBI1BPS00002135 FF | -8d |
|  | L30 | **PACKAGE-1B INFRASTRUCTURE WORKS** |  | 2013-12-08 | 2015-01-14 |  |  |
|  | 10 | **ZONE - 1** |  | 2013-12-08 | 2014-08-23 |  |  |
|  | 10 | **INFRASTRUCTURE WORKS** |  | 2013-12-08 | 2014-08-23 |  |  |
|  | 10 | **DRAINAGE LINES** |  | 2013-12-08 | 2014-01-27 |  |  |
| DUKHCONI1BZ1DRGL5115 |  | Excavation for Drainage line | 25d | 2013-12-08 | 2014-01-06 | DUKHCONP1BZ2STFF2025 SS+11d, DUKHENGI1BDWDRAP4650 | -11d |
| DUKHCONI1BZ1DRGL5120 |  | Laying of Drainage line | 25d | 2013-12-15 | 2014-01-13 | DUKHCONI1BZ1DRGL5115 SS+6d, DUKHCONI1BZ1DRGL5115 FF+6d | -11d |
| DUKHCONI1BZ1DRGL5125 |  | Testing of Drainage line | 25d | 2013-12-24 | 2014-01-21 | DUKHCONI1BZ1DRGL5120 SS+7d, DUKHCONI1BZ1DRGL5120 FF+7d | -11d |
| DUKHCONI1BZ1DRGL5130 |  | Backfilling Drainage line | 15d | 2014-01-11 | 2014-01-27 | DUKHCONI1BZ1DRGL5125 FF+5d, DUKHCONI1BZ1DRGL5125 SS+10d | -11d |
|  | 15 | **MANHOLES & SOAKAWAY** |  | 2014-01-11 | 2014-04-02 |  |  |
| DUKHCONI1BZ1SAGL5135 |  | Construction of manholes Drainage | 25d | 2014-01-11 | 2014-02-08 | DUKHCONI1BZ1DRGL5115, DUKHCONI1BZ1DRGL5130 FF+10d, DUKHENGI1BDWDRAP4650 | 48d |
| DUKHCONI1BZ1SAGL5140 |  | Construction of soakaways | 25d | 2014-01-11 | 2014-02-08 | DUKHCONI1BZ1DRGL5115, DUKHCONI1BZ1DRGL5130 FF+10d | -11d |
| DUKHCONI1BZ1SAGL5145 |  | Construction of Road gullies | 25d | 2014-02-09 | 2014-03-10 | DUKHCONI1BZ1SAGL5140 | -11d |
| DUKHCONI1BZ1SAGL5150 |  | Connection with existing sewer manhole | 20d | 2014-03-11 | 2014-04-02 | DUKHCONI1BZ1SAGL5135, DUKHCONI1BZ1SAGL5145 | 23d |
|  | 20 | **WATER SUPPLY SYSTEM** |  | 2014-01-22 | 2014-04-08 |  |  |
| DUKHCONI1BZ1WSGL5155 |  | Excavation for water line | 25d | 2014-01-22 | 2014-02-20 | DUKHENGI1BDWWSAP4670, DUKHCONI1BZ1DRGL5130 SS+10d | -11d |
| DUKHCONI1BZ1WSGL5160 |  | Laying of water line | 25d | 2014-01-28 | 2014-02-26 | DUKHCONI1BZ1WSGL5155 SS+5d | -11d |
| DUKHCONI1BZ1WSGL5165 |  | Testing of potable water line | 25d | 2014-02-03 | 2014-03-04 | DUKHCONI1BZ1WSGL5160 SS+5d | -11d |
| DUKHCONI1BZ1WSGL5170 |  | Backfilling potable water line | 25d | 2014-02-09 | 2014-03-10 | DUKHCONI1BZ1WSGL5165 SS+5d, DUKHCONI1BZ1SAGL5145 FF | -11d |
| DUKHCONI1BZ1WSGL5175 |  | Construction of valve chambers & Thrust Blocks | 25d | 2014-02-16 | 2014-03-16 | DUKHCONI1BZ1WSGL5170 FF+5d, DUKHCONI1BZ1WSGL5155 SS+10d | 18d |
| DUKHCONI1BZ1WSGL5180 |  | Installation of meter ,Accessories & Connection | 20d | 2014-03-17 | 2014-04-08 | DUKHCONI1BZ1WSGL5175 | 18d |
|  | 25 | **FIREFIGHTING LINES** |  | 2014-02-16 | 2014-04-16 |  |  |
| DUKHCONI1BZ1FFGL5185 |  | Excavation for firefighting line | 25d | 2014-02-16 | 2014-03-16 | DUKHENGI1BDWFFAP4660, DUKHCONI1BZ1WSGL5170 SS+5d | -11d |
| DUKHCONI1BZ1FFGL5190 |  | Laying of firefighting line | 25d | 2014-02-24 | 2014-03-24 | DUKHCONI1BZ1FFGL5185 SS+7d | -11d |
| DUKHCONI1BZ1FFGL5195 |  | Testing of firefighting line | 25d | 2014-03-02 | 2014-03-30 | DUKHCONI1BZ1FFGL5190 SS+5d | -11d |
| DUKHCONI1BZ1FFGL5200 |  | Backfilling firefighting line | 25d | 2014-03-08 | 2014-04-05 | DUKHCONI1BZ1FFGL5195 SS+5d | -11d |
| DUKHCONI1BZ1FFGL5205 |  | Construction of valve chambers & Thrust Blocks | 25d | 2014-03-13 | 2014-04-10 | DUKHCONI1BZ1FFGL5200 FF+5d, DUKHCONI1BZ1FFGL5185 SS+10d | 11d |
| DUKHCONI1BZ1FFGL5210 |  | Connection with existing Firewater System | 25d | 2014-03-19 | 2014-04-16 | DUKHCONI1BZ1WSGL5180 FF, DUKHCONI1BZ1FFGL5205 FF+5d | 11d |
|  | 30 | **ELECTRICAL LINES** |  | 2014-03-16 | 2014-05-08 |  |  |
| DUKHCONI1BZ1ELGL5215 |  | Excavation Cable Trenches & Duct Banks | 25d | 2014-03-16 | 2014-04-13 | DUKHENGI1BDWELAP4680, DUKHCONI1BZ1FFGL5200 SS+7d | -11d |
| DUKHCONI1BZ1ELGL5220 |  | Laying of electrical cables | 25d | 2014-03-22 | 2014-04-19 | DUKHCONI1BZ1ELGL5215 SS+5d | -8d |
| DUKHCONI1BZ1ELGL5225 |  | Backfilling Electrical trench | 25d | 2014-03-30 | 2014-04-27 | DUKHCONI1BZ1ELGL5215 FF+7d, DUKHCONI1BZ1ELGL5220 SS+7d | -8d |
| DUKHCONI1BZ1ELGL5230 |  | Construction of Submain Board & Feeder Pillar | 25d | 2014-04-10 | 2014-05-08 | DUKHCONI1BZ1ELGL5225 FF+10d, DUKHCONI1BZ1ELGL5225 SS+10d | 68d |
|  | 35 | **STREET LIGHTING** |  | 2014-03-16 | 2014-06-07 |  |  |
| DUKHCONI1BZ1STGL5235 |  | Excavation for Street lighting | 25d | 2014-03-16 | 2014-04-13 | DUKHENGI1BDWSTAP4690, DUKHCONI1BZ1ELGL5215 SS | -11d |
| DUKHCONI1BZ1STGL5240 |  | Construction of Duct Banks | 25d | 2014-03-22 | 2014-04-19 | DUKHCONI1BZ1STGL5235 SS+5d | -11d |
| DUKHCONI1BZ1STGL5245 |  | Construction of Foundation | 25d | 2014-03-22 | 2014-04-19 | DUKHCONI1BZ1STGL5240 SS | -11d |
| DUKHCONI1BZ1STGL5250 |  | Backfilling Street Lighting | 25d | 2014-03-27 | 2014-04-24 | DUKHCONI1BZ1STGL5245 SS+5d, DUKHCONI1BZ1STGL5235 FF+5d | -11d |
| DUKHCONI1BZ1STGL5255 |  | Installation of light Post | 25d | 2014-04-08 | 2014-05-06 | DUKHCONI1BZ1STGL5250 SS+10d | 88d |
| DUKHCONI1BZ1STGL5260 |  | Electrical Works | 25d | 2014-05-10 | 2014-06-07 | DUKHCONI1BZ1STGL5255 SS+7d, DUKHCONI1BZ1ELGL5230 | 68d |
|  | 40 | **IRRIGATION LINES** |  | 2014-04-28 | 2014-07-02 |  |  |
| DUKHCONI1BZ1IRGL5265 |  | Excavation for irrigation line | 25d | 2014-04-28 | 2014-05-26 | DUKHCONI1BZ1ELGL5225, DUKHENGI1BDWIRAP4710 | -4d |
| DUKHCONI1BZ1IRGL5270 |  | Laying of irrigationline | 25d | 2014-05-04 | 2014-06-01 | DUKHCONI1BZ1IRGL5265 SS+5d | -4d |
| DUKHCONI1BZ1IRGL5275 |  | Testing of irrigation line | 25d | 2014-05-10 | 2014-06-07 | DUKHCONI1BZ1IRGL5270 SS+5d | -4d |
| DUKHCONI1BZ1IRGL5280 |  | Backfilling irrigation line | 25d | 2014-05-15 | 2014-06-12 | DUKHCONI1BZ1IRGL5275 SS+5d | -4d |
| DUKHCONI1BZ1IRGL5285 |  | Construction of Thrust Blocks,Pull boxes | 25d | 2014-05-27 | 2014-06-24 | DUKHCONI1BZ1ELGL5225 SS+10d, DUKHCONI1BZ1IRGL5280 FF+10d | 11d |
| DUKHCONI1BZ1IRGL5290 |  | Irrigation Fittings (Nozzle,Values) | 25d | 2014-06-04 | 2014-07-02 | DUKHCONI1BZ1IRGL5280 SS+10d, DUKHCONI1BZ1IRGL5285 SS+7d | 11d |
|  | 45 | **TELECOMMUNICATION LINES** |  | 2014-04-08 | 2014-05-24 |  |  |
| DUKHCONI1BZ1TCGL5295 |  | Excavation Telecommunication trenches | 20d | 2014-04-08 | 2014-04-30 | DUKHENGI1BDWTCAP4700, DUKHCONI1BZ1STGL5250 SS+10d | -11d |
| DUKHCONI1BZ1TCGL5300 |  | Laying of cables | 20d | 2014-04-14 | 2014-05-06 | DUKHCONI1BZ1TCGL5295 SS+5d | -11d |
| DUKHCONI1BZ1TCGL5305 |  | Backfilling telecommunication trench | 20d | 2014-04-20 | 2014-05-12 | DUKHCONI1BZ1TCGL5300 SS+5d | -11d |
| DUKHCONI1BZ1TCGL5310 |  | Connection & Installation | 20d | 2014-05-01 | 2014-05-24 | DUKHCONI1BZ1TCGL5305 SS+10d | 80d |
|  | 50 | **BOUNDARY WALL** |  | 2014-04-08 | 2014-07-02 |  |  |
| DUKHCONI1BZ1BWGL5315 |  | Construction of Boundary Wall (Ht-3m) | 25d | 2014-04-08 | 2014-05-06 | DUKHCONI1BZ1STGL5250 SS+10d, DUKHENGI1BDWBWAP4730 | 14d |
| DUKHCONI1BZ1BWGL5320 |  | Install.Steel Gate,Entance Barrier (3m Wall) | 25d | 2014-04-24 | 2014-05-22 | DUKHCONI1BZ1BWGL5315 SS+14d | 14d |
| DUKHCONI1BZ1BWGL5325 |  | Const. of Villa Front Boundary Wall (Ht-2m) | 25d | 2014-05-24 | 2014-06-21 | DUKHCONI1BZ1BWGL5315 SS+5d, DUKHCONI1BZ1BWGL5320 | 14d |
| DUKHCONI1BZ1BWGL5330 |  | Const. of Blockwork fence Wall (Ht-1.85m) | 25d | 2014-06-04 | 2014-07-02 | DUKHCONI1BZ1BWGL5325 SS+10d | 77d |
|  | 55 | **ROAD WORKS** |  | 2014-05-13 | 2014-07-27 |  |  |
| DUKHCONI1BZ1RWGL6000 |  | Excavation & Earth Filling | 10d | 2014-05-13 | 2014-05-24 | DUKHCONI1BZ1STGL5250, DUKHCONI1BZ1TCGL5305, DUKHCONI1BZ1FFGL5200, DUKHCONI1BZ1ELGL5225, DUKHENGI1BDWBWAP4730, DUKHCONI1BZ1FFGL5210, DUKHCONI1BZ1SAGL5150 | -11d |
| DUKHCONI1BZ1RWGL6005 |  | Laying of Sub Grade | 25d | 2014-05-25 | 2014-06-22 | DUKHCONI1BZ1RWGL6000 | -11d |
| DUKHCONI1BZ1RWGL6010 |  | Laying of Precast Kerbs | 25d | 2014-06-05 | 2014-07-03 | DUKHCONI1BZ1RWGL6005 SS+10d | -11d |
| DUKHCONI1BZ1RWGL6015 |  | Laying of Granular Sub Base Coarse | 20d | 2014-06-17 | 2014-07-09 | DUKHCONI1BZ1RWGL6010 SS+10d | -11d |
| DUKHCONI1BZ1RWGL6020 |  | Laying of Road Base Asphalt Concrete | 5d | 2014-07-10 | 2014-07-15 | DUKHCONI1BZ1RWGL6015 | 41d |
| DUKHCONI1BZ1RWGL6025 |  | Laying of Asphalt Wearing Coarse | 5d | 2014-07-16 | 2014-07-21 | DUKHCONI1BZ1RWGL6020 | 56d |
| DUKHCONI1BZ1RWGL6030 |  | Traffic Signage & Road Marking | 5d | 2014-07-22 | 2014-07-27 | DUKHCONI1BZ1RWGL6025 | 56d |
|  | 60 | **PARKING SHED** |  | 2014-06-23 | 2014-08-23 |  |  |
| DUKHCONI1BZ1PSGL7000 |  | Excavation | 15d | 2014-06-23 | 2014-07-09 | DUKHCONI1BZ1RWGL6015 SS+5d, DUKHENGI1BDWPSAP4740 | 46d |
| DUKHCONI1BZ1PSGL7005 |  | Foundation casting | 15d | 2014-07-05 | 2014-07-21 | DUKHCONI1BZ1PSGL7000 FF+5d, DUKHCONI1BZ1RWGL6015 FF+10d, DUKHCONI1BZ1PSGL7000 SS+5d | 41d |
| DUKHCONI1BZ1PSGL7010 |  | Column, Frame& Fabrics Erection | 25d | 2014-07-16 | 2014-08-17 | DUKHCONI1BZ1BWGL5330 FF, DUKHCONI1BZ1RWGL6020, DUKHCONI1BZ1RWGL6030 FF, DUKHCONI1BZ1PSGL7005 SS+10d | 41d |
| DUKHCONI1BZ1PSGL7015 |  | Electrical Works-Parking Shed | 25d | 2014-07-22 | 2014-08-23 | DUKHCONI1BZ1STGL5260, DUKHCONI1BZ1PSGL7010 SS+5d | 41d |

| ID | WBS | Task | Duration | Start | Finish | Predecessors | Total float |
| --- | --- | --- | --- | --- | --- | --- | --- |
|  | 65 | **HARD LANDSCAPING** |  | 2014-05-13 | 2014-08-05 |  |  |
| DUKHCONI1BZ1HDGL7020 |  | Precast Concrete Kerbs works | 20d | 2014-05-13 | 2014-06-04 | DUKHENGI1BDWSLAP4720, DUKHCONI1BZ1RWGL6000 SS | 0d |
| DUKHCONI1BZ1HDGL7025 |  | Interlocking for Walkways | 25d | 2014-05-25 | 2014-06-22 | DUKHCONI1BZ1HDGL7020 SS+10d | 0d |
| DUKHCONI1BZ1HDGL7030 |  | Construction of Retaining wall | 25d | 2014-06-05 | 2014-07-03 | DUKHCONI1BZ1HDGL7025 SS+10d | 0d |
| DUKHCONI1BZ1HDGL7035 |  | Construction of Wash Stone Boulders | 25d | 2014-06-05 | 2014-07-03 | DUKHCONI1BZ1HDGL7030 SS | 0d |
| DUKHCONI1BZ1HDGL7040 |  | Construction of Speed Humps | 10d | 2014-07-22 | 2014-08-05 | DUKHCONI1BZ1RWGL6025, DUKHCONI1BZ1HDGL7035 SS | 80d |
|  | 70 | **SOFT LANDSCAPING** |  | 2014-06-17 | 2014-08-11 |  |  |
| DUKHCONI1BZ1SLGL7200 |  | Excavation | 25d | 2014-06-17 | 2014-07-15 | DUKHCONI1BZ1IRGL5290 SS, DUKHCONI1BZ1HDGL7035 SS+10d, DUKHENGI1BDWSLAP4720 | 0d |
| DUKHCONI1BZ1SLGL7205 |  | Sweet Soil Laying | 25d | 2014-06-29 | 2014-07-27 | DUKHCONI1BZ1SLGL7200 SS+10d | 0d |
| DUKHCONI1BZ1SLGL7210 |  | Plantation works | 25d | 2014-07-10 | 2014-08-11 | DUKHCONI1BZ1SLGL7205 SS+10d | 30d |
|  | 15 | **ZONE - 2** |  | 2014-01-19 | 2014-10-08 |  |  |
|  | 10 | **INFRASTRUCTURE WORKS** |  | 2014-01-19 | 2014-10-08 |  |  |
|  | 10 | **DRAINAGE LINES** |  | 2014-01-19 | 2014-03-10 |  |  |
| DUKHCONI1BZ2DRGL5115 |  | Excavation for Drainage line | 25d | 2014-01-19 | 2014-02-17 | DUKHCONI1BZ1DRGL5130 SS+7d | -6d |
| DUKHCONI1BZ2DRGL5120 |  | Laying of Drainage line | 25d | 2014-01-26 | 2014-02-24 | DUKHCONI1BZ2DRGL5115 SS+6d, DUKHCONI1BZ2DRGL5115 FF+6d | -6d |
| DUKHCONI1BZ2DRGL5125 |  | Testing of Drainage line | 25d | 2014-02-03 | 2014-03-04 | DUKHCONI1BZ2DRGL5120 SS+7d, DUKHCONI1BZ2DRGL5120 FF+7d | -6d |
| DUKHCONI1BZ2DRGL5130 |  | Backfilling Drainage line | 15d | 2014-02-22 | 2014-03-10 | DUKHCONI1BZ2DRGL5125 FF+5d, DUKHCONI1BZ2DRGL5125 SS+10d | -6d |
|  | 15 | **MANHOLES & SOAKAWAY** |  | 2014-02-22 | 2014-05-13 |  |  |
| DUKHCONI1BZ2SAGL5135 |  | Construction of manholes Drainage | 25d | 2014-02-22 | 2014-03-22 | DUKHCONI1BZ1SAGL5135, DUKHCONI1BZ2DRGL5115, DUKHCONI1BZ2DRGL5130 FF+10d | 53d |
| DUKHCONI1BZ2SAGL5140 |  | Construction of soakaways | 25d | 2014-02-22 | 2014-03-22 | DUKHCONI1BZ2DRGL5130 FF+10d, DUKHCONI1BZ2DRGL5115 | -6d |
| DUKHCONI1BZ2SAGL5145 |  | Construction of Road gullies | 25d | 2014-03-23 | 2014-04-20 | DUKHCONI1BZ2SAGL5140, DUKHCONI1BZ1SAGL5145 | -6d |
| DUKHCONI1BZ2SAGL5150 |  | Connection with existing sewer manhole | 20d | 2014-04-21 | 2014-05-13 | DUKHCONI1BZ2SAGL5135, DUKHCONI1BZ2SAGL5145 | 28d |
|  | 20 | **WATER SUPPLY SYSTEM** |  | 2014-03-11 | 2014-05-25 |  |  |
| DUKHCONI1BZ2WSGL5155 |  | Excavation for water line | 25d | 2014-03-11 | 2014-04-08 | DUKHCONI1BZ2DRGL5130 SS+10d, DUKHCONI1BZ1WSGL5170 | -11d |
| DUKHCONI1BZ2WSGL5160 |  | Laying of water line | 25d | 2014-03-17 | 2014-04-14 | DUKHCONI1BZ2WSGL5155 SS+5d | -11d |
| DUKHCONI1BZ2WSGL5165 |  | Testing of potable water line | 25d | 2014-03-23 | 2014-04-20 | DUKHCONI1BZ2WSGL5160 SS+5d | -11d |
| DUKHCONI1BZ2WSGL5170 |  | Backfilling potable water line | 25d | 2014-03-29 | 2014-04-26 | DUKHCONI1BZ2WSGL5165 SS+5d, DUKHCONI1BZ2SAGL5145 FF | -11d |
| DUKHCONI1BZ2WSGL5175 |  | Construction of valve chambers & Thrust Blocks | 25d | 2014-04-03 | 2014-05-01 | DUKHCONI1BZ2WSGL5155 SS+10d, DUKHCONI1BZ1WSGL5175, DUKHCONI1BZ2WSGL5170 FF+5d | 18d |
| DUKHCONI1BZ2WSGL5180 |  | Installation of meter ,Accessories & Connection | 20d | 2014-05-03 | 2014-05-25 | DUKHCONI1BZ1WSGL5180, DUKHCONI1BZ2WSGL5175 | 18d |
|  | 25 | **FIREFIGHTING LINES** |  | 2014-04-03 | 2014-06-02 |  |  |
| DUKHCONI1BZ2FFGL5185 |  | Excavation for firefighting line | 25d | 2014-04-03 | 2014-05-01 | DUKHCONI1BZ1FFGL5200 SS+10d, DUKHCONI1BZ2WSGL5170 SS+5d | -11d |
| DUKHCONI1BZ2FFGL5190 |  | Laying of firefighting line | 25d | 2014-04-12 | 2014-05-10 | DUKHCONI1BZ2FFGL5185 SS+7d | -11d |
| DUKHCONI1BZ2FFGL5195 |  | Testing of firefighting line | 25d | 2014-04-17 | 2014-05-15 | DUKHCONI1BZ2FFGL5190 SS+5d | -11d |
| DUKHCONI1BZ2FFGL5200 |  | Backfilling firefighting line | 25d | 2014-04-23 | 2014-05-21 | DUKHCONI1BZ2FFGL5195 SS+5d | -11d |
| DUKHCONI1BZ2FFGL5205 |  | Construction of valve chambers & Thrust Blocks | 25d | 2014-04-29 | 2014-05-27 | DUKHCONI1BZ2FFGL5200 FF+5d, DUKHCONI1BZ1FFGL5205, DUKHCONI1BZ2FFGL5185 SS+10d | 11d |
| DUKHCONI1BZ2FFGL5210 |  | Connection with existing Firewater System | 25d | 2014-05-05 | 2014-06-02 | DUKHCONI1BZ2WSGL5180 FF, DUKHCONI1BZ2FFGL5205 FF+5d, DUKHCONI1BZ1FFGL5210 | 11d |
|  | 30 | **ELECTRICAL LINES** |  | 2014-05-01 | 2014-06-24 |  |  |
| DUKHCONI1BZ2ELGL5215 |  | Excavation Cable Trenches & Duct Banks | 25d | 2014-05-01 | 2014-05-29 | DUKHCONI1BZ2FFGL5200 SS+7d, DUKHCONI1BZ1ELGL5225 | -11d |
| DUKHCONI1BZ2ELGL5220 |  | Laying of electrical cables | 25d | 2014-05-07 | 2014-06-04 | DUKHCONI1BZ2ELGL5215 SS+5d | -8d |
| DUKHCONI1BZ2ELGL5225 |  | Backfilling Electrical trench | 25d | 2014-05-15 | 2014-06-12 | DUKHCONI1BZ2ELGL5220 SS+7d, DUKHCONI1BZ2ELGL5215 FF+7d | -8d |
| DUKHCONI1BZ2ELGL5230 |  | Construction of Submain Board & Feeder Pillar | 25d | 2014-05-27 | 2014-06-24 | DUKHCONI1BZ1ELGL5230, DUKHCONI1BZ2ELGL5225 FF+10d, DUKHCONI1BZ2ELGL5225 SS+10d | 53d |
|  | 35 | **STREET LIGHTING** |  | 2014-05-01 | 2014-07-23 |  |  |
| DUKHCONI1BZ2STGL5235 |  | Excavation for Street lighting | 25d | 2014-05-01 | 2014-05-29 | DUKHCONI1BZ2ELGL5215 SS, DUKHCONI1BZ1STGL5250 SS+10d | -11d |
| DUKHCONI1BZ2STGL5240 |  | Construction of Duct Banks | 25d | 2014-05-07 | 2014-06-04 | DUKHCONI1BZ2STGL5235 SS+5d | -11d |
| DUKHCONI1BZ2STGL5245 |  | Construction of Foundation | 25d | 2014-05-07 | 2014-06-04 | DUKHCONI1BZ2STGL5240 SS | -11d |
| DUKHCONI1BZ2STGL5250 |  | Backfilling Street Lighting | 25d | 2014-05-13 | 2014-06-10 | DUKHCONI1BZ2STGL5245 SS+5d, DUKHCONI1BZ2STGL5235 FF+5d | -11d |
| DUKHCONI1BZ2STGL5255 |  | Installation of light Post | 25d | 2014-05-25 | 2014-06-22 | DUKHCONI1BZ2STGL5250 SS+10d, DUKHCONI1BZ1STGL5255 | 73d |
| DUKHCONI1BZ2STGL5260 |  | Electrical Works | 25d | 2014-06-25 | 2014-07-23 | DUKHCONI1BZ2STGL5255 SS+7d, DUKHCONI1BZ2ELGL5230, DUKHCONI1BZ1STGL5260 | 53d |
|  | 40 | **IRRIGATION LINES** |  | 2014-06-14 | 2014-08-21 |  |  |
| DUKHCONI1BZ2IRGL5265 |  | Excavation for irrigation line | 25d | 2014-06-14 | 2014-07-12 | DUKHCONI1BZ2ELGL5225, DUKHCONI1BZ1IRGL5280 | -4d |
| DUKHCONI1BZ2IRGL5270 |  | Laying of irrigationline | 25d | 2014-06-19 | 2014-07-17 | DUKHCONI1BZ2IRGL5265 SS+5d | -4d |
| DUKHCONI1BZ2IRGL5275 |  | Testing of irrigation line | 25d | 2014-06-25 | 2014-07-23 | DUKHCONI1BZ2IRGL5270 SS+5d | -4d |
| DUKHCONI1BZ2IRGL5280 |  | Backfilling irrigation line | 25d | 2014-07-01 | 2014-07-29 | DUKHCONI1BZ2IRGL5275 SS+5d | -4d |
| DUKHCONI1BZ2IRGL5285 |  | Construction of Thrust Blocks,Pull boxes | 25d | 2014-07-13 | 2014-08-13 | DUKHCONI1BZ2ELGL5225 SS+10d, DUKHCONI1BZ2IRGL5280 FF+10d | 6d |
| DUKHCONI1BZ2IRGL5290 |  | Irrigation Fittings (Nozzle,Values) | 25d | 2014-07-21 | 2014-08-21 | DUKHCONI1BZ2IRGL5285 SS+7d, DUKHCONI1BZ2IRGL5280 SS+10d | 6d |
|  | 45 | **TELECOMMUNICATION LINES** |  | 2014-05-25 | 2014-07-09 |  |  |
| DUKHCONI1BZ2TCGL5295 |  | Excavation Telecommunication trenches | 20d | 2014-05-25 | 2014-06-16 | DUKHCONI1BZ2STGL5250 SS+10d, DUKHCONI1BZ1TCGL5305 | -11d |
| DUKHCONI1BZ2TCGL5300 |  | Laying of cables | 20d | 2014-05-31 | 2014-06-22 | DUKHCONI1BZ2TCGL5295 SS+5d | -11d |
| DUKHCONI1BZ2TCGL5305 |  | Backfilling telecommunication trench | 20d | 2014-06-05 | 2014-06-28 | DUKHCONI1BZ2TCGL5300 SS+5d | -11d |
| DUKHCONI1BZ2TCGL5310 |  | Connection & Installation | 20d | 2014-06-17 | 2014-07-09 | DUKHCONI1BZ1TCGL5310, DUKHCONI1BZ2TCGL5305 SS+10d | 60d |
|  | 50 | **BOUNDARY WALL** |  | 2014-05-25 | 2014-08-21 |  |  |
| DUKHCONI1BZ2BWGL5315 |  | Construction of Boundary Wall (Ht-3m) | 25d | 2014-05-25 | 2014-06-22 | DUKHCONI1BZ2STGL5250 SS+10d, DUKHCONI1BZ1BWGL5315 | 24d |
| DUKHCONI1BZ2BWGL5320 |  | Install.Steel Gate,Entance Barrier (3m Wall) | 25d | 2014-06-10 | 2014-07-08 | DUKHCONI1BZ2BWGL5315 SS+14d | 24d |
| DUKHCONI1BZ2BWGL5325 |  | Const. of Villa Front Boundary Wall (Ht-2m) | 25d | 2014-07-09 | 2014-08-10 | DUKHCONI1BZ2BWGL5320, DUKHCONI1BZ2BWGL5315 SS+5d, DUKHCONI1BZ1BWGL5325 | 24d |
| DUKHCONI1BZ2BWGL5330 |  | Const. of Blockwork fence Wall (Ht-1.85m) | 25d | 2014-07-21 | 2014-08-21 | DUKHCONI1BZ2BWGL5325 SS+10d, DUKHCONI1BZ1BWGL5330 | 62d |
|  | 55 | **ROAD WORKS** |  | 2014-06-29 | 2014-09-15 |  |  |
| DUKHCONI1BZ2RWGL6000 |  | Excavation & Earth Filling | 10d | 2014-06-29 | 2014-07-09 | DUKHCONI1BZ2SAGL5150, DUKHCONI1BZ2FFGL5210, DUKHCONI1BZ2TCGL5305, DUKHCONI1BZ2FFGL5200, DUKHCONI1BZ1RWGL6015 SS+10d, DUKHCONI1BZ2STGL5250, DUKHCONI1BZ2ELGL5225 | -11d |
| DUKHCONI1BZ2RWGL6005 |  | Laying of Sub Grade | 25d | 2014-07-10 | 2014-08-11 | DUKHCONI1BZ2RWGL6000 | -11d |
| DUKHCONI1BZ2RWGL6010 |  | Laying of Precast Kerbs | 25d | 2014-07-22 | 2014-08-23 | DUKHCONI1BZ2RWGL6005 SS+10d | -11d |
| DUKHCONI1BZ2RWGL6015 |  | Laying of Granular Sub Base Coarse | 20d | 2014-08-06 | 2014-08-28 | DUKHCONI1BZ2RWGL6010 SS+10d | -11d |

| ID | WBS | Task | Duration | Start | Finish | Predecessors | Total float |
| --- | --- | --- | --- | --- | --- | --- | --- |
| DUKHCONI1BZ2RWGL6020 |  | Laying of Road Base Asphalt Concrete | 5d | 2014-08-30 | 2014-09-03 | DUKHCONI1BZ2RWGL6015 | 26d |
| DUKHCONI1BZ2RWGL6025 |  | Laying of Asphalt Wearing Coarse | 5d | 2014-09-04 | 2014-09-09 | DUKHCONI1BZ1RWGL6025, DUKHCONI1BZ2RWGL6020 | 41d |
| DUKHCONI1BZ2RWGL6030 |  | Traffic Signage & Road Marking | 5d | 2014-09-10 | 2014-09-15 | DUKHCONI1BZ1RWGL6030, DUKHCONI1BZ2RWGL6025 | 41d |
|  | 60 | **PARKING SHED** |  | 2014-08-12 | 2014-10-08 |  |  |
| DUKHCONI1BZ2PSGL7000 |  | Excavation | 15d | 2014-08-12 | 2014-08-28 | DUKHCONI1BZ2RWGL6015 SS+5d, DUKHCONI1BZ1PSGL7005 | 31d |
| DUKHCONI1BZ2PSGL7005 |  | Foundation casting | 15d | 2014-08-24 | 2014-09-09 | DUKHCONI1BZ2RWGL6015 FF+10d, DUKHCONI1BZ2PSGL7000 SS+5d, DUKHCONI1BZ2PSGL7000 FF+5d | 26d |
| DUKHCONI1BZ2PSGL7010 |  | Column, Frame& Fabrics Erection | 25d | 2014-09-04 | 2014-10-02 | DUKHCONI1BZ2RWGL6030 FF, DUKHCONI1BZ2BWGL5330 FF, DUKHCONI1BZ2RWGL6020, DUKHCONI1BZ1PSGL7010, DUKHCONI1BZ2PSGL7005 SS+10d | 26d |
| DUKHCONI1BZ2PSGL7015 |  | Electrical Works-Parking Shed | 25d | 2014-09-10 | 2014-10-08 | DUKHCONI1BZ2STGL5260, DUKHCONI1BZ1PSGL7015, DUKHCONI1BZ2PSGL7010 SS+5d | 26d |
|  | 65 | **HARD LANDSCAPING** |  | 2014-06-29 | 2014-09-21 |  |  |
| DUKHCONI1BZ2HDGL7020 |  | Precast Concrete Kerbs works | 20d | 2014-06-29 | 2014-07-21 | DUKHCONI1BZ2RWGL6000 SS | -5d |
| DUKHCONI1BZ2HDGL7025 |  | Interlocking for Walkways | 25d | 2014-07-10 | 2014-08-11 | DUKHCONI1BZ2HDGL7020 SS+10d | -5d |
| DUKHCONI1BZ2HDGL7030 |  | Construction of Retaining wall | 25d | 2014-07-22 | 2014-08-23 | DUKHCONI1BZ1HDGL7030, DUKHCONI1BZ2HDGL7025 SS+10d | -5d |
| DUKHCONI1BZ2HDGL7035 |  | Construction of Wash Stone Boulders | 25d | 2014-07-22 | 2014-08-23 | DUKHCONI1BZ1HDGL7035, DUKHCONI1BZ2HDGL7030 SS | -5d |
| DUKHCONI1BZ2HDGL7040 |  | Construction of Speed Humps | 10d | 2014-09-10 | 2014-09-21 | DUKHCONI1BZ2RWGL6025, DUKHCONI1BZ2HDGL7035 SS, DUKHCONI1BZ1HDGL7040 | 50d |
|  | 70 | **SOFT LANDSCAPING** |  | 2014-08-06 | 2014-09-27 |  |  |
| DUKHCONI1BZ2SLGL7200 |  | Excavation | 25d | 2014-08-06 | 2014-09-03 | DUKHCONI1BZ2IRGL5290 SS, DUKHCONI1BZ1SLGL7205, DUKHCONI1BZ2HDGL7035 SS+10d | -5d |
| DUKHCONI1BZ2SLGL7205 |  | Sweet Soil Laying | 25d | 2014-08-18 | 2014-09-15 | DUKHCONI1BZ2SLGL7200 SS+10d | -5d |
| DUKHCONI1BZ2SLGL7210 |  | Plantation works | 25d | 2014-08-30 | 2014-09-27 | DUKHCONI1BZ2SLGL7205 SS+10d, DUKHCONI1BZ1SLGL7210 | 15d |
|  | 20 | **ZONE - 3** |  | 2014-03-02 | 2014-11-26 |  |  |
|  | 10 | **INFRASTRUCTURE WORKS** |  | 2014-03-02 | 2014-11-26 |  |  |
|  | 10 | **DRAINAGE LINES** |  | 2014-03-02 | 2014-04-20 |  |  |
| DUKHCONI1BZ3DRGL5115 |  | Excavation for Drainage line | 25d | 2014-03-02 | 2014-03-30 | DUKHCONI1BZ2DRGL5130 SS+7d | -1d |
| DUKHCONI1BZ3DRGL5120 |  | Laying of Drainage line | 25d | 2014-03-09 | 2014-04-06 | DUKHCONI1BZ3DRGL5115 SS+6d, DUKHCONI1BZ3DRGL5115 FF+6d | -1d |
| DUKHCONI1BZ3DRGL5125 |  | Testing of Drainage line | 25d | 2014-03-17 | 2014-04-14 | DUKHCONI1BZ3DRGL5120 SS+7d, DUKHCONI1BZ3DRGL5120 FF+7d | -1d |
| DUKHCONI1BZ3DRGL5130 |  | Backfilling Drainage line | 15d | 2014-04-03 | 2014-04-20 | DUKHCONI1BZ3DRGL5125 FF+5d, DUKHCONI1BZ3DRGL5125 SS+10d | -1d |
|  | 15 | **MANHOLES & SOAKAWAY** |  | 2014-04-03 | 2014-06-23 |  |  |
| DUKHCONI1BZ3SAGL5135 |  | Construction of manholes Drainage | 25d | 2014-04-03 | 2014-05-01 | DUKHCONI1BZ3DRGL5130 FF+10d, DUKHCONI1BZ3DRGL5115, DUKHCONI1BZ2SAGL5135 | 58d |
| DUKHCONI1BZ3SAGL5140 |  | Construction of soakaways | 25d | 2014-04-03 | 2014-05-01 | DUKHCONI1BZ3DRGL5115, DUKHCONI1BZ3DRGL5130 FF+10d | -1d |
| DUKHCONI1BZ3SAGL5145 |  | Construction of Road gullies | 25d | 2014-05-03 | 2014-05-31 | DUKHCONI1BZ2SAGL5145, DUKHCONI1BZ3SAGL5140 | -1d |
| DUKHCONI1BZ3SAGL5150 |  | Connection with existing sewer manhole | 20d | 2014-06-01 | 2014-06-23 | DUKHCONI1BZ3SAGL5145, DUKHCONI1BZ3SAGL5135 | 33d |
|  | 20 | **WATER SUPPLY SYSTEM** |  | 2014-04-27 | 2014-07-10 |  |  |
| DUKHCONI1BZ3WSGL5155 |  | Excavation for water line | 25d | 2014-04-27 | 2014-05-25 | DUKHCONI1BZ2WSGL5170, DUKHCONI1BZ3DRGL5130 SS+10d | -11d |
| DUKHCONI1BZ3WSGL5160 |  | Laying of water line | 25d | 2014-05-03 | 2014-05-31 | DUKHCONI1BZ3WSGL5155 SS+5d | -11d |
| DUKHCONI1BZ3WSGL5165 |  | Testing of potable water line | 25d | 2014-05-08 | 2014-06-05 | DUKHCONI1BZ3WSGL5160 SS+5d | -11d |
| DUKHCONI1BZ3WSGL5170 |  | Backfilling potable water line | 25d | 2014-05-14 | 2014-06-11 | DUKHCONI1BZ3WSGL5165 SS+5d, DUKHCONI1BZ3SAGL5145 FF | -11d |
| DUKHCONI1BZ3WSGL5175 |  | Construction of valve chambers & Thrust Blocks | 25d | 2014-05-20 | 2014-06-17 | DUKHCONI1BZ2WSGL5175, DUKHCONI1BZ3WSGL5155 SS+10d, DUKHCONI1BZ3WSGL5170 FF+5d | 18d |
| DUKHCONI1BZ3WSGL5180 |  | Installation of meter ,Accessories & Connection | 20d | 2014-06-18 | 2014-07-10 | DUKHCONI1BZ3WSGL5175, DUKHCONI1BZ2WSGL5180 | 18d |
|  | 25 | **FIREFIGHTING LINES** |  | 2014-05-20 | 2014-07-19 |  |  |
| DUKHCONI1BZ3FFGL5185 |  | Excavation for firefighting line | 25d | 2014-05-20 | 2014-06-17 | DUKHCONI1BZ2FFGL5200 SS+10d, DUKHCONI1BZ3WSGL5170 SS+5d | -11d |
| DUKHCONI1BZ3FFGL5190 |  | Laying of firefighting line | 25d | 2014-05-28 | 2014-06-25 | DUKHCONI1BZ3FFGL5185 SS+7d | -11d |
| DUKHCONI1BZ3FFGL5195 |  | Testing of firefighting line | 25d | 2014-06-03 | 2014-07-01 | DUKHCONI1BZ3FFGL5190 SS+5d | -11d |
| DUKHCONI1BZ3FFGL5200 |  | Backfilling firefighting line | 25d | 2014-06-09 | 2014-07-07 | DUKHCONI1BZ3FFGL5195 SS+5d | -11d |
| DUKHCONI1BZ3FFGL5205 |  | Construction of valve chambers & Thrust Blocks | 25d | 2014-06-15 | 2014-07-13 | DUKHCONI1BZ3FFGL5200 FF+5d, DUKHCONI1BZ3FFGL5185 SS+10d, DUKHCONI1BZ2FFGL5205 | 11d |
| DUKHCONI1BZ3FFGL5210 |  | Connection with existing Firewater System | 25d | 2014-06-21 | 2014-07-19 | DUKHCONI1BZ2FFGL5210, DUKHCONI1BZ3FFGL5205 FF+5d, DUKHCONI1BZ3WSGL5180 FF | 11d |
|  | 30 | **ELECTRICAL LINES** |  | 2014-06-17 | 2014-08-13 |  |  |
| DUKHCONI1BZ3ELGL5215 |  | Excavation Cable Trenches & Duct Banks | 25d | 2014-06-17 | 2014-07-15 | DUKHCONI1BZ2ELGL5225, DUKHCONI1BZ3FFGL5200 SS+7d | -11d |
| DUKHCONI1BZ3ELGL5220 |  | Laying of electrical cables | 25d | 2014-06-23 | 2014-07-21 | DUKHCONI1BZ3ELGL5215 SS+5d | -8d |
| DUKHCONI1BZ3ELGL5225 |  | Backfilling Electrical trench | 25d | 2014-07-01 | 2014-07-29 | DUKHCONI1BZ3ELGL5220 SS+7d, DUKHCONI1BZ3ELGL5215 FF+7d | -8d |
| DUKHCONI1BZ3ELGL5230 |  | Construction of Submain Board & Feeder Pillar | 25d | 2014-07-13 | 2014-08-13 | DUKHCONI1BZ2ELGL5230, DUKHCONI1BZ3ELGL5225 FF+10d, DUKHCONI1BZ3ELGL5225 SS+10d | 38d |
|  | 35 | **STREET LIGHTING** |  | 2014-06-17 | 2014-09-11 |  |  |
| DUKHCONI1BZ3STGL5235 |  | Excavation for Street lighting | 25d | 2014-06-17 | 2014-07-15 | DUKHCONI1BZ2STGL5250 SS+10d, DUKHCONI1BZ3ELGL5215 SS | -11d |
| DUKHCONI1BZ3STGL5240 |  | Construction of Duct Banks | 25d | 2014-06-23 | 2014-07-21 | DUKHCONI1BZ3STGL5235 SS+5d | -11d |
| DUKHCONI1BZ3STGL5245 |  | Construction of Foundation | 25d | 2014-06-23 | 2014-07-21 | DUKHCONI1BZ3STGL5240 SS | -11d |
| DUKHCONI1BZ3STGL5250 |  | Backfilling Street Lighting | 25d | 2014-06-29 | 2014-07-27 | DUKHCONI1BZ3STGL5235 FF+5d, DUKHCONI1BZ3STGL5245 SS+5d | -11d |
| DUKHCONI1BZ3STGL5255 |  | Installation of light Post | 25d | 2014-07-10 | 2014-08-11 | DUKHCONI1BZ3STGL5250 SS+10d, DUKHCONI1BZ2STGL5255 | 58d |
| DUKHCONI1BZ3STGL5260 |  | Electrical Works | 25d | 2014-08-14 | 2014-09-11 | DUKHCONI1BZ3ELGL5230, DUKHCONI1BZ3STGL5255 SS+7d, DUKHCONI1BZ2STGL5260 | 38d |
|  | 40 | **IRRIGATION LINES** |  | 2014-07-30 | 2014-10-07 |  |  |
| DUKHCONI1BZ3IRGL5265 |  | Excavation for irrigation line | 25d | 2014-07-30 | 2014-08-31 | DUKHCONI1BZ2IRGL5280, DUKHCONI1BZ3ELGL5225 | -4d |
| DUKHCONI1BZ3IRGL5270 |  | Laying of irrigationline | 25d | 2014-08-09 | 2014-09-06 | DUKHCONI1BZ3IRGL5265 SS+5d | -4d |
| DUKHCONI1BZ3IRGL5275 |  | Testing of irrigation line | 25d | 2014-08-14 | 2014-09-11 | DUKHCONI1BZ3IRGL5270 SS+5d | -4d |
| DUKHCONI1BZ3IRGL5280 |  | Backfilling irrigation line | 25d | 2014-08-20 | 2014-09-17 | DUKHCONI1BZ3IRGL5275 SS+5d | -4d |
| DUKHCONI1BZ3IRGL5285 |  | Construction of Thrust Blocks,Pull boxes | 25d | 2014-09-01 | 2014-09-29 | DUKHCONI1BZ3ELGL5225 SS+10d, DUKHCONI1BZ3IRGL5280 FF+10d | 1d |
| DUKHCONI1BZ3IRGL5290 |  | Irrigation Fittings (Nozzle,Values) | 25d | 2014-09-09 | 2014-10-07 | DUKHCONI1BZ3IRGL5280 SS+10d, DUKHCONI1BZ3IRGL5285 SS+7d | 1d |
|  | 45 | **TELECOMMUNICATION LINES** |  | 2014-07-10 | 2014-08-28 |  |  |
| DUKHCONI1BZ3TCGL5295 |  | Excavation Telecommunication trenches | 20d | 2014-07-10 | 2014-08-05 | DUKHCONI1BZ3STGL5250 SS+10d, DUKHCONI1BZ2TCGL5305 | -11d |
| DUKHCONI1BZ3TCGL5300 |  | Laying of cables | 20d | 2014-07-16 | 2014-08-11 | DUKHCONI1BZ3TCGL5295 SS+5d | -11d |
| DUKHCONI1BZ3TCGL5305 |  | Backfilling telecommunication trench | 20d | 2014-07-22 | 2014-08-17 | DUKHCONI1BZ3TCGL5300 SS+5d | -11d |
| DUKHCONI1BZ3TCGL5310 |  | Connection & Installation | 20d | 2014-08-06 | 2014-08-28 | DUKHCONI1BZ2TCGL5310, DUKHCONI1BZ3TCGL5305 SS+10d | 40d |
|  | 50 | **BOUNDARY WALL** |  | 2014-07-10 | 2014-10-07 |  |  |
| DUKHCONI1BZ3BWGL5315 |  | Construction of Boundary Wall (Ht-3m) | 25d | 2014-07-10 | 2014-08-11 | DUKHCONI1BZ2BWGL5315, DUKHCONI1BZ3STGL5250 SS+10d | 34d |

| ID | WBS | Task | Duration | Start | Finish | Predecessors | Total float |
| --- | --- | --- | --- | --- | --- | --- | --- |
| DUKHCONI1BZ3BWGL5320 |  | Install.Steel Gate,Entance Barrier (3m Wall) | 25d | 2014-07-27 | 2014-08-27 | DUKHCONI1BZ3BWGL5315 SS+14d | 34d |
| DUKHCONI1BZ3BWGL5325 |  | Const. of Villa Front Boundary Wall (Ht-2m) | 25d | 2014-08-28 | 2014-09-25 | DUKHCONI1BZ3BWGL5315 SS+5d, DUKHCONI1BZ3BWGL5320, DUKHCONI1BZ2BWGL5325 | 34d |
| DUKHCONI1BZ3BWGL5330 |  | Const. of Blockwork fence Wall (Ht-1.85m) | 25d | 2014-09-09 | 2014-10-07 | DUKHCONI1BZ2BWGL5330, DUKHCONI1BZ3BWGL5325 SS+10d | 47d |
|  | 55 | **ROAD WORKS** |  | 2014-08-18 | 2014-11-03 |  |  |
| DUKHCONI1BZ3RWGL6000 |  | Excavation & Earth Filling | 10d | 2014-08-18 | 2014-08-28 | DUKHCONI1BZ3FFGL5210, DUKHCONI1BZ3ELGL5225, DUKHCONI1BZ2RWGL6015 SS+10d, DUKHCONI1BZ3FFGL5200, DUKHCONI1BZ3SAGL5150, DUKHCONI1BZ1FFGL5210, DUKHCONI1BZ3TCGL5305, DUKHCONI1BZ3STGL5250 | -11d |
| DUKHCONI1BZ3RWGL6005 |  | Laying of Sub Grade | 25d | 2014-08-30 | 2014-09-27 | DUKHCONI1BZ3RWGL6000 | -11d |
| DUKHCONI1BZ3RWGL6010 |  | Laying of Precast Kerbs | 25d | 2014-09-10 | 2014-10-08 | DUKHCONI1BZ3RWGL6005 SS+10d | -11d |
| DUKHCONI1BZ3RWGL6015 |  | Laying of Granular Sub Base Coarse | 20d | 2014-09-22 | 2014-10-16 | DUKHCONI1BZ3RWGL6010 SS+10d | -11d |
| DUKHCONI1BZ3RWGL6020 |  | Laying of Road Base Asphalt Concrete | 5d | 2014-10-18 | 2014-10-22 | DUKHCONI1BZ3RWGL6015 | 11d |
| DUKHCONI1BZ3RWGL6025 |  | Laying of Asphalt Wearing Coarse | 5d | 2014-10-23 | 2014-10-28 | DUKHCONI1BZ3RWGL6020, DUKHCONI1BZ2RWGL6025 | 20d |
| DUKHCONI1BZ3RWGL6030 |  | Traffic Signage & Road Marking | 5d | 2014-10-29 | 2014-11-03 | DUKHCONI1BZ2RWGL6030, DUKHCONI1BZ3RWGL6025 | 26d |
|  | 60 | **PARKING SHED** |  | 2014-09-28 | 2014-11-26 |  |  |
| DUKHCONI1BZ3PSGL7000 |  | Excavation | 15d | 2014-09-28 | 2014-10-16 | DUKHCONI1BZ2PSGL7005, DUKHCONI1BZ3RWGL6015 SS+5d | 16d |
| DUKHCONI1BZ3PSGL7005 |  | Foundation casting | 15d | 2014-10-12 | 2014-10-28 | DUKHCONI1BZ3PSGL7000 SS+5d, DUKHCONI1BZ3PSGL7000 FF+5d, DUKHCONI1BZ3RWGL6015 FF+10d | 11d |
| DUKHCONI1BZ3PSGL7010 |  | Column, Frame& Fabrics Erection | 25d | 2014-10-23 | 2014-11-20 | DUKHCONI1BZ3RWGL6020, DUKHCONI1BZ3BWGL5330 FF, DUKHCONI1BZ3PSGL7005 SS+10d, DUKHCONI1BZ3RWGL6030 FF, DUKHCONI1BZ2PSGL7010 | 11d |
| DUKHCONI1BZ3PSGL7015 |  | Electrical Works-Parking Shed | 25d | 2014-10-29 | 2014-11-26 | DUKHCONI1BZ2PSGL7015, DUKHCONI1BZ3STGL5260, DUKHCONI1BZ3PSGL7010 SS+5d | 11d |
|  | 65 | **HARD LANDSCAPING** |  | 2014-08-18 | 2014-11-09 |  |  |
| DUKHCONI1BZ3HDGL7020 |  | Precast Concrete Kerbs works | 20d | 2014-08-18 | 2014-09-09 | DUKHCONI1BZ3RWGL6000 SS | -10d |
| DUKHCONI1BZ3HDGL7025 |  | Interlocking for Walkways | 25d | 2014-08-30 | 2014-09-27 | DUKHCONI1BZ3HDGL7020 SS+10d | -10d |
| DUKHCONI1BZ3HDGL7030 |  | Construction of Retaining wall | 25d | 2014-09-10 | 2014-10-08 | DUKHCONI1BZ2HDGL7030, DUKHCONI1BZ3HDGL7025 SS+10d | -10d |
| DUKHCONI1BZ3HDGL7035 |  | Construction of Wash Stone Boulders | 25d | 2014-09-10 | 2014-10-08 | DUKHCONI1BZ2HDGL7035, DUKHCONI1BZ3HDGL7030 SS | -10d |
| DUKHCONI1BZ3HDGL7040 |  | Construction of Speed Humps | 10d | 2014-10-29 | 2014-11-09 | DUKHCONI1BZ3HDGL7035 SS, DUKHCONI1BZ3RWGL6025, DUKHCONI1BZ2HDGL7040 | 20d |
|  | 70 | **SOFT LANDSCAPING** |  | 2014-09-22 | 2014-11-15 |  |  |
| DUKHCONI1BZ3SLGL7200 |  | Excavation | 25d | 2014-09-22 | 2014-10-22 | DUKHCONI1BZ3IRGL5290 SS, DUKHCONI1BZ2SLGL7205, DUKHCONI1BZ3HDGL7035 SS+10d | -10d |
| DUKHCONI1BZ3SLGL7205 |  | Sweet Soil Laying | 25d | 2014-10-04 | 2014-11-03 | DUKHCONI1BZ3SLGL7200 SS+10d | -10d |
| DUKHCONI1BZ3SLGL7210 |  | Plantation works | 25d | 2014-10-18 | 2014-11-15 | DUKHCONI1BZ2SLGL7210, DUKHCONI1BZ3SLGL7205 SS+10d | 0d |
|  | 25 | **ZONE - 4** |  | 2014-04-12 | 2015-01-14 |  |  |
|  | 10 | **INFRASTRUCTURE WORKS** |  | 2014-04-12 | 2015-01-14 |  |  |
|  | 10 | **DRAINAGE LINES** |  | 2014-04-12 | 2014-05-31 |  |  |
| DUKHCONI1BZ4DRGL5115 |  | Excavation for Drainage line | 25d | 2014-04-12 | 2014-05-10 | DUKHCONI1BZ3DRGL5130 SS+7d | 4d |
| DUKHCONI1BZ4DRGL5120 |  | Laying of Drainage line | 25d | 2014-04-19 | 2014-05-17 | DUKHCONI1BZ4DRGL5115 FF+6d, DUKHCONI1BZ4DRGL5115 SS+6d | 4d |
| DUKHCONI1BZ4DRGL5125 |  | Testing of Drainage line | 25d | 2014-04-27 | 2014-05-25 | DUKHCONI1BZ4DRGL5120 FF+7d, DUKHCONI1BZ4DRGL5120 SS+7d | 4d |
| DUKHCONI1BZ4DRGL5130 |  | Backfilling Drainage line | 15d | 2014-05-14 | 2014-05-31 | DUKHCONI1BZ4DRGL5125 SS+10d, DUKHCONI1BZ4DRGL5125 FF+5d | 4d |
|  | 15 | **MANHOLES & SOAKAWAY** |  | 2014-05-14 | 2014-08-06 |  |  |
| DUKHCONI1BZ4SAGL5135 |  | Construction of manholes Drainage | 25d | 2014-05-14 | 2014-06-11 | DUKHCONI1BZ3SAGL5135, DUKHCONI1BZ4DRGL5130 FF+10d, DUKHCONI1BZ4DRGL5115 | 63d |
| DUKHCONI1BZ4SAGL5140 |  | Construction of soakaways | 25d | 2014-05-14 | 2014-06-11 | DUKHCONI1BZ4DRGL5115, DUKHCONI1BZ4DRGL5130 FF+10d | 4d |
| DUKHCONI1BZ4SAGL5145 |  | Construction of Road gullies | 25d | 2014-06-12 | 2014-07-10 | DUKHCONI1BZ3SAGL5145, DUKHCONI1BZ4SAGL5140 | 4d |
| DUKHCONI1BZ4SAGL5150 |  | Connection with existing sewer manhole | 20d | 2014-07-12 | 2014-08-06 | DUKHCONI1BZ4SAGL5145, DUKHCONI1BZ4SAGL5135 | 38d |
|  | 20 | **WATER SUPPLY SYSTEM** |  | 2014-06-12 | 2014-08-30 |  |  |
| DUKHCONI1BZ4WSGL5155 |  | Excavation for water line | 25d | 2014-06-12 | 2014-07-10 | DUKHCONI1BZ3WSGL5170, DUKHCONI1BZ4DRGL5130 SS+10d | -11d |
| DUKHCONI1BZ4WSGL5160 |  | Laying of water line | 25d | 2014-06-18 | 2014-07-16 | DUKHCONI1BZ4WSGL5155 SS+5d | -11d |
| DUKHCONI1BZ4WSGL5165 |  | Testing of potable water line | 25d | 2014-06-24 | 2014-07-22 | DUKHCONI1BZ4WSGL5160 SS+5d | -11d |
| DUKHCONI1BZ4WSGL5170 |  | Backfilling potable water line | 25d | 2014-06-30 | 2014-07-28 | DUKHCONI1BZ4SAGL5145 FF, DUKHCONI1BZ4WSGL5165 SS+5d | -11d |
| DUKHCONI1BZ4WSGL5175 |  | Construction of valve chambers & Thrust Blocks | 25d | 2014-07-06 | 2014-08-06 | DUKHCONI1BZ4WSGL5155 SS+10d, DUKHCONI1BZ4WSGL5170 FF+5d, DUKHCONI1BZ3WSGL5175 | 18d |
| DUKHCONI1BZ4WSGL5180 |  | Installation of meter ,Accessories & Connection | 20d | 2014-08-07 | 2014-08-30 | DUKHCONI1BZ4WSGL5175, DUKHCONI1BZ3WSGL5180 | 18d |
|  | 25 | **FIREFIGHTING LINES** |  | 2014-07-06 | 2014-09-07 |  |  |
| DUKHCONI1BZ4FFGL5185 |  | Excavation for firefighting line | 25d | 2014-07-06 | 2014-08-06 | DUKHCONI1BZ4WSGL5170 SS+5d, DUKHCONI1BZ3FFGL5200 SS+10d | -11d |
| DUKHCONI1BZ4FFGL5190 |  | Laying of firefighting line | 25d | 2014-07-14 | 2014-08-14 | DUKHCONI1BZ4FFGL5185 SS+7d | -11d |
| DUKHCONI1BZ4FFGL5195 |  | Testing of firefighting line | 25d | 2014-07-20 | 2014-08-20 | DUKHCONI1BZ4FFGL5190 SS+5d | -11d |
| DUKHCONI1BZ4FFGL5200 |  | Backfilling firefighting line | 25d | 2014-07-26 | 2014-08-26 | DUKHCONI1BZ4FFGL5195 SS+5d | -11d |
| DUKHCONI1BZ4FFGL5205 |  | Construction of valve chambers & Thrust Blocks | 25d | 2014-07-31 | 2014-09-01 | DUKHCONI1BZ3FFGL5205, DUKHCONI1BZ4FFGL5200 FF+5d, DUKHCONI1BZ4FFGL5185 SS+10d | 11d |
| DUKHCONI1BZ4FFGL5210 |  | Connection with existing Firewater System | 25d | 2014-08-10 | 2014-09-07 | DUKHCONI1BZ4FFGL5205 FF+5d, DUKHCONI1BZ4WSGL5180 FF, DUKHCONI1BZ3FFGL5210 | 11d |
|  | 30 | **ELECTRICAL LINES** |  | 2014-08-06 | 2014-09-29 |  |  |
| DUKHCONI1BZ4ELGL5215 |  | Excavation Cable Trenches & Duct Banks | 25d | 2014-08-06 | 2014-09-03 | DUKHCONI1BZ4FFGL5200 SS+7d, DUKHCONI1BZ3ELGL5225 | -11d |
| DUKHCONI1BZ4ELGL5220 |  | Laying of electrical cables | 25d | 2014-08-12 | 2014-09-09 | DUKHCONI1BZ4ELGL5215 SS+5d | -4d |
| DUKHCONI1BZ4ELGL5225 |  | Backfilling Electrical trench | 25d | 2014-08-20 | 2014-09-17 | DUKHCONI1BZ4ELGL5220 SS+7d, DUKHCONI1BZ4ELGL5215 FF+7d | -4d |
| DUKHCONI1BZ4ELGL5230 |  | Construction of Submain Board & Feeder Pillar | 25d | 2014-09-01 | 2014-09-29 | DUKHCONI1BZ4ELGL5225 FF+10d, DUKHCONI1BZ4ELGL5225 SS+10d, DUKHCONI1BZ3ELGL5230 | 23d |
|  | 35 | **STREET LIGHTING** |  | 2014-08-06 | 2014-10-30 |  |  |
| DUKHCONI1BZ4STGL5235 |  | Excavation for Street lighting | 25d | 2014-08-06 | 2014-09-03 | DUKHCONI1BZ4ELGL5215 SS, DUKHCONI1BZ3STGL5250 SS+10d | -11d |
| DUKHCONI1BZ4STGL5240 |  | Construction of Duct Banks | 25d | 2014-08-12 | 2014-09-09 | DUKHCONI1BZ4STGL5235 SS+5d | -11d |
| DUKHCONI1BZ4STGL5245 |  | Construction of Foundation | 25d | 2014-08-12 | 2014-09-09 | DUKHCONI1BZ4STGL5240 SS | -11d |
| DUKHCONI1BZ4STGL5250 |  | Backfilling Street Lighting | 25d | 2014-08-18 | 2014-09-15 | DUKHCONI1BZ4STGL5235 FF+5d, DUKHCONI1BZ4STGL5245 SS+5d | -11d |
| DUKHCONI1BZ4STGL5255 |  | Installation of light Post | 25d | 2014-08-30 | 2014-09-27 | DUKHCONI1BZ4STGL5250 SS+10d, DUKHCONI1BZ3STGL5255 | 43d |
| DUKHCONI1BZ4STGL5260 |  | Electrical Works | 25d | 2014-09-30 | 2014-10-30 | DUKHCONI1BZ4ELGL5230, DUKHCONI1BZ3STGL5260, DUKHCONI1BZ4STGL5255 SS+7d | 23d |
|  | 40 | **IRRIGATION LINES** |  | 2014-09-18 | 2014-11-25 |  |  |
| DUKHCONI1BZ4IRGL5265 |  | Excavation for irrigation line | 25d | 2014-09-18 | 2014-10-19 | DUKHCONI1BZ3IRGL5280, DUKHCONI1BZ4ELGL5225 | -4d |
| DUKHCONI1BZ4IRGL5270 |  | Laying of irrigationline | 25d | 2014-09-24 | 2014-10-25 | DUKHCONI1BZ4IRGL5265 SS+5d | -4d |
| DUKHCONI1BZ4IRGL5275 |  | Testing of irrigation line | 25d | 2014-09-30 | 2014-10-30 | DUKHCONI1BZ4IRGL5270 SS+5d | -4d |
| DUKHCONI1BZ4IRGL5280 |  | Backfilling irrigation line | 25d | 2014-10-06 | 2014-11-05 | DUKHCONI1BZ4IRGL5275 SS+5d | -4d |
| DUKHCONI1BZ4IRGL5285 |  | Construction of Thrust Blocks,Pull boxes | 25d | 2014-10-20 | 2014-11-17 | DUKHCONI1BZ4IRGL5280 FF+10d, DUKHCONI1BZ4ELGL5225 SS+10d | -4d |

| ID | WBS | Task | Duration | Start | Finish | Predecessors | Total float |
| --- | --- | --- | --- | --- | --- | --- | --- |
| DUKHCONI1BZ4IRGL5290 |  | Irrigation Fittings (Nozzle,Values) | 25d | 2014-10-28 | 2014-11-25 | DUKHCONI1BZ4IRGL5285 SS+7d, DUKHCONI1BZ4IRGL5280 SS+10d | -4d |
|  | 45 | **TELECOMMUNICATION LINES** |  | 2014-08-30 | 2014-10-16 |  |  |
| DUKHCONI1BZ4TCGL5295 |  | Excavation Telecommunication trenches | 20d | 2014-08-30 | 2014-09-21 | DUKHCONI1BZ3TCGL5305, DUKHCONI1BZ4STGL5250 SS+10d | -11d |
| DUKHCONI1BZ4TCGL5300 |  | Laying of cables | 20d | 2014-09-04 | 2014-09-27 | DUKHCONI1BZ4TCGL5295 SS+5d | -11d |
| DUKHCONI1BZ4TCGL5305 |  | Backfilling telecommunication trench | 20d | 2014-09-10 | 2014-10-02 | DUKHCONI1BZ4TCGL5300 SS+5d | -11d |
| DUKHCONI1BZ4TCGL5310 |  | Connection & Installation | 20d | 2014-09-22 | 2014-10-16 | DUKHCONI1BZ4TCGL5305 SS+10d, DUKHCONI1BZ3TCGL5310 | 20d |
|  | 50 | **BOUNDARY WALL** |  | 2014-08-30 | 2014-11-25 |  |  |
| DUKHCONI1BZ4BWGL5315 |  | Construction of Boundary Wall (Ht-3m) | 25d | 2014-08-30 | 2014-09-27 | DUKHCONI1BZ4STGL5250 SS+10d, DUKHCONI1BZ3BWGL5315 | 19d |
| DUKHCONI1BZ4BWGL5320 |  | Install.Steel Gate,Entance Barrier (3m Wall) | 25d | 2014-09-15 | 2014-10-15 | DUKHCONI1BZ4BWGL5315 SS+14d | 19d |
| DUKHCONI1BZ4BWGL5325 |  | Const. of Villa Front Boundary Wall (Ht-2m) | 25d | 2014-10-16 | 2014-11-13 | DUKHCONI1BZ4BWGL5315 SS+5d, DUKHCONI1BZ3BWGL5325, DUKHCONI1BZ4BWGL5320 | 19d |
| DUKHCONI1BZ4BWGL5330 |  | Const. of Blockwork fence Wall (Ht-1.85m) | 25d | 2014-10-28 | 2014-11-25 | DUKHCONI1BZ3BWGL5330, DUKHCONI1BZ4BWGL5325 SS+10d | 32d |
|  | 55 | **ROAD WORKS** |  | 2014-10-04 | 2014-12-22 |  |  |
| DUKHCONI1BZ4RWGL6000 |  | Excavation & Earth Filling | 10d | 2014-10-04 | 2014-10-16 | DUKHCONI1BZ4SAGL5150, DUKHCONI1BZ4FFGL5200, DUKHCONI1BZ3RWGL6015 SS+10d, DUKHCONI1BZ4FFGL5210, DUKHCONI1BZ4TCGL5305, DUKHCONI1BZ4ELGL5225, DUKHCONI1BZ4STGL5250 | -11d |
| DUKHCONI1BZ4RWGL6005 |  | Laying of Sub Grade | 25d | 2014-10-18 | 2014-11-15 | DUKHCONI1BZ4RWGL6000 | -11d |
| DUKHCONI1BZ4RWGL6010 |  | Laying of Precast Kerbs | 25d | 2014-10-29 | 2014-11-26 | DUKHCONI1BZ4RWGL6005 SS+10d | -11d |
| DUKHCONI1BZ4RWGL6015 |  | Laying of Granular Sub Base Coarse | 20d | 2014-11-10 | 2014-12-02 | DUKHCONI1BZ4RWGL6010 SS+10d | -11d |
| DUKHCONI1BZ4RWGL6020 |  | Laying of Road Base Asphalt Concrete | 6d | 2014-12-03 | 2014-12-09 | DUKHCONI1BZ4RWGL6015 | -11d |
| DUKHCONI1BZ4RWGL6025 |  | Laying of Asphalt Wearing Coarse | 5d | 2014-12-10 | 2014-12-15 | DUKHCONI1BZ3RWGL6025, DUKHCONI1BZ4RWGL6020 | -11d |
| DUKHCONI1BZ4RWGL6030 |  | Traffic Signage & Road Marking | 5d | 2014-12-16 | 2014-12-22 | DUKHCONI1BZ3RWGL6030, DUKHCONI1BZ4RWGL6025 | 10d |
|  | 60 | **PARKING SHED** |  | 2014-11-16 | 2015-01-14 |  |  |
| DUKHCONI1BZ4PSGL7000 |  | Excavation | 15d | 2014-11-16 | 2014-12-02 | DUKHCONI1BZ3PSGL7005, DUKHCONI1BZ4RWGL6015 SS+5d | 1d |
| DUKHCONI1BZ4PSGL7005 |  | Foundation casting | 15d | 2014-11-27 | 2014-12-14 | DUKHCONI1BZ4PSGL7000 FF+5d, DUKHCONI1BZ4RWGL6015 FF+10d, DUKHCONI1BZ4PSGL7000 SS+5d | -4d |
| DUKHCONI1BZ4PSGL7010 |  | Column, Frame& Fabrics Erection | 25d | 2014-12-10 | 2015-01-08 | DUKHCONI1BZ3PSGL7010, DUKHCONI1BZ4RWGL6030 FF, DUKHCONI1BZ4RWGL6020, DUKHCONI1BZ4PSGL7005 SS+10d, DUKHCONI1BZ4BWGL5330 FF | -5d |
| DUKHCONI1BZ4PSGL7015 |  | Electrical Works-Parking Shed | 25d | 2014-12-16 | 2015-01-14 | DUKHCONI1BZ3PSGL7015, DUKHCONI1BZ4PSGL7010 SS+5d, DUKHCONI1BZ4STGL5260 | -5d |
|  | 65 | **HARD LANDSCAPING** |  | 2014-10-04 | 2014-12-28 |  |  |
| DUKHCONI1BZ4HDGL7020 |  | Precast Concrete Kerbs works | 20d | 2014-10-04 | 2014-10-28 | DUKHCONI1BZ4RWGL6000 SS | -11d |
| DUKHCONI1BZ4HDGL7025 |  | Interlocking for Walkways | 25d | 2014-10-18 | 2014-11-15 | DUKHCONI1BSBGZGL7910 FF, DUKHCONI1BZ4HDGL7020 SS+10d | -11d |
| DUKHCONI1BZ4HDGL7030 |  | Construction of Retaining wall | 25d | 2014-10-29 | 2014-11-26 | DUKHCONI1BZ3HDGL7030, DUKHCONI1BZ4HDGL7025 SS+10d | -11d |
| DUKHCONI1BZ4HDGL7035 |  | Construction of Wash Stone Boulders | 25d | 2014-10-29 | 2014-11-26 | DUKHCONI1BZ3HDGL7035, DUKHCONI1BZ4HDGL7030 SS | -11d |
| DUKHCONI1BZ4HDGL7040 |  | Construction of Speed Humps | 10d | 2014-12-16 | 2014-12-28 | DUKHCONI1BZ4RWGL6025, DUKHCONI1BZ4HDGL7035 SS, DUKHCONI1BZ3HDGL7040 | -11d |
|  | 70 | **SOFT LANDSCAPING** |  | 2014-11-05 | 2014-12-28 |  |  |
| DUKHCONI1BZ4SLGL7200 |  | Excavation for Landscaping | 25d | 2014-11-05 | 2014-12-03 | DUKHCONI1BZ4HDGL7035 SS+6d, DUKHCONI1BZ3SLGL7205, DUKHCONI1BZ4IRGL5290 SS | -11d |
| DUKHCONI1BZ4SLGL7205 |  | Sweet Soil Laying | 25d | 2014-11-17 | 2014-12-15 | DUKHCONI1BZ4SLGL7200 SS+10d | -11d |
| DUKHCONI1BZ4SLGL7210 |  | Plantation works | 25d | 2014-11-29 | 2014-12-28 | DUKHCONI1BZ3SLGL7210, DUKHCONI1BZ4SLGL7205 SS+10d | -11d |
|  | 30 | **SECONDARY BUILDINGS** |  | 2014-05-10 | 2014-12-11 |  |  |
|  | 10 | **INFRASTRUCTURE WORKS** |  | 2014-05-10 | 2014-12-11 |  |  |
|  | 10 | **IRRIGATION WATER TANK & PUMP ROOM** |  | 2014-05-10 | 2014-11-17 |  |  |
| DUKHCONI1BSBIWGL7400 |  | Excavation | 15d | 2014-05-10 | 2014-05-26 | DUKHENGI1BDWIWAP4760, DUKHCONP1BZ6STRF2055 SS | 2d |
| DUKHCONI1BSBIWGL7405 |  | Blinding & base waterproofing | 10d | 2014-05-27 | 2014-06-07 | DUKHCONI1BSBIWGL7400 | 2d |
| DUKHCONI1BSBIWGL7410 |  | Construction of Raft slab | 10d | 2014-06-08 | 2014-06-18 | DUKHCONI1BSBIWGL7405 | 2d |
| DUKHCONI1BSBIWGL7415 |  | Construction of RCC Wall | 25d | 2014-06-19 | 2014-07-17 | DUKHCONI1BSBIWGL7410 | 2d |
| DUKHCONI1BSBIWGL7420 |  | Construction of Roof Slab | 20d | 2014-07-19 | 2014-08-13 | DUKHCONI1BSBIWGL7415 | 43d |
| DUKHCONI1BSBIWGL7425 |  | Waterproofing & Backfilling | 15d | 2014-08-14 | 2014-08-31 | DUKHCONI1BSBIWGL7420 | 43d |
| DUKHCONI1BSBIWGL7430 |  | Floor screed | 5d | 2014-09-01 | 2014-09-06 | DUKHCONI1BSBIWGL7425 | 43d |
| DUKHCONI1BSBIWGL7950 |  | Laying of Interlock | 10d | 2014-09-01 | 2014-09-11 | DUKHCONI1BSBIWGL7425 | 58d |
| DUKHCONI1BSBIWGL7440 |  | Plumbing , Drainage & Firefighting works | 25d | 2014-09-08 | 2014-10-06 | DUKHCONI1BZ1FFGL5210, DUKHCONI1BZ3FFGL5210, DUKHCONI1BSBIWGL7430, DUKHCONI1BZ2FFGL5210, DUKHCONI1BZ4FFGL5210 | 42d |
| DUKHCONI1BSBIWGL7445 |  | AC Works | 25d | 2014-09-08 | 2014-10-06 | DUKHCONI1BSBIWGL7440 SS | 42d |
| DUKHCONI1BSBIWGL7435 |  | Installation of Boundary Fences | 15d | 2014-09-13 | 2014-09-29 | DUKHCONI1BSBIWGL7950 | 58d |
| DUKHCONI1BSBIWGL7450 |  | Electrical Works | 25d | 2014-09-30 | 2014-10-30 | DUKHCONI1BSBIWGL7445 SS, DUKHCONI1BZ4STGL5260 SS, DUKHCONI1BZ4ELGL5230 | 23d |
| DUKHCONI1BSBIWGL7455 |  | Internal epoxy coating & Painting | 5d | 2014-11-01 | 2014-11-05 | DUKHCONI1BSBIWGL7450 | 23d |
| DUKHCONI1BSBIWGL7460 |  | Installation of Steel Ladder | 5d | 2014-11-06 | 2014-11-11 | DUKHCONI1BSBIWGL7455 | 23d |
| DUKHCONI1BSBIWGL7465 |  | Installation of G.I Handrails | 5d | 2014-11-12 | 2014-11-17 | DUKHCONI1BSBIWGL7460, DUKHCONI1BSBIWGL7435 | 23d |
|  | 15 | **TELECOMMUNICATION ROOM** |  | 2014-07-19 | 2014-12-10 |  |  |
| DUKHCONI1BSBTRGL7600 |  | Excavation | 10d | 2014-07-19 | 2014-07-29 | DUKHCONI1BSBIWGL7415, DUKHENGI1BDWTRAP4770 | 2d |
| DUKHCONI1BSBTRGL7605 |  | Construction of foundation & Grade slab | 20d | 2014-07-30 | 2014-08-25 | DUKHCONI1BSBTRGL7600 | 12d |
| DUKHCONI1BSBTRGL7610 |  | Construction Column,Beams & Roof Slab | 20d | 2014-08-26 | 2014-09-17 | DUKHCONI1BSBTRGL7605 | 12d |
| DUKHCONI1BSBTRGL7615 |  | Finishing Works | 25d | 2014-10-15 | 2014-11-12 | DUKHCONI1BSBTRGL7610 FS+21d | 12d |
| DUKHCONI1BSBTRGL7620 |  | Plumbing , Drainage & Firefighting works | 25d | 2014-11-06 | 2014-12-04 | DUKHCONI1BSBTRGL7615 SS+10d, DUKHCONI1BZ4IRGL5280 | 3d |
| DUKHCONI1BSBTRGL7625 |  | AC Works | 25d | 2014-11-06 | 2014-12-04 | DUKHCONI1BSBTRGL7620 SS | 3d |
| DUKHCONI1BSBTRGL7630 |  | Electrical Works-Telecom Room | 25d | 2014-11-06 | 2014-12-04 | DUKHCONI1BZ4TCGL5310, DUKHCONI1BSBTRGL7625 SS, DUKHCONI1BZ1TCGL5310, DUKHCONI1BZ3TCGL5310, DUKHCONI1BZ2TCGL5310 | 3d |
| DUKHCONI1BSBTRGL7635 |  | Final Paintings | 5d | 2014-12-06 | 2014-12-10 | DUKHCONI1BSBTRGL7615, DUKHCONI1BSBTRGL7630, DUKHCONI1BSBTRGL7620, DUKHCONI1BSBTRGL7625 | 3d |
|  | 20 | **GUARD HOUSE** |  | 2014-07-30 | 2014-12-11 |  |  |
| DUKHCONI1BSBGHGL7800 |  | Excavation | 10d | 2014-07-30 | 2014-08-13 | DUKHCONI1BSBTRGL7600, DUKHENGI1BDWGHAP4790 | 2d |
| DUKHCONI1BSBGHGL7805 |  | Construction of foundation & Grade slab | 20d | 2014-08-14 | 2014-09-06 | DUKHCONI1BSBGHGL7800 | 2d |
| DUKHCONI1BSBGHGL7810 |  | Construction Column,Beams & Roof Slab | 20d | 2014-09-07 | 2014-09-29 | DUKHCONI1BSBGHGL7805 | 2d |
| DUKHCONI1BSBGHGL7815 |  | Finishing Works | 25d | 2014-10-27 | 2014-11-24 | DUKHCONI1BSBGHGL7810 FS+21d | 2d |
| DUKHCONI1BSBGHGL7820 |  | Plumbing , Drainage & Firefighting works | 25d | 2014-11-08 | 2014-12-06 | DUKHCONI1BSBGHGL7815 SS+10d | 2d |
| DUKHCONI1BSBGHGL7825 |  | AC Works | 25d | 2014-11-08 | 2014-12-06 | DUKHCONI1BSBGHGL7820 SS | 2d |
| DUKHCONI1BSBGHGL7830 |  | Electrical Works-Telecom Room | 25d | 2014-11-08 | 2014-12-06 | DUKHCONI1BSBGHGL7825 SS | 2d |
| DUKHCONI1BSBGHGL7835 |  | Final Paintings | 5d | 2014-12-07 | 2014-12-11 | DUKHCONI1BSBGHGL7820, DUKHCONI1BSBGHGL7825, DUKHCONI1BSBGHGL7830, DUKHCONI1BSBGHGL7815 | 2d |

| ID | WBS | Task | Duration | Start | Finish | Predecessors | Complete | Total float |
| --- | --- | --- | --- | --- | --- | --- | --- | --- |
|  | 25 | **GAZEBO** |  | 2014-09-10 | 2014-11-09 |  |  |  |
| DUKHCONI1BSBGZGL7900 |  | Construction of Concrete structure | 20d | 2014-09-10 | 2014-10-02 | DUKHENGI1BDWGZAP4780, DUKHCONI1BZ3HDGL7020 |  | -6d |
| DUKHCONI1BSBGZGL7905 |  | Installation of Wooden Works | 25d | 2014-09-22 | 2014-10-22 | DUKHCONI1BSBGZGL7900 SS+10d |  | -6d |
| DUKHCONI1BSBGZGL7915 |  | Park Benches Installation | 15d | 2014-09-22 | 2014-10-08 | DUKHCONI1BSBGZGL7905 SS |  | 4d |
| DUKHCONI1BSBGZGL7910 |  | Electrical Works-Gazebo | 15d | 2014-10-23 | 2014-11-09 | DUKHCONI1BSBGZGL7905, DUKHCONI1BSBGZGL7915 |  | -6d |
|  | L35 | **PACKAGE-2A** |  | 2012-11-18 | 2014-07-26 |  |  |  |
|  | 03 | **SITE PREPARATORY WORKS** |  | 2012-11-18 | 2013-03-30 |  |  |  |
| DUKHCONP2AGNSP001000 |  | Survey works, | 20d | 2012-11-18 A | 2012-12-10 A | DUKHMOBP020000004000 SS+14d | 100% |  |
| DUKHCONP2AGNSP002000 |  | Scanning for Existing Services for rerouting | 10d | 2012-12-05 A | 2012-12-16 A | DUKHMOBP020000004000 SS+14d, DUKHCONP2AGNSP001000 FF+5d | 100% |  |
| DUKHCONP2AGNSP003000 |  | Site stripping | 20d | 2012-12-05 A | 2012-12-29 A | DUKHCONP2AGNSP002000 SS | 100% |  |
| DUKHCONP2AGNSP004000 |  | Demolition of Existing building & landscaping | 20d | 2012-12-12 A | 2012-12-31 A | DUKHCONP2AGNSP003000 SS+6d | 100% |  |
| DUKHCONP2AGNSP002100 |  | Submission of Scanning Reports | 7d | 2012-12-17 A | 2012-12-25 A | DUKHCONP2AGNSP002000 | 100% |  |
| DUKHCONP2AGNSP005000 |  | Demolition of existing services works | 20d | 2012-12-20 A | 2013-01-12 A | DUKHCONP2AGNSP004000 SS+6d | 100% |  |
| DUKHCONP2AGNSP002200 |  | Information Required for Rerouting | 14d | 2012-12-26 A | 2013-01-10 A | DUKHCONP2AGNSP002100 | 100% |  |
| DUKHCONP2AGNSP002300 |  | Preparation & Submission for New Layout | 7d | 2013-01-12 A | 2013-01-19 A | DUKHCONP2AGNSP002200 | 100% |  |
| DUKHCONP2AGNSP002400 |  | Approval for new Layout for rerouting | 14d | 2013-01-20 A | 2013-02-01 A | DUKHCONP2AGNSP002300 | 100% |  |
| DUKHCONP2AGNSP002500 |  | Rerouting Works | 25d | 2013-02-02 A | 2013-03-30 A | DUKHCONP2AGNSP002400 | 100% |  |
|  | 05 | **MOCK UP VILLA** |  | 2013-11-02 | 2014-02-10 |  |  |  |
|  | 15 | **FINISHING WORKS** |  | 2013-11-02 | 2014-02-04 |  |  |  |
|  | 10 | **INTERNAL FINISHES** |  | 2013-11-05 | 2014-02-04 |  |  |  |
|  | 10 | **GROUND FLOOR** |  | 2013-11-05 | 2014-02-04 |  |  |  |
| DUKHCONP2AMKARGF3000 |  | Block work | 6d | 2013-11-05 | 2013-11-11 | DUKHCONP2AZ1STGF2015 SS+21d, DUKHPROGEN00PRDV3010 |  | -57d |
| DUKHCONP2AMKARGF3005 |  | Plastering work | 7d | 2013-11-18 | 2013-11-25 | DUKHCONP2AMKARGF3000, DUKHPROGEN00PRDV3040, DUKHCONP2AMKELGF4000 |  | -51d |
| DUKHCONP2AMKARGF3010 |  | Flooring screed | 7d | 2013-11-21 | 2013-11-28 | DUKHCONP2AMKARGF3005 SS+3d |  | -42d |
| DUKHCONP2AMKARGF3015 |  | Wet area waterproofing & Protection Screed | 5d | 2013-11-25 | 2013-11-30 | DUKHCONP2AMKARGF3005 FF+3d, DUKHCONP2AMKARGF3010 SS+3d |  | -42d |
| DUKHCONP2AMKARGF3020 |  | Ceramic Wall Tiling | 6d | 2013-12-01 | 2013-12-07 | DUKHCONP2AMKPLGF4310, DUKHCONP2AMKARGF3015, DUKHPROGEN00PRDV3120 |  | -37d |
| DUKHCONP2AMKARGF3030 |  | Paint First coat | 5d | 2013-12-04 | 2013-12-09 | DUKHPROGEN00PRDV3320, DUKHCONP2AMKARGF3005 SS+14d |  | -48d |
| DUKHCONP2AMKARGF3025 |  | Porcelain Tile flooring | 6d | 2013-12-08 | 2013-12-14 | DUKHCONP2AMKARGF3010, DUKHPROGEN00PRDV3130, DUKHCONP2AMKARGF3020 |  | -37d |
| DUKHCONP2AMKARGF3040 |  | Cobble Tile flooring | 5d | 2013-12-15 | 2013-12-21 | DUKHCONP2AMKARGF3010, DUKHPROGEN00PRDV3090, DUKHCONP2AMKARGF3025 |  | -11d |
| DUKHCONP2AMKARGF3045 |  | Fixing of Suspension systems | 7d | 2013-12-15 | 2013-12-23 | DUKHCONP2AMKARGF3030, DUKHCONP2AMKARGF3025, DUKHCONP2AMKELGF4010 |  | -37d |
| DUKHCONP2AMKARGF3075 |  | Carpentry & Joinery Works | 10d | 2013-12-16 | 2013-12-28 | DUKHPROGEN00PRDV3570, DUKHPROGEN00PRDV3550, DUKHPROGEN00PRDV3560 |  | 16d |
| DUKHCONP2AMKARGF3035 |  | Slate Tile Flooring & Skirting | 5d | 2013-12-22 | 2013-12-26 | DUKHCONP2AMKARGF3010, DUKHCONP2AMKARGF3040, DUKHPROGEN00PRDV3100 |  | -11d |
| DUKHCONP2AMKARGF3060 |  | Gypsum board false ceiling | 8d | 2013-12-24 | 2014-01-01 | DUKHCONP2AMKARGF3045, DUKHCONP2AMKACGF4600, DUKHPROGEN00PRDV3300 |  | -37d |
| DUKHCONP2AMKARGF3065 |  | Wooden door | 7d | 2014-01-02 | 2014-01-09 | DUKHCONP2AMKARGF3060, DUKHPROGEN00PRDV3490, DUKHPROGEN00PRDV3450 |  | -37d |
| DUKHCONP2AMKARGF3080 |  | Aluminum windows | 7d | 2014-01-11 | 2014-01-18 | DUKHCONP2AMKARGF3065, DUKHPROGEN00PRDV3470 |  | 3d |
| DUKHCONP2AMKARGF3090 |  | Installation of Granite Counter Top | 7d | 2014-01-19 | 2014-01-26 | DUKHCONP2AMKARGF3080, DUKHCONP2AMKARGF3075 |  | 3d |
| DUKHCONP2AMKARGF3095 |  | Final Painting | 7d | 2014-01-28 | 2014-02-04 | DUKHCONP2AMKARGF3090, DUKHCONP2AMKELRF4070, DUKHCONP2AMKARGF3080, DUKHCONP2AMKELRF4075, DUKHCONP2AMKARGF3040, DUKHCONP2AMKACRF4635, DUKHCONP2AMKARGF3030, DUKHCONP2AMKARGF3060, DUKHPROGEN00PRDV3420, DUKHCONP2AMKARGF3035 |  | 35d |
|  | 15 | **EXTERNAL FINISHES** |  | 2013-11-02 | 2013-12-12 |  |  |  |
|  | 10 | **ROOF** |  | 2013-11-02 | 2013-11-28 |  |  |  |
| DUKHCONP2AMKARRF3625 |  | Laying of Pitched Roof | 7d | 2013-11-02 | 2013-11-09 | DUKHPROGEN00PRDV3140, DUKHCONP2AZ1STRF2065 SS+5d, DUKHCONP2AZ1STRF2060 SS+5d |  | -33d |
| DUKHCONP2AMKARRF3630 |  | Leveling Screed for Waterproofing | 2d | 2013-11-10 | 2013-11-11 | DUKHCONP2AMKARRF3625 |  | -33d |
| DUKHCONP2AMKARRF3635 |  | Laying of Waterproofing Membrane | 4d | 2013-11-12 | 2013-11-16 | DUKHCONP2AMKARRF3630 |  | -33d |
| DUKHCONP2AMKARRF3640 |  | Installation of Insulation & Protection | 4d | 2013-11-17 | 2013-11-20 | DUKHCONP2AMKARRF3635 |  | -33d |
| DUKHCONP2AMKARRF3645 |  | Lime Stone Chips & Paving slab Installation | 2d | 2013-11-21 | 2013-11-23 | DUKHCONP2AMKARRF3640 |  | -33d |
| DUKHCONP2AMKARRF3660 |  | Installation of Access Ladder | 5d | 2013-11-24 | 2013-11-28 | DUKHPROGEN00PRDV3400, DUKHCONP2AMKARRF3645 |  | 32d |
|  | 15 | **ELEVATION** |  | 2013-11-24 | 2013-12-12 |  |  |  |
| DUKHCONP2AMKAREL3665 |  | External Plastering | 10d | 2013-11-24 | 2013-12-04 | DUKHCONP2AMKARRF3645, DUKHCONP2AZ1STRF2060 SS+10d |  | -33d |
| DUKHCONP2AMKAREL3680 |  | External Painting | 7d | 2013-12-05 | 2013-12-12 | DUKHCONP2AMKAREL3665 |  | -25d |
|  | 20 | **MEP WORKS** |  | 2013-11-12 | 2014-01-29 |  |  |  |
|  | 10 | **ELECTRICAL WORKS** |  | 2013-11-12 | 2014-01-27 |  |  |  |
|  | 10 | **GROUND FLOOR** |  | 2013-11-12 | 2014-01-13 |  |  |  |
| DUKHCONP2AMKELGF4000 |  | Fixing of wall conduits & switch socket boxes | 5d | 2013-11-12 | 2013-11-17 | DUKHCONP2AMKARGF3000 |  | -51d |
| DUKHCONP2AMKELGF4005 |  | Cable tray & trunking installation | 5d | 2013-11-26 | 2013-12-01 | DUKHCONP2AMKELGF4000, DUKHCONP2AMKARGF3005 |  | -48d |
| DUKHCONP2AMKELGF4010 |  | Installation of wiring & Main Cabling | 5d | 2013-12-02 | 2013-12-07 | DUKHCONP2AMKELGF4005, DUKHPROGEN00PRDV3180 |  | -31d |
| DUKHCONP2AMKELGF4020 |  | Installation of DBS,MCCB Accessories. | 5d | 2014-01-02 | 2014-01-07 | DUKHCONP2AMKELGF4010, DUKHPROGEN00PRDV3170, DUKHCONP2AMKARGF3060 |  | 4d |
| DUKHCONP2AMKELGF4015 |  | Install. of CAMS & Fire Fighting Accessories | 7d | 2014-01-06 | 2014-01-13 | DUKHPROGEN00PRDV3360, DUKHCONP2AMKARGF3060, DUKHCONP2AMKELGF4025 FF, DUKHPROGEN00PRDV3380, DUKHPROGEN00PRDV3370, DUKHPROGEN00PRDV3210, DUKHPROGEN00PRDV3260 |  | 4d |
| DUKHCONP2AMKELGF4025 |  | Installation of Lighting fixtures & Accessories | 5d | 2014-01-08 | 2014-01-13 | DUKHPROGEN00PRDV3190, DUKHCONP2AMKELGF4020, DUKHCONP2AMKARGF3060 |  | 4d |
| DUKHCONP2AMKELGF4030 |  | Installation of Telephone System | 5d | 2014-01-08 | 2014-01-13 | DUKHCONP2AMKARGF3060, DUKHPROGEN00PRDV3270, DUKHPROGEN00PRDV3280, DUKHCONP2AMKELGF4020 |  | 35d |
|  | 20 | **ROOF** |  | 2014-01-14 | 2014-01-27 |  |  |  |
| DUKHCONP2AMKELRF4070 |  | Installation of Isolator | 5d | 2014-01-14 | 2014-01-19 | DUKHCONP2AMKELGF4025, DUKHPROGEN00PRDV3200, DUKHCONP2AMKARRF3645, DUKHCONP2AMKELGF4010, DUKHCONP2AMKELGF4030 |  | 35d |
| DUKHCONP2AMKELRF4075 |  | Installation of TV Dish Antenna | 7d | 2014-01-20 | 2014-01-27 | DUKHCONP2AMKELRF4070, DUKHPROGEN00PRDV3290 |  | 35d |
|  | 15 | **PLUMBING, DRAINAGE & FIRE FIGHTING WORKS** |  | 2013-11-12 | 2014-01-29 |  |  |  |
|  | 10 | **GROUND FLOOR** |  | 2013-11-12 | 2014-01-23 |  |  |  |
| DUKHCONP2AMKPLGF4305 |  | Installation of Plumbing pipes & testing | 5d | 2013-11-12 | 2013-11-17 | DUKHCONP2AMKARGF3000, DUKHPROGEN00PRDV3080 |  | -49d |
| DUKHCONP2AMKPLGF4310 |  | Installation of Drainage pipes &testing | 5d | 2013-11-12 | 2013-11-17 | DUKHCONP2AMKARGF3000, DUKHCONP2AMKPLGF4305 SS |  | -48d |
| DUKHCONP2AMKPLGF4315 |  | Sanitary Fittings & Accessories | 7d | 2014-01-11 | 2014-01-18 | DUKHPROGEN00PRDV3770, DUKHPROGEN00PRDV3150, DUKHCONP2AMKARGF3065, DUKHCONP2AMKPLGF4310, DUKHPROGEN00PRDV3230 |  | -37d |
| DUKHCONP2AMKPLGF4320 |  | Installation of Water Heater | 5d | 2014-01-19 | 2014-01-23 | DUKHCONP2AMKARGF3060, DUKHCONP2AMKPLGF4315 |  | -37d |
|  | 20 | **ROOF** |  | 2014-01-25 | 2014-01-29 |  |  |  |
| DUKHCONP2AMKPLRF4350 |  | Installation of Rain water Pipes | 5d | 2014-01-25 | 2014-01-29 | DUKHCONP2AMKARRF3645, DUKHCONP2AMKPLGF4315, DUKHCONP2AMKPLGF4320, DUKHCONP2AMKPLGF4305, DUKHCONP2AMKPLGF4310 |  | -37d |
|  | 20 | **AC WORKS** |  | 2013-11-26 | 2014-01-26 |  |  |  |

| ID | WBS | Task | Duration | Start | Finish | Predecessors | Complete | Total float |
| --- | --- | --- | --- | --- | --- | --- | --- | --- |
|  | 10 | **GROUND FLOOR** |  | 2013-11-26 | 2014-01-16 |  |  |  |
| DUKHCONP2AMKACGF4600 |  | Installation AC Pipes | 5d | 2013-11-26 | 2013-12-01 | DUKHCONP2AMKARGF3005, DUKHPROGEN00PRDV3160 |  | -22d |
| DUKHCONP2AMKACGF4605 |  | Fixing of Ventilation Equipments | 5d | 2014-01-02 | 2014-01-07 | DUKHCONP2AMKACGF4600, DUKHPROGEN00PRDV3530, DUKHCONP2AMKARGF3060, DUKHPROGEN00PRDV3340 |  | 30d |
| DUKHCONP2AMKACGF4610 |  | Fixing of Split AC | 8d | 2014-01-08 | 2014-01-16 | DUKHCONP2AMKACGF4605, DUKHPROGEN00PRDV3240 |  | 36d |
|  | 20 | **ROOF** |  | 2013-12-02 | 2014-01-26 |  |  |  |
| DUKHCONP2AMKACRF4630 |  | Installation of Refrigerant Pipes | 5d | 2013-12-02 | 2013-12-07 | DUKHCONP2AMKARRF3645, DUKHCONP2AMKACGF4600 |  | 25d |
| DUKHCONP2AMKACRF4635 |  | Installation of Condensing Unit | 8d | 2014-01-18 | 2014-01-26 | DUKHCONP2AMKACGF4610, DUKHCONP2AMKARRF3645, DUKHCONP2AMKACRF4630 |  | 36d |
|  | 25 | **EXTERNAL WORKS** |  | 2013-11-18 | 2014-02-10 |  |  |  |
|  | 10 | **MISCELLANEOUS** |  | 2013-11-18 | 2013-12-19 |  |  |  |
| DUKHCONP2AMKMSEX5000 |  | Construction of Manholes | 7d | 2013-11-18 | 2013-11-25 | DUKHCONP2AMKPLGF4310 |  | -48d |
| DUKHCONP2AMKMSEX5005 |  | Construction of Soak pit, Chambers | 7d | 2013-11-26 | 2013-12-03 | DUKHCONP2AMKMSEX5000 |  | -48d |
| DUKHCONP2AMKMSEX5015 |  | Construction of grease Trap | 7d | 2013-12-04 | 2013-12-11 | DUKHCONP2AMKMSEX5005 |  | -48d |
| DUKHCONP2AMKMSEX5020 |  | Construction Entrance Ramp | 7d | 2013-12-05 | 2013-12-12 | DUKHCONP2AMKAREL3665 |  | -33d |
| DUKHCONP2AMKMSEX5025 |  | SS.Handrails and Balustrades | 5d | 2013-12-14 | 2013-12-19 | DUKHCONP2AMKMSEX5020, DUKHCONP2AMKAREL3680 |  | -25d |
|  | 15 | **WATER TANK ENCLOSURE** |  | 2013-12-04 | 2014-02-10 |  |  |  |
| DUKHCONP2AMKWEEX5030 |  | Excavation | 4d | 2013-12-04 | 2013-12-08 | DUKHCONP2AMKMSEX5005, DUKHCONP2AMKMSEX5015 SS, DUKHCONP2AMKMSEX5000 |  | -48d |
| DUKHCONP2AMKWEEX5035 |  | Construction of Raft | 7d | 2013-12-09 | 2013-12-16 | DUKHCONP2AMKWEEX5030 |  | -38d |
| DUKHCONP2AMKWEEX5040 |  | Block works & Plastering | 7d | 2013-12-17 | 2013-12-25 | DUKHCONP2AMKWEEX5035 |  | -37d |
| DUKHCONP2AMKWEEX5045 |  | Flooring & Painting | 7d | 2013-12-26 | 2014-01-02 | DUKHCONP2AMKWEEX5040 |  | -34d |
| DUKHCONP2AMKWEEX5050 |  | Installation of Steel Gate | 5d | 2014-01-04 | 2014-01-08 | DUKHPROGEN00PRDV3500, DUKHPROGEN00PRDV3510, DUKHPROGEN00PRDV3610, DUKHCONP2AMKWEEX5045 |  | -29d |
| DUKHCONP2AMKWEEX5060 |  | Structural steel & SS Shed cover installation | 10d | 2014-01-09 | 2014-01-20 | DUKHPROGEN00PRDV3620, DUKHCONP2AMKWEEX5050, DUKHCONP2AMKMSEX5025, DUKHPROGEN00PRDV3630 |  | -29d |
| DUKHCONP2AMKWEEX5065 |  | Install. of Water Tank,Chiller,Pump & Meter | 10d | 2014-01-30 | 2014-02-10 | DUKHPROGEN00PRDV3220, DUKHPROGEN00PRDV3330, DUKHPROGEN00PRDV3520, DUKHPROGEN00PRDV3640, DUKHCONP2AMKWEEX5060, DUKHCONP2AMKMSEX5015, DUKHPROGEN00PRDV3680, DUKHCONP2AMKPLRF4350 |  | -37d |
|  | 20 | **HARD LANDSCAPING** |  | 2013-12-21 | 2014-01-06 |  |  |  |
| DUKHCONP2AMKHDEX5090 |  | kerb works | 5d | 2013-12-21 | 2013-12-25 | DUKHCONP2AMKMSEX5020, DUKHPROGEN00PRDV3600, DUKHCONP2AMKMSEX5025 |  | -23d |
| DUKHCONP2AMKHDEX5095 |  | Cobble Stone Works | 5d | 2013-12-26 | 2013-12-31 | DUKHCONP2AMKHDEX5090 |  | -18d |
| DUKHCONP2AMKHDEX5100 |  | Interlock works | 5d | 2014-01-01 | 2014-01-06 | DUKHPROGEN00PRDV3660, DUKHCONP2AMKHDEX5095 |  | -10d |
|  | 25 | **SOFT LANDSCAPING** |  | 2014-01-07 | 2014-01-22 |  |  |  |
| DUKHCONP2AMKSLEX5105 |  | Laying of Grass/ green area | 7d | 2014-01-07 | 2014-01-14 | DUKHPROGEN00PRDV3670, DUKHPROGEN00PRDV3790, DUKHCONP2AMKHDEX5100 |  | -7d |
| DUKHCONP2AMKSLEX5110 |  | Laying of Palm tree | 7d | 2014-01-15 | 2014-01-22 | DUKHCONP2AMKSLEX5105 |  | 36d |
|  | 10 | **ZONE - 1 (3 Twin Villas)** |  | 2013-02-19 | 2014-06-24 |  |  |  |
|  | 10 | **STRUCTURAL WORKS** |  | 2013-02-19 | 2013-11-18 |  |  |  |
|  | 10 | **SUB STRUCTURE** |  | 2013-02-19 | 2013-09-15 |  |  |  |
|  | 10 | **UPTO GRADE SLAB** |  | 2013-02-19 | 2013-09-15 |  |  |  |
| DUKHCONP2AZ1STUG1000 |  | Footing Excavation | 25d | 2013-02-19 A | 2013-03-30 A | DUKHMOBP020000004050, DUKHCONP2AGNSP005000 SS+6d, DUKHCONP2AGNSP002500 SS+14d | 100% |  |
| DUKHCONP2AZ1STUG1005 |  | Footing Antitermite | 20d | 2013-03-30 A | 2013-04-21 A | DUKHCONP2AZ1STUG1000 FF+5d, DUKHCONP2AZ1STUG1000 SS+5d | 100% |  |
| DUKHCONP2AZ1STUG1010 |  | Footing Blinding | 20d | 2013-04-01 A | 2013-04-23 A | DUKHCONP2AZ1STUG1005 FF+2d, DUKHCONP2AZ1STUG1005 SS+2d | 100% |  |
| DUKHCONP2AZ1STUG1015 |  | Footing Waterproofing & Screed | 20d | 2013-04-04 A | 2013-04-27 A | DUKHENGP2ADWSTAP4800, DUKHCONP2AZ1STUG1010 FF+3d, DUKHPROGEN00PRDV3020, DUKHCONP2AZ1STUG1010 SS+3d | 100% |  |
| DUKHCONP2AZ1STUG1020 |  | Construction of foundations | 20d | 2013-04-16 A | 2013-06-27 | DUKHMOBP020000004080, DUKHCONP2AZ1STUG1015 SS+10d, DUKHMOBP020000004060 FF, DUKHMOBP020000004090, DUKHCONP2AZ1STUG1015 FF+10d, DUKHMOBP020000004070 |  | -63d |
| DUKHCONP2AZ1STUG1025 |  | Construction of neck of columns | 20d | 2013-04-25 A | 2013-07-07 | DUKHCONP2AZ1STUG1020 FF+8d, DUKHCONP2AZ1STUG1020 SS+8d |  | -63d |
| DUKHCONP2AZ1STUG1030 |  | Waterproofing Footing & Neck Column | 20d | 2013-06-24 | 2013-07-16 | DUKHCONP2AZ1STUG1025 FF+8d, DUKHCONP2AZ1STUG1025 SS+8d |  | -63d |
| DUKHCONP2AZ1STUG1035 |  | Backfilling Upto Grade Beam Bottom | 20d | 2013-07-06 | 2013-07-28 | DUKHCONP2AZ1STUG1030 FF+10d, DUKHCONP2AZ1STUG1030 SS+10d |  | -63d |
| DUKHCONP2AZ1STUG1040 |  | Construction of Grade Beams | 25d | 2013-07-17 | 2013-08-18 | DUKHENGP2ADWSTAP4810, DUKHCONP2AZ1STUG1035 SS+10d, DUKHCONP2AZ1STUG1035 FF+10d |  | -63d |
| DUKHCONP2AZ1STUG1045 |  | Construction of slab on grade | 25d | 2013-08-18 | 2013-09-15 | DUKHCONP2AZ1PLUG4300 SS+8d, DUKHCONP2AZ1PLUG4300 FF+8d, DUKHCONP2AZ1STUG1040 SS+10d, DUKHENGP2ADWSTAP4810, DUKHCONP2AZ1STUG1040 FF+10d |  | -63d |
|  | 15 | **SUPERSTRUCTURE** |  | 2013-09-04 | 2013-11-18 |  |  |  |
|  | 10 | **GROUND FLOOR** |  | 2013-09-04 | 2013-10-28 |  |  |  |
| DUKHCONP2AZ1STGF2000 |  | Column-Rebar & Formwork | 20d | 2013-09-04 | 2013-09-26 | DUKHCONP2AZ1STUG1045 FF+10d, DUKHENGP2ADWSTAP4820, DUKHCONP2AZ1STUG1045 SS+10d |  | -63d |
| DUKHCONP2AZ1STGF2005 |  | Column-Concrete | 15d | 2013-09-15 | 2013-10-01 | DUKHCONP2AZ1STGF2000 SS+7d, DUKHCONP2AZ1STGF2000 FF+4d |  | -63d |
| DUKHCONP2AZ1STGF2010 |  | Beam, Stairs ,Slab-Rebar & Formwork | 25d | 2013-09-23 | 2013-10-23 | DUKHCONP2AZ1STGF2005 FF+7d, DUKHCONP2AZ1STGF2005 SS+7d, DUKHENGP2ADWSTAP4830 |  | -63d |
| DUKHCONP2AZ1STGF2015 |  | Beam, Stairs ,Slab-Concrete | 15d | 2013-10-09 | 2013-10-28 | DUKHCONP2AZ1STGF2010 FF+4d, DUKHCONP2AZ1STGF2010 SS+10d |  | -63d |
|  | 20 | **ROOF** |  | 2013-10-20 | 2013-11-18 |  |  |  |
| DUKHCONP2AZ1STRF2060 |  | Construction of Parapets | 20d | 2013-10-20 | 2013-11-11 | DUKHCONP2AZ1STGF2015 SS+7d, DUKHCONP2AZ1STGF2015 FF+7d |  | -63d |
| DUKHCONP2AZ1STRF2065 |  | Construction of up stands/Plinth | 20d | 2013-10-27 | 2013-11-18 | DUKHCONP2AZ1STRF2060 FF+6d, DUKHCONP2AZ1STRF2060 SS+6d |  | -33d |
|  | 15 | **FINISHING WORKS** |  | 2013-11-10 | 2014-05-20 |  |  |  |
|  | 10 | **INTERNAL FINISHES** |  | 2013-11-12 | 2014-05-20 |  |  |  |
|  | 10 | **GROUND FLOOR** |  | 2013-11-12 | 2014-05-20 |  |  |  |
| DUKHCONP2AZ1ARGF3000 |  | Block work | 25d | 2013-11-12 | 2013-12-10 | DUKHCONP2AMKARGF3000, DUKHCONP2AZ1STGF2015 SS+21d, DUKHCONP2AZ1STGF2015 FF+21d |  | -57d |
| DUKHCONP2AZ1ARGF3005 |  | Plastering work | 25d | 2013-12-03 | 2014-01-01 | DUKHCONP2AZ1PLGF4305 FF+5d, DUKHCONP2AZ1ARGF3000 SS+8d, DUKHCONP2AMKARGF3005, DUKHCONP2AZ1ELGF4000 FF+5d, DUKHCONP2AZ1ELGF4000 SS+5d, DUKHCONP2AZ1ARGF3000 FF+8d, DUKHCONP2AZ1PLGF4305 SS+5d |  | -57d |
| DUKHCONP2AZ1ARGF3010 |  | Flooring screed | 20d | 2013-12-15 | 2014-01-07 | DUKHCONP2AZ1ARGF3005 SS+5d, DUKHCONP2AMKARGF3010, DUKHCONP2AZ1ARGF3005 FF+5d |  | -38d |
| DUKHCONP2AZ1ARGF3015 |  | Wet area waterproofing & Protection Screed | 20d | 2013-12-17 | 2014-01-09 | DUKHCONP2AZ1ARGF3005 SS+7d, DUKHCONP2AMKARGF3015, DUKHCONP2AZ1ARGF3005 FF+7d |  | -56d |
| DUKHCONP2AZ1ARGF3030 |  | Paint First coat | 20d | 2013-12-22 | 2014-01-13 | DUKHCONP2AZ1ARGF3005 FF+10d, DUKHCONP2AZ1ARGF3005 SS+10d, DUKHCONP2AMKARGF3030 |  | -57d |
| DUKHCONP2AZ1ARGF3020 |  | Ceramic Wall Tiling | 15d | 2014-01-06 | 2014-01-22 | DUKHCONP2AZ1PLGF4305 FF+11d, DUKHCONP2AZ1PLGF4310 SS+5d, DUKHCONP2AZ1ARGF3015 FF+11d, DUKHCONP2AZ1PLGF4310 FF+5d, DUKHCONP2AMKARGF3020, DUKHCONP2AZ1ARGF3015 SS+11d, DUKHCONP2AZ1PLGF4305 SS+11d |  | -56d |
| DUKHCONP2AZ1ARGF3025 |  | Porcelain Tile flooring | 20d | 2014-01-22 | 2014-02-15 | DUKHCONP2AZ1ARGF3010 FF+14d, DUKHCONP2AZ1ARGF3020 FF+14d, DUKHCONP2AZ1ARGF3020 SS+14d, DUKHCONP2AMKARGF3025, DUKHCONP2AZ1ARGF3010 SS+14d |  | -56d |
| DUKHCONP2AZ1ARGF3035 |  | Slate Tile Flooring & Skirting | 18d | 2014-02-09 | 2014-03-02 | DUKHCONP2AZ1ARGF3025 FF+13d, DUKHCONP2AZ1ARGF3025 SS+13d, DUKHCONP2AZ1ARGF3010 FF+13d, DUKHCONP2AZ1ARGF3010 SS+13d, DUKHCONP2AMKARGF3035 |  | -48d |
| DUKHCONP2AZ1ARGF3045 |  | Fixing of Suspension systems | 15d | 2014-02-15 | 2014-03-03 | DUKHCONP2AZ1ARGF3030 FF+14d, DUKHCONP2AZ1ARGF3025 FF+14d, DUKHCONP2AZ1ELGF4010 SS+14d, DUKHCONP2AZ1ELGF4010 FF+14d, DUKHCONP2AZ1ARGF3030 SS+14d, DUKHCONP2AZ1ARGF3025 SS+14d, DUKHCONP2AMKARGF3045 |  | -56d |
| DUKHCONP2AZ1ARGF3040 |  | Cobble Tile flooring | 15d | 2014-03-01 | 2014-03-17 | DUKHCONP2AZ1ARGF3025 FF+13d, DUKHCONP2AZ1ARGF3035 SS+13d, DUKHCONP2AZ1ARGF3025 SS+13d, DUKHCONP2AZ1ARGF3010 FF+13d, DUKHCONP2AZ1ARGF3010 SS+13d, DUKHCONP2AZ1ARGF3035 FF+13d, DUKHCONP2AMKARGF3040 |  | -32d |
| DUKHCONP2AZ1ARGF3060 |  | Gypsum board false ceiling | 20d | 2014-03-03 | 2014-03-25 | DUKHCONP2AMKARGF3060, DUKHCONP2AZ1ARGF3045 SS+14d, DUKHCONP2AZ1ARGF3045 FF+14d, DUKHCONP2AZ1ACGF4600 SS+14d, DUKHCONP2AZ1ACGF4600 FF+14d |  | -56d |
| DUKHCONP2AZ1ARGF3065 |  | Wooden door | 15d | 2014-03-15 | 2014-03-31 | DUKHCONP2AMKARGF3065, DUKHCONP2AZ1ARGF3035 FF+7d, DUKHCONP2AZ1ARGF3060 FF+5d, DUKHCONP2AZ1ARGF3060 SS+5d, DUKHCONP2AZ1ARGF3035 SS+7d |  | -56d |
| DUKHCONP2AZ1ARGF3075 |  | Carpentry & Joinery Works | 18d | 2014-03-20 | 2014-04-09 | DUKHCONP2AZ1ARGF3065 FF+5d, DUKHCONP2AMKARGF3075, DUKHCONP2AZ1ARGF3065 SS+5d |  | -53d |
| DUKHCONP2AZ1ARGF3090 |  | Installation of Granite Counter Top | 15d | 2014-03-31 | 2014-04-16 | DUKHCONP2AZ1ARGF3075 SS+7d, DUKHCONP2AMKARGF3090, DUKHCONP2AZ1ARGF3075 FF+6d |  | -50d |
| DUKHCONP2AZ1ARGF3080 |  | Aluminum windows | 18d | 2014-04-01 | 2014-04-21 | DUKHCONP2AMKARGF3080, DUKHCONP2AZ1ARGF3065 |  | -19d |

| ID | WBS | Task | Duration | Start | Finish | Predecessors | Total float |
| --- | --- | --- | --- | --- | --- | --- | --- |
| DUKHCONP2AZ1ARGF3095 |  | Final Painting | 25d | 2014-04-22 | 2014-05-20 | DUKHCONP2AZ1ARGF3040 FF+13d, DUKHCONP2AZ1ARGF3035 SS+13d, DUKHCONP2AZ1ARGF3065, DUKHCONP2AZ1ARGF3035 FF+13d, DUKHCONP2AZ1ARGF3080 SS+8d, DUKHCONP2AZ1ARGF3090 FF+5d, DUKHCONP2AZ1ARGF3030 FF+10d, DUKHCONP2AZ1ARGF3080 FF+8d, DUKHCONP2AZ1ACGF4610 SS+10d, DUKHCONP2AZ1ARGF3090 SS+5d, DUKHCONP2AZ1ARGF3030 SS+10d, DUKHCONP2AZ1ARGF3060 FF+8d, DUKHCONP2AZ1ARGF3040 SS+13d, DUKHCONP2AZ1ARGF3060 SS+8d, DUKHCONP2AMKARGF3095, DUKHCONP2AZ1ACGF4610 FF+10d | -29d |
|  | 15 | **EXTERNAL FINISHES** |  | 2013-11-10 | 2014-02-08 |  |  |
|  | 10 | **ROOF** |  | 2013-11-10 | 2014-01-11 |  |  |
| DUKHCONP2AZ1ARRF3625 |  | Laying of Pitched Roof | 25d | 2013-11-10 | 2013-12-08 | DUKHCONP2AZ1STRF2060 SS+10d, DUKHCONP2AZ1STRF2060 FF+10d, DUKHCONP2AZ1STRF2065 FF+10d, DUKHCONP2AMKARRF3625, DUKHCONP2AZ1STRF2065 SS+10d, DUKHPROGEN00PRDV3140 | -33d |
| DUKHCONP2AZ1ARRF3630 |  | Leveling Screed for Waterproofing | 18d | 2013-11-24 | 2013-12-14 | DUKHCONP2AZ1ARRF3625 FF+5d, DUKHCONP2AMKARRF3630, DUKHCONP2AZ1ARRF3625 SS+5d | -33d |
| DUKHCONP2AZ1ARRF3635 |  | Laying of Waterproofing Membrane | 18d | 2013-11-30 | 2013-12-21 | DUKHCONP2AMKARRF3635, DUKHCONP2AZ1ARRF3630 SS+5d, DUKHPROGEN00PRDV3050, DUKHCONP2AZ1ARRF3630 FF+5d | -28d |
| DUKHCONP2AZ1ARRF3640 |  | Installation of Insulation & Protection | 18d | 2013-12-04 | 2013-12-25 | DUKHCONP2AZ1ARRF3635 FF+4d, DUKHCONP2AZ1ARRF3635 SS+4d, DUKHCONP2AMKARRF3640 | -28d |
| DUKHCONP2AZ1ARRF3645 |  | Lime Stone Chips & Paving slab Installation | 18d | 2013-12-12 | 2014-01-02 | DUKHCONP2AZ1ARRF3640 FF+7d, DUKHCONP2AZ1ARRF3640 SS+7d, DUKHCONP2AMKARRF3645 | -28d |
| DUKHCONP2AZ1ARRF3660 |  | Installation of Access Ladder | 20d | 2013-12-19 | 2014-01-11 | DUKHCONP2AMKARRF3660, DUKHCONP2AZ1ARRF3645 FF+5d, DUKHCONP2AZ1ARRF3645 SS+5d | 16d |
|  | 15 | **ELEVATION** |  | 2013-12-25 | 2014-02-08 |  |  |
| DUKHCONP2AZ1AREL3665 |  | External Plastering | 25d | 2013-12-25 | 2014-01-22 | DUKHCONP2AZ1STRF2065 SS+7d, DUKHCONP2AZ1ARRF3645 SS+10d, DUKHCONP2AZ1ARRF3645 FF+10d, DUKHCONP2AZ1STRF2065 FF+7d, DUKHCONP2AMKAREL3665 | -28d |
| DUKHCONP2AZ1AREL3680 |  | External Painting | 20d | 2014-01-16 | 2014-02-08 | DUKHCONP2AZ1AREL3665 SS+14d, DUKHCONP2AZ1ARRF3660 FF+10d, DUKHCONP2AMKAREL3680, DUKHCONP2AZ1AREL3665 FF+14d | 2d |
|  | 20 | **MEP WORKS** |  | 2013-08-05 | 2014-05-14 |  |  |
|  | 10 | **ELECTRICAL WORKS** |  | 2013-11-26 | 2014-05-10 |  |  |
|  | 10 | **GROUND FLOOR** |  | 2013-11-26 | 2014-04-14 |  |  |
| DUKHCONP2AZ1ELGF4000 |  | Fixing of wall conduits & switch socket boxes | 20d | 2013-11-26 | 2013-12-19 | DUKHCONP2AZ1ARGF3000 FF+7d, DUKHCONP2AMKELGF4000, DUKHCONP2AZ1ARGF3000 SS+7d | -56d |
| DUKHCONP2AZ1ELGF4005 |  | Cable tray & trunking installation | 20d | 2013-12-04 | 2013-12-28 | DUKHCONP2AZ1ELGF4000 SS+7d, DUKHCONP2AMKELGF4005, DUKHCONP2AZ1ELGF4000 FF+7d | -50d |
| DUKHCONP2AZ1ELGF4010 |  | Installation of wiring & Main Cabling | 20d | 2013-12-12 | 2014-01-05 | DUKHCONP2AZ1ELGF4005 SS+7d, DUKHCONP2AZ1ELGF4005 FF+7d, DUKHCONP2AMKELGF4010 | -22d |
| DUKHCONP2AZ1ELGF4020 |  | Installation of DBS,MCCB Accessories. | 20d | 2014-03-11 | 2014-04-02 | DUKHCONP2AZ1ARGF3060 SS+7d, DUKHCONP2AZ1ELGF4010 FF+5d, DUKHCONP2AZ1ELGF4010 SS+5d, DUKHCONP2AZ1ARGF3060 FF+7d, DUKHCONP2AMKELGF4020 | -15d |
| DUKHCONP2AZ1ELGF4015 |  | Install. of CAMS & Fire Fighting Accessories | 20d | 2014-03-19 | 2014-04-10 | DUKHCONP2AZ1ARGF3060 SS+14d, DUKHCONP2AMKELGF4015, DUKHCONP2AZ1ARGF3060 FF+14d | -50d |
| DUKHCONP2AZ1ELGF4025 |  | Installation of Lighting fixtures & Accessories | 20d | 2014-03-23 | 2014-04-14 | DUKHCONP2AZ1ARGF3060 SS+10d, DUKHCONP2AMKELGF4025, DUKHCONP2AZ1ELGF4020 FF+10d, DUKHCONP2AZ1ARGF3060 FF+10d, DUKHCONP2AZ1ELGF4020 SS+10d | -15d |
| DUKHCONP2AZ1ELGF4030 |  | Installation of Telephone System | 20d | 2014-03-23 | 2014-04-14 | DUKHCONP2AZ1ARGF3060 FF+5d, DUKHCONP2AZ1ELGF4020 SS+10d, DUKHCONP2AZ1ELGF4020 FF+10d, DUKHCONP2AZ1ARGF3060 SS+5d, DUKHCONP2AZ1MSEX5010, DUKHCONP2AMKELGF4030 | -12d |
|  | 20 | **ROOF** |  | 2014-04-06 | 2014-05-10 |  |  |
| DUKHCONP2AZ1ELRF4070 |  | Installation of Isolator | 18d | 2014-04-06 | 2014-04-26 | DUKHCONP2AZ1ELGF4010 FF+10d, DUKHCONP2AZ1ELGF4025 SS+10d, DUKHCONP2AZ1ELGF4025 FF+10d, DUKHCONP2AZ1ELGF4030 FF+7d, DUKHCONP2AZ1ARRF3645 SS+7d, DUKHCONP2AZ1ELGF4030 SS+5d, DUKHCONP2AZ1ARRF3645 FF+7d, DUKHCONP2AMKELRF4070, DUKHCONP2AZ1ELGF4010 SS+10d | -15d |
| DUKHCONP2AZ1ELRF4075 |  | Installation of TV Dish Antenna | 20d | 2014-04-17 | 2014-05-10 | DUKHCONP2AMKELRF4075, DUKHCONP2AZ1ELRF4070 FF+10d, DUKHCONP2AZ1ELRF4070 SS+10d | -15d |
|  | 15 | **PLUMBING, DRAINAGE & FIRE FIGHTING WORKS** |  | 2013-08-05 | 2014-04-29 |  |  |
|  | 10 | **GROUND FLOOR** |  | 2013-08-05 | 2014-04-29 |  |  |
| DUKHCONP2AZ1PLUG4300 |  | Drainage / Storm Pipes in Grade Slab | 20d | 2013-08-05 | 2013-08-31 | DUKHCONP2AZ1STUG1040 FF+11d, DUKHCONP2AZ1STUG1040 SS+10d, DUKHPROGEN00PRDV3060, DUKHPROGEN00PRDV3070 | -63d |
| DUKHCONP2AZ1PLGF4305 |  | Installation of Plumbing pipes & testing | 20d | 2013-11-27 | 2013-12-21 | DUKHCONP2AZ1ARGF3000 SS+8d, DUKHCONP2AZ1ARGF3000 FF+8d, DUKHCONP2AMKPLGF4305 | -57d |
| DUKHCONP2AZ1PLGF4310 |  | Installation of Drainage pipes &testing | 18d | 2013-11-30 | 2013-12-21 | DUKHCONP2AZ1PLGF4305 FF, DUKHCONP2AZ1PLGF4305 SS, DUKHCONP2AZ1ARGF3000 SS+7d, DUKHCONP2AMKPLGF4310, DUKHCONP2AZ1ARGF3000 FF+8d | -33d |
| DUKHCONP2AZ1PLGF4315 |  | Sanitary Fittings & Accessories | 20d | 2014-03-20 | 2014-04-12 | DUKHCONP2AZ1PLGF4310 FF+5d, DUKHCONP2AZ1ARGF3065 SS+5d, DUKHCONP2AMKPLGF4315, DUKHCONP2AZ1PLGF4310 SS+5d, DUKHCONP2AZ1ARGF3065 FF+5d | -56d |
| DUKHCONP2AZ1PLGF4320 |  | Installation of Water Heater | 15d | 2014-04-13 | 2014-04-29 | DUKHCONP2AZ1ARGF3060 SS+5d, DUKHCONP2AZ1ARGF3060 FF+5d, DUKHCONP2AZ1PLGF4315, DUKHCONP2AMKPLGF4320 | -1d |
|  | 20 | **ROOF** |  | 2014-01-30 | 2014-02-17 |  |  |
| DUKHCONP2AZ1PLRF4350 |  | Installation of Rain water Pipes | 15d | 2014-01-30 | 2014-02-17 | DUKHCONP2AZ1AREL3665 SS+7d, DUKHCONP2AZ1AREL3665 FF+7d, DUKHCONP2AZ1ARRF3645 FF+5d, DUKHCONP2AZ1PLGF4305 FF+5d, DUKHCONP2AZ1PLGF4305 SS+5d, DUKHCONP2AZ1PLGF4310 FF+5d, DUKHCONP2AMKPLRF4350, DUKHCONP2AZ1PLGF4310 SS+5d, DUKHCONP2AZ1ARRF3645 SS+5d | -32d |
|  | 20 | **AC WORKS** |  | 2013-12-17 | 2014-05-14 |  |  |
|  | 10 | **GROUND FLOOR** |  | 2013-12-17 | 2014-05-03 |  |  |
| DUKHCONP2AZ1ACGF4600 |  | Installation AC Pipes | 20d | 2013-12-17 | 2014-01-09 | DUKHCONP2AZ1ARGF3005 SS+7d, DUKHCONP2AMKACGF4600, DUKHCONP2AZ1ARGF3005 FF+7d | -35d |
| DUKHCONP2AZ1ACGF4605 |  | Fixing of Ventilation Equipments | 25d | 2014-03-19 | 2014-04-16 | DUKHCONP2AZ1ARGF3060 FF+14d, DUKHCONP2AZ1ACGF4600 SS+10d, DUKHCONP2AZ1ARGF3060 SS+14d, DUKHCONP2AZ1ACGF4600 FF+10d, DUKHCONP2AMKACGF4605 | -29d |
| DUKHCONP2AZ1ACGF4610 |  | Fixing of Split AC | 20d | 2014-04-10 | 2014-05-03 | DUKHCONP2AZ1ACGF4605 SS+14d, DUKHCONP2AMKACGF4610, DUKHCONP2AZ1ACGF4605 FF+14d | -29d |
|  | 20 | **ROOF** |  | 2014-01-04 | 2014-05-14 |  |  |
| DUKHCONP2AZ1ACRF4630 |  | Installation of Refrigerant Pipes | 20d | 2014-01-04 | 2014-01-26 | DUKHCONP2AZ1ACGF4600 FF+14d, DUKHCONP2AZ1ARRF3645 FF+14d, DUKHCONP2AZ1ARRF3645 SS+14d, DUKHCONP2AZ1ACGF4600 SS+14d, DUKHCONP2AMKACRF4630 | 3d |
| DUKHCONP2AZ1ACRF4635 |  | Installation of Condensing Unit | 25d | 2014-04-16 | 2014-05-14 | DUKHCONP2AZ1ACGF4610 SS+5d, DUKHCONP2AZ1ACGF4610 FF+5d, DUKHCONP2AZ1ACRF4630 SS+10d, DUKHCONP2AMKACRF4635, DUKHCONP2AZ1ACRF4630 FF+10d | -24d |
|  | 25 | **EXTERNAL WORKS** |  | 2013-12-05 | 2014-06-24 |  |  |
|  | 10 | **MISCELLANEOUS** |  | 2013-12-05 | 2014-06-24 |  |  |
| DUKHCONP2AZ1MSEX5020 |  | Construction Entrance Ramp | 20d | 2013-12-05 | 2013-12-29 | DUKHCONP2AZ1STRF2065 SS, DUKHCONP2AZ1STRF2065 FF, DUKHCONP2AMKMSEX5020 SS | -33d |
| DUKHCONP2AZ1MSEX5055 |  | Installation Steel Door | 20d | 2013-12-11 | 2014-01-04 | DUKHCONP2AZ1MSEX5020 SS+5d | -28d |
| DUKHCONP2AZ1MSEX5000 |  | Construction of Manholes | 25d | 2013-12-14 | 2014-01-12 | DUKHCONP2AZ1STRF2065 FF+5d, DUKHCONP2AZ1PLGF4310 SS+12d, DUKHCONP2AZ1PLGF4310 FF+10d, DUKHCONP2AZ1STRF2065 SS+5d, DUKHCONP2AMKMSEX5000 | -21d |
| DUKHCONP2AZ1MSEX5025 |  | SS.Handrails and Balustrades | 20d | 2013-12-24 | 2014-01-15 | DUKHCONP2AZ1MSEX5020 FF+10d, DUKHCONP2AMKMSEX5025, DUKHCONP2AZ1MSEX5020 SS+10d, DUKHCONP2AZ1MSEX5055 SS+10d | -28d |
| DUKHCONP2AZ1MSEX5005 |  | Construction of Soak pit, Chambers | 25d | 2013-12-29 | 2014-01-26 | DUKHCONP2AMKMSEX5005, DUKHCONP2AZ1MSEX5000 SS+12d, DUKHCONP2AZ1MSEX5000 FF+12d | -21d |
| DUKHCONP2AZ1MSEX5015 |  | Construction of grease Trap | 20d | 2014-01-18 | 2014-02-09 | DUKHCONP2AZ1MSEX5005 SS+12d, DUKHCONP2AMKMSEX5015, DUKHCONP2AZ1MSEX5005 FF+12d | -21d |
| DUKHCONP2AZ1MSEX5010 |  | Telephone cable laying | 25d | 2014-02-10 | 2014-03-11 | DUKHCONP2AZ1MSEX5015 | -3d |
| DUKHCONP2AZ1MSEX5335 |  | Aluminum Roll-up Shutter with 2m Wall | 25d | 2014-05-27 | 2014-06-24 | DUKHCONI2AZ1BWGL5325 | -34d |
|  | 15 | **WATER TANK ENCLOSURE** |  | 2013-12-09 | 2014-03-16 |  |  |
| DUKHCONP2AZ1WEEX5030 |  | Excavation | 20d | 2013-12-09 | 2014-01-01 | DUKHCONP2AMKWEEX5030, DUKHCONP2AZ1STGF2010 SS | -48d |
| DUKHCONP2AZ1WEEX5035 |  | Construction of Raft | 25d | 2013-12-17 | 2014-01-15 | DUKHCONP2AZ1WEEX5030 SS+5d, DUKHCONP2AZ1WEEX5030 FF+10d, DUKHCONP2AMKWEEX5035 | -38d |
| DUKHCONP2AZ1WEEX5040 |  | Block works & Plastering | 25d | 2013-12-28 | 2014-01-25 | DUKHCONP2AZ1WEEX5035 SS+8d, DUKHCONP2AZ1WEEX5035 FF+8d, DUKHCONP2AMKWEEX5040 | -38d |
| DUKHCONP2AZ1WEEX5045 |  | Flooring & Painting | 25d | 2014-01-08 | 2014-02-05 | DUKHCONP2AZ1WEEX5040 FF+10d, DUKHCONP2AZ1WEEX5040 SS+10d, DUKHCONP2AMKWEEX5045 | -38d |
| DUKHCONP2AZ1WEEX5050 |  | Installation of Steel Gate | 20d | 2014-01-26 | 2014-02-18 | DUKHCONP2AZ1MSEX5025 SS+10d, DUKHCONP2AZ1MSEX5025 FF+10d, DUKHCONP2AMKWEEX5050, DUKHCONP2AZ1WEEX5045 FF+10d, DUKHCONP2AZ1WEEX5045 SS+5d | -38d |
| DUKHCONP2AZ1WEEX5060 |  | Structural steel & SS Shed cover installation | 25d | 2014-02-01 | 2014-03-02 | DUKHCONP2AZ1WEEX5050 FF+10d, DUKHCONP2AZ1WEEX5050 SS+5d, DUKHCONP2AMKWEEX5060 | -38d |
| DUKHCONP2AZ1WEEX5065 |  | Install. of Water Tank,Chiller,Pump & Meter | 25d | 2014-02-13 | 2014-03-13 | DUKHCONP2AZ1PLRF4350 FF+5d, DUKHCONP2AZ1PLRF4350 SS+5d, DUKHCONP2AZ1MSEX5015 FF+5d, DUKHCONP2AZ1WEEX5060 SS+10d, DUKHCONP2AZ1MSEX5015 SS+5d, DUKHCONP2AZ1WEEX5060 FF+10d, DUKHCONP2AMKWEEX5065 | -38d |
| DUKHCONP2AZ1WEEX5070 |  | Installation ladder for water Tank | 20d | 2014-02-22 | 2014-03-16 | DUKHCONP2AZ1WEEX5065 SS+7d | -28d |
|  | 20 | **HARD LANDSCAPING** |  | 2014-01-01 | 2014-02-20 |  |  |
| DUKHCONP2AZ1HDEX5090 |  | kerb works | 20d | 2014-01-01 | 2014-01-23 | DUKHCONP2AMKHDEX5090, DUKHCONP2AZ1MSEX5025 SS+7d, DUKHCONP2AZ1MSEX5020 FF+7d, DUKHCONP2AZ1MSEX5020 SS+7d | -28d |
| DUKHCONP2AZ1HDEX5095 |  | Cobble Stone Works | 20d | 2014-01-13 | 2014-02-04 | DUKHCONP2AZ1HDEX5090 FF+10d, DUKHCONP2AZ1HDEX5090 SS+10d, DUKHCONP2AMKHDEX5095 | -28d |
| DUKHCONP2AZ1HDEX5100 |  | Interlock works | 20d | 2014-01-28 | 2014-02-20 | DUKHCONP2AZ1HDEX5095 SS+13d, DUKHCONP2AZ1HDEX5095 FF+13d, DUKHCONP2AMKHDEX5100 | -28d |
|  | 25 | **SOFT LANDSCAPING** |  | 2014-02-09 | 2014-03-16 |  |  |
| DUKHCONP2AZ1SLEX5105 |  | Laying of Grass/ green area | 20d | 2014-02-09 | 2014-03-04 | DUKHCONP2AZ1HDEX5100 FF+10d, DUKHCONP2AZ1HDEX5100 SS+10d, DUKHCONP2AMKSLEX5105 | -28d |
| DUKHCONP2AZ1SLEX5110 |  | Laying of Palm tree | 20d | 2014-02-22 | 2014-03-16 | DUKHCONP2AZ1SLEX5105 FF+10d, DUKHCONP2AZ1SLEX5105 SS+10d, DUKHCONP2AMKSLEX5110 | 12d |
|  | 30 | **TESTING AND COMMISSIONING** |  | 2014-05-21 | 2014-06-18 |  |  |
| DUKHCONP2AZ1ACTC8000 |  | Pre-Commissioning & Testing of AC Works | 25d | 2014-05-21 | 2014-06-18 | DUKHCONP2AZ1MSEX5005, DUKHCONP2AZ1SLEX5110, DUKHCONP2AMKPLGF4320, DUKHCONP2AMKMSEX5005, DUKHCONP2AZ1HDEX5100, DUKHCONP2AMKWEEX5065, DUKHCONP2AMKAREL3680, DUKHCONP2AZ1AREL3680, DUKHCONP2AMKARGF3095, DUKHCONP2AMKELGF4025, DUKHCONP2AMKELGF4015, DUKHCONP2AMKHDEX5100, DUKHCONP2AZ1SLEX5105, DUKHCONP2AZ1ACRF4635, DUKHCONP2AZ1ARGF3095, DUKHCONP2AMKACRF4635, DUKHCONP2AMKPLRF4350, DUKHCONP2AMKSLEX5105, DUKHCONP2AMKSLEX5110, DUKHCONP2AZ1ARRF3660, DUKHCONP2AMKELRF4075, DUKHCONP2AMKELGF4030 | -4d |

| ID | WBS | Task | Duration | Start | Finish | Predecessors | Complete | Total float |
| --- | --- | --- | --- | --- | --- | --- | --- | --- |
| DUKHCONP2AZ1ELTC8010 |  | Pre-Commissioning & Testing of Electrical Works | 25d | 2014-05-21 | 2014-06-18 | DUKHCONP2AZ1SLEX5110, DUKHCONP2AZ1ARGF3095, DUKHCONP2AZ1ELGF4030, DUKHCONP2AZ1ARRF3660, DUKHCONP2AMKAREL3680, DUKHCONP2AMKACRF4635, DUKHCONP2AMKMSEX5005, DUKHCONP2AMKWEEX5065, DUKHCONP2AZ1SLEX5105, DUKHCONP2AZ1ELGF4015, DUKHCONP2AMKELGF4025, DUKHCONP2AMKPLRF4350, DUKHCONP2AMKSLEX5105, DUKHCONP2AZ1HDEX5100, DUKHCONP2AZ1ELRF4075, DUKHCONP2AMKELGF4030, DUKHCONP2AMKSLEX5110, DUKHCONP2AZ1ELGF4025, DUKHCONP2AMKARGF3095, DUKHCONP2AMKHDEX5100, DUKHCONP2AMKELRF4075, DUKHCONP2AMKPLGF4320, DUKHCONP2AZ1MSEX5005, DUKHCONP2AZ1AREL3680, DUKHCONP2AMKELGF4015 |  | -4d |
| DUKHCONP2AZ1PLTC8005 |  | Pre-Commissioning & Testing of Plumbing Works | 25d | 2014-05-21 | 2014-06-18 | DUKHCONP2AMKACRF4635, DUKHCONP2AZ1AREL3680, DUKHCONP2AMKELGF4015, DUKHCONP2AMKELGF4030, DUKHCONP2AMKSLEX5105, DUKHCONP2AZ1PLGF4320, DUKHCONP2AZ1HDEX5100, DUKHCONP2AZ1PLRF4350, DUKHCONP2AZ1ARRF3660, DUKHCONP2AMKARGF3095, DUKHCONP2AMKAREL3680, DUKHCONP2AMKMSEX5005, DUKHCONP2AZ1SLEX5105, DUKHCONP2AMKELGF4025, DUKHCONP2AMKELRF4075, DUKHCONP2AMKWEEX5065, DUKHCONP2AZ1SLEX5110, DUKHCONP2AMKSLEX5110, DUKHCONP2AZ1MSEX5005, DUKHCONP2AZ1WEEX5065, DUKHCONP2AZ1ARGF3095, DUKHCONP2AMKPLRF4350, DUKHCONP2AMKPLGF4320, DUKHCONP2AMKHDEX5100 |  | -4d |
|  | 15 | **ZONE - 2 (3 Twin Villas)** |  | 2013-03-30 | 2014-07-26 |  |  |  |
|  | 10 | **STRUCTURAL WORKS** |  | 2013-03-30 | 2013-12-11 |  |  |  |
|  | 10 | **SUB STRUCTURE** |  | 2013-03-30 | 2013-10-02 |  |  |  |
|  | 10 | **UPTO GRADE SLAB** |  | 2013-03-30 | 2013-10-02 |  |  |  |
| DUKHCONP2AZ2STUG1000 |  | Footing Excavation | 25d | 2013-03-30 A | 2013-04-27 A | DUKHCONP2AZ1STUG1000 | 100% |  |
| DUKHCONP2AZ2STUG1005 |  | Footing Antitermite | 20d | 2013-04-10 A | 2013-05-02 | DUKHCONP2AZ2STUG1000 SS+5d, DUKHCONP2AZ2STUG1000 FF+5d | 70% | -4d |
| DUKHCONP2AZ2STUG1010 |  | Footing Blinding | 8d | 2013-04-27 | 2013-05-05 | DUKHCONP2AZ2STUG1005 FF+2d, DUKHCONP2AZ2STUG1005 SS+2d |  | -4d |
| DUKHCONP2AZ2STUG1015 |  | Footing Waterproofing & Screed | 8d | 2013-05-02 | 2013-05-11 | DUKHCONP2AZ2STUG1010 SS+5d, DUKHCONP2AZ2STUG1010 FF+5d |  | -4d |
| DUKHCONP2AZ2STUG1020 |  | Construction of foundations | 20d | 2013-06-29 | 2013-07-21 | DUKHCONP2AZ2STUG1015 SS+8d, DUKHCONP2AZ2STUG1015 FF+8d, DUKHCONP2AZ1STUG1020 |  | -45d |
| DUKHCONP2AZ2STUG1025 |  | Construction of neck of columns | 20d | 2013-07-08 | 2013-07-30 | DUKHCONP2AZ2STUG1020 FF+8d, DUKHCONP2AZ2STUG1020 SS+8d |  | -45d |
| DUKHCONP2AZ2STUG1030 |  | Waterproofing Footing & Neck Column | 20d | 2013-07-17 | 2013-08-08 | DUKHCONP2AZ2STUG1025 SS+8d, DUKHCONP2AZ2STUG1025 FF+8d |  | -45d |
| DUKHCONP2AZ2STUG1035 |  | Backfilling Upto Grade Beam Bottom | 20d | 2013-07-29 | 2013-08-24 | DUKHCONP2AZ2STUG1030 SS+10d, DUKHCONP2AZ1STUG1035, DUKHCONP2AZ2STUG1030 FF+10d |  | -45d |
| DUKHCONP2AZ2STUG1040 |  | Construction of Grade Beams | 25d | 2013-08-13 | 2013-09-10 | DUKHCONP2AZ2STUG1035 FF+10d, DUKHCONP2AZ1STUG1040 SS+14d, DUKHCONP2AZ2STUG1035 SS+10d |  | -45d |
| DUKHCONP2AZ2STUG1045 |  | Construction of slab on grade | 25d | 2013-09-04 | 2013-10-02 | DUKHCONP2AZ2PLUG4300 SS+7d, DUKHCONP2AZ2PLUG4300 FF+7d, DUKHCONP2AZ2STUG1040 FF+10d, DUKHCONP2AZ2STUG1040 SS+10d |  | -45d |
|  | 15 | **SUPERSTRUCTURE** |  | 2013-09-28 | 2013-12-11 |  |  |  |
|  | 10 | **GROUND FLOOR** |  | 2013-09-28 | 2013-11-20 |  |  |  |
| DUKHCONP2AZ2STGF2000 |  | Column-Rebar & Formwork | 20d | 2013-09-28 | 2013-10-22 | DUKHCONP2AZ1STGF2000, DUKHCONP2AZ2STUG1045 FF+10d, DUKHCONP2AZ2STUG1045 SS+10d |  | -50d |
| DUKHCONP2AZ2STGF2005 |  | Column-Concrete | 15d | 2013-10-08 | 2013-10-27 | DUKHCONP2AZ2STGF2000 FF+4d, DUKHCONP2AZ2STGF2000 SS+7d |  | -50d |
| DUKHCONP2AZ2STGF2010 |  | Beam, Stairs ,Slab-Rebar & Formwork | 25d | 2013-10-16 | 2013-11-16 | DUKHCONP2AZ2STGF2005 FF+7d, DUKHCONP2AZ2STGF2005 SS+7d |  | -50d |
| DUKHCONP2AZ2STGF2015 |  | Beam, Stairs ,Slab-Concrete | 15d | 2013-11-04 | 2013-11-20 | DUKHCONP2AZ1STGF2015, DUKHCONP2AZ2STGF2010 FF+4d, DUKHCONP2AZ2STGF2010 SS+10d |  | -50d |
|  | 20 | **ROOF** |  | 2013-11-12 | 2013-12-11 |  |  |  |
| DUKHCONP2AZ2STRF2060 |  | Construction of Parapets | 20d | 2013-11-12 | 2013-12-04 | DUKHCONP2AZ2STGF2015 SS+7d, DUKHCONP2AZ2STGF2015 FF+7d, DUKHCONP2AZ1STRF2060 |  | -44d |
| DUKHCONP2AZ2STRF2065 |  | Construction of up stands/Plinth | 20d | 2013-11-19 | 2013-12-11 | DUKHCONP2AZ2STRF2060 FF+6d, DUKHCONP2AZ2STRF2060 SS+6d |  | -21d |
|  | 15 | **FINISHING WORKS** |  | 2013-11-28 | 2014-06-18 |  |  |  |
|  | 10 | **INTERNAL FINISHES** |  | 2013-11-28 | 2014-06-18 |  |  |  |
|  | 10 | **GROUND FLOOR** |  | 2013-11-28 | 2014-06-18 |  |  |  |
| DUKHCONP2AZ2ARGF3000 |  | Block work | 25d | 2013-11-28 | 2013-12-28 | DUKHCONP2AZ1ARGF3000 SS, DUKHCONP2AZ2STGF2015 FF+21d, DUKHCONP2AZ2STGF2015 SS+21d |  | -50d |
| DUKHCONP2AZ2ARGF3005 |  | Plastering work | 25d | 2013-12-19 | 2014-01-16 | DUKHCONP2AZ2PLGF4305 SS+5d, DUKHCONP2AZ2ELGF4000 SS+5d, DUKHCONP2AZ1ARGF3005 SS, DUKHCONP2AZ2PLGF4305 FF+5d, DUKHCONP2AZ2ARGF3000 SS+8d, DUKHCONP2AZ2ARGF3000 FF+8d, DUKHCONP2AZ2ELGF4000 FF+5d |  | -50d |
| DUKHCONP2AZ2ARGF3015 |  | Wet area waterproofing & Protection Screed | 20d | 2014-01-02 | 2014-01-25 | DUKHCONP2AZ2ARGF3005 FF+7d, DUKHCONP2AZ2ARGF3005 SS+7d |  | -49d |
| DUKHCONP2AZ2ARGF3010 |  | Flooring screed | 20d | 2014-01-08 | 2014-01-30 | DUKHCONP2AZ2ARGF3005 SS+5d, DUKHCONP2AZ2ARGF3005 FF+5d, DUKHCONP2AZ1ARGF3010 |  | -38d |
| DUKHCONP2AZ2ARGF3030 |  | Paint First coat | 20d | 2014-01-14 | 2014-02-05 | DUKHCONP2AZ2ARGF3005 SS+10d, DUKHCONP2AZ2ARGF3005 FF+10d, DUKHCONP2AZ1ARGF3030 |  | -57d |
| DUKHCONP2AZ2ARGF3020 |  | Ceramic Wall Tiling | 15d | 2014-01-21 | 2014-02-06 | DUKHCONP2AZ2PLGF4310 SS+5d, DUKHCONP2AZ2PLGF4310 FF+5d, DUKHCONP2AZ2PLGF4305 SS+11d, DUKHCONP2AZ2ARGF3015 SS+11d, DUKHCONP2AZ2PLGF4305 FF+11d, DUKHCONP2AZ2ARGF3015 FF+11d |  | -49d |
| DUKHCONP2AZ2ARGF3025 |  | Porcelain Tile flooring | 20d | 2014-02-16 | 2014-03-10 | DUKHCONP2AZ2ARGF3010 FF+14d, DUKHCONP2AZ1ARGF3025, DUKHCONP2AZ2ARGF3020 FF+14d, DUKHCONP2AZ2ARGF3010 SS+14d, DUKHCONP2AZ2ARGF3020 SS+14d |  | -56d |
| DUKHCONP2AZ2ARGF3035 |  | Slate Tile Flooring & Skirting | 18d | 2014-03-05 | 2014-03-25 | DUKHCONP2AZ2ARGF3010 FF+13d, DUKHCONP2AZ2ARGF3010 SS+13d, DUKHCONP2AZ2ARGF3025 SS+13d, DUKHCONP2AZ1ARGF3035, DUKHCONP2AZ2ARGF3025 FF+13d |  | -50d |
| DUKHCONP2AZ2ARGF3045 |  | Fixing of Suspension systems | 15d | 2014-03-10 | 2014-03-26 | DUKHCONP2AZ2ELGF4010 SS+14d, DUKHCONP2AZ2ARGF3030 SS+14d, DUKHCONP2AZ2ELGF4010 FF+14d, DUKHCONP2AZ2ARGF3030 FF+14d, DUKHCONP2AZ2ARGF3025 FF+14d, DUKHCONP2AZ2ARGF3025 SS+14d |  | -56d |
| DUKHCONP2AZ2ARGF3040 |  | Cobble Tile flooring | 15d | 2014-03-24 | 2014-04-09 | DUKHCONP2AZ2ARGF3010 SS+13d, DUKHCONP2AZ2ARGF3035 FF+13d, DUKHCONP2AZ2ARGF3025 FF+13d, DUKHCONP2AZ2ARGF3025 SS+13d, DUKHCONP2AZ2ARGF3035 SS+13d, DUKHCONP2AZ1ARGF3040, DUKHCONP2AZ2ARGF3010 FF+13d |  | -37d |
| DUKHCONP2AZ2ARGF3060 |  | Gypsum board false ceiling | 20d | 2014-03-26 | 2014-04-17 | DUKHCONP2AZ2ARGF3045 FF+14d, DUKHCONP2AZ2ACGF4600 FF+14d, DUKHCONP2AZ2ACGF4600 SS+14d, DUKHCONP2AZ2ARGF3045 SS+14d, DUKHCONP2AZ1ARGF3060 |  | -56d |
| DUKHCONP2AZ2ARGF3065 |  | Wooden door | 15d | 2014-04-07 | 2014-04-23 | DUKHCONP2AZ2ARGF3060 SS+5d, DUKHCONP2AZ2ARGF3035 FF+7d, DUKHCONP2AZ2ARGF3035 SS+7d, DUKHCONP2AZ2ARGF3060 FF+5d |  | -56d |
| DUKHCONP2AZ2ARGF3075 |  | Carpentry & Joinery Works | 18d | 2014-04-13 | 2014-05-03 | DUKHCONP2AZ2ARGF3065 FF+5d, DUKHCONP2AZ1ARGF3075, DUKHCONP2AZ2ARGF3065 SS+5d |  | -55d |
| DUKHCONP2AZ2ARGF3090 |  | Installation of Granite Counter Top | 15d | 2014-04-23 | 2014-05-10 | DUKHCONP2AZ2ARGF3075 FF+6d, DUKHCONP2AZ2ARGF3075 SS+7d, DUKHCONP2AZ1ARGF3090 |  | -55d |
| DUKHCONP2AZ2ARGF3080 |  | Aluminum windows | 18d | 2014-04-24 | 2014-05-14 | DUKHCONP2AZ2ARGF3065, DUKHCONP2AZ1ARGF3080 |  | -14d |
| DUKHCONP2AZ2ARGF3095 |  | Final Painting | 25d | 2014-05-21 | 2014-06-18 | DUKHCONP2AZ2ACGF4610 SS+10d, DUKHCONP2AZ2ARGF3040 SS+13d, DUKHCONP2AZ2ARGF3035 SS+13d, DUKHCONP2AZ2ARGF3065, DUKHCONP2AZ2ARGF3035 FF+13d, DUKHCONP2AZ2ARGF3090 SS+5d, DUKHCONP2AZ2ACGF4610 FF+10d, DUKHCONP2AZ2ARGF3030 SS+10d, DUKHCONP2AZ2ARGF3080 SS+8d, DUKHCONP2AZ2ARGF3080 FF+8d, DUKHCONP2AZ1ARGF3095, DUKHCONP2AZ2ARGF3040 FF+13d, DUKHCONP2AZ2ARGF3060 SS+8d, DUKHCONP2AZ2ARGF3090 FF+5d, DUKHCONP2AZ2ARGF3030 FF+10d, DUKHCONP2AZ2ARGF3060 FF+8d |  | -29d |
|  | 15 | **EXTERNAL FINISHES** |  | 2013-12-15 | 2014-03-16 |  |  |  |
|  | 10 | **ROOF** |  | 2013-12-15 | 2014-02-16 |  |  |  |
| DUKHCONP2AZ2ARRF3625 |  | Laying of Pitched Roof | 25d | 2013-12-15 | 2014-01-13 | DUKHCONP2AZ2STRF2060 FF+10d, DUKHCONP2AZ2STRF2060 SS+10d, DUKHCONP2AZ2STRF2065 SS+10d, DUKHCONP2AZ2STRF2065 FF+10d, DUKHCONP2AZ1ARRF3630 |  | -33d |
| DUKHCONP2AZ2ARRF3630 |  | Leveling Screed for Waterproofing | 18d | 2013-12-30 | 2014-01-19 | DUKHCONP2AZ2ARRF3625 SS+5d, DUKHCONP2AZ2ARRF3625 FF+5d |  | -33d |
| DUKHCONP2AZ2ARRF3635 |  | Laying of Waterproofing Membrane | 18d | 2014-01-05 | 2014-01-25 | DUKHCONP2AZ2ARRF3630 FF+5d, DUKHCONP2AZ2ARRF3630 SS+5d |  | -33d |
| DUKHCONP2AZ2ARRF3640 |  | Installation of Insulation & Protection | 18d | 2014-01-09 | 2014-01-29 | DUKHCONP2AZ2ARRF3635 FF+4d, DUKHCONP2AZ2ARRF3635 SS+4d, DUKHCONP2AZ1ARRF3645 |  | -33d |
| DUKHCONP2AZ2ARRF3645 |  | Lime Stone Chips & Paving slab Installation | 18d | 2014-01-18 | 2014-02-06 | DUKHCONP2AZ2ARRF3640 FF+7d, DUKHCONP2AZ2ARRF3640 SS+7d |  | -33d |
| DUKHCONP2AZ2ARRF3660 |  | Installation of Access Ladder | 20d | 2014-01-23 | 2014-02-16 | DUKHCONP2AZ2ARRF3645 SS+5d, DUKHCONP2AZ1ARRF3660, DUKHCONP2AZ2ARRF3645 FF+5d |  | 6d |
|  | 15 | **ELEVATION** |  | 2014-01-29 | 2014-03-16 |  |  |  |
| DUKHCONP2AZ2AREL3665 |  | External Plastering | 25d | 2014-01-29 | 2014-02-27 | DUKHCONP2AZ2STRF2065 FF+7d, DUKHCONP2AZ2ARRF3645 FF+10d, DUKHCONP2AZ2STRF2065 SS+7d, DUKHCONP2AZ1AREL3665, DUKHCONP2AZ2ARRF3645 SS+10d |  | -33d |
| DUKHCONP2AZ2AREL3680 |  | External Painting | 20d | 2014-02-22 | 2014-03-16 | DUKHCONP2AZ2AREL3665 FF+14d, DUKHCONP2AZ2ARRF3660 FF+10d, DUKHCONP2AZ1AREL3680, DUKHCONP2AZ2AREL3665 SS+14d |  | -8d |
|  | 20 | **MEP WORKS** |  | 2013-08-27 | 2014-06-12 |  |  |  |
|  | 10 | **ELECTRICAL WORKS** |  | 2013-12-12 | 2014-06-02 |  |  |  |
|  | 10 | **GROUND FLOOR** |  | 2013-12-12 | 2014-05-07 |  |  |  |
| DUKHCONP2AZ2ELGF4000 |  | Fixing of wall conduits & switch socket boxes | 20d | 2013-12-12 | 2014-01-05 | DUKHCONP2AZ2ARGF3000 FF+7d, DUKHCONP2AZ2ARGF3000 SS+7d |  | -50d |
| DUKHCONP2AZ2ELGF4005 |  | Cable tray & trunking installation | 20d | 2013-12-29 | 2014-01-20 | DUKHCONP2AZ1ELGF4005, DUKHCONP2AZ2ELGF4000 FF+7d, DUKHCONP2AZ2ELGF4000 SS+7d |  | -50d |
| DUKHCONP2AZ2ELGF4010 |  | Installation of wiring & Main Cabling | 20d | 2014-01-06 | 2014-01-28 | DUKHCONP2AZ2ELGF4005 FF+7d, DUKHCONP2AZ2ELGF4005 SS+7d |  | -22d |
| DUKHCONP2AZ2ELGF4020 |  | Installation of DBS,MCCB Accessories. | 20d | 2014-04-03 | 2014-04-26 | DUKHCONP2AZ2ELGF4010 FF+5d, DUKHCONP2AZ2ELGF4010 SS+5d, DUKHCONP2AZ2ARGF3060 FF+7d, DUKHCONP2AZ1ELGF4020, DUKHCONP2AZ2ARGF3060 SS+7d |  | -15d |
| DUKHCONP2AZ2ELGF4015 |  | Install. of CAMS & Fire Fighting Accessories | 20d | 2014-04-12 | 2014-05-04 | DUKHCONP2AZ1ELGF4015, DUKHCONP2AZ2ARGF3060 SS+14d, DUKHCONP2AZ2ARGF3060 FF+14d |  | -50d |
| DUKHCONP2AZ2ELGF4025 |  | Installation of Lighting fixtures & Accessories | 20d | 2014-04-15 | 2014-05-07 | DUKHCONP2AZ2ELGF4020 SS+10d, DUKHCONP2AZ2ELGF4020 FF+10d, DUKHCONP2AZ2ARGF3060 FF+10d, DUKHCONP2AZ2ARGF3060 SS+10d |  | -15d |
| DUKHCONP2AZ2ELGF4030 |  | Installation of Telephone System | 20d | 2014-04-15 | 2014-05-07 | DUKHCONP2AZ2MSEX5010, DUKHCONP2AZ1ELGF4030, DUKHCONP2AZ2ELGF4020 FF+10d, DUKHCONP2AZ2ELGF4020 SS+10d, DUKHCONP2AZ2ARGF3060 FF+5d, DUKHCONP2AZ2ARGF3060 SS+5d |  | -12d |
|  | 20 | **ROOF** |  | 2014-04-29 | 2014-06-02 |  |  |  |
| DUKHCONP2AZ2ELRF4070 |  | Installation of Isolator | 18d | 2014-04-29 | 2014-05-19 | DUKHCONP2AZ2ELGF4010 SS+10d, DUKHCONP2AZ2ELGF4010 FF+10d, DUKHCONP2AZ2ELGF4025 SS+10d, DUKHCONP2AZ2ELGF4030 SS+5d, DUKHCONP2AZ2ARRF3645 SS+7d, DUKHCONP2AZ2ELGF4025 FF+10d, DUKHCONP2AZ2ARRF3645 FF+7d, DUKHCONP2AZ2ELGF4030 FF+7d |  | -15d |
| DUKHCONP2AZ2ELRF4075 |  | Installation of TV Dish Antenna | 20d | 2014-05-11 | 2014-06-02 | DUKHCONP2AZ1ELRF4075, DUKHCONP2AZ2ELRF4070 SS+10d, DUKHCONP2AZ2ELRF4070 FF+10d |  | -15d |
|  | 15 | **PLUMBING, DRAINAGE & FIRE FIGHTING WORKS** |  | 2013-08-27 | 2014-05-17 |  |  |  |
|  | 10 | **GROUND FLOOR** |  | 2013-08-27 | 2014-05-17 |  |  |  |

| ID | WBS | Task | Duration | Start | Finish | Predecessors | Total float |
| --- | --- | --- | --- | --- | --- | --- | --- |
| DUKHCONP2AZ2PLUG4300 |  | Drainage / Storm Pipes in Grade Slab | 20d | 2013-08-27 | 2013-09-18 | DUKHCONP2AZ2STUG1040 FF+7d, DUKHCONP2AZ2STUG1040 SS+7d | -45d |
| DUKHCONP2AZ2PLGF4305 |  | Installation of Plumbing pipes & testing | 20d | 2013-12-12 | 2014-01-05 | DUKHCONP2AZ2ARGF3000 FF+7d, DUKHCONP2AZ2ARGF3000 SS+7d | -50d |
| DUKHCONP2AZ2PLGF4310 |  | Installation of Drainage pipes &testing | 18d | 2013-12-22 | 2014-01-11 | DUKHCONP2AZ2ARGF3000 FF+7d, DUKHCONP2AZ2PLGF4305 SS, DUKHCONP2AZ1PLGF4310, DUKHCONP2AZ2PLGF4305 FF, DUKHCONP2AZ2ARGF3000 SS+7d | -31d |
| DUKHCONP2AZ2PLGF4315 |  | Sanitary Fittings & Accessories | 20d | 2014-04-13 | 2014-05-05 | DUKHCONP2AZ2ARGF3065 FF+5d, DUKHCONP2AZ2PLGF4310 SS+5d, DUKHCONP2AZ1PLGF4315, DUKHCONP2AZ2PLGF4310 FF+5d, DUKHCONP2AZ2ARGF3065 SS+5d | -56d |
| DUKHCONP2AZ2PLGF4320 |  | Installation of Water Heater | 15d | 2014-04-30 | 2014-05-17 | DUKHCONP2AZ2PLGF4315 FF+5d, DUKHCONP2AZ1PLGF4320, DUKHCONP2AZ2PLGF4315 SS+5d, DUKHCONP2AZ2ARGF3060 SS+5d, DUKHCONP2AZ2ARGF3060 FF+5d | -1d |
|  | 20 | **ROOF** |  | 2014-02-19 | 2014-03-08 |  |  |
| DUKHCONP2AZ2PLRF4350 |  | Installation of Rain water Pipes | 15d | 2014-02-19 | 2014-03-08 | DUKHCONP2AZ2PLGF4310 FF+5d, DUKHCONP2AZ2PLGF4310 SS+5d, DUKHCONP2AZ1PLRF4350, DUKHCONP2AZ2ARRF3645 SS+5d, DUKHCONP2AZ2ARRF3645 FF+5d, DUKHCONP2AZ2AREL3665 SS+7d, DUKHCONP2AZ2PLGF4305 SS+5d, DUKHCONP2AZ2AREL3665 FF+7d, DUKHCONP2AZ2PLGF4305 FF+5d | -23d |
|  | 20 | **AC WORKS** |  | 2014-01-11 | 2014-06-12 |  |  |
|  | 10 | **GROUND FLOOR** |  | 2014-01-11 | 2014-05-26 |  |  |
| DUKHCONP2AZ2ACGF4600 |  | Installation AC Pipes | 20d | 2014-01-11 | 2014-02-02 | DUKHCONP2AZ1ACGF4600, DUKHCONP2AZ2ARGF3005 FF+7d, DUKHCONP2AZ2ARGF3005 SS+7d | -35d |
| DUKHCONP2AZ2ACGF4605 |  | Fixing of Ventilation Equipments | 25d | 2014-04-12 | 2014-05-10 | DUKHCONP2AZ2ACGF4600 SS+10d, DUKHCONP2AZ2ARGF3060 SS+14d, DUKHCONP2AZ2ARGF3060 FF+14d, DUKHCONP2AZ2ACGF4600 FF+10d | -24d |
| DUKHCONP2AZ2ACGF4610 |  | Fixing of Split AC | 20d | 2014-05-04 | 2014-05-26 | DUKHCONP2AZ2ACGF4605 SS+14d, DUKHCONP2AZ2ACGF4605 FF+14d | -24d |
|  | 20 | **ROOF** |  | 2014-02-03 | 2014-06-12 |  |  |
| DUKHCONP2AZ2ACRF4630 |  | Installation of Refrigerant Pipes | 20d | 2014-02-03 | 2014-02-26 | DUKHCONP2AZ2ARRF3645 FF+14d, DUKHCONP2AZ2ACGF4600 FF+14d, DUKHCONP2AZ2ARRF3645 SS+14d, DUKHCONP2AZ2ACGF4600 SS+14d, DUKHCONP2AZ1ACRF4630 | -3d |
| DUKHCONP2AZ2ACRF4635 |  | Installation of Condensing Unit | 25d | 2014-05-15 | 2014-06-12 | DUKHCONP2AZ1ACRF4635, DUKHCONP2AZ2ACRF4630 SS+10d, DUKHCONP2AZ2ACGF4610 FF+5d, DUKHCONP2AZ2ACRF4630 FF+10d, DUKHCONP2AZ2ACGF4610 SS+5d | -24d |
|  | 25 | **EXTERNAL WORKS** |  | 2013-12-30 | 2014-07-26 |  |  |
|  | 10 | **MISCELLANEOUS** |  | 2013-12-30 | 2014-07-26 |  |  |
| DUKHCONP2AZ2MSEX5020 |  | Construction Entrance Ramp | 20d | 2013-12-30 | 2014-01-21 | DUKHCONP2AZ2STRF2065 FF, DUKHCONP2AZ2STRF2065 SS, DUKHCONP2AZ1MSEX5020 | -33d |
| DUKHCONP2AZ2MSEX5055 |  | Installation Steel Door | 20d | 2014-01-11 | 2014-02-02 | DUKHCONP2AZ2MSEX5020 SS+10d | -33d |
| DUKHCONP2AZ2MSEX5000 |  | Construction of Manholes | 25d | 2014-01-13 | 2014-02-10 | DUKHCONP2AZ2STRF2065 FF+5d, DUKHCONP2AZ2STRF2065 SS+5d, DUKHCONP2AZ1MSEX5000, DUKHCONP2AZ2PLGF4310 SS+10d, DUKHCONP2AZ2PLGF4310 FF+10d | -21d |
| DUKHCONP2AZ2MSEX5025 |  | SS.Handrails and Balustrades | 20d | 2014-01-22 | 2014-02-15 | DUKHCONP2AZ2MSEX5020 FF+10d, DUKHCONP2AZ1MSEX5025, DUKHCONP2AZ2MSEX5020 SS+10d, DUKHCONP2AZ2MSEX5055 SS+10d | -33d |
| DUKHCONP2AZ2MSEX5005 |  | Construction of Soak pit, Chambers | 25d | 2014-01-27 | 2014-02-25 | DUKHCONP2AZ2MSEX5000 FF+12d, DUKHCONP2AZ2MSEX5000 SS+12d | -21d |
| DUKHCONP2AZ2MSEX5015 |  | Construction of grease Trap | 20d | 2014-02-17 | 2014-03-11 | DUKHCONP2AZ2MSEX5005 FF+12d, DUKHCONP2AZ2MSEX5005 SS+12d | -21d |
| DUKHCONP2AZ2MSEX5010 |  | Telephone cable laying | 25d | 2014-03-12 | 2014-04-09 | DUKHCONP2AZ2MSEX5015 | -8d |
| DUKHCONP2AZ2MSEX5335 |  | Aluminum Roll-up Shutter with 2m Wall | 25d | 2014-06-28 | 2014-07-26 | DUKHCONI2AZ2BWGL5325 SS+10d, DUKHCONP2AZ1MSEX5335 | -36d |
|  | 15 | **WATER TANK ENCLOSURE** |  | 2014-01-02 | 2014-04-14 |  |  |
| DUKHCONP2AZ2WEEX5030 |  | Excavation | 20d | 2014-01-02 | 2014-01-25 | DUKHCONP2AZ1WEEX5030, DUKHCONP2AZ2STRF2060 FF+5d, DUKHCONP2AZ2STRF2060 SS+5d | -48d |
| DUKHCONP2AZ2WEEX5035 |  | Construction of Raft | 25d | 2014-01-08 | 2014-02-05 | DUKHCONP2AZ2WEEX5030 SS+5d, DUKHCONP2AZ2WEEX5030 FF+10d | -31d |
| DUKHCONP2AZ2WEEX5040 |  | Block works & Plastering | 25d | 2014-01-18 | 2014-02-16 | DUKHCONP2AZ2WEEX5035 FF+8d, DUKHCONP2AZ2WEEX5035 SS+8d | -31d |
| DUKHCONP2AZ2WEEX5045 |  | Flooring & Painting | 25d | 2014-01-29 | 2014-02-27 | DUKHCONP2AZ2WEEX5040 SS+10d, DUKHCONP2AZ2WEEX5040 FF+10d | -31d |
| DUKHCONP2AZ2WEEX5050 |  | Installation of Steel Gate | 20d | 2014-02-19 | 2014-03-13 | DUKHCONP2AZ2WEEX5045 FF+10d, DUKHCONP2AZ2MSEX5025 SS+10d, DUKHCONP2AZ1WEEX5050, DUKHCONP2AZ2MSEX5025 FF+10d, DUKHCONP2AZ2WEEX5045 SS+5d | -33d |
| DUKHCONP2AZ2WEEX5060 |  | Structural steel & SS Shed cover installation | 25d | 2014-02-25 | 2014-03-25 | DUKHCONP2AZ2WEEX5050 FF+10d, DUKHCONP2AZ2WEEX5050 SS+5d | -33d |
| DUKHCONP2AZ2WEEX5065 |  | Install. of Water Tank,Chiller,Pump & Meter | 25d | 2014-03-15 | 2014-04-12 | DUKHCONP2AZ2PLRF4350 SS+5d, DUKHCONP2AZ2WEEX5060 SS+10d, DUKHCONP2AZ2WEEX5060 FF+10d, DUKHCONP2AZ2MSEX5015 SS+5d, DUKHCONP2AZ2PLRF4350 FF+5d, DUKHCONP2AZ1WEEX5065, DUKHCONP2AZ2MSEX5015 FF+5d | -38d |
| DUKHCONP2AZ2WEEX5070 |  | Installation ladder for water Tank | 20d | 2014-03-23 | 2014-04-14 | DUKHCONP2AZ2WEEX5065 SS+7d, DUKHCONP2AZ1WEEX5070 | -33d |
|  | 20 | **HARD LANDSCAPING** |  | 2014-01-30 | 2014-03-22 |  |  |
| DUKHCONP2AZ2HDEX5090 |  | kerb works | 20d | 2014-01-30 | 2014-02-23 | DUKHCONP2AZ2MSEX5020 SS+7d, DUKHCONP2AZ2MSEX5025 SS+7d, DUKHCONP2AZ1HDEX5090, DUKHCONP2AZ2MSEX5020 FF+7d | -33d |
| DUKHCONP2AZ2HDEX5095 |  | Cobble Stone Works | 20d | 2014-02-12 | 2014-03-06 | DUKHCONP2AZ2HDEX5090 FF+10d, DUKHCONP2AZ2HDEX5090 SS+10d | -33d |
| DUKHCONP2AZ2HDEX5100 |  | Interlock works | 20d | 2014-02-27 | 2014-03-22 | DUKHCONP2AZ2HDEX5095 FF+13d, DUKHCONP2AZ2HDEX5095 SS+13d | -33d |
|  | 25 | **SOFT LANDSCAPING** |  | 2014-03-11 | 2014-04-14 |  |  |
| DUKHCONP2AZ2SLEX5105 |  | Laying of Grass/ green area | 20d | 2014-03-11 | 2014-04-02 | DUKHCONP2AZ2HDEX5100 SS+10d, DUKHCONP2AZ1SLEX5105, DUKHCONP2AZ2HDEX5100 FF+10d | -33d |
| DUKHCONP2AZ2SLEX5110 |  | Laying of Palm tree | 20d | 2014-03-23 | 2014-04-14 | DUKHCONP2AZ2SLEX5105 SS+10d, DUKHCONP2AZ2SLEX5105 FF+10d, DUKHCONP2AZ1SLEX5110 | 7d |
|  | 30 | **TESTING AND COMMISSIONING** |  | 2014-06-19 | 2014-07-17 |  |  |
| DUKHCONP2AZ2ACTC8000 |  | Pre-Commissioning & Testing of AC Works | 25d | 2014-06-19 | 2014-07-17 | DUKHMOBP2APS00002170 FF, DUKHCONP2AZ2HDEX5100, DUKHCONP2AZ2MSEX5005, DUKHMOBI2APS00002205 FF, DUKHCONP2AZ2ACRF4635, DUKHCONP2AZ2AREL3680, DUKHCONP2AZ2ARRF3660, DUKHCONP2AZ2ARGF3095, DUKHCONP2AZ2SLEX5110, DUKHCONP2AZ2PLRF4350, DUKHCONP2AZ2SLEX5105 | -29d |
| DUKHCONP2AZ2ELTC8010 |  | Pre-Commissioning & Testing of Electrical Works | 25d | 2014-06-19 | 2014-07-17 | DUKHMOBP2APS00002170 FF, DUKHCONP2AZ2ELGF4015, DUKHCONP2AZ2ARRF3660, DUKHCONP2AZ2SLEX5105, DUKHMOBI2APS00002205 FF, DUKHCONP2AZ2ELGF4030, DUKHCONP2AZ2ARGF3095, DUKHCONP2AZ2ELRF4075, DUKHCONP2AZ2AREL3680, DUKHCONP2AZ2ELGF4025, DUKHCONP2AZ2HDEX5100, DUKHCONP2AZ2SLEX5110, DUKHCONP2AZ2MSEX5005 | -29d |
| DUKHCONP2AZ2PLTC8005 |  | Pre-Commissioning & Testing of Plumbing Works | 25d | 2014-06-19 | 2014-07-17 | DUKHMOBI2APS00002205 FF, DUKHCONP2AZ2AREL3680, DUKHCONP2AZ2SLEX5105, DUKHCONP2AZ2SLEX5110, DUKHMOBP2APS00002170 FF, DUKHCONP2AZ2PLGF4320, DUKHCONP2AZ2PLRF4350, DUKHCONP2AZ2ARRF3660, DUKHCONP2AZ2ARGF3095, DUKHCONP2AZ2MSEX5005, DUKHCONP2AZ2WEEX5065, DUKHCONP2AZ2HDEX5100 | -29d |
|  | L40 | **PACKAGE-2A INFRASTRUCTURE WORKS** |  | 2013-11-12 | 2014-09-16 |  |  |
|  | 10 | **ZONE - 1** |  | 2013-11-12 | 2014-07-24 |  |  |
|  | 10 | **INFRASTRUCTURE WORKS** |  | 2013-11-12 | 2014-07-24 |  |  |
|  | 10 | **DRAINAGE LINES** |  | 2013-11-12 | 2014-01-01 |  |  |
| DUKHCONI2AZ1DRGL5115 |  | Excavation for Drainage line | 25d | 2013-11-12 | 2013-12-10 | DUKHENGI2ADWDRAP5050, DUKHCONP2AZ1STRF2060 | -63d |
| DUKHCONI2AZ1DRGL5120 |  | Laying of Drainage line | 25d | 2013-11-19 | 2013-12-17 | DUKHCONI2AZ1DRGL5115 FF+6d, DUKHCONI2AZ1DRGL5115 SS+6d | -63d |
| DUKHCONI2AZ1DRGL5125 |  | Testing of Drainage line | 25d | 2013-11-27 | 2013-12-26 | DUKHCONI2AZ1DRGL5120 SS+7d, DUKHCONI2AZ1DRGL5120 FF+7d | -63d |
| DUKHCONI2AZ1DRGL5130 |  | Backfilling Drainage line | 15d | 2013-12-15 | 2014-01-01 | DUKHCONI2AZ1DRGL5125 FF+5d, DUKHCONI2AZ1DRGL5125 SS+10d | -63d |
|  | 15 | **MANHOLES & SOAKAWAY** |  | 2013-12-15 | 2014-03-08 |  |  |
| DUKHCONI2AZ1SAGL5135 |  | Construction of manholes Drainage | 25d | 2013-12-15 | 2014-01-13 | DUKHENGI2ADWDRAP5050, DUKHCONI2AZ1DRGL5115, DUKHCONI2AZ1DRGL5130 FF+10d | -1d |
| DUKHCONI2AZ1SAGL5140 |  | Construction of soakaways | 25d | 2013-12-15 | 2014-01-13 | DUKHCONI2AZ1DRGL5130 FF+10d, DUKHCONI2AZ1DRGL5115 | -62d |
| DUKHCONI2AZ1SAGL5145 |  | Construction of Road gullies | 25d | 2014-01-14 | 2014-02-12 | DUKHCONI2AZ1SAGL5140 | -62d |
| DUKHCONI2AZ1SAGL5150 |  | Connection with existing sewer manhole | 20d | 2014-02-13 | 2014-03-08 | DUKHCONI2AZ1SAGL5135, DUKHCONI2AZ1SAGL5145 | -26d |
|  | 20 | **WATER SUPPLY SYSTEM** |  | 2013-12-28 | 2014-03-13 |  |  |
| DUKHCONI2AZ1WSGL5155 |  | Excavation for water line | 25d | 2013-12-28 | 2014-01-25 | DUKHCONI2AZ1DRGL5130 SS+10d, DUKHENGI2ADWWSAP5070 | -62d |
| DUKHCONI2AZ1WSGL5160 |  | Laying of water line | 25d | 2014-01-02 | 2014-01-30 | DUKHCONI2AZ1WSGL5155 SS+5d | -62d |
| DUKHCONI2AZ1WSGL5165 |  | Testing of potable water line | 25d | 2014-01-08 | 2014-02-05 | DUKHCONI2AZ1WSGL5160 SS+5d | -62d |
| DUKHCONI2AZ1WSGL5170 |  | Backfilling potable water line | 25d | 2014-01-14 | 2014-02-12 | DUKHCONI2AZ1SAGL5145 FF, DUKHCONI2AZ1WSGL5165 SS+5d | -62d |
| DUKHCONI2AZ1WSGL5175 |  | Construction of valve chambers & Thrust Blocks | 25d | 2014-01-20 | 2014-02-18 | DUKHCONI2AZ1WSGL5155 SS+10d, DUKHCONI2AZ1WSGL5170 FF+5d | -31d |
| DUKHCONI2AZ1WSGL5180 |  | Installation of meter ,Accessories & Connection | 20d | 2014-02-19 | 2014-03-13 | DUKHCONI2AZ1WSGL5175 | -31d |
|  | 25 | **FIREFIGHTING LINES** |  | 2014-01-20 | 2014-03-22 |  |  |
| DUKHCONI2AZ1FFGL5185 |  | Excavation for firefighting line | 25d | 2014-01-20 | 2014-02-18 | DUKHENGI2ADWFFAP5060, DUKHCONI2AZ1WSGL5170 SS+5d | -62d |
| DUKHCONI2AZ1FFGL5190 |  | Laying of firefighting line | 25d | 2014-01-28 | 2014-02-26 | DUKHCONI2AZ1FFGL5185 SS+7d, DUKHPROGEN00PRDV3540, DUKHPROGEN00PRDV3650 | -62d |
| DUKHCONI2AZ1FFGL5195 |  | Testing of firefighting line | 25d | 2014-02-03 | 2014-03-04 | DUKHCONI2AZ1FFGL5190 SS+5d | -62d |
| DUKHCONI2AZ1FFGL5200 |  | Backfilling firefighting line | 25d | 2014-02-09 | 2014-03-10 | DUKHCONI2AZ1FFGL5195 SS+5d | -62d |

| ID | WBS | Task | Duration | Start | Finish | Predecessors | Total float |
| --- | --- | --- | --- | --- | --- | --- | --- |
| DUKHCONI2AZ1FFGL5205 |  | Construction of valve chambers & Thrust Blocks | 25d | 2014-02-16 | 2014-03-16 | DUKHCONI2AZ1FFGL5200 FF+5d, DUKHCONI2AZ1FFGL5185 SS+10d, DUKHPROGEN00PRDV3690 | -38d |
| DUKHCONI2AZ1FFGL5210 |  | Connection with existing Firewater System | 25d | 2014-02-22 | 2014-03-22 | DUKHCONI2AZ1WSGL5180 FF, DUKHCONI2AZ1FFGL5205 FF+5d | -38d |
|  | 30 | **ELECTRICAL LINES** |  | 2014-02-18 | 2014-04-13 |  |  |
| DUKHCONI2AZ1ELGL5215 |  | Excavation Cable Trenches & Duct Banks | 25d | 2014-02-18 | 2014-03-18 | DUKHCONI2AZ1FFGL5200 SS+7d, DUKHENGI2ADWELAP5080 | -60d |
| DUKHCONI2AZ1ELGL5220 |  | Laying of electrical cables | 25d | 2014-02-24 | 2014-03-24 | DUKHCONI2AZ1ELGL5215 SS+5d | -57d |
| DUKHCONI2AZ1ELGL5225 |  | Backfilling Electrical trench | 25d | 2014-03-04 | 2014-04-01 | DUKHCONI2AZ1ELGL5215 FF+7d, DUKHCONI2AZ1ELGL5220 SS+7d | -57d |
| DUKHCONI2AZ1ELGL5230 |  | Construction of Submain Board & Feeder Pillar | 25d | 2014-03-16 | 2014-04-13 | DUKHCONI2AZ1ELGL5225 FF+10d, DUKHCONI2AZ1ELGL5225 SS+10d | -12d |
|  | 35 | **STREET LIGHTING** |  | 2014-02-18 | 2014-05-12 |  |  |
| DUKHCONI2AZ1STGL5235 |  | Excavation for Street lighting | 25d | 2014-02-18 | 2014-03-18 | DUKHENGI2ADWSTAP5090, DUKHCONI2AZ1ELGL5215 SS | -60d |
| DUKHCONI2AZ1STGL5240 |  | Construction of Duct Banks | 25d | 2014-02-24 | 2014-03-24 | DUKHCONI2AZ1STGL5235 SS+5d | -60d |
| DUKHCONI2AZ1STGL5245 |  | Construction of Foundation | 25d | 2014-02-24 | 2014-03-24 | DUKHCONI2AZ1STGL5240 SS | -60d |
| DUKHCONI2AZ1STGL5250 |  | Backfilling Street Lighting | 25d | 2014-03-02 | 2014-03-30 | DUKHCONI2AZ1STGL5245 SS+5d, DUKHCONI2AZ1STGL5235 FF+5d | -60d |
| DUKHCONI2AZ1STGL5255 |  | Installation of light Post | 25d | 2014-03-13 | 2014-04-10 | DUKHPROGEN00PRDV3350, DUKHCONI2AZ1STGL5250 SS+10d, DUKHPROGEN00PRDV3250 | 8d |
| DUKHCONI2AZ1STGL5260 |  | Electrical Works | 25d | 2014-04-14 | 2014-05-12 | DUKHCONI2AZ1ELGL5230, DUKHCONI2AZ1STGL5255 SS+7d | -12d |
|  | 40 | **IRRIGATION LINES** |  | 2014-04-02 | 2014-06-07 |  |  |
| DUKHCONI2AZ1IRGL5265 |  | Excavation for irrigation line | 25d | 2014-04-02 | 2014-04-30 | DUKHENGI2ADWIRAP5110, DUKHCONI2AZ1ELGL5225 | -34d |
| DUKHCONI2AZ1IRGL5270 |  | Laying of irrigationline | 25d | 2014-04-08 | 2014-05-06 | DUKHCONI2AZ1IRGL5265 SS+5d | -34d |
| DUKHCONI2AZ1IRGL5275 |  | Testing of irrigation line | 25d | 2014-04-14 | 2014-05-12 | DUKHCONI2AZ1IRGL5270 SS+5d | -34d |
| DUKHCONI2AZ1IRGL5280 |  | Backfilling irrigation line | 25d | 2014-04-20 | 2014-05-18 | DUKHCONI2AZ1IRGL5275 SS+5d | -34d |
| DUKHCONI2AZ1IRGL5285 |  | Construction of Thrust Blocks,Pull boxes | 25d | 2014-05-01 | 2014-05-29 | DUKHCONI2AZ1IRGL5280 FF+10d, DUKHCONI2AZ1ELGL5225 SS+10d | -29d |
| DUKHCONI2AZ1IRGL5290 |  | Irrigation Fittings (Nozzle,Values) | 25d | 2014-05-10 | 2014-06-07 | DUKHPROGEN00PRDV3760, DUKHPROGEN00PRDV3830, DUKHCONI2AZ1IRGL5280 SS+10d, DUKHCONI2AZ1IRGL5285 SS+7d, DUKHPROGEN00PRDV3810, DUKHPROGEN00PRDV3860, DUKHPROGEN00PRDV3840, DUKHPROGEN00PRDV3870 | -29d |
|  | 45 | **TELECOMMUNICATION LINES** |  | 2014-03-13 | 2014-04-28 |  |  |
| DUKHCONI2AZ1TCGL5295 |  | Excavation Telecommunication trenches | 20d | 2014-03-13 | 2014-04-05 | DUKHENGI2ADWTCAP5100, DUKHCONI2AZ1STGL5250 SS+10d | -60d |
| DUKHCONI2AZ1TCGL5300 |  | Laying of cables | 20d | 2014-03-19 | 2014-04-10 | DUKHCONI2AZ1TCGL5295 SS+5d | -60d |
| DUKHCONI2AZ1TCGL5305 |  | Backfilling telecommunication trench | 20d | 2014-03-25 | 2014-04-16 | DUKHCONI2AZ1TCGL5300 SS+5d | -60d |
| DUKHCONI2AZ1TCGL5310 |  | Connection & Installation | 20d | 2014-04-06 | 2014-04-28 | DUKHCONI2AZ1TCGL5305 SS+10d | 5d |
|  | 50 | **BOUNDARY WALL** |  | 2014-03-13 | 2014-06-07 |  |  |
| DUKHCONI2AZ1BWGL5315 |  | Construction of Boundary Wall (Ht-3m) | 25d | 2014-03-13 | 2014-04-10 | DUKHCONI2AZ1STGL5250 SS+10d, DUKHENGI2ADWBWAP5130, DUKHPROGEN00PRDV3820 | -34d |
| DUKHCONI2AZ1BWGL5320 |  | Install.Steel Gate,Entance Barrier (3m Wall) | 25d | 2014-03-30 | 2014-04-27 | DUKHPROGEN00PRDV3800, DUKHCONI2AZ1BWGL5315 SS+14d | -34d |
| DUKHCONI2AZ1BWGL5325 |  | Const. of Villa Front Boundary Wall (Ht-2m) | 25d | 2014-04-28 | 2014-05-26 | DUKHCONI2AZ1BWGL5320, DUKHCONI2AZ1BWGL5315 SS+5d | -34d |
| DUKHCONI2AZ1BWGL5330 |  | Const. of Blockwork fence Wall (Ht-1.85m) | 25d | 2014-05-10 | 2014-06-07 | DUKHCONI2AZ1BWGL5325 SS+10d | -6d |
|  | 55 | **ROAD WORKS** |  | 2014-04-17 | 2014-07-01 |  |  |
| DUKHCONI2AZ1RWGL6000 |  | Excavation & Earth Filling | 10d | 2014-04-17 | 2014-04-28 | DUKHCONI2AZ1STGL5250, DUKHCONI2AZ1FFGL5210, DUKHENGI2ADWBWAP5130, DUKHCONI2AZ1ELGL5225, DUKHCONI2AZ1TCGL5305, DUKHCONI2AZ1FFGL5200, DUKHCONI2AZ1SAGL5150 | -60d |
| DUKHCONI2AZ1RWGL6005 |  | Laying of Sub Grade | 25d | 2014-04-29 | 2014-05-27 | DUKHCONI2AZ1RWGL6000 | -60d |
| DUKHCONI2AZ1RWGL6010 |  | Laying of Precast Kerbs | 25d | 2014-05-11 | 2014-06-08 | DUKHCONI2AZ1RWGL6005 SS+10d | -60d |
| DUKHCONI2AZ1RWGL6015 |  | Laying of Granular Sub Base Coarse | 20d | 2014-05-22 | 2014-06-14 | DUKHCONI2AZ1RWGL6010 SS+10d | -60d |
| DUKHCONI2AZ1RWGL6020 |  | Laying of Road Base Asphalt Concrete | 5d | 2014-06-15 | 2014-06-19 | DUKHCONI2AZ1RWGL6015 | -42d |
| DUKHCONI2AZ1RWGL6025 |  | Laying of Asphalt Wearing Coarse | 5d | 2014-06-21 | 2014-06-25 | DUKHCONI2AZ1RWGL6020 | -30d |
| DUKHCONI2AZ1RWGL6030 |  | Traffic Signage & Road Marking | 5d | 2014-06-26 | 2014-07-01 | DUKHPROGEN00PRDV3720, DUKHPROGEN00PRDV3710, DUKHCONI2AZ1RWGL6025, DUKHPROGEN00PRDV3700 | -27d |
|  | 60 | **PARKING SHED** |  | 2014-05-28 | 2014-07-24 |  |  |
| DUKHCONI2AZ1PSGL7000 |  | Excavation | 15d | 2014-05-28 | 2014-06-14 | DUKHCONI2AZ1RWGL6015 SS+5d, DUKHENGI2ADWPSAP5140 | -37d |
| DUKHCONI2AZ1PSGL7005 |  | Foundation casting | 15d | 2014-06-09 | 2014-06-25 | DUKHCONI2AZ1PSGL7000 FF+5d, DUKHCONI2AZ1PSGL7000 SS+5d, DUKHCONI2AZ1RWGL6015 FF+10d | -42d |
| DUKHCONI2AZ1PSGL7010 |  | Column, Frame& Fabrics Erection | 25d | 2014-06-21 | 2014-07-19 | DUKHCONI2AZ1PSGL7005 SS+10d, DUKHCONI2AZ1RWGL6020, DUKHPROGEN00PRDV3730, DUKHCONI2AZ1BWGL5330 FF, DUKHCONI2AZ1RWGL6030 FF | -42d |
| DUKHCONI2AZ1PSGL7015 |  | Electrical Works-Parking Shed | 25d | 2014-06-26 | 2014-07-24 | DUKHCONI2AZ1PSGL7010 SS+5d, DUKHCONI2AZ1STGL5260 | -42d |
|  | 65 | **HARD LANDSCAPING** |  | 2014-04-17 | 2014-07-07 |  |  |
| DUKHCONI2AZ1HDGL7020 |  | Precast Concrete Kerbs works | 20d | 2014-04-17 | 2014-05-10 | DUKHENGI2ADWSLAP5120, DUKHCONI2AZ1RWGL6000 SS | -40d |
| DUKHCONI2AZ1HDGL7025 |  | Interlocking for Walkways | 25d | 2014-04-29 | 2014-05-27 | DUKHCONI2AZ1HDGL7020 SS+10d | -40d |
| DUKHCONI2AZ1HDGL7030 |  | Construction of Retaining wall | 25d | 2014-05-11 | 2014-06-08 | DUKHCONI2AZ1HDGL7025 SS+10d | -40d |
| DUKHCONI2AZ1HDGL7035 |  | Construction of Wash Stone Boulders | 25d | 2014-05-11 | 2014-06-08 | DUKHPROGEN00PRDV3740, DUKHCONI2AZ1HDGL7030 SS | -40d |
| DUKHCONI2AZ1HDGL7040 |  | Construction of Speed Humps | 10d | 2014-06-26 | 2014-07-07 | DUKHPROGEN00PRDV3750, DUKHCONI2AZ1HDGL7035 SS, DUKHCONI2AZ1RWGL6025 | -30d |
|  | 70 | **SOFT LANDSCAPING** |  | 2014-05-22 | 2014-07-13 |  |  |
| DUKHCONI2AZ1SLGL7200 |  | Excavation | 25d | 2014-05-22 | 2014-06-19 | DUKHENGI2ADWSLAP5120, DUKHCONI2AZ1HDGL7035 SS+10d, DUKHCONI2AZ1IRGL5290 SS | -40d |
| DUKHCONI2AZ1SLGL7205 |  | Sweet Soil Laying | 25d | 2014-06-03 | 2014-07-01 | DUKHCONI2AZ1SLGL7200 SS+10d | -40d |
| DUKHCONI2AZ1SLGL7210 |  | Plantation works | 25d | 2014-06-15 | 2014-07-13 | DUKHCONI2AZ1SLGL7205 SS+10d | -30d |
|  | 15 | **ZONE - 2** |  | 2014-01-02 | 2014-09-16 |  |  |
|  | 10 | **INFRASTRUCTURE WORKS** |  | 2014-01-02 | 2014-09-16 |  |  |
|  | 10 | **DRAINAGE LINES** |  | 2014-01-02 | 2014-02-22 |  |  |
| DUKHCONI2AZ2DRGL5115 |  | Excavation for Drainage line | 25d | 2014-01-02 | 2014-01-30 | DUKHCONI2AZ1DRGL5130 | -63d |
| DUKHCONI2AZ2DRGL5120 |  | Laying of Drainage line | 25d | 2014-01-09 | 2014-02-06 | DUKHCONI2AZ2DRGL5115 FF+6d, DUKHCONI2AZ2DRGL5115 SS+6d | -63d |
| DUKHCONI2AZ2DRGL5125 |  | Testing of Drainage line | 25d | 2014-01-18 | 2014-02-16 | DUKHCONI2AZ2DRGL5120 FF+7d, DUKHCONI2AZ2DRGL5120 SS+7d | -63d |
| DUKHCONI2AZ2DRGL5130 |  | Backfilling Drainage line | 15d | 2014-02-04 | 2014-02-22 | DUKHCONI2AZ2DRGL5125 FF+5d, DUKHCONI2AZ2DRGL5125 SS+10d | -63d |
|  | 15 | **MANHOLES & SOAKAWAY** |  | 2014-02-04 | 2014-04-27 |  |  |
| DUKHCONI2AZ2SAGL5135 |  | Construction of manholes Drainage | 25d | 2014-02-04 | 2014-03-05 | DUKHCONI2AZ2DRGL5115, DUKHCONI2AZ1SAGL5135, DUKHCONI2AZ2DRGL5130 FF+10d | -4d |
| DUKHCONI2AZ2SAGL5140 |  | Construction of soakaways | 25d | 2014-02-04 | 2014-03-05 | DUKHCONI2AZ2DRGL5115, DUKHCONI2AZ2DRGL5130 FF+10d | -63d |
| DUKHCONI2AZ2SAGL5145 |  | Construction of Road gullies | 25d | 2014-03-06 | 2014-04-03 | DUKHCONI2AZ2SAGL5140, DUKHCONI2AZ1SAGL5145 | -63d |
| DUKHCONI2AZ2SAGL5150 |  | Connection with existing sewer manhole | 20d | 2014-04-05 | 2014-04-27 | DUKHCONI2AZ2SAGL5145, DUKHCONI2AZ2SAGL5135 | -29d |
|  | 20 | **WATER SUPPLY SYSTEM** |  | 2014-02-16 | 2014-05-03 |  |  |
| DUKHCONI2AZ2WSGL5155 |  | Excavation for water line | 25d | 2014-02-16 | 2014-03-16 | DUKHCONI2AZ1WSGL5170, DUKHCONI2AZ2DRGL5130 SS+9d | -62d |
| DUKHCONI2AZ2WSGL5160 |  | Laying of water line | 25d | 2014-02-22 | 2014-03-22 | DUKHCONI2AZ2WSGL5155 SS+5d | -62d |
| DUKHCONI2AZ2WSGL5165 |  | Testing of potable water line | 25d | 2014-02-27 | 2014-03-27 | DUKHCONI2AZ2WSGL5160 SS+5d | -62d |

| ID | WBS | Task | Duration | Start | Finish | Predecessors | Total float |
| --- | --- | --- | --- | --- | --- | --- | --- |
| DUKHCONI2AZ2WSGL5170 |  | Backfilling potable water line | 25d | 2014-03-06 | 2014-04-03 | DUKHCONI2AZ2WSGL5165 SS+5d, DUKHCONI2AZ2SAGL5145 FF | -63d |
| DUKHCONI2AZ2WSGL5175 |  | Construction of valve chambers & Thrust Blocks | 25d | 2014-03-12 | 2014-04-09 | DUKHCONI2AZ2WSGL5170 FF+5d, DUKHCONI2AZ1WSGL5175, DUKHCONI2AZ2WSGL5155 SS+10d | -34d |
| DUKHCONI2AZ2WSGL5180 |  | Installation of meter ,Accessories & Connection | 20d | 2014-04-10 | 2014-05-03 | DUKHCONI2AZ1WSGL5180, DUKHCONI2AZ2WSGL5175 | -34d |
|  | 25 | **FIREFIGHTING LINES** |  | 2014-03-12 | 2014-05-11 |  |  |
| DUKHCONI2AZ2FFGL5185 |  | Excavation for firefighting line | 25d | 2014-03-12 | 2014-04-09 | DUKHCONI2AZ1FFGL5200, DUKHCONI2AZ2WSGL5170 SS+5d | -63d |
| DUKHCONI2AZ2FFGL5190 |  | Laying of firefighting line | 25d | 2014-03-20 | 2014-04-17 | DUKHCONI2AZ2FFGL5185 SS+7d | -63d |
| DUKHCONI2AZ2FFGL5195 |  | Testing of firefighting line | 25d | 2014-03-26 | 2014-04-23 | DUKHCONI2AZ2FFGL5190 SS+5d | -63d |
| DUKHCONI2AZ2FFGL5200 |  | Backfilling firefighting line | 25d | 2014-04-01 | 2014-04-29 | DUKHCONI2AZ2FFGL5195 SS+5d | -63d |
| DUKHCONI2AZ2FFGL5205 |  | Construction of valve chambers & Thrust Blocks | 25d | 2014-04-07 | 2014-05-05 | DUKHCONI2AZ2FFGL5200 FF+5d, DUKHCONI2AZ1FFGL5205, DUKHCONI2AZ2FFGL5185 SS+10d | -41d |
| DUKHCONI2AZ2FFGL5210 |  | Connection with existing Firewater System | 25d | 2014-04-13 | 2014-05-11 | DUKHCONI2AZ2WSGL5180 FF, DUKHCONI2AZ2FFGL5205 FF+5d, DUKHCONI2AZ1FFGL5210 | -41d |
|  | 30 | **ELECTRICAL LINES** |  | 2014-04-09 | 2014-06-02 |  |  |
| DUKHCONI2AZ2ELGL5215 |  | Excavation Cable Trenches & Duct Banks | 25d | 2014-04-09 | 2014-05-07 | DUKHCONI2AZ2FFGL5200 SS+7d, DUKHCONI2AZ1ELGL5225 | -63d |
| DUKHCONI2AZ2ELGL5220 |  | Laying of electrical cables | 25d | 2014-04-15 | 2014-05-13 | DUKHCONI2AZ2ELGL5215 SS+5d | -50d |
| DUKHCONI2AZ2ELGL5225 |  | Backfilling Electrical trench | 25d | 2014-04-23 | 2014-05-21 | DUKHCONI2AZ2ELGL5215 FF+7d, DUKHCONI2AZ2ELGL5220 SS+7d | -50d |
| DUKHCONI2AZ2ELGL5230 |  | Construction of Submain Board & Feeder Pillar | 25d | 2014-05-05 | 2014-06-02 | DUKHCONI2AZ2ELGL5225 SS+10d, DUKHCONI2AZ2ELGL5225 FF+10d, DUKHCONI2AZ1ELGL5230 | -30d |
|  | 35 | **STREET LIGHTING** |  | 2014-04-09 | 2014-07-01 |  |  |
| DUKHCONI2AZ2STGL5235 |  | Excavation for Street lighting | 25d | 2014-04-09 | 2014-05-07 | DUKHCONI2AZ2ELGL5215 SS, DUKHCONI2AZ1STGL5250 | -63d |
| DUKHCONI2AZ2STGL5240 |  | Construction of Duct Banks | 25d | 2014-04-15 | 2014-05-13 | DUKHCONI2AZ2STGL5235 SS+5d | -63d |
| DUKHCONI2AZ2STGL5245 |  | Construction of Foundation | 25d | 2014-04-15 | 2014-05-13 | DUKHCONI2AZ2STGL5240 SS | -63d |
| DUKHCONI2AZ2STGL5250 |  | Backfilling Street Lighting | 25d | 2014-04-21 | 2014-05-19 | DUKHCONI2AZ2STGL5235 FF+5d, DUKHCONI2AZ2STGL5245 SS+5d | -63d |
| DUKHCONI2AZ2STGL5255 |  | Installation of light Post | 25d | 2014-05-03 | 2014-05-31 | DUKHCONI2AZ2STGL5250 SS+10d, DUKHCONI2AZ1STGL5255 | -10d |
| DUKHCONI2AZ2STGL5260 |  | Electrical Works | 25d | 2014-06-03 | 2014-07-01 | DUKHCONI2AZ2STGL5255 SS+7d, DUKHCONI2AZ2ELGL5230, DUKHCONI2AZ1STGL5260 | -30d |
|  | 40 | **IRRIGATION LINES** |  | 2014-05-22 | 2014-07-27 |  |  |
| DUKHCONI2AZ2IRGL5265 |  | Excavation for irrigation line | 25d | 2014-05-22 | 2014-06-19 | DUKHCONI2AZ1IRGL5280, DUKHCONI2AZ2ELGL5225 | -37d |
| DUKHCONI2AZ2IRGL5270 |  | Laying of irrigationline | 25d | 2014-05-28 | 2014-06-25 | DUKHCONI2AZ2IRGL5265 SS+5d | -37d |
| DUKHCONI2AZ2IRGL5275 |  | Testing of irrigation line | 25d | 2014-06-03 | 2014-07-01 | DUKHCONI2AZ2IRGL5270 SS+5d | -37d |
| DUKHCONI2AZ2IRGL5280 |  | Backfilling irrigation line | 25d | 2014-06-09 | 2014-07-07 | DUKHCONI2AZ2IRGL5275 SS+5d | -37d |
| DUKHCONI2AZ2IRGL5285 |  | Construction of Thrust Blocks,Pull boxes | 25d | 2014-06-21 | 2014-07-19 | DUKHCONI2AZ2ELGL5225 SS+10d, DUKHCONI2AZ2IRGL5280 FF+10d | -37d |
| DUKHCONI2AZ2IRGL5290 |  | Irrigation Fittings (Nozzle,Values) | 25d | 2014-06-29 | 2014-07-27 | DUKHCONI2AZ2IRGL5285 SS+7d, DUKHCONI2AZ2IRGL5280 SS+10d | -37d |
|  | 45 | **TELECOMMUNICATION LINES** |  | 2014-05-03 | 2014-06-17 |  |  |
| DUKHCONI2AZ2TCGL5295 |  | Excavation Telecommunication trenches | 20d | 2014-05-03 | 2014-05-25 | DUKHCONI2AZ1TCGL5305, DUKHCONI2AZ2STGL5250 SS+10d | -63d |
| DUKHCONI2AZ2TCGL5300 |  | Laying of cables | 20d | 2014-05-08 | 2014-05-31 | DUKHCONI2AZ2TCGL5295 SS+5d | -63d |
| DUKHCONI2AZ2TCGL5305 |  | Backfilling telecommunication trench | 20d | 2014-05-14 | 2014-06-05 | DUKHCONI2AZ2TCGL5300 SS+5d | -63d |
| DUKHCONI2AZ2TCGL5310 |  | Connection & Installation | 20d | 2014-05-26 | 2014-06-17 | DUKHCONI2AZ1TCGL5310, DUKHCONI2AZ2TCGL5305 SS+10d | -18d |
|  | 50 | **BOUNDARY WALL** |  | 2014-05-03 | 2014-07-26 |  |  |
| DUKHCONI2AZ2BWGL5315 |  | Construction of Boundary Wall (Ht-3m) | 25d | 2014-05-03 | 2014-05-31 | DUKHCONI2AZ2STGL5250 SS+10d, DUKHCONI2AZ1BWGL5315 | -36d |
| DUKHCONI2AZ2BWGL5320 |  | Install.Steel Gate,Entance Barrier (3m Wall) | 25d | 2014-05-18 | 2014-06-15 | DUKHCONI2AZ2BWGL5315 SS+13d | -36d |
| DUKHCONI2AZ2BWGL5325 |  | Const. of Villa Front Boundary Wall (Ht-2m) | 25d | 2014-06-16 | 2014-07-14 | DUKHCONI2AZ2BWGL5315 SS+5d, DUKHCONI2AZ2BWGL5320, DUKHCONI2AZ1BWGL5325 | -36d |
| DUKHCONI2AZ2BWGL5330 |  | Const. of Blockwork fence Wall (Ht-1.85m) | 25d | 2014-06-28 | 2014-07-26 | DUKHCONI2AZ2BWGL5325 SS+10d, DUKHCONI2AZ1BWGL5330 | -23d |
|  | 55 | **ROAD WORKS** |  | 2014-06-07 | 2014-08-24 |  |  |
| DUKHCONI2AZ2RWGL6000 |  | Excavation & Earth Filling | 10d | 2014-06-07 | 2014-06-17 | DUKHCONI2AZ2FFGL5200, DUKHCONI2AZ2STGL5250, DUKHCONI2AZ2SAGL5150, DUKHCONI2AZ2FFGL5210, DUKHCONI2AZ1RWGL6015 SS+10d, DUKHCONI2AZ2TCGL5305, DUKHCONI2AZ2ELGL5225 | -63d |
| DUKHCONI2AZ2RWGL6005 |  | Laying of Sub Grade | 25d | 2014-06-18 | 2014-07-16 | DUKHCONI2AZ2RWGL6000 | -63d |
| DUKHCONI2AZ2RWGL6010 |  | Laying of Precast Kerbs | 25d | 2014-06-30 | 2014-07-28 | DUKHCONI2AZ2RWGL6005 SS+10d | -63d |
| DUKHCONI2AZ2RWGL6015 |  | Laying of Granular Sub Base Coarse | 20d | 2014-07-12 | 2014-08-06 | DUKHCONI2AZ2RWGL6010 SS+10d | -63d |
| DUKHCONI2AZ2RWGL6020 |  | Laying of Road Base Asphalt Concrete | 5d | 2014-08-07 | 2014-08-12 | DUKHCONI2AZ2RWGL6015 | -63d |
| DUKHCONI2AZ2RWGL6025 |  | Laying of Asphalt Wearing Coarse | 5d | 2014-08-13 | 2014-08-18 | DUKHCONI2AZ2RWGL6020, DUKHCONI2AZ1RWGL6025 | -63d |
| DUKHCONI2AZ2RWGL6030 |  | Traffic Signage & Road Marking | 5d | 2014-08-19 | 2014-08-24 | DUKHCONI2AZ2RWGL6025, DUKHCONI2AZ1RWGL6030 | -45d |
|  | 60 | **PARKING SHED** |  | 2014-07-17 | 2014-09-16 |  |  |
| DUKHCONI2AZ2PSGL7000 |  | Excavation | 15d | 2014-07-17 | 2014-08-06 | DUKHCONI2AZ1PSGL7005, DUKHCONI2AZ2RWGL6015 SS+5d | -55d |
| DUKHCONI2AZ2PSGL7005 |  | Foundation casting | 15d | 2014-07-29 | 2014-08-18 | DUKHCONI2AZ2RWGL6015 FF+10d, DUKHCONI2AZ2PSGL7000 FF+5d, DUKHCONI2AZ2PSGL7000 SS+5d | -60d |
| DUKHCONI2AZ2PSGL7010 |  | Column, Frame& Fabrics Erection | 25d | 2014-08-13 | 2014-09-10 | DUKHCONI2AZ2BWGL5330 FF, DUKHCONI2AZ2RWGL6030 FF, DUKHCONI2AZ2PSGL7005 SS+10d, DUKHCONI2AZ2RWGL6020, DUKHCONI2AZ1PSGL7010 | -60d |
| DUKHCONI2AZ2PSGL7015 |  | Electrical Works-Parking Shed | 25d | 2014-08-19 | 2014-09-16 | DUKHCONI2AZ2STGL5260, DUKHCONI2AZ1PSGL7015, DUKHCONI2AZ2PSGL7010 SS+5d | -60d |
|  | 65 | **HARD LANDSCAPING** |  | 2014-06-07 | 2014-08-30 |  |  |
| DUKHCONI2AZ2HDGL7020 |  | Precast Concrete Kerbs works | 20d | 2014-06-07 | 2014-06-29 | DUKHCONI2AZ2RWGL6000 SS | -48d |
| DUKHCONI2AZ2HDGL7025 |  | Interlocking for Walkways | 25d | 2014-06-18 | 2014-07-16 | DUKHCONI2AZ2HDGL7020 SS+10d, DUKHCONI2ASBGZGL7910 FF | -48d |
| DUKHCONI2AZ2HDGL7030 |  | Construction of Retaining wall | 25d | 2014-06-30 | 2014-07-28 | DUKHCONI2AZ1HDGL7030, DUKHCONI2AZ2HDGL7025 SS+10d | -48d |
| DUKHCONI2AZ2HDGL7035 |  | Construction of Wash Stone Boulders | 25d | 2014-06-30 | 2014-07-28 | DUKHCONI2AZ2HDGL7030 SS, DUKHCONI2AZ1HDGL7035 | -48d |
| DUKHCONI2AZ2HDGL7040 |  | Construction of Speed Humps | 10d | 2014-08-19 | 2014-08-30 | DUKHCONI2AZ2RWGL6025, DUKHCONI2AZ2HDGL7035 SS, DUKHCONI2AZ1HDGL7040 | -63d |
|  | 70 | **SOFT LANDSCAPING** |  | 2014-07-12 | 2014-09-04 |  |  |
| DUKHCONI2AZ2SLGL7200 |  | Excavation for Landscaping | 25d | 2014-07-12 | 2014-08-12 | DUKHCONI2AZ1SLGL7205, DUKHCONI2AZ2IRGL5290 SS, DUKHCONI2AZ2HDGL7035 SS+10d | -48d |
| DUKHCONI2AZ2SLGL7205 |  | Sweet Soil Laying | 25d | 2014-07-23 | 2014-08-24 | DUKHCONI2AZ2SLGL7200 SS+10d | -48d |
| DUKHCONI2AZ2SLGL7210 |  | Plantation works | 25d | 2014-08-07 | 2014-09-04 | DUKHCONI2AZ2SLGL7205 SS+10d, DUKHCONI2AZ1SLGL7210 | -48d |
|  | 30 | **SECONDARY BUILDINGS** |  | 2014-01-26 | 2014-07-24 |  |  |
|  | 10 | **INFRASTRUCTURE WORKS** |  | 2014-01-26 | 2014-07-24 |  |  |
|  | 10 | **IRRIGATION WATER TANK & PUMP ROOM** |  | 2014-01-26 | 2014-07-24 |  |  |
| DUKHCONI2ASBIWGL7400 |  | Excavation | 15d | 2014-01-26 | 2014-02-12 | DUKHENGI2ADWIWAP5160, DUKHCONI2AZ1WSGL5155 | -35d |
| DUKHCONI2ASBIWGL7405 |  | Blinding & base waterproofing | 10d | 2014-02-13 | 2014-02-24 | DUKHCONI2ASBIWGL7400 | -35d |
| DUKHCONI2ASBIWGL7410 |  | Construction of Raft slab | 10d | 2014-02-25 | 2014-03-08 | DUKHCONI2ASBIWGL7405 | -35d |
| DUKHCONI2ASBIWGL7415 |  | Construction of RCC Wall | 25d | 2014-03-09 | 2014-04-06 | DUKHCONI2ASBIWGL7410 | -35d |
| DUKHCONI2ASBIWGL7420 |  | Construction of Roof Slab | 20d | 2014-04-07 | 2014-04-29 | DUKHCONI2ASBIWGL7415 | -35d |

| ID | WBS | Task | Duration | Start | Finish | Predecessors | Complete | Total float |
| --- | --- | --- | --- | --- | --- | --- | --- | --- |
| DUKHCONI2ASBIWGL7425 |  | Waterproofing & Backfilling | 15d | 2014-04-30 | 2014-05-17 | DUKHCONI2ASBIWGL7420 |  | -29d |
| DUKHCONI2ASBIWGL7950 |  | Laying of Interlock | 10d | 2014-05-18 | 2014-05-28 | DUKHCONI2ASBIWGL7425 |  | -6d |
| DUKHCONI2ASBIWGL7430 |  | Floor screed | 5d | 2014-05-25 | 2014-05-29 | DUKHCONI2ASBIWGL7420 FS+21d, DUKHCONI2ASBIWGL7425 |  | -35d |
| DUKHCONI2ASBIWGL7435 |  | Installation of Boundary Fences | 15d | 2014-05-29 | 2014-06-15 | DUKHCONI2ASBIWGL7950, DUKHPROGEN00PRDV3850 |  | -6d |
| DUKHCONI2ASBIWGL7440 |  | Plumbing , Drainage & Firefighting works | 25d | 2014-05-31 | 2014-06-28 | DUKHCONI2ASBIWGL7430, DUKHCONI2AZ2FFGL5210, DUKHCONI2AZ1FFGL5210 |  | -35d |
| DUKHCONI2ASBIWGL7445 |  | AC Works | 25d | 2014-05-31 | 2014-06-28 | DUKHCONI2ASBIWGL7440 SS |  | -35d |
| DUKHCONI2ASBIWGL7450 |  | Electrical Works | 25d | 2014-06-09 | 2014-07-07 | DUKHCONI2ASBIWGL7445 SS+8d, DUKHCONI2AZ2TCGL5310 FF, DUKHCONI2AZ2ELGL5230, DUKHCONI2AZ2STGL5260 SS |  | -35d |
| DUKHCONI2ASBIWGL7455 |  | Internal epoxy coating & Painting | 5d | 2014-07-08 | 2014-07-13 | DUKHCONI2ASBIWGL7450 |  | -35d |
| DUKHCONI2ASBIWGL7460 |  | Installation of Steel Ladder | 5d | 2014-07-14 | 2014-07-19 | DUKHCONI2ASBIWGL7455 |  | -35d |
| DUKHCONI2ASBIWGL7465 |  | Installation of G.I Handrails | 5d | 2014-07-20 | 2014-07-24 | DUKHCONI2ASBIWGL7460, DUKHCONI2ASBIWGL7435 |  | -35d |
|  | 25 | **GAZEBO** |  | 2014-05-11 | 2014-07-07 |  |  |  |
| DUKHCONI2ASBGZGL7900 |  | Construction of Concrete structure | 20d | 2014-05-11 | 2014-06-02 | DUKHENGI2ADWGZAP5170, DUKHPROGEN00PRDV3780, DUKHCONI2AZ1HDGL7020 |  | -40d |
| DUKHCONI2ASBGZGL7905 |  | Installation of Wooden Works | 25d | 2014-05-22 | 2014-06-19 | DUKHCONI2ASBGZGL7900 SS+10d |  | -40d |
| DUKHCONI2ASBGZGL7915 |  | Park Benches Installation | 15d | 2014-05-22 | 2014-06-08 | DUKHCONI2ASBGZGL7905 SS |  | -30d |
| DUKHCONI2ASBGZGL7910 |  | Electrical Works-Gazebo | 15d | 2014-06-21 | 2014-07-07 | DUKHCONI2ASBGZGL7905, DUKHCONI2ASBGZGL7915 |  | -40d |
|  | L45 | **PACKAGE-2B** |  | 2012-12-01 | 2014-09-06 |  |  |  |
|  | 18 | **SITE PREPARATORY WORKS** |  | 2012-12-01 | 2013-03-30 |  |  |  |
| DUKHCONP2BGNSP001000 |  | Survey works, | 20d | 2012-12-01 A | 2012-12-24 A | DUKHMOBP020000004000 | 100% |  |
| DUKHCONP2BGNSP002000 |  | Scanning for Existing Services for rerouting | 12d | 2012-12-06 A | 2012-12-20 A | DUKHCONP2BGNSP001000 SS+5d | 100% |  |
| DUKHCONP2BGNSP003000 |  | Site stripping | 20d | 2012-12-13 A | 2013-01-06 A | DUKHCONP2BGNSP002000 SS+6d | 100% |  |
| DUKHCONP2BGNSP002100 |  | Submission of Scanning Reports | 7d | 2012-12-22 A | 2012-12-29 A | DUKHCONP2BGNSP002000 | 100% |  |
| DUKHCONP2BGNSP002200 |  | Information Required for Rerouting | 15d | 2012-12-29 A | 2013-01-14 A | DUKHCONP2BGNSP002100 | 100% |  |
| DUKHCONP2BGNSP004000 |  | Demolition of Existing building & landscaping | 13d | 2012-12-29 A | 2013-01-12 A | DUKHCONP2BGNSP003000 SS+5d | 100% |  |
| DUKHCONP2BGNSP005000 |  | Demolition of existing services works | 13d | 2013-01-03 A | 2013-01-17 A | DUKHCONP2BGNSP004000 SS+5d | 100% |  |
| DUKHCONP2BGNSP002300 |  | Preparation & Submission for New Layout | 7d | 2013-01-15 A | 2013-01-22 A | DUKHCONP2BGNSP002200 | 100% |  |
| DUKHCONP2BGNSP002400 |  | Approval for new Layout for rerouting | 14d | 2013-01-23 A | 2013-02-07 A | DUKHCONP2BGNSP002300 | 100% |  |
| DUKHCONP2BGNSP002500 |  | Rerouting Works | 25d | 2013-02-09 A | 2013-03-30 A | DUKHCONP2BGNSP002400 | 100% |  |
|  | 20 | **ZONE - 3 (3 Twin Villas)** |  | 2013-03-30 | 2014-07-13 |  |  |  |
|  | 10 | **STRUCTURAL WORKS** |  | 2013-03-30 | 2014-01-05 |  |  |  |
|  | 10 | **SUB STRUCTURE** |  | 2013-03-30 | 2013-07-29 |  |  |  |
|  | 10 | **UPTO GRADE SLAB** |  | 2013-03-30 | 2013-07-29 |  |  |  |
| DUKHCONP2BZ3STUG1000 |  | Footing Excavation | 25d | 2013-03-30 A | 2013-04-27 A | DUKHCONP2BGNSP005000, DUKHCONP2BGNSP002500 | 100% |  |
| DUKHCONP2BZ3STUG1005 |  | Footing Antitermite | 20d | 2013-04-10 A | 2013-04-26 A | DUKHCONP2BZ3STUG1000 SS+5d, DUKHCONP2BZ3STUG1000 FF+5d | 100% |  |
| DUKHCONP2BZ3STUG1010 |  | Footing Blinding | 20d | 2013-04-13 A | 2013-05-05 | DUKHCONP2BZ3STUG1005 FF+2d, DUKHCONP2BZ3STUG1005 SS+2d | 60% | -16d |
| DUKHCONP2BZ3STUG1015 |  | Footing Waterproofing & Screed | 20d | 2013-04-18 A | 2013-05-11 | DUKHCONP2BZ3STUG1010 SS+5d, DUKHCONP2BZ3STUG1010 FF+5d, DUKHENGP2BDWSTAP5180 | 35% | -16d |
| DUKHCONP2BZ3STUG1020 |  | Construction of foundations | 20d | 2013-04-28 | 2013-05-20 | DUKHCONP2BZ3STUG1015 FF+8d, DUKHCONP2BZ3STUG1015 SS+8d |  | -16d |
| DUKHCONP2BZ3STUG1025 |  | Construction of neck of columns | 20d | 2013-05-07 | 2013-05-29 | DUKHCONP2BZ3STUG1020 FF+8d, DUKHCONP2BZ3STUG1020 SS+8d |  | -16d |
| DUKHCONP2BZ3STUG1030 |  | Waterproofing Footing & Neck Column | 20d | 2013-05-16 | 2013-06-08 | DUKHCONP2BZ3STUG1025 FF+8d, DUKHCONP2BZ3STUG1025 SS+8d |  | -16d |
| DUKHCONP2BZ3STUG1035 |  | Backfilling Upto Grade Beam Bottom | 20d | 2013-05-28 | 2013-06-19 | DUKHCONP2BZ3STUG1030 SS+10d, DUKHCONP2BZ3STUG1030 FF+10d |  | -16d |
| DUKHCONP2BZ3STUG1040 |  | Construction of Grade Beams | 25d | 2013-06-09 | 2013-07-07 | DUKHENGP2BDWSTAP5190, DUKHCONP2BZ3STUG1035 SS+10d, DUKHCONP2BZ3STUG1035 FF+10d |  | -16d |
| DUKHCONP2BZ3STUG1045 |  | Construction of slab on grade | 25d | 2013-07-01 | 2013-07-29 | DUKHCONP2BZ3STUG1040 SS+10d, DUKHENGP2BDWSTAP5190, DUKHCONP2BZ3PLUG4300 FF+7d, DUKHCONP2BZ3PLUG4300 SS+7d, DUKHCONP2BZ3STUG1040 FF+10d |  | -14d |
|  | 15 | **SUPERSTRUCTURE** |  | 2013-07-18 | 2014-01-05 |  |  |  |
|  | 10 | **GROUND FLOOR** |  | 2013-07-18 | 2013-09-11 |  |  |  |
| DUKHCONP2BZ3STGF2000 |  | Column-Rebar & Formwork | 20d | 2013-07-18 | 2013-08-13 | DUKHENGP2BDWSTAP5200, DUKHCONP2BZ3STUG1045 FF+10d, DUKHCONP2BZ3STUG1045 SS+10d |  | -14d |
| DUKHCONP2BZ3STGF2005 |  | Column-Concrete | 15d | 2013-07-29 | 2013-08-18 | DUKHCONP2BZ3STGF2000 FF+4d, DUKHCONP2BZ3STGF2000 SS+7d |  | -14d |
| DUKHCONP2BZ3STGF2010 |  | Beam, Stairs ,Slab-Rebar & Formwork | 25d | 2013-08-06 | 2013-09-07 | DUKHCONP2BZ3STGF2005 FF+7d, DUKHENGP2BDWSTAP5210, DUKHCONP2BZ3STGF2005 SS+7d |  | -14d |
| DUKHCONP2BZ3STGF2015 |  | Beam, Stairs ,Slab-Concrete | 15d | 2013-08-26 | 2013-09-11 | DUKHCONP2BZ3STGF2010 FF+4d, DUKHCONP2BZ3STGF2010 SS+10d |  | -14d |
|  | 20 | **ROOF** |  | 2013-12-05 | 2014-01-05 |  |  |  |
| DUKHCONP2BZ3STRF2060 |  | Construction of Parapets | 20d | 2013-12-05 | 2013-12-29 | DUKHCONP2AZ2STRF2060, DUKHCONP2BZ3STGF2015 FF+7d, DUKHCONP2BZ3STGF2015 SS+7d |  | -44d |
| DUKHCONP2BZ3STRF2065 |  | Construction of up stands/Plinth | 20d | 2013-12-12 | 2014-01-05 | DUKHCONP2BZ3STRF2060 SS+6d, DUKHCONP2BZ3STRF2060 FF+6d |  | -37d |
|  | 15 | **FINISHING WORKS** |  | 2013-09-19 | 2014-06-14 |  |  |  |
|  | 10 | **INTERNAL FINISHES** |  | 2013-09-19 | 2014-06-14 |  |  |  |
|  | 10 | **GROUND FLOOR** |  | 2013-09-19 | 2014-06-14 |  |  |  |
| DUKHCONP2BZ3ARGF3000 |  | Block work | 25d | 2013-09-19 | 2013-10-20 | DUKHCONP2BZ3STGF2015 SS+21d, DUKHCONP2BZ3STGF2015 FF+21d |  | -14d |
| DUKHCONP2BZ3ARGF3005 |  | Plastering work | 25d | 2013-10-09 | 2013-11-09 | DUKHCONP2BZ3ARGF3000 SS+8d, DUKHCONP2BZ3PLGF4305 FF+5d, DUKHCONP2BZ3ARGF3000 FF+8d, DUKHCONP2BZ3ELGF4000 SS+5d, DUKHCONP2BZ3PLGF4305 SS+5d, DUKHCONP2BZ3ELGF4000 FF+5d |  | -11d |
| DUKHCONP2BZ3ARGF3010 |  | Flooring screed | 20d | 2013-10-23 | 2013-11-14 | DUKHCONP2BZ3ARGF3005 FF+5d, DUKHCONP2BZ3ARGF3005 SS+5d |  | 19d |
| DUKHCONP2BZ3ARGF3015 |  | Wet area waterproofing & Protection Screed | 20d | 2013-10-26 | 2013-11-17 | DUKHCONP2BZ3ARGF3005 SS+7d, DUKHCONP2BZ3ARGF3005 FF+7d |  | 1d |
| DUKHCONP2BZ3ARGF3020 |  | Ceramic Wall Tiling | 15d | 2013-11-13 | 2013-11-30 | DUKHCONP2BZ3PLGF4305 SS+11d, DUKHCONP2BZ3PLGF4305 FF+11d, DUKHCONP2BZ3ARGF3015 SS+11d, DUKHCONP2BZ3PLGF4310 SS+5d, DUKHCONP2BZ3ARGF3015 FF+11d, DUKHCONP2BZ3PLGF4310 FF+5d |  | 1d |
| DUKHCONP2BZ3ARGF3025 |  | Porcelain Tile flooring | 20d | 2013-11-30 | 2013-12-23 | DUKHCONP2BZ3ARGF3010 SS+14d, DUKHCONP2BZ3ARGF3020 FF+14d, DUKHCONP2BZ3ARGF3020 SS+14d, DUKHCONP2BZ3ARGF3010 FF+14d |  | 1d |
| DUKHCONP2BZ3ARGF3030 |  | Paint First coat | 20d | 2014-02-06 | 2014-03-02 | DUKHCONP2BZ3ARGF3005 SS+10d, DUKHCONP2BZ3ARGF3005 FF+10d, DUKHCONP2AZ2ARGF3030 |  | -57d |
| DUKHCONP2BZ3ARGF3045 |  | Fixing of Suspension systems | 15d | 2014-03-02 | 2014-03-18 | DUKHCONP2BZ3ELGF4010 SS+14d, DUKHCONP2BZ3ARGF3030 SS+14d, DUKHCONP2BZ3ARGF3025 FF+14d, DUKHCONP2BZ3ELGF4010 FF+14d, DUKHCONP2BZ3ARGF3030 FF+14d, DUKHCONP2BZ3ARGF3025 SS+14d |  | -57d |
| DUKHCONP2BZ3ARGF3060 |  | Gypsum board false ceiling | 20d | 2014-03-18 | 2014-04-09 | DUKHCONP2BZ3ACGF4600 FF+14d, DUKHCONP2BZ3ACGF4600 SS+14d, DUKHCONP2BZ3ARGF3045 FF+14d, DUKHCONP2BZ3ARGF3045 SS+14d |  | -57d |
| DUKHCONP2BZ3ARGF3035 |  | Slate Tile Flooring & Skirting | 18d | 2014-03-26 | 2014-04-15 | DUKHCONP2BZ3ARGF3010 SS+13d, DUKHCONP2BZ3ARGF3025 FF+13d, DUKHCONP2AZ2ARGF3035, DUKHCONP2BZ3ARGF3010 FF+13d, DUKHCONP2BZ3ARGF3025 SS+13d |  | -50d |
| DUKHCONP2BZ3ARGF3065 |  | Wooden door | 15d | 2014-04-07 | 2014-04-23 | DUKHCONP2BZ3ARGF3060 FF+5d, DUKHCONP2BZ3ARGF3035 SS+7d, DUKHCONP2BZ3ARGF3035 FF+7d, DUKHCONP2BZ3ARGF3060 SS+5d |  | -46d |
| DUKHCONP2BZ3ARGF3075 |  | Carpentry & Joinery Works | 18d | 2014-04-13 | 2014-05-03 | DUKHCONP2BZ3ARGF3065 SS+5d, DUKHCONP2BZ3ARGF3065 FF+5d |  | -46d |
| DUKHCONP2BZ3ARGF3040 |  | Cobble Tile flooring | 15d | 2014-04-14 | 2014-04-30 | DUKHCONP2BZ3ARGF3025 FF+13d, DUKHCONP2BZ3ARGF3010 SS+13d, DUKHCONP2BZ3ARGF3010 FF+13d, DUKHCONP2BZ3ARGF3035 SS+13d, DUKHCONP2BZ3ARGF3025 SS+13d, DUKHCONP2BZ3ARGF3035 FF+13d, DUKHCONP2AZ2ARGF3040 |  | -40d |
| DUKHCONP2BZ3ARGF3080 |  | Aluminum windows | 18d | 2014-04-24 | 2014-05-14 | DUKHCONP2BZ3ARGF3065 |  | -14d |
| DUKHCONP2BZ3ARGF3090 |  | Installation of Granite Counter Top | 15d | 2014-05-11 | 2014-05-27 | DUKHCONP2BZ3ARGF3075 FF+6d, DUKHCONP2BZ3ARGF3075 SS+7d, DUKHCONP2AZ2ARGF3090 |  | -55d |
| DUKHCONP2BZ3ARGF3095 |  | Final Painting | 25d | 2014-05-17 | 2014-06-14 | DUKHCONP2BZ3ARGF3060 SS+8d, DUKHCONP2BZ3ARGF3065, DUKHCONP2BZ3ARGF3035 SS+13d, DUKHCONP2BZ3ACGF4610 FF+10d, DUKHCONP2BZ3ARGF3030 SS+10d, DUKHCONP2BZ3ARGF3030 FF+10d, DUKHCONP2BZ3ARGF3060 FF+8d, DUKHCONP2BZ3ARGF3080 FF+8d, DUKHCONP2BZ3ARGF3035 FF+13d, DUKHCONP2BZ3ACGF4610 SS+10d, DUKHCONP2BZ3ARGF3040 SS+13d, DUKHCONP2BZ3ARGF3090 FF+5d, DUKHCONP2BZ3ARGF3090 SS+5d, DUKHCONP2BZ3ARGF3040 FF+13d, DUKHCONP2BZ3ARGF3080 SS+8d |  | -25d |
|  | 15 | **EXTERNAL FINISHES** |  | 2014-01-14 | 2014-04-14 |  |  |  |

| ID | WBS | Task | Duration | Start | Finish | Predecessors | Total float |
| --- | --- | --- | --- | --- | --- | --- | --- |
|  | 10 | **ROOF** |  | 2014-01-14 | 2014-03-17 |  |  |
| DUKHCONP2BZ3ARRF3625 |  | Laying of Pitched Roof | 25d | 2014-01-14 | 2014-02-12 | DUKHCONP2BZ3STRF2065 FF+10d, DUKHCONP2BZ3STRF2065 SS+10d, DUKHCONP2BZ3STRF2060 FF+10d, DUKHCONP2AZ2ARRF3625, DUKHCONP2BZ3STRF2060 SS+10d | -33d |
| DUKHCONP2BZ3ARRF3630 |  | Leveling Screed for Waterproofing | 18d | 2014-01-28 | 2014-02-18 | DUKHCONP2BZ3ARRF3625 SS+5d, DUKHCONP2BZ3ARRF3625 FF+5d | -33d |
| DUKHCONP2BZ3ARRF3635 |  | Laying of Waterproofing Membrane | 18d | 2014-02-03 | 2014-02-24 | DUKHCONP2BZ3ARRF3630 FF+5d, DUKHCONP2BZ3ARRF3630 SS+5d | -33d |
| DUKHCONP2BZ3ARRF3640 |  | Installation of Insulation & Protection | 18d | 2014-02-08 | 2014-03-01 | DUKHCONP2AZ2ARRF3640, DUKHCONP2BZ3ARRF3635 SS+4d, DUKHCONP2BZ3ARRF3635 FF+4d | -33d |
| DUKHCONP2BZ3ARRF3645 |  | Lime Stone Chips & Paving slab Installation | 18d | 2014-02-17 | 2014-03-09 | DUKHCONP2BZ3ARRF3640 FF+7d, DUKHCONP2BZ3ARRF3640 SS+7d | -33d |
| DUKHCONP2BZ3ARRF3660 |  | Installation of Access Ladder | 20d | 2014-02-23 | 2014-03-17 | DUKHCONP2BZ3ARRF3645 FF+5d, DUKHCONP2BZ3ARRF3645 SS+5d, DUKHCONP2AZ2ARRF3660 | 1d |
|  | 15 | **ELEVATION** |  | 2014-03-01 | 2014-04-14 |  |  |
| DUKHCONP2BZ3AREL3665 |  | External Plastering | 25d | 2014-03-01 | 2014-03-29 | DUKHCONP2BZ3ARRF3645 FF+10d, DUKHCONP2AZ2AREL3665, DUKHCONP2BZ3STRF2065 SS+7d, DUKHCONP2BZ3STRF2065 FF+7d, DUKHCONP2BZ3ARRF3645 SS+10d | -33d |
| DUKHCONP2BZ3AREL3680 |  | External Painting | 20d | 2014-03-23 | 2014-04-14 | DUKHCONP2BZ3AREL3665 SS+14d, DUKHCONP2AZ2AREL3680, DUKHCONP2BZ3ARRF3660 FF+10d, DUKHCONP2BZ3AREL3665 FF+14d | -13d |
|  | 20 | **MEP WORKS** |  | 2013-06-23 | 2014-06-03 |  |  |
|  | 10 | **ELECTRICAL WORKS** |  | 2013-10-03 | 2014-05-27 |  |  |
|  | 10 | **GROUND FLOOR** |  | 2013-10-03 | 2014-05-27 |  |  |
| DUKHCONP2BZ3ELGF4000 |  | Fixing of wall conduits & switch socket boxes | 20d | 2013-10-03 | 2013-10-28 | DUKHCONP2BZ3ARGF3000 FF+7d, DUKHCONP2BZ3ARGF3000 SS+7d | -11d |
| DUKHCONP2BZ3ELGF4005 |  | Cable tray & trunking installation | 20d | 2014-01-21 | 2014-02-13 | DUKHCONP2BZ3ELGF4000 SS+7d, DUKHCONP2AZ2ELGF4005, DUKHCONP2BZ3ELGF4000 FF+7d | -50d |
| DUKHCONP2BZ3ELGF4010 |  | Installation of wiring & Main Cabling | 20d | 2014-01-29 | 2014-02-22 | DUKHCONP2BZ3ELGF4005 FF+7d, DUKHCONP2BZ3ELGF4005 SS+7d | -50d |
| DUKHCONP2BZ3ELGF4020 |  | Installation of DBS,MCCB Accessories. | 20d | 2014-03-26 | 2014-04-17 | DUKHCONP2BZ3ELGF4010 FF+5d, DUKHCONP2BZ3ARGF3060 SS+7d, DUKHCONP2BZ3ELGF4010 SS+5d, DUKHCONP2BZ3ARGF3060 FF+7d | -48d |
| DUKHCONP2BZ3ELGF4025 |  | Installation of Lighting fixtures & Accessories | 20d | 2014-04-07 | 2014-04-29 | DUKHCONP2BZ3ELGF4020 FF+10d, DUKHCONP2BZ3ELGF4020 SS+10d, DUKHCONP2BZ3ARGF3060 SS+10d, DUKHCONP2BZ3ARGF3060 FF+10d | -48d |
| DUKHCONP2BZ3ELGF4030 |  | Installation of Telephone System | 20d | 2014-04-07 | 2014-04-29 | DUKHCONP2BZ3ELGF4020 SS+10d, DUKHCONP2BZ3ELGF4020 FF+10d, DUKHCONP2BZ3ARGF3060 FF+5d, DUKHCONP2BZ3ARGF3060 SS+5d, DUKHCONP2BZ3MSEX5010 | -45d |
| DUKHCONP2BZ3ELGF4015 |  | Install. of CAMS & Fire Fighting Accessories | 20d | 2014-05-05 | 2014-05-27 | DUKHCONP2AZ2ELGF4015, DUKHCONP2BZ3ARGF3060 SS+14d, DUKHCONP2BZ3ARGF3060 FF+14d | -50d |
|  | 20 | **ROOF** |  | 2014-04-21 | 2014-05-25 |  |  |
| DUKHCONP2BZ3ELRF4070 |  | Installation of Isolator | 18d | 2014-04-21 | 2014-05-11 | DUKHCONP2BZ3ELGF4010 FF+10d, DUKHCONP2BZ3ELGF4025 SS+10d, DUKHCONP2BZ3ELGF4030 FF+7d, DUKHCONP2BZ3ARRF3645 FF+7d, DUKHCONP2BZ3ELGF4030 SS+5d, DUKHCONP2BZ3ELGF4010 SS+10d, DUKHCONP2BZ3ELGF4025 FF+10d, DUKHCONP2BZ3ARRF3645 SS+7d | -48d |
| DUKHCONP2BZ3ELRF4075 |  | Installation of TV Dish Antenna | 20d | 2014-05-03 | 2014-05-25 | DUKHCONP2BZ3ELRF4070 FF+10d, DUKHCONP2BZ3ELRF4070 SS+10d | -48d |
|  | 15 | **PLUMBING, DRAINAGE & FIRE FIGHTING WORKS** |  | 2013-06-23 | 2014-06-03 |  |  |
|  | 10 | **GROUND FLOOR** |  | 2013-06-23 | 2014-06-03 |  |  |
| DUKHCONP2BZ3PLUG4300 |  | Drainage / Storm Pipes in Grade Slab | 20d | 2013-06-23 | 2013-07-15 | DUKHCONP2BZ3STUG1040 SS+7d, DUKHCONP2BZ3STUG1040 FF+7d | -14d |
| DUKHCONP2BZ3PLGF4305 |  | Installation of Plumbing pipes & testing | 20d | 2013-10-03 | 2013-10-28 | DUKHCONP2BZ3ARGF3000 FF+7d, DUKHCONP2BZ3ARGF3000 SS+7d | -11d |
| DUKHCONP2BZ3PLGF4310 |  | Installation of Drainage pipes &testing | 18d | 2013-10-06 | 2013-10-28 | DUKHCONP2BZ3ARGF3000 FF+7d, DUKHCONP2BZ3PLGF4305 FF, DUKHCONP2BZ3PLGF4305 SS, DUKHCONP2BZ3ARGF3000 SS+7d | 14d |
| DUKHCONP2BZ3PLGF4315 |  | Sanitary Fittings & Accessories | 20d | 2014-05-06 | 2014-05-28 | DUKHCONP2BZ3PLGF4310 FF+5d, DUKHCONP2BZ3ARGF3065 SS+5d, DUKHCONP2AZ2PLGF4315, DUKHCONP2BZ3PLGF4310 SS+5d, DUKHCONP2BZ3ARGF3065 FF+5d | -56d |
| DUKHCONP2BZ3PLGF4320 |  | Installation of Water Heater | 15d | 2014-05-18 | 2014-06-03 | DUKHCONP2BZ3ARGF3060 SS+5d, DUKHCONP2BZ3ARGF3060 FF+5d, DUKHCONP2BZ3PLGF4315 FF+5d, DUKHCONP2BZ3PLGF4315 SS+5d | -16d |
|  | 20 | **ROOF** |  | 2014-03-20 | 2014-04-06 |  |  |
| DUKHCONP2BZ3PLRF4350 |  | Installation of Rain water Pipes | 15d | 2014-03-20 | 2014-04-06 | DUKHCONP2BZ3PLGF4310 SS+5d, DUKHCONP2BZ3AREL3665 FF+7d, DUKHCONP2BZ3PLGF4310 FF+5d, DUKHCONP2BZ3ARRF3645 SS+5d, DUKHCONP2BZ3PLGF4305 FF+5d, DUKHCONP2AZ2PLRF4350, DUKHCONP2BZ3AREL3665 SS+7d, DUKHCONP2BZ3PLGF4305 SS+5d, DUKHCONP2BZ3ARRF3645 FF+5d | -23d |
|  | 20 | **AC WORKS** |  | 2014-02-03 | 2014-05-24 |  |  |
|  | 10 | **GROUND FLOOR** |  | 2014-02-03 | 2014-05-18 |  |  |
| DUKHCONP2BZ3ACGF4600 |  | Installation AC Pipes | 20d | 2014-02-03 | 2014-02-26 | DUKHCONP2AZ2ACGF4600, DUKHCONP2BZ3ARGF3005 FF+7d, DUKHCONP2BZ3ARGF3005 SS+7d | -35d |
| DUKHCONP2BZ3ACGF4605 |  | Fixing of Ventilation Equipments | 25d | 2014-04-03 | 2014-05-01 | DUKHCONP2BZ3ACGF4600 FF+10d, DUKHCONP2BZ3ARGF3060 SS+14d, DUKHCONP2BZ3ACGF4600 SS+10d, DUKHCONP2BZ3ARGF3060 FF+14d | -47d |
| DUKHCONP2BZ3ACGF4610 |  | Fixing of Split AC | 20d | 2014-04-26 | 2014-05-18 | DUKHCONP2BZ3ACGF4605 SS+14d, DUKHCONP2BZ3ACGF4605 FF+14d | -47d |
|  | 20 | **ROOF** |  | 2014-03-05 | 2014-05-24 |  |  |
| DUKHCONP2BZ3ACRF4630 |  | Installation of Refrigerant Pipes | 20d | 2014-03-05 | 2014-03-27 | DUKHCONP2AZ2ACRF4630, DUKHCONP2BZ3ARRF3645 SS+14d, DUKHCONP2BZ3ACGF4600 SS+14d, DUKHCONP2BZ3ACGF4600 FF+14d, DUKHCONP2BZ3ARRF3645 FF+14d | -8d |
| DUKHCONP2BZ3ACRF4635 |  | Installation of Condensing Unit | 20d | 2014-05-01 | 2014-05-24 | DUKHCONP2BZ3ACRF4630 FF+10d, DUKHCONP2BZ3ACRF4630 SS+10d, DUKHCONP2BZ3ACGF4610 SS+5d, DUKHCONP2BZ3ACGF4610 FF+5d | -47d |
|  | 25 | **EXTERNAL WORKS** |  | 2013-12-19 | 2014-05-13 |  |  |
|  | 10 | **MISCELLANEOUS** |  | 2013-12-19 | 2014-03-16 |  |  |
| DUKHCONP2BZ3MSEX5000 |  | Construction of Manholes | 25d | 2013-12-19 | 2014-01-16 | DUKHCONP2BZ3PLGF4310 SS+10d, DUKHCONP2BZ3PLGF4310 FF+10d, DUKHCONP2BZ3STRF2065 FF+5d, DUKHCONP2BZ3STRF2065 SS+5d | -37d |
| DUKHCONP2BZ3MSEX5005 |  | Construction of Soak pit, Chambers | 25d | 2014-01-02 | 2014-01-30 | DUKHCONP2BZ3MSEX5000 FF+12d, DUKHCONP2BZ3MSEX5000 SS+12d | -27d |
| DUKHCONP2BZ3MSEX5015 |  | Construction of grease Trap | 20d | 2014-01-22 | 2014-02-15 | DUKHCONP2BZ3MSEX5005 FF+12d, DUKHCONP2BZ3MSEX5005 SS+12d | -27d |
| DUKHCONP2BZ3MSEX5020 |  | Construction Entrance Ramp | 20d | 2014-01-22 | 2014-02-15 | DUKHCONP2BZ3STRF2065 SS, DUKHCONP2AZ2MSEX5020, DUKHCONP2BZ3STRF2065 FF | -33d |
| DUKHCONP2BZ3MSEX5055 |  | Installation Steel Door | 20d | 2014-02-03 | 2014-02-26 | DUKHCONP2BZ3MSEX5020 SS+10d | -33d |
| DUKHCONP2BZ3MSEX5010 |  | Telephone cable laying | 25d | 2014-02-16 | 2014-03-16 | DUKHCONP2BZ3MSEX5015 | -27d |
| DUKHCONP2BZ3MSEX5025 |  | SS.Handrails and Balustrades | 20d | 2014-02-16 | 2014-03-10 | DUKHCONP2BZ3MSEX5020 FF+10d, DUKHCONP2BZ3MSEX5055 SS+10d, DUKHCONP2BZ3MSEX5020 SS+10d, DUKHCONP2AZ2MSEX5025 | -33d |
|  | 15 | **WATER TANK ENCLOSURE** |  | 2014-01-26 | 2014-05-13 |  |  |
| DUKHCONP2BZ3WEEX5030 |  | Excavation | 20d | 2014-01-26 | 2014-02-18 | DUKHCONP2AZ2WEEX5030, DUKHCONP2BZ3STRF2065 FF+7d, DUKHCONP2BZ3STRF2065 SS+7d | -48d |
| DUKHCONP2BZ3WEEX5035 |  | Construction of Raft | 25d | 2014-02-03 | 2014-03-04 | DUKHCONP2BZ3WEEX5030 FF+10d, DUKHCONP2BZ3WEEX5030 SS+7d | -48d |
| DUKHCONP2BZ3WEEX5040 |  | Block works & Plastering | 25d | 2014-02-13 | 2014-03-13 | DUKHCONP2BZ3WEEX5035 SS+8d, DUKHCONP2BZ3WEEX5035 FF+8d | -28d |
| DUKHCONP2BZ3MSEX5335 |  | Aluminum Roll-up Shutter with 2m Wall | 25d | 2014-02-16 | 2014-03-16 | DUKHCONI2BZ1BWGL5325 SS+7d | 27d |
| DUKHCONP2BZ3WEEX5045 |  | Flooring & Painting | 25d | 2014-02-25 | 2014-03-25 | DUKHCONP2BZ3WEEX5040 FF+10d, DUKHCONP2BZ3WEEX5040 SS+10d | -28d |
| DUKHCONP2BZ3WEEX5050 |  | Installation of Steel Gate | 20d | 2014-03-15 | 2014-04-06 | DUKHCONP2BZ3MSEX5025 SS+10d, DUKHCONP2BZ3MSEX5025 FF+10d, DUKHCONP2BZ3WEEX5045 SS+5d, DUKHCONP2AZ2WEEX5050, DUKHCONP2BZ3WEEX5045 FF+10d | -28d |
| DUKHCONP2BZ3WEEX5060 |  | Structural steel & SS Shed cover installation | 25d | 2014-03-20 | 2014-04-17 | DUKHCONP2BZ3WEEX5050 FF+10d, DUKHCONP2BZ3WEEX5050 SS+5d | -28d |
| DUKHCONP2BZ3WEEX5065 |  | Install. of Water Tank,Chiller,Pump & Meter | 25d | 2014-04-13 | 2014-05-11 | DUKHCONP2BZ3PLRF4350 SS+5d, DUKHCONP2BZ3WEEX5060 SS+10d, DUKHCONP2BZ3WEEX5060 FF+10d, DUKHCONP2BZ3MSEX5015 SS+5d, DUKHCONP2AZ2WEEX5065, DUKHCONP2BZ3PLRF4350 FF+5d, DUKHCONP2BZ3MSEX5015 FF+5d | -38d |
| DUKHCONP2BZ3WEEX5070 |  | Installation ladder for water Tank | 20d | 2014-04-21 | 2014-05-13 | DUKHCONP2AZ2WEEX5070, DUKHCONP2BZ3WEEX5065 SS+7d | -38d |
|  | 20 | **HARD LANDSCAPING** |  | 2014-02-24 | 2014-04-14 |  |  |
| DUKHCONP2BZ3HDEX5090 |  | kerb works | 20d | 2014-02-24 | 2014-03-18 | DUKHCONP2BZ3MSEX5020 SS+7d, DUKHCONP2AZ2HDEX5090, DUKHCONP2BZ3MSEX5020 FF+7d, DUKHCONP2BZ3MSEX5025 SS+7d | -33d |
| DUKHCONP2BZ3HDEX5095 |  | Cobble Stone Works | 20d | 2014-03-08 | 2014-03-30 | DUKHCONP2BZ3HDEX5090 SS+10d, DUKHCONP2BZ3HDEX5090 FF+10d | -33d |
| DUKHCONP2BZ3HDEX5100 |  | Interlock works | 20d | 2014-03-23 | 2014-04-14 | DUKHCONP2BZ3HDEX5095 SS+13d, DUKHCONP2BZ3HDEX5095 FF+13d | -33d |
|  | 25 | **SOFT LANDSCAPING** |  | 2014-04-03 | 2014-05-07 |  |  |
| DUKHCONP2BZ3SLEX5105 |  | Laying of Grass/ green area | 20d | 2014-04-03 | 2014-04-26 | DUKHCONP2BZ3HDEX5100 SS+10d, DUKHCONP2AZ2SLEX5105, DUKHCONP2BZ3HDEX5100 FF+10d | -33d |
| DUKHCONP2BZ3SLEX5110 |  | Laying of Palm tree | 20d | 2014-04-15 | 2014-05-07 | DUKHCONP2BZ3SLEX5105 FF+10d, DUKHCONP2BZ3SLEX5105 SS+10d, DUKHCONP2AZ2SLEX5110 | 7d |
|  | 30 | **TESTING AND COMMISSIONING** |  | 2014-06-15 | 2014-07-13 |  |  |
| DUKHCONP2BZ3ACTC8000 |  | Pre-Commissioning & Testing of AC Works | 25d | 2014-06-15 | 2014-07-13 | DUKHCONP2BZ3ARRF3660, DUKHCONP2BZ3MSEX5005, DUKHCONP2BZ3SLEX5110, DUKHCONP2BZ3ACRF4635, DUKHCONP2BZ3ARGF3095, DUKHCONP2BZ3AREL3680, DUKHCONP2BZ3SLEX5105, DUKHCONP2BZ3HDEX5100 | -25d |
| DUKHCONP2BZ3ELTC8010 |  | Pre-Commissioning & Testing of Electrical Works | 25d | 2014-06-15 | 2014-07-13 | DUKHCONP2BZ3AREL3680, DUKHCONP2BZ3HDEX5100, DUKHCONP2BZ3ELGF4030, DUKHCONP2BZ3MSEX5005, DUKHCONP2BZ3ARGF3095, DUKHCONP2BZ3SLEX5110, DUKHCONP2BZ3ELGF4025, DUKHCONP2BZ3ARRF3660, DUKHCONP2BZ3ELGF4015, DUKHCONP2BZ3ELRF4075, DUKHCONP2BZ3SLEX5105 | -25d |
| DUKHCONP2BZ3PLTC8005 |  | Pre-Commissioning & Testing of Plumbing Works | 25d | 2014-06-15 | 2014-07-13 | DUKHCONP2BZ3PLGF4320, DUKHCONP2BZ3ARRF3660, DUKHCONP2BZ3PLRF4350, DUKHCONP2BZ3AREL3680, DUKHCONP2BZ3WEEX5065, DUKHCONP2BZ3HDEX5100, DUKHCONP2BZ3MSEX5005, DUKHCONP2BZ3ARGF3095, DUKHCONP2BZ3SLEX5105, DUKHCONP2BZ3SLEX5110 | -25d |

| ID | WBS | Task | Duration | Start | Finish | Predecessors | Total float |
| --- | --- | --- | --- | --- | --- | --- | --- |
|  | 25 | **ZONE- 4 (3 Twin Villas)** |  | 2013-04-27 | 2014-07-30 |  |  |
|  | 10 | **STRUCTURAL WORKS** |  | 2013-04-27 | 2014-01-28 |  |  |
|  | 10 | **SUB STRUCTURE** |  | 2013-04-27 | 2013-09-02 |  |  |
|  | 10 | **UPTO GRADE SLAB** |  | 2013-04-27 | 2013-09-02 |  |  |
| DUKHCONP2BZ4STUG1000 |  | Footing Excavation | 25d | 2013-04-27 | 2013-05-25 | DUKHCONP2BZ3STUG1000 | -15d |
| DUKHCONP2BZ4STUG1005 |  | Footing Antitermite | 20d | 2013-05-08 | 2013-05-30 | DUKHCONP2BZ4STUG1000 SS+5d, DUKHCONP2BZ4STUG1000 FF+5d | -15d |
| DUKHCONP2BZ4STUG1010 |  | Footing Blinding | 20d | 2013-05-11 | 2013-06-02 | DUKHCONP2BZ4STUG1005 SS+2d, DUKHCONP2BZ4STUG1005 FF+2d | -15d |
| DUKHCONP2BZ4STUG1015 |  | Footing Waterproofing & Screed | 20d | 2013-05-16 | 2013-06-08 | DUKHCONP2BZ4STUG1010 SS+5d, DUKHCONP2BZ4STUG1010 FF+5d | -15d |
| DUKHCONP2BZ4STUG1020 |  | Construction of foundations | 20d | 2013-05-26 | 2013-06-17 | DUKHCONP2BZ4STUG1015 SS+8d, DUKHCONP2BZ3STUG1020, DUKHCONP2BZ4STUG1015 FF+8d | -15d |
| DUKHCONP2BZ4STUG1025 |  | Construction of neck of columns | 20d | 2013-06-04 | 2013-06-26 | DUKHCONP2BZ4STUG1020 FF+8d, DUKHCONP2BZ4STUG1020 SS+8d | -15d |
| DUKHCONP2BZ4STUG1030 |  | Waterproofing Footing & Neck Column | 20d | 2013-06-13 | 2013-07-06 | DUKHCONP2BZ4STUG1025 FF+8d, DUKHCONP2BZ4STUG1025 SS+8d | -15d |
| DUKHCONP2BZ4STUG1035 |  | Backfilling Upto Grade Beam Bottom | 20d | 2013-06-25 | 2013-07-17 | DUKHCONP2BZ4STUG1030 FF+10d, DUKHCONP2BZ4STUG1030 SS+10d, DUKHCONP2BZ3STUG1035 | -15d |
| DUKHCONP2BZ4STUG1040 |  | Construction of Grade Beams | 25d | 2013-07-08 | 2013-08-05 | DUKHCONP2BZ4STUG1035 FF+10d, DUKHCONP2BZ3STUG1040, DUKHCONP2BZ4STUG1035 SS+10d | -16d |
| DUKHCONP2BZ4STUG1045 |  | Construction of slab on grade | 25d | 2013-08-01 | 2013-09-02 | DUKHCONP2BZ4PLUG4300 SS+8d, DUKHCONP2BZ4STUG1040 FF+10d, DUKHCONP2BZ4STUG1040 SS+10d, DUKHCONP2BZ4PLUG4300 FF+8d | -16d |
|  | 15 | **SUPERSTRUCTURE** |  | 2013-08-22 | 2014-01-28 |  |  |
|  | 10 | **GROUND FLOOR** |  | 2013-08-22 | 2013-10-13 |  |  |
| DUKHCONP2BZ4STGF2000 |  | Column-Rebar & Formwork | 20d | 2013-08-22 | 2013-09-14 | DUKHCONP2BZ3STGF2000, DUKHCONP2BZ4STUG1045 FF+10d, DUKHCONP2BZ4STUG1045 SS+10d | -16d |
| DUKHCONP2BZ4STGF2005 |  | Column-Concrete | 15d | 2013-09-02 | 2013-09-18 | DUKHCONP2BZ4STGF2000 SS+7d, DUKHCONP2BZ4STGF2000 FF+4d | -16d |
| DUKHCONP2BZ4STGF2010 |  | Beam, Stairs ,Slab-Rebar & Formwork | 25d | 2013-09-10 | 2013-10-08 | DUKHCONP2BZ4STGF2005 FF+7d, DUKHCONP2BZ4STGF2005 SS+7d | -16d |
| DUKHCONP2BZ4STGF2015 |  | Beam, Stairs ,Slab-Concrete | 15d | 2013-09-26 | 2013-10-13 | DUKHCONP2BZ4STGF2010 FF+4d, DUKHCONP2BZ4STGF2010 SS+10d, DUKHCONP2BZ3STGF2015 | -16d |
|  | 20 | **ROOF** |  | 2013-12-30 | 2014-01-28 |  |  |
| DUKHCONP2BZ4STRF2060 |  | Construction of Parapets | 20d | 2013-12-30 | 2014-01-21 | DUKHCONP2BZ4STGF2015 SS+7d, DUKHCONP2BZ3STRF2060, DUKHCONP2BZ4STGF2015 FF+7d | -44d |
| DUKHCONP2BZ4STRF2065 |  | Construction of up stands/Plinth | 20d | 2014-01-06 | 2014-01-28 | DUKHCONP2BZ4STRF2060 FF+6d, DUKHCONP2BZ4STRF2060 SS+6d | -32d |
|  | 15 | **FINISHING WORKS** |  | 2013-10-23 | 2014-07-01 |  |  |
|  | 10 | **INTERNAL FINISHES** |  | 2013-10-23 | 2014-07-01 |  |  |
|  | 10 | **GROUND FLOOR** |  | 2013-10-23 | 2014-07-01 |  |  |
| DUKHCONP2BZ4ARGF3000 |  | Block work | 25d | 2013-10-23 | 2013-11-20 | DUKHCONP2BZ4STGF2015 SS+21d, DUKHCONP2BZ3ARGF3000, DUKHCONP2BZ4STGF2015 FF+21d | -16d |
| DUKHCONP2BZ4ARGF3005 |  | Plastering work | 25d | 2013-11-16 | 2013-12-14 | DUKHCONP2BZ4PLGF4305 FF+8d, DUKHCONP2BZ4ELGF4000 SS+5d, DUKHCONP2BZ3ARGF3005, DUKHCONP2BZ4PLGF4305 SS+8d, DUKHCONP2BZ4ARGF3000 FF+8d, DUKHCONP2BZ4ARGF3000 SS+8d, DUKHCONP2BZ4ELGF4000 FF+5d | -16d |
| DUKHCONP2BZ4ARGF3010 |  | Flooring screed | 20d | 2013-11-27 | 2013-12-21 | DUKHCONP2BZ3ARGF3010, DUKHCONP2BZ4ARGF3005 FF+5d, DUKHCONP2BZ4ARGF3005 SS+5d | 9d |
| DUKHCONP2BZ4ARGF3015 |  | Wet area waterproofing & Protection Screed | 20d | 2013-12-02 | 2013-12-25 | DUKHCONP2BZ4ARGF3005 SS+9d, DUKHCONP2BZ4ARGF3005 FF+9d | -11d |
| DUKHCONP2BZ4ARGF3020 |  | Ceramic Wall Tiling | 15d | 2013-12-22 | 2014-01-07 | DUKHCONP2BZ4ARGF3015 SS+11d, DUKHCONP2BZ4PLGF4310 FF+5d, DUKHCONP2BZ4PLGF4305 FF+11d, DUKHCONP2BZ4PLGF4305 SS+11d, DUKHCONP2BZ4PLGF4310 SS+5d, DUKHCONP2BZ4ARGF3015 FF+11d | -11d |
| DUKHCONP2BZ4ARGF3025 |  | Porcelain Tile flooring | 20d | 2014-01-07 | 2014-01-29 | DUKHCONP2BZ4ARGF3020 FF+14d, DUKHCONP2BZ3ARGF3025, DUKHCONP2BZ4ARGF3010 FF+14d, DUKHCONP2BZ4ARGF3010 SS+14d, DUKHCONP2BZ4ARGF3020 SS+14d | -11d |
| DUKHCONP2BZ4ARGF3030 |  | Paint First coat | 20d | 2014-03-03 | 2014-03-25 | DUKHCONP2BZ3ARGF3030, DUKHCONP2BZ4ARGF3005 FF+10d, DUKHCONP2BZ4ARGF3005 SS+10d | -57d |
| DUKHCONP2BZ4ARGF3045 |  | Fixing of Suspension systems | 15d | 2014-03-25 | 2014-04-10 | DUKHCONP2BZ4ARGF3030 SS+14d, DUKHCONP2BZ4ARGF3030 FF+14d, DUKHCONP2BZ4ARGF3025 FF+14d, DUKHCONP2BZ4ELGF4010 FF+14d, DUKHCONP2BZ4ELGF4010 SS+14d, DUKHCONP2BZ4ARGF3025 SS+14d | -57d |
| DUKHCONP2BZ4ARGF3060 |  | Gypsum board false ceiling | 20d | 2014-04-10 | 2014-05-03 | DUKHCONP2BZ4ACGF4600 FF+14d, DUKHCONP2BZ3ARGF3060, DUKHCONP2BZ4ARGF3045 FF+14d, DUKHCONP2BZ4ACGF4600 SS+14d, DUKHCONP2BZ4ARGF3045 SS+14d | -57d |
| DUKHCONP2BZ4ARGF3035 |  | Slate Tile Flooring & Skirting | 18d | 2014-04-16 | 2014-05-06 | DUKHCONP2BZ4ARGF3010 FF+13d, DUKHCONP2BZ4ARGF3025 SS+13d, DUKHCONP2BZ3ARGF3035, DUKHCONP2BZ4ARGF3010 SS+13d, DUKHCONP2BZ4ARGF3025 FF+13d | -50d |
| DUKHCONP2BZ4ARGF3065 |  | Wooden door | 15d | 2014-04-28 | 2014-05-14 | DUKHCONP2BZ4ARGF3035 FF+7d, DUKHCONP2BZ4ARGF3035 SS+7d, DUKHCONP2BZ4ARGF3060 SS+5d, DUKHCONP2BZ4ARGF3060 FF+5d | -46d |
| DUKHCONP2BZ4ARGF3075 |  | Carpentry & Joinery Works | 18d | 2014-05-04 | 2014-05-24 | DUKHCONP2BZ4ARGF3065 FF+5d, DUKHCONP2BZ4ARGF3065 SS+5d, DUKHCONP2BZ3ARGF3075 | -46d |
| DUKHCONP2BZ4ARGF3040 |  | Cobble Tile flooring | 15d | 2014-05-05 | 2014-05-21 | DUKHCONP2BZ4ARGF3010 SS+13d, DUKHCONP2BZ3ARGF3040, DUKHCONP2BZ4ARGF3010 FF+13d, DUKHCONP2BZ4ARGF3035 FF+13d, DUKHCONP2BZ4ARGF3025 FF+13d, DUKHCONP2BZ4ARGF3035 SS+13d, DUKHCONP2BZ4ARGF3025 SS+13d | -43d |
| DUKHCONP2BZ4ARGF3080 |  | Aluminum windows | 18d | 2014-05-15 | 2014-06-04 | DUKHCONP2BZ4ARGF3065 | -32d |
| DUKHCONP2BZ4ARGF3090 |  | Installation of Granite Counter Top | 15d | 2014-05-28 | 2014-06-14 | DUKHCONP2BZ3ARGF3090, DUKHCONP2BZ4ARGF3075 SS+7d, DUKHCONP2BZ4ARGF3075 FF+6d | -55d |
| DUKHCONP2BZ4ARGF3095 |  | Final Painting | 25d | 2014-06-03 | 2014-07-01 | DUKHCONP2BZ4ACGF4610 SS+10d, DUKHCONP2BZ4ARGF3040 SS+13d, DUKHCONP2BZ4ARGF3080 SS+8d, DUKHCONP2BZ4ACGF4610 FF+10d, DUKHCONP2BZ4ARGF3030 FF+10d, DUKHCONP2BZ4ARGF3030 SS+10d, DUKHCONP2BZ4ARGF3040 FF+13d, DUKHCONP2BZ4ARGF3065, DUKHCONP2BZ4ARGF3035 FF+13d, DUKHCONP2BZ4ARGF3035 SS+13d, DUKHCONP2BZ4ARGF3090 SS+5d, DUKHCONP2BZ4ARGF3080 FF+8d, DUKHCONP2BZ4ARGF3060 SS+8d, DUKHCONP2BZ4ARGF3060 FF+8d, DUKHCONP2BZ4ARGF3090 FF+5d | -40d |
|  | 15 | **EXTERNAL FINISHES** |  | 2014-02-13 | 2014-05-13 |  |  |
|  | 10 | **ROOF** |  | 2014-02-13 | 2014-04-15 |  |  |
| DUKHCONP2BZ4ARRF3625 |  | Laying of Pitched Roof | 25d | 2014-02-13 | 2014-03-13 | DUKHCONP2BZ4STRF2060 SS+10d, DUKHCONP2BZ4STRF2065 FF+10d, DUKHCONP2BZ3ARRF3625, DUKHCONP2BZ4STRF2060 FF+10d, DUKHCONP2BZ4STRF2065 SS+10d | -33d |
| DUKHCONP2BZ4ARRF3630 |  | Leveling Screed for Waterproofing | 18d | 2014-02-27 | 2014-03-19 | DUKHCONP2BZ4ARRF3625 SS+5d, DUKHCONP2BZ4ARRF3625 FF+5d | -33d |
| DUKHCONP2BZ4ARRF3635 |  | Laying of Waterproofing Membrane | 18d | 2014-03-05 | 2014-03-25 | DUKHCONP2BZ4ARRF3630 FF+5d, DUKHCONP2BZ4ARRF3630 SS+5d | -33d |
| DUKHCONP2BZ4ARRF3640 |  | Installation of Insulation & Protection | 18d | 2014-03-10 | 2014-03-30 | DUKHCONP2BZ3ARRF3640, DUKHCONP2BZ4ARRF3635 FF+4d, DUKHCONP2BZ4ARRF3635 SS+4d | -33d |
| DUKHCONP2BZ4ARRF3645 |  | Lime Stone Chips & Paving slab Installation | 18d | 2014-03-18 | 2014-04-07 | DUKHCONP2BZ4ARRF3640 SS+7d, DUKHCONP2BZ4ARRF3640 FF+7d | -33d |
| DUKHCONP2BZ4ARRF3660 |  | Installation of Access Ladder | 20d | 2014-03-24 | 2014-04-15 | DUKHCONP2BZ4ARRF3645 SS+5d, DUKHCONP2BZ4ARRF3645 FF+5d, DUKHCONP2BZ3ARRF3660 | -4d |
|  | 15 | **ELEVATION** |  | 2014-03-30 | 2014-05-13 |  |  |
| DUKHCONP2BZ4AREL3665 |  | External Plastering | 25d | 2014-03-30 | 2014-04-27 | DUKHCONP2BZ4STRF2065 SS+7d, DUKHCONP2BZ3AREL3665, DUKHCONP2BZ4STRF2065 FF+7d, DUKHCONP2BZ4ARRF3645 SS+10d, DUKHCONP2BZ4ARRF3645 FF+10d | -33d |
| DUKHCONP2BZ4AREL3680 |  | External Painting | 20d | 2014-04-21 | 2014-05-13 | DUKHCONP2BZ3AREL3680, DUKHCONP2BZ4AREL3665 FF+14d, DUKHCONP2BZ4ARRF3660 FF+10d, DUKHCONP2BZ4AREL3665 SS+14d | -18d |
|  | 20 | **MEP WORKS** |  | 2013-07-23 | 2014-06-26 |  |  |
|  | 10 | **ELECTRICAL WORKS** |  | 2013-11-06 | 2014-06-19 |  |  |
|  | 10 | **GROUND FLOOR** |  | 2013-11-06 | 2014-06-19 |  |  |
| DUKHCONP2BZ4ELGF4000 |  | Fixing of wall conduits & switch socket boxes | 20d | 2013-11-06 | 2013-11-28 | DUKHCONP2BZ4ARGF3000 FF+7d, DUKHCONP2BZ4ARGF3000 SS+7d | -13d |
| DUKHCONP2BZ4ELGF4005 |  | Cable tray & trunking installation | 20d | 2014-02-15 | 2014-03-09 | DUKHCONP2BZ4ELGF4000 FF+7d, DUKHCONP2BZ4ELGF4000 SS+7d, DUKHCONP2BZ3ELGF4005 | -50d |
| DUKHCONP2BZ4ELGF4010 |  | Installation of wiring & Main Cabling | 20d | 2014-02-23 | 2014-03-17 | DUKHCONP2BZ4ELGF4005 FF+7d, DUKHCONP2BZ4ELGF4005 SS+7d | -50d |
| DUKHCONP2BZ4ELGF4020 |  | Installation of DBS,MCCB Accessories. | 20d | 2014-04-19 | 2014-05-11 | DUKHCONP2BZ4ARGF3060 FF+7d, DUKHCONP2BZ4ELGF4010 FF+5d, DUKHCONP2BZ3ELGF4020, DUKHCONP2BZ4ELGF4010 SS+5d, DUKHCONP2BZ4ARGF3060 SS+7d | -48d |
| DUKHCONP2BZ4ELGF4025 |  | Installation of Lighting fixtures & Accessories | 20d | 2014-04-30 | 2014-05-22 | DUKHCONP2BZ4ARGF3060 SS+10d, DUKHCONP2BZ4ARGF3060 FF+10d, DUKHCONP2BZ4ELGF4020 FF+10d, DUKHCONP2BZ4ELGF4020 SS+10d | -48d |
| DUKHCONP2BZ4ELGF4030 |  | Installation of Telephone System | 20d | 2014-04-30 | 2014-05-22 | DUKHCONP2BZ4ARGF3060 SS+5d, DUKHCONP2BZ4ELGF4020 SS+10d, DUKHCONP2BZ4ARGF3060 FF+5d, DUKHCONP2BZ3ELGF4030, DUKHCONP2BZ4MSEX5010, DUKHCONP2BZ4ELGF4020 FF+10d | -45d |
| DUKHCONP2BZ4ELGF4015 |  | Install. of CAMS & Fire Fighting Accessories | 20d | 2014-05-28 | 2014-06-19 | DUKHCONP2BZ4ARGF3060 FF+14d, DUKHCONP2BZ3ELGF4015, DUKHCONP2BZ4ARGF3060 SS+14d | -50d |
|  | 20 | **ROOF** |  | 2014-05-14 | 2014-06-17 |  |  |
| DUKHCONP2BZ4ELRF4070 |  | Installation of Isolator | 18d | 2014-05-14 | 2014-06-03 | DUKHCONP2BZ4ELGF4010 SS+10d, DUKHCONP2BZ4ELGF4030 SS+5d, DUKHCONP2BZ4ARRF3645 FF+7d, DUKHCONP2BZ4ARRF3645 SS+7d, DUKHCONP2BZ4ELGF4030 FF+7d, DUKHCONP2BZ4ELGF4010 FF+10d, DUKHCONP2BZ4ELGF4025 FF+10d, DUKHCONP2BZ4ELGF4025 SS+10d | -48d |
| DUKHCONP2BZ4ELRF4075 |  | Installation of TV Dish Antenna | 20d | 2014-05-26 | 2014-06-17 | DUKHCONP2BZ4ELRF4070 FF+10d, DUKHCONP2BZ3ELRF4075, DUKHCONP2BZ4ELRF4070 SS+10d | -48d |
|  | 15 | **PLUMBING, DRAINAGE & FIRE FIGHTING WORKS** |  | 2013-07-23 | 2014-06-26 |  |  |
|  | 10 | **GROUND FLOOR** |  | 2013-07-23 | 2014-06-26 |  |  |
| DUKHCONP2BZ4PLUG4300 |  | Drainage / Storm Pipes in Grade Slab | 20d | 2013-07-23 | 2013-08-18 | DUKHCONP2BZ4STUG1040 FF+8d, DUKHCONP2BZ4STUG1040 SS+8d | -16d |
| DUKHCONP2BZ4PLGF4305 |  | Installation of Plumbing pipes & testing | 20d | 2013-11-06 | 2013-11-28 | DUKHCONP2BZ4ARGF3000 FF+7d, DUKHCONP2BZ4ARGF3000 SS+7d | -16d |

| ID | WBS | Task | Duration | Start | Finish | Predecessors | Total float |
| --- | --- | --- | --- | --- | --- | --- | --- |
| DUKHCONP2BZ4PLGF4310 |  | Installation of Drainage pipes &testing | 18d | 2013-11-09 | 2013-11-28 | DUKHCONP2BZ4ARGF3000 FF+7d, DUKHCONP2BZ4PLGF4305 SS, DUKHCONP2BZ3PLGF4310, DUKHCONP2BZ4ARGF3000 SS+7d, DUKHCONP2BZ4PLGF4305 FF | 12d |
| DUKHCONP2BZ4PLGF4315 |  | Sanitary Fittings & Accessories | 20d | 2014-05-29 | 2014-06-21 | DUKHCONP2BZ4PLGF4310 FF+5d, DUKHCONP2BZ3PLGF4315, DUKHCONP2BZ4PLGF4310 SS+5d, DUKHCONP2BZ4ARGF3065 SS+5d, DUKHCONP2BZ4ARGF3065 FF+5d | -56d |
| DUKHCONP2BZ4PLGF4320 |  | Installation of Water Heater | 15d | 2014-06-10 | 2014-06-26 | DUKHCONP2BZ4PLGF4315 FF+5d, DUKHCONP2BZ4ARGF3060 SS+5d, DUKHCONP2BZ4ARGF3060 FF+5d, DUKHCONP2BZ4PLGF4315 SS+5d | -36d |
|  | 20 | **ROOF** |  | 2014-04-19 | 2014-05-05 |  |  |
| DUKHCONP2BZ4PLRF4350 |  | Installation of Rain water Pipes | 15d | 2014-04-19 | 2014-05-05 | DUKHCONP2BZ4ARRF3645 FF+5d, DUKHCONP2BZ4PLGF4310 FF+5d, DUKHCONP2BZ3PLRF4350, DUKHCONP2BZ4PLGF4310 SS+5d, DUKHCONP2BZ4AREL3665 FF+7d, DUKHCONP2BZ4AREL3665 SS+7d, DUKHCONP2BZ4PLGF4305 SS+5d, DUKHCONP2BZ4PLGF4305 FF+5d, DUKHCONP2BZ4ARRF3645 SS+5d | -33d |
|  | 20 | **AC WORKS** |  | 2014-02-27 | 2014-06-16 |  |  |
|  | 10 | **GROUND FLOOR** |  | 2014-02-27 | 2014-06-10 |  |  |
| DUKHCONP2BZ4ACGF4600 |  | Installation AC Pipes | 20d | 2014-02-27 | 2014-03-22 | DUKHCONP2BZ3ACGF4600, DUKHCONP2BZ4ARGF3005 SS+7d, DUKHCONP2BZ4ARGF3005 FF+7d | -35d |
| DUKHCONP2BZ4ACGF4605 |  | Fixing of Ventilation Equipments | 25d | 2014-04-27 | 2014-05-25 | DUKHCONP2BZ4ACGF4600 FF+10d, DUKHCONP2BZ4ARGF3060 FF+14d, DUKHCONP2BZ4ACGF4600 SS+10d, DUKHCONP2BZ4ARGF3060 SS+14d | -47d |
| DUKHCONP2BZ4ACGF4610 |  | Fixing of Split AC | 20d | 2014-05-19 | 2014-06-10 | DUKHCONP2BZ4ACGF4605 SS+14d, DUKHCONP2BZ4ACGF4605 FF+14d | -47d |
|  | 20 | **ROOF** |  | 2014-04-03 | 2014-06-16 |  |  |
| DUKHCONP2BZ4ACRF4630 |  | Installation of Refrigerant Pipes | 20d | 2014-04-03 | 2014-04-26 | DUKHCONP2BZ4ACGF4600 FF+14d, DUKHCONP2BZ3ACRF4630, DUKHCONP2BZ4ACGF4600 SS+14d, DUKHCONP2BZ4ARRF3645 SS+14d, DUKHCONP2BZ4ARRF3645 FF+14d | -13d |
| DUKHCONP2BZ4ACRF4635 |  | Installation of Condensing Unit | 20d | 2014-05-25 | 2014-06-16 | DUKHCONP2BZ4ACRF4630 SS+10d, DUKHCONP2BZ4ACGF4610 FF+5d, DUKHCONP2BZ4ACRF4630 FF+10d, DUKHCONP2BZ3ACRF4635, DUKHCONP2BZ4ACGF4610 SS+5d | -47d |
|  | 25 | **EXTERNAL WORKS** |  | 2014-01-18 | 2014-06-05 |  |  |
|  | 10 | **MISCELLANEOUS** |  | 2014-01-18 | 2014-04-14 |  |  |
| DUKHCONP2BZ4MSEX5000 |  | Construction of Manholes | 25d | 2014-01-18 | 2014-02-16 | DUKHCONP2BZ3MSEX5000, DUKHCONP2BZ4STRF2065 FF+5d, DUKHCONP2BZ4PLGF4310 FF+10d, DUKHCONP2BZ4PLGF4310 SS+10d, DUKHCONP2BZ4STRF2065 SS+5d | -37d |
| DUKHCONP2BZ4MSEX5005 |  | Construction of Soak pit, Chambers | 25d | 2014-02-01 | 2014-03-02 | DUKHCONP2BZ4MSEX5000 SS+12d, DUKHCONP2BZ4MSEX5000 FF+12d | -32d |
| DUKHCONP2BZ4MSEX5020 |  | Construction Entrance Ramp | 20d | 2014-02-16 | 2014-03-10 | DUKHCONP2BZ4STRF2065 FF, DUKHCONP2BZ4STRF2065 SS, DUKHCONP2BZ3MSEX5020 | -33d |
| DUKHCONP2BZ4MSEX5015 |  | Construction of grease Trap | 20d | 2014-02-22 | 2014-03-16 | DUKHCONP2BZ4MSEX5005 SS+12d, DUKHCONP2BZ4MSEX5005 FF+12d | -32d |
| DUKHCONP2BZ4MSEX5055 |  | Installation Steel Door | 20d | 2014-02-27 | 2014-03-22 | DUKHCONP2BZ4MSEX5020 SS+10d | -33d |
| DUKHCONP2BZ4MSEX5025 |  | SS.Handrails and Balustrades | 20d | 2014-03-11 | 2014-04-02 | DUKHCONP2BZ4MSEX5055 SS+10d, DUKHCONP2BZ4MSEX5020 FF+10d, DUKHCONP2BZ4MSEX5020 SS+10d, DUKHCONP2BZ3MSEX5025 | -33d |
| DUKHCONP2BZ4MSEX5010 |  | Telephone cable laying | 25d | 2014-03-17 | 2014-04-14 | DUKHCONP2BZ4MSEX5015 | -32d |
|  | 15 | **WATER TANK ENCLOSURE** |  | 2014-03-05 | 2014-06-05 |  |  |
| DUKHCONP2BZ4WEEX5030 |  | Excavation | 20d | 2014-03-05 | 2014-03-27 | DUKHCONP2BZ3WEEX5035, DUKHCONP2BZ4STRF2065 FF+5d, DUKHCONP2BZ4STRF2065 SS+5d | -48d |
| DUKHCONP2BZ4WEEX5035 |  | Construction of Raft | 25d | 2014-03-11 | 2014-04-08 | DUKHCONP2BZ4WEEX5030 SS+5d, DUKHCONP2BZ4WEEX5030 FF+10d | -48d |
| DUKHCONP2BZ4WEEX5040 |  | Block works & Plastering | 25d | 2014-03-20 | 2014-04-17 | DUKHCONP2BZ4WEEX5035 SS+8d, DUKHCONP2BZ4WEEX5035 FF+8d | -43d |
| DUKHCONP2BZ4WEEX5045 |  | Flooring & Painting | 25d | 2014-04-01 | 2014-04-29 | DUKHCONP2BZ4WEEX5040 SS+10d, DUKHCONP2BZ4WEEX5040 FF+10d | -43d |
| DUKHCONP2BZ4MSEX5335 |  | Aluminum Roll-up Shutter with 2m Wall | 25d | 2014-04-06 | 2014-05-04 | DUKHCONI2BZ2BWGL5325 SS+7d, DUKHCONP2BZ3MSEX5335 | 10d |
| DUKHCONP2BZ4WEEX5050 |  | Installation of Steel Gate | 20d | 2014-04-19 | 2014-05-11 | DUKHCONP2BZ4WEEX5045 FF+10d, DUKHCONP2BZ4WEEX5045 SS+5d, DUKHCONP2BZ4MSEX5025 FF+10d, DUKHCONP2BZ4MSEX5025 SS+10d | -43d |
| DUKHCONP2BZ4WEEX5060 |  | Structural steel & SS Shed cover installation | 25d | 2014-04-24 | 2014-05-22 | DUKHCONP2BZ4WEEX5050 SS+5d, DUKHCONP2BZ4WEEX5050 FF+10d | -43d |
| DUKHCONP2BZ4WEEX5065 |  | Install. of Water Tank,Chiller,Pump & Meter | 25d | 2014-05-06 | 2014-06-03 | DUKHCONP2BZ4PLRF4350 SS+5d, DUKHCONP2BZ4MSEX5015 FF+5d, DUKHCONP2BZ4MSEX5015 SS+5d, DUKHCONP2BZ4WEEX5060 FF+10d, DUKHCONP2BZ4WEEX5060 SS+10d, DUKHCONP2BZ4PLRF4350 FF+5d | -43d |
| DUKHCONP2BZ4WEEX5070 |  | Installation ladder for water Tank | 20d | 2014-05-14 | 2014-06-05 | DUKHCONP2BZ3WEEX5070, DUKHCONP2BZ4WEEX5065 SS+7d | -38d |
|  | 20 | **HARD LANDSCAPING** |  | 2014-03-19 | 2014-05-07 |  |  |
| DUKHCONP2BZ4HDEX5090 |  | kerb works | 20d | 2014-03-19 | 2014-04-10 | DUKHCONP2BZ3HDEX5090, DUKHCONP2BZ4MSEX5020 SS+7d, DUKHCONP2BZ4MSEX5020 FF+7d, DUKHCONP2BZ4MSEX5025 SS+7d | -33d |
| DUKHCONP2BZ4HDEX5095 |  | Cobble Stone Works | 20d | 2014-03-31 | 2014-04-22 | DUKHCONP2BZ4HDEX5090 SS+10d, DUKHCONP2BZ4HDEX5090 FF+10d | -33d |
| DUKHCONP2BZ4HDEX5100 |  | Interlock works | 20d | 2014-04-15 | 2014-05-07 | DUKHCONP2BZ4HDEX5095 SS+13d, DUKHCONP2BZ4HDEX5095 FF+13d | -33d |
|  | 25 | **SOFT LANDSCAPING** |  | 2014-04-27 | 2014-05-31 |  |  |
| DUKHCONP2BZ4SLEX5105 |  | Laying of Grass/ green area | 20d | 2014-04-27 | 2014-05-19 | DUKHCONP2BZ4HDEX5100 FF+10d, DUKHCONP2BZ4HDEX5100 SS+10d, DUKHCONP2BZ3SLEX5105 | -33d |
| DUKHCONP2BZ4SLEX5110 |  | Laying of Palm tree | 20d | 2014-05-08 | 2014-05-31 | DUKHCONP2BZ4SLEX5105 FF+10d, DUKHCONP2BZ4SLEX5105 SS+10d | -33d |
|  | 30 | **TESTING AND COMMISSIONING** |  | 2014-07-02 | 2014-07-30 |  |  |
| DUKHCONP2BZ4ACTC8000 |  | Pre-Commissioning & Testing of AC Works | 25d | 2014-07-02 | 2014-07-30 | DUKHCONP2BZ4HDEX5100, DUKHCONP2BZ4ARRF3660, DUKHCONP2BZ4SLEX5105, DUKHCONP2BZ4MSEX5005, DUKHCONP2BZ4ARGF3095, DUKHCONP2BZ4ACRF4635, DUKHCONP2BZ4SLEX5110, DUKHCONP2BZ4AREL3680 | -40d |
| DUKHCONP2BZ4ELTC8010 |  | Pre-Commissioning & Testing of Electrical Works | 25d | 2014-07-02 | 2014-07-30 | DUKHCONP2BZ4MSEX5005, DUKHCONP2BZ4AREL3680, DUKHCONP2BZ4ELGF4025, DUKHCONP2BZ4ELGF4015, DUKHCONP2BZ4ELGF4030, DUKHCONP2BZ4SLEX5105, DUKHCONP2BZ4ELRF4075, DUKHCONP2BZ4ARRF3660, DUKHCONP2BZ4ARGF3095, DUKHCONP2BZ4HDEX5100, DUKHCONP2BZ4SLEX5110 | -40d |
| DUKHCONP2BZ4PLTC8005 |  | Pre-Commissioning & Testing of Plumbing Works | 25d | 2014-07-02 | 2014-07-30 | DUKHCONP2BZ4SLEX5105, DUKHCONP2BZ4MSEX5005, DUKHCONP2BZ4HDEX5100, DUKHCONP2BZ4ARGF3095, DUKHCONP2BZ4PLGF4320, DUKHCONP2BZ4SLEX5110, DUKHCONP2BZ4WEEX5065, DUKHCONP2BZ4PLRF4350, DUKHCONP2BZ4AREL3680, DUKHCONP2BZ4ARRF3660 | -40d |
|  | 30 | **ZONE - 5 (3 Twin Villas)** |  | 2013-05-26 | 2014-09-06 |  |  |
|  | 10 | **STRUCTURAL WORKS** |  | 2013-05-26 | 2014-02-22 |  |  |
|  | 10 | **SUB STRUCTURE** |  | 2013-05-26 | 2013-09-29 |  |  |
|  | 10 | **UPTO GRADE SLAB** |  | 2013-05-26 | 2013-09-29 |  |  |
| DUKHCONP2BZ5STUG1000 |  | Footing Excavation | 25d | 2013-05-26 | 2013-06-23 | DUKHCONP2BZ4STUG1000 | -13d |
| DUKHCONP2BZ5STUG1005 |  | Footing Antitermite | 20d | 2013-06-06 | 2013-06-29 | DUKHCONP2BZ5STUG1000 FF+5d, DUKHCONP2BZ5STUG1000 SS+5d | -13d |
| DUKHCONP2BZ5STUG1010 |  | Footing Blinding | 20d | 2013-06-09 | 2013-07-01 | DUKHCONP2BZ5STUG1005 SS+2d, DUKHCONP2BZ5STUG1005 FF+2d | -13d |
| DUKHCONP2BZ5STUG1015 |  | Footing Waterproofing & Screed | 20d | 2013-06-15 | 2013-07-07 | DUKHCONP2BZ5STUG1010 FF+5d, DUKHCONP2BZ5STUG1010 SS+5d | -13d |
| DUKHCONP2BZ5STUG1020 |  | Construction of foundations | 20d | 2013-06-24 | 2013-07-16 | DUKHCONP2BZ4STUG1020, DUKHCONP2BZ5STUG1015 SS+8d, DUKHCONP2BZ5STUG1015 FF+8d | -13d |
| DUKHCONP2BZ5STUG1025 |  | Construction of neck of columns | 20d | 2013-07-03 | 2013-07-25 | DUKHCONP2BZ5STUG1020 FF+8d, DUKHCONP2BZ5STUG1020 SS+8d | -13d |
| DUKHCONP2BZ5STUG1030 |  | Waterproofing Footing & Neck Column | 20d | 2013-07-13 | 2013-08-04 | DUKHCONP2BZ5STUG1025 FF+8d, DUKHCONP2BZ5STUG1025 SS+8d | -13d |
| DUKHCONP2BZ5STUG1035 |  | Backfilling Upto Grade Beam Bottom | 20d | 2013-07-24 | 2013-08-19 | DUKHCONP2BZ5STUG1030 FF+10d, DUKHCONP2BZ5STUG1030 SS+10d, DUKHCONP2BZ4STUG1035 | -13d |
| DUKHCONP2BZ5STUG1040 |  | Construction of Grade Beams | 25d | 2013-08-06 | 2013-09-07 | DUKHCONP2BZ5STUG1035 FF+10d, DUKHCONP2BZ5STUG1035 SS+10d, DUKHCONP2BZ4STUG1040 | -14d |
| DUKHCONP2BZ5STUG1045 |  | Construction of slab on grade | 25d | 2013-09-01 | 2013-09-29 | DUKHCONP2BZ5STUG1040 FF+10d, DUKHCONP2BZ5STUG1040 SS+10d, DUKHCONP2BZ5PLUG4300 SS+7d, DUKHCONP2BZ5PLUG4300 FF+7d | -14d |
|  | 15 | **SUPERSTRUCTURE** |  | 2013-09-18 | 2014-02-22 |  |  |
|  | 10 | **GROUND FLOOR** |  | 2013-09-18 | 2013-11-11 |  |  |
| DUKHCONP2BZ5STGF2000 |  | Column-Rebar & Formwork | 20d | 2013-09-18 | 2013-10-10 | DUKHCONP2BZ5STUG1045 SS+10d, DUKHCONP2BZ4STGF2000, DUKHCONP2BZ5STUG1045 FF+10d | -14d |
| DUKHCONP2BZ5STGF2005 |  | Column-Concrete | 15d | 2013-09-29 | 2013-10-15 | DUKHCONP2BZ5STGF2000 SS+7d, DUKHCONP2BZ5STGF2000 FF+4d | -14d |
| DUKHCONP2BZ5STGF2010 |  | Beam, Stairs ,Slab-Rebar & Formwork | 25d | 2013-10-07 | 2013-11-06 | DUKHCONP2BZ5STGF2005 SS+7d, DUKHCONP2BZ5STGF2005 FF+7d | -14d |
| DUKHCONP2BZ5STGF2015 |  | Beam, Stairs ,Slab-Concrete | 15d | 2013-10-26 | 2013-11-11 | DUKHCONP2BZ4STGF2015, DUKHCONP2BZ5STGF2010 SS+10d, DUKHCONP2BZ5STGF2010 FF+4d | -14d |
|  | 20 | **ROOF** |  | 2014-01-22 | 2014-02-22 |  |  |
| DUKHCONP2BZ5STRF2060 |  | Construction of Parapets | 20d | 2014-01-22 | 2014-02-15 | DUKHCONP2BZ4STRF2060, DUKHCONP2BZ5STGF2015 FF+7d, DUKHCONP2BZ5STGF2015 SS+7d | -44d |
| DUKHCONP2BZ5STRF2065 |  | Construction of up stands/Plinth | 20d | 2014-01-29 | 2014-02-22 | DUKHCONP2BZ5STRF2060 FF+6d, DUKHCONP2BZ5STRF2060 SS+6d | -27d |
|  | 15 | **FINISHING WORKS** |  | 2013-11-21 | 2014-07-21 |  |  |
|  | 10 | **INTERNAL FINISHES** |  | 2013-11-21 | 2014-07-21 |  |  |
|  | 10 | **GROUND FLOOR** |  | 2013-11-21 | 2014-07-21 |  |  |
| DUKHCONP2BZ5ARGF3000 |  | Block work | 25d | 2013-11-21 | 2013-12-21 | DUKHCONP2BZ5STGF2015 FF+21d, DUKHCONP2BZ5STGF2015 SS+21d, DUKHCONP2BZ4ARGF3000 | -16d |

| ID | WBS | Task | Duration | Start | Finish | Predecessors | Total float |
| --- | --- | --- | --- | --- | --- | --- | --- |
| DUKHCONP2BZ5ARGF3005 |  | Plastering work | 25d | 2013-12-15 | 2014-01-13 | DUKHCONP2BZ5ARGF3000 SS+8d, DUKHCONP2BZ4ARGF3005, DUKHCONP2BZ5PLGF4305 FF+5d, DUKHCONP2BZ5PLGF4305 SS+8d, DUKHCONP2BZ5ELGF4000 SS+5d, DUKHCONP2BZ5ELGF4000 FF+5d, DUKHCONP2BZ5ARGF3000 FF+8d | -16d |
| DUKHCONP2BZ5ARGF3010 |  | Flooring screed | 20d | 2013-12-28 | 2014-01-19 | DUKHCONP2BZ5ARGF3005 SS+5d, DUKHCONP2BZ4ARGF3010, DUKHCONP2BZ5ARGF3005 FF+5d | 4d |
| DUKHCONP2BZ5ARGF3015 |  | Wet area waterproofing & Protection Screed | 20d | 2014-01-01 | 2014-01-23 | DUKHCONP2BZ5ARGF3005 FF+9d, DUKHCONP2BZ5ARGF3005 SS+9d | -16d |
| DUKHCONP2BZ5ARGF3020 |  | Ceramic Wall Tiling | 15d | 2014-01-20 | 2014-02-05 | DUKHCONP2BZ5PLGF4305 SS+11d, DUKHCONP2BZ5PLGF4305 FF+11d, DUKHCONP2BZ5ARGF3015 SS+11d, DUKHCONP2BZ5ARGF3015 FF+11d, DUKHCONP2BZ5PLGF4310 FF+5d, DUKHCONP2BZ5PLGF4310 SS+5d | -16d |
| DUKHCONP2BZ5ARGF3025 |  | Porcelain Tile flooring | 20d | 2014-02-05 | 2014-03-01 | DUKHCONP2BZ5ARGF3020 FF+14d, DUKHCONP2BZ5ARGF3010 FF+14d, DUKHCONP2BZ4ARGF3025, DUKHCONP2BZ5ARGF3020 SS+14d, DUKHCONP2BZ5ARGF3010 SS+14d | -16d |
| DUKHCONP2BZ5ARGF3030 |  | Paint First coat | 20d | 2014-03-26 | 2014-04-17 | DUKHCONP2BZ5ARGF3005 FF+10d, DUKHCONP2BZ5ARGF3005 SS+10d, DUKHCONP2BZ4ARGF3030 | -57d |
| DUKHCONP2BZ5ARGF3045 |  | Fixing of Suspension systems | 15d | 2014-04-17 | 2014-05-04 | DUKHCONP2BZ5ARGF3025 FF+14d, DUKHCONP2BZ5ELGF4010 FF+14d, DUKHCONP2BZ5ARGF3030 FF+14d, DUKHCONP2BZ5ARGF3030 SS+14d, DUKHCONP2BZ5ARGF3025 SS+14d, DUKHCONP2BZ5ELGF4010 SS+14d | -57d |
| DUKHCONP2BZ5ARGF3060 |  | Gypsum board false ceiling | 20d | 2014-05-04 | 2014-05-26 | DUKHCONP2BZ4ARGF3060, DUKHCONP2BZ5ACGF4600 SS+14d, DUKHCONP2BZ5ARGF3045 FF+14d, DUKHCONP2BZ5ACGF4600 FF+14d, DUKHCONP2BZ5ARGF3045 SS+14d | -57d |
| DUKHCONP2BZ5ARGF3035 |  | Slate Tile Flooring & Skirting | 18d | 2014-05-07 | 2014-05-27 | DUKHCONP2BZ4ARGF3035, DUKHCONP2BZ5ARGF3010 FF+13d, DUKHCONP2BZ5ARGF3025 FF+13d, DUKHCONP2BZ5ARGF3025 SS+13d, DUKHCONP2BZ5ARGF3010 SS+13d | -50d |
| DUKHCONP2BZ5ARGF3065 |  | Wooden door | 15d | 2014-05-19 | 2014-06-04 | DUKHCONP2BZ5ARGF3035 FF+7d, DUKHCONP2BZ5ARGF3035 SS+7d, DUKHCONP2BZ5ARGF3060 SS+5d, DUKHCONP2BZ5ARGF3060 FF+5d | -50d |
| DUKHCONP2BZ5ARGF3075 |  | Carpentry & Joinery Works | 18d | 2014-05-25 | 2014-06-14 | DUKHCONP2BZ5ARGF3065 SS+5d, DUKHCONP2BZ5ARGF3065 FF+5d, DUKHCONP2BZ4ARGF3075 | -46d |
| DUKHCONP2BZ5ARGF3040 |  | Cobble Tile flooring | 15d | 2014-05-26 | 2014-06-11 | DUKHCONP2BZ5ARGF3035 FF+13d, DUKHCONP2BZ5ARGF3010 FF+13d, DUKHCONP2BZ4ARGF3040, DUKHCONP2BZ5ARGF3010 SS+13d, DUKHCONP2BZ5ARGF3025 SS+13d, DUKHCONP2BZ5ARGF3035 SS+13d, DUKHCONP2BZ5ARGF3025 FF+13d | -46d |
| DUKHCONP2BZ5ARGF3080 |  | Aluminum windows | 18d | 2014-06-05 | 2014-06-25 | DUKHCONP2BZ5ARGF3065 | -50d |
| DUKHCONP2BZ5ARGF3090 |  | Installation of Granite Counter Top | 15d | 2014-06-15 | 2014-07-01 | DUKHCONP2BZ5ARGF3075 FF+6d, DUKHCONP2BZ5ARGF3075 SS+7d, DUKHCONP2BZ4ARGF3090 | -55d |
| DUKHCONP2BZ5ARGF3095 |  | Final Painting | 25d | 2014-06-23 | 2014-07-21 | DUKHCONP2BZ5ARGF3030 SS+10d, DUKHCONP2BZ5ARGF3035 SS+13d, DUKHCONP2BZ5ARGF3080 SS+8d, DUKHCONP2BZ5ARGF3030 FF+10d, DUKHCONP2BZ5ARGF3040 SS+13d, DUKHCONP2BZ5ARGF3065, DUKHCONP2BZ5ARGF3080 FF+8d, DUKHCONP2BZ5ARGF3040 FF+13d, DUKHCONP2BZ5ARGF3060 FF+8d, DUKHCONP2BZ5ARGF3090 FF+5d, DUKHCONP2BZ5ARGF3090 SS+5d, DUKHCONP2BZ5ACGF4610 FF+10d, DUKHCONP2BZ5ARGF3035 FF+13d, DUKHCONP2BZ5ACGF4610 SS+10d, DUKHCONP2BZ5ARGF3060 SS+8d | -57d |
|  | 15 | **EXTERNAL FINISHES** |  | 2014-03-15 | 2014-06-11 |  |  |
|  | 10 | **ROOF** |  | 2014-03-15 | 2014-05-14 |  |  |
| DUKHCONP2BZ5ARRF3625 |  | Laying of Pitched Roof | 25d | 2014-03-15 | 2014-04-12 | DUKHCONP2BZ5STRF2065 SS+10d, DUKHCONP2BZ5STRF2060 FF+10d, DUKHCONP2BZ5STRF2060 SS+10d, DUKHCONP2BZ5STRF2065 FF+10d, DUKHCONP2BZ4ARRF3625 | -33d |
| DUKHCONP2BZ5ARRF3630 |  | Leveling Screed for Waterproofing | 18d | 2014-03-29 | 2014-04-17 | DUKHCONP2BZ5ARRF3625 FF+5d, DUKHCONP2BZ5ARRF3625 SS+5d | -33d |
| DUKHCONP2BZ5ARRF3635 |  | Laying of Waterproofing Membrane | 18d | 2014-04-03 | 2014-04-23 | DUKHCONP2BZ5ARRF3630 FF+5d, DUKHCONP2BZ5ARRF3630 SS+5d | -33d |
| DUKHCONP2BZ5ARRF3640 |  | Installation of Insulation & Protection | 18d | 2014-04-08 | 2014-04-28 | DUKHCONP2BZ5ARRF3635 FF+4d, DUKHCONP2BZ4ARRF3640, DUKHCONP2BZ5ARRF3635 SS+4d | -33d |
| DUKHCONP2BZ5ARRF3645 |  | Lime Stone Chips & Paving slab Installation | 18d | 2014-04-16 | 2014-05-06 | DUKHCONP2BZ5ARRF3640 FF+7d, DUKHCONP2BZ5ARRF3640 SS+7d | -33d |
| DUKHCONP2BZ5ARRF3660 |  | Installation of Access Ladder | 20d | 2014-04-22 | 2014-05-14 | DUKHCONP2BZ4ARRF3660, DUKHCONP2BZ5ARRF3645 SS+5d, DUKHCONP2BZ5ARRF3645 FF+5d | -9d |
|  | 15 | **ELEVATION** |  | 2014-04-28 | 2014-06-11 |  |  |
| DUKHCONP2BZ5AREL3665 |  | External Plastering | 25d | 2014-04-28 | 2014-05-26 | DUKHCONP2BZ5ARRF3645 SS+10d, DUKHCONP2BZ4AREL3665, DUKHCONP2BZ5STRF2065 SS+7d, DUKHCONP2BZ5ARRF3645 FF+10d, DUKHCONP2BZ5STRF2065 FF+7d | -33d |
| DUKHCONP2BZ5AREL3680 |  | External Painting | 20d | 2014-05-20 | 2014-06-11 | DUKHCONP2BZ4AREL3680, DUKHCONP2BZ5AREL3665 FF+14d, DUKHCONP2BZ5AREL3665 SS+14d, DUKHCONP2BZ5ARRF3660 FF+10d | -23d |
|  | 20 | **MEP WORKS** |  | 2013-08-24 | 2014-07-20 |  |  |
|  | 10 | **ELECTRICAL WORKS** |  | 2013-12-05 | 2014-07-13 |  |  |
|  | 10 | **GROUND FLOOR** |  | 2013-12-05 | 2014-07-13 |  |  |
| DUKHCONP2BZ5ELGF4000 |  | Fixing of wall conduits & switch socket boxes | 20d | 2013-12-05 | 2013-12-29 | DUKHCONP2BZ5ARGF3000 SS+7d, DUKHCONP2BZ5ARGF3000 FF+7d | -13d |
| DUKHCONP2BZ5ELGF4005 |  | Cable tray & trunking installation | 20d | 2014-03-10 | 2014-04-01 | DUKHCONP2BZ4ELGF4005, DUKHCONP2BZ5ELGF4000 FF+7d, DUKHCONP2BZ5ELGF4000 SS+7d | -50d |
| DUKHCONP2BZ5ELGF4010 |  | Installation of wiring & Main Cabling | 20d | 2014-03-18 | 2014-04-09 | DUKHCONP2BZ5ELGF4005 FF+7d, DUKHCONP2BZ5ELGF4005 SS+7d | -50d |
| DUKHCONP2BZ5ELGF4020 |  | Installation of DBS,MCCB Accessories. | 20d | 2014-05-12 | 2014-06-03 | DUKHCONP2BZ5ARGF3060 SS+7d, DUKHCONP2BZ5ELGF4010 FF+5d, DUKHCONP2BZ5ELGF4010 SS+5d, DUKHCONP2BZ4ELGF4020, DUKHCONP2BZ5ARGF3060 FF+7d | -48d |
| DUKHCONP2BZ5ELGF4025 |  | Installation of Lighting fixtures & Accessories | 20d | 2014-05-24 | 2014-06-15 | DUKHCONP2BZ5ARGF3060 SS+10d, DUKHCONP2BZ5ARGF3060 FF+10d, DUKHCONP2BZ5ELGF4020 FF+10d, DUKHCONP2BZ5ELGF4020 SS+10d | -48d |
| DUKHCONP2BZ5ELGF4030 |  | Installation of Telephone System | 20d | 2014-05-24 | 2014-06-15 | DUKHCONP2BZ5ELGF4020 FF+10d, DUKHCONP2BZ5ARGF3060 SS+5d, DUKHCONP2BZ4ELGF4030, DUKHCONP2BZ5ELGF4020 SS+10d, DUKHCONP2BZ5ARGF3060 FF+5d, DUKHCONP2BZ5MSEX5010 | -45d |
| DUKHCONP2BZ5ELGF4015 |  | Install. of CAMS & Fire Fighting Accessories | 20d | 2014-06-21 | 2014-07-13 | DUKHCONP2BZ5ARGF3060 FF+14d, DUKHCONP2BZ4ELGF4015, DUKHCONP2BZ5ARGF3060 SS+14d | -50d |
|  | 20 | **ROOF** |  | 2014-06-07 | 2014-07-10 |  |  |
| DUKHCONP2BZ5ELRF4070 |  | Installation of Isolator | 18d | 2014-06-07 | 2014-06-26 | DUKHCONP2BZ5ARRF3645 FF+7d, DUKHCONP2BZ5ELGF4010 FF+10d, DUKHCONP2BZ5ELGF4030 SS+5d, DUKHCONP2BZ5ARRF3645 SS+7d, DUKHCONP2BZ5ELGF4010 SS+10d, DUKHCONP2BZ5ELGF4025 SS+10d, DUKHCONP2BZ5ELGF4025 FF+10d, DUKHCONP2BZ5ELGF4030 FF+7d | -48d |
| DUKHCONP2BZ5ELRF4075 |  | Installation of TV Dish Antenna | 20d | 2014-06-18 | 2014-07-10 | DUKHCONP2BZ5ELRF4070 SS+10d, DUKHCONP2BZ4ELRF4075, DUKHCONP2BZ5ELRF4070 FF+10d | -48d |
|  | 15 | **PLUMBING, DRAINAGE & FIRE FIGHTING WORKS** |  | 2013-08-24 | 2014-07-20 |  |  |
|  | 10 | **GROUND FLOOR** |  | 2013-08-24 | 2014-07-20 |  |  |
| DUKHCONP2BZ5PLUG4300 |  | Drainage / Storm Pipes in Grade Slab | 20d | 2013-08-24 | 2013-09-15 | DUKHCONP2BZ5STUG1040 SS+7d, DUKHCONP2BZ5STUG1040 FF+7d | -14d |
| DUKHCONP2BZ5PLGF4305 |  | Installation of Plumbing pipes & testing | 20d | 2013-12-05 | 2013-12-29 | DUKHCONP2BZ5ARGF3000 SS+7d, DUKHCONP2BZ5ARGF3000 FF+7d | -16d |
| DUKHCONP2BZ5PLGF4310 |  | Installation of Drainage pipes &testing | 18d | 2013-12-08 | 2013-12-29 | DUKHCONP2BZ5PLGF4305 FF, DUKHCONP2BZ5ARGF3000 SS+7d, DUKHCONP2BZ5PLGF4305 SS, DUKHCONP2BZ5ARGF3000 FF+7d, DUKHCONP2BZ4PLGF4310 | 12d |
| DUKHCONP2BZ5PLGF4315 |  | Sanitary Fittings & Accessories | 20d | 2014-06-22 | 2014-07-14 | DUKHCONP2BZ5PLGF4310 SS+5d, DUKHCONP2BZ5ARGF3065 SS+5d, DUKHCONP2BZ5PLGF4310 FF+5d, DUKHCONP2BZ4PLGF4315, DUKHCONP2BZ5ARGF3065 FF+5d | -56d |
| DUKHCONP2BZ5PLGF4320 |  | Installation of Water Heater | 15d | 2014-07-03 | 2014-07-20 | DUKHCONP2BZ5ARGF3060 FF+5d, DUKHCONP2BZ5PLGF4315 SS+5d, DUKHCONP2BZ5ARGF3060 SS+5d, DUKHCONP2BZ5PLGF4315 FF+5d | -56d |
|  | 20 | **ROOF** |  | 2014-05-18 | 2014-06-03 |  |  |
| DUKHCONP2BZ5PLRF4350 |  | Installation of Rain water Pipes | 15d | 2014-05-18 | 2014-06-03 | DUKHCONP2BZ5ARRF3645 FF+5d, DUKHCONP2BZ5PLGF4310 SS+5d, DUKHCONP2BZ5AREL3665 FF+7d, DUKHCONP2BZ5ARRF3645 SS+5d, DUKHCONP2BZ5PLGF4305 SS+5d, DUKHCONP2BZ5AREL3665 SS+7d, DUKHCONP2BZ5PLGF4310 FF+5d, DUKHCONP2BZ4PLRF4350, DUKHCONP2BZ5PLGF4305 FF+5d | -33d |
|  | 20 | **AC WORKS** |  | 2014-03-23 | 2014-07-09 |  |  |
|  | 10 | **GROUND FLOOR** |  | 2014-03-23 | 2014-07-03 |  |  |
| DUKHCONP2BZ5ACGF4600 |  | Installation AC Pipes | 20d | 2014-03-23 | 2014-04-14 | DUKHCONP2BZ5ARGF3005 SS+7d, DUKHCONP2BZ4ACGF4600, DUKHCONP2BZ5ARGF3005 FF+7d | -35d |
| DUKHCONP2BZ5ACGF4605 |  | Fixing of Ventilation Equipments | 25d | 2014-05-20 | 2014-06-17 | DUKHCONP2BZ5ACGF4600 SS+10d, DUKHCONP2BZ5ACGF4600 FF+10d, DUKHCONP2BZ5ARGF3060 SS+14d, DUKHCONP2BZ5ARGF3060 FF+14d | -57d |
| DUKHCONP2BZ5ACGF4610 |  | Fixing of Split AC | 20d | 2014-06-11 | 2014-07-03 | DUKHCONP2BZ5ACGF4605 FF+14d, DUKHCONP2BZ5ACGF4605 SS+14d | -57d |
|  | 20 | **ROOF** |  | 2014-05-03 | 2014-07-09 |  |  |
| DUKHCONP2BZ5ACRF4630 |  | Installation of Refrigerant Pipes | 20d | 2014-05-03 | 2014-05-25 | DUKHCONP2BZ5ARRF3645 FF+14d, DUKHCONP2BZ5ARRF3645 SS+14d, DUKHCONP2BZ5ACGF4600 FF+14d, DUKHCONP2BZ4ACRF4630, DUKHCONP2BZ5ACGF4600 SS+14d | -18d |
| DUKHCONP2BZ5ACRF4635 |  | Installation of Condensing Unit | 20d | 2014-06-17 | 2014-07-09 | DUKHCONP2BZ5ACRF4630 SS+10d, DUKHCONP2BZ4ACRF4635, DUKHCONP2BZ5ACRF4630 FF+10d, DUKHCONP2BZ5ACGF4610 SS+5d, DUKHCONP2BZ5ACGF4610 FF+5d | -47d |
|  | 25 | **EXTERNAL WORKS** |  | 2014-02-17 | 2014-07-10 |  |  |
|  | 10 | **MISCELLANEOUS** |  | 2014-02-17 | 2014-05-13 |  |  |
| DUKHCONP2BZ5MSEX5000 |  | Construction of Manholes | 25d | 2014-02-17 | 2014-03-17 | DUKHCONP2BZ4MSEX5000, DUKHCONP2BZ5PLGF4310 FF+10d, DUKHCONP2BZ5STRF2065 SS+5d, DUKHCONP2BZ5PLGF4310 SS+10d, DUKHCONP2BZ5STRF2065 FF+5d | -37d |
| DUKHCONP2BZ5MSEX5005 |  | Construction of Soak pit, Chambers | 25d | 2014-03-03 | 2014-03-31 | DUKHCONP2BZ5MSEX5000 FF+12d, DUKHCONP2BZ5MSEX5000 SS+12d | -37d |
| DUKHCONP2BZ5MSEX5020 |  | Construction Entrance Ramp | 20d | 2014-03-11 | 2014-04-02 | DUKHCONP2BZ5STRF2065 FF, DUKHCONP2BZ5STRF2065 SS, DUKHCONP2BZ4MSEX5020 | -33d |
| DUKHCONP2BZ5MSEX5015 |  | Construction of grease Trap | 20d | 2014-03-23 | 2014-04-14 | DUKHCONP2BZ5MSEX5005 FF+12d, DUKHCONP2BZ5MSEX5005 SS+12d | -37d |
| DUKHCONP2BZ5MSEX5055 |  | Installation Steel Door | 20d | 2014-03-23 | 2014-04-14 | DUKHCONP2BZ5MSEX5020 SS+10d | -33d |
| DUKHCONP2BZ5MSEX5025 |  | SS.Handrails and Balustrades | 20d | 2014-04-03 | 2014-04-26 | DUKHCONP2BZ5MSEX5055 SS+10d, DUKHCONP2BZ5MSEX5020 SS+10d, DUKHCONP2BZ4MSEX5025, DUKHCONP2BZ5MSEX5020 FF+10d | -33d |
| DUKHCONP2BZ5MSEX5010 |  | Telephone cable laying | 25d | 2014-04-15 | 2014-05-13 | DUKHCONP2BZ5MSEX5015 | -37d |
|  | 15 | **WATER TANK ENCLOSURE** |  | 2014-04-09 | 2014-07-10 |  |  |
| DUKHCONP2BZ5WEEX5030 |  | Excavation | 20d | 2014-04-09 | 2014-05-01 | DUKHCONP2BZ5STRF2065 FF+7d, DUKHCONP2BZ4WEEX5035, DUKHCONP2BZ5STRF2065 SS+7d | -48d |
| DUKHCONP2BZ5WEEX5035 |  | Construction of Raft | 25d | 2014-04-15 | 2014-05-13 | DUKHCONP2BZ5WEEX5030 FF+10d, DUKHCONP2BZ5WEEX5030 SS+5d | -48d |
| DUKHCONP2BZ5WEEX5040 |  | Block works & Plastering | 25d | 2014-04-24 | 2014-05-22 | DUKHCONP2BZ5WEEX5035 FF+8d, DUKHCONP2BZ5WEEX5035 SS+8d | -48d |
| DUKHCONP2BZ5MSEX5335 |  | Aluminum Roll-up Shutter with 2m Wall | 25d | 2014-05-05 | 2014-06-02 | DUKHCONI2BZ2BWGL5325, DUKHCONP2BZ4MSEX5335 | 10d |

| ID | WBS | Task | Duration | Start | Finish | Predecessors | Total float |
| --- | --- | --- | --- | --- | --- | --- | --- |
| DUKHCONP2BZ5WEEX5045 |  | Flooring & Painting | 25d | 2014-05-06 | 2014-06-03 | DUKHCONP2BZ5WEEX5040 FF+10d, DUKHCONP2BZ5WEEX5040 SS+10d | -48d |
| DUKHCONP2BZ5WEEX5050 |  | Installation of Steel | 20d | 2014-05-24 | 2014-06-15 | DUKHCONP2BZ5WEEX5045 SS+5d, DUKHCONP2BZ5MSEX5025 FF+10d, DUKHCONP2BZ5MSEX5025 SS+10d, DUKHCONP2BZ5WEEX5045 FF+10d, DUKHCONP2BZ4WEEX5050 | -48d |
| DUKHCONP2BZ5WEEX5060 |  | Structural steel & SS Shed cover installation | 25d | 2014-05-29 | 2014-06-26 | DUKHCONP2BZ5WEEX5050 SS+5d, DUKHCONP2BZ5WEEX5050 FF+10d | -48d |
| DUKHCONP2BZ5WEEX5065 |  | Install. of Water Tank,Chiller,Pump & Meter | 25d | 2014-06-10 | 2014-07-08 | DUKHCONP2BZ5WEEX5060 SS+10d, DUKHCONP2BZ5PLRF4350 FF+5d, DUKHCONP2BZ5MSEX5015 FF+5d, DUKHCONP2BZ5WEEX5060 FF+10d, DUKHCONP2BZ5PLRF4350 SS+5d, DUKHCONP2BZ5MSEX5015 SS+5d, DUKHCONP2BZ4WEEX5065 | -48d |
| DUKHCONP2BZ5WEEX5070 |  | Installation ladder for water Tank | 20d | 2014-06-18 | 2014-07-10 | DUKHCONP2BZ5WEEX5065 SS+7d, DUKHCONP2BZ4WEEX5070 | -48d |
|  | 20 | **HARD LANDSCAPING** |  | 2014-04-12 | 2014-05-31 |  |  |
| DUKHCONP2BZ5HDEX5090 |  | kerb works | 20d | 2014-04-12 | 2014-05-04 | DUKHCONP2BZ5MSEX5020 SS+7d, DUKHCONP2BZ4HDEX5090, DUKHCONP2BZ5MSEX5025 SS+7d, DUKHCONP2BZ5MSEX5020 FF+7d | -33d |
| DUKHCONP2BZ5HDEX5095 |  | Cobble Stone Works | 20d | 2014-04-23 | 2014-05-15 | DUKHCONP2BZ5HDEX5090 FF+10d, DUKHCONP2BZ5HDEX5090 SS+10d | -33d |
| DUKHCONP2BZ5HDEX5100 |  | Interlock works | 20d | 2014-05-08 | 2014-05-31 | DUKHCONP2BZ5HDEX5095 FF+13d, DUKHCONP2BZ5HDEX5095 SS+13d | -33d |
|  | 25 | **SOFT LANDSCAPING** |  | 2014-05-20 | 2014-06-23 |  |  |
| DUKHCONP2BZ5SLEX5105 |  | Laying of Grass/ green area | 20d | 2014-05-20 | 2014-06-11 | DUKHCONP2BZ4SLEX5105, DUKHCONP2BZ5HDEX5100 SS+10d, DUKHCONP2BZ5HDEX5100 FF+10d | -33d |
| DUKHCONP2BZ5SLEX5110 |  | Laying of Palm tree | 20d | 2014-06-01 | 2014-06-23 | DUKHCONP2BZ5SLEX5105 FF+10d, DUKHCONP2BZ4SLEX5110, DUKHCONP2BZ5SLEX5105 SS+10d | -33d |
|  | 30 | **TESTING AND COMMISSIONING** |  | 2014-08-09 | 2014-09-06 |  |  |
| DUKHCONP2BZ5ACTC8000 |  | Pre-Commissioning & Testing of AC Works | 25d | 2014-08-09 | 2014-09-06 | DUKHCONP2BZ5HDEX5100, DUKHCONP2BZ5AREL3680, DUKHCONP2BZ5SLEX5110, DUKHMOBI2BPS00002275 FF, DUKHCONP2BZ5SLEX5105, DUKHCONP2BZ5ACRF4635, DUKHCONP2BZ5ARGF3095, DUKHCONP2BZ5MSEX5005, DUKHMOBP2BPS00002240 FF, DUKHCONP2BZ5ARRF3660 | -69d |
| DUKHCONP2BZ5ELTC8010 |  | Pre-Commissioning & Testing of Electrical Works | 25d | 2014-08-09 | 2014-09-06 | DUKHCONP2BZ5ELGF4025, DUKHMOBI2BPS00002275 FF, DUKHCONP2BZ5ELGF4015, DUKHCONP2BZ5AREL3680, DUKHCONP2BZ5ARRF3660, DUKHCONP2BZ5ARGF3095, DUKHCONP2BZ5MSEX5005, DUKHCONP2BZ5ELRF4075, DUKHCONP2BZ5HDEX5100, DUKHCONP2BZ5SLEX5105, DUKHMOBP2BPS00002240 FF, DUKHCONP2BZ5ELGF4030, DUKHCONP2BZ5SLEX5110 | -69d |
| DUKHCONP2BZ5PLTC8005 |  | Pre-Commissioning & Testing of Plumbing Works | 25d | 2014-08-09 | 2014-09-06 | DUKHCONP2BZ5SLEX5105, DUKHCONP2BZ5AREL3680, DUKHCONP2BZ5MSEX5005, DUKHCONP2BZ5SLEX5110, DUKHCONP2BZ5ARGF3095, DUKHCONP2BZ5WEEX5070, DUKHCONP2BZ5ARRF3660, DUKHCONP2BZ5PLRF4350, DUKHCONP2BZ5WEEX5065, DUKHMOBP2BPS00002240 FF, DUKHMOBI2BPS00002275 FF, DUKHCONP2BZ5PLGF4320, DUKHCONP2BZ5HDEX5100 | -69d |
|  | L50 | **PACKAGE-2B INFRASTRUCTURE WORKS** |  | 2013-08-22 | 2014-08-07 |  |  |
|  | 10 | **ZONE- 1** |  | 2013-08-22 | 2014-04-24 |  |  |
|  | 10 | **INFRASTRUCTURE WORKS** |  | 2013-08-22 | 2014-04-24 |  |  |
|  | 10 | **DRAINAGE LINES** |  | 2013-08-22 | 2013-10-10 |  |  |
| DUKHCONI2BZ1DRGL5115 |  | Excavation for Drainage line | 25d | 2013-08-22 | 2013-09-19 | DUKHCONP2BZ4STGF2000 SS, DUKHENGI2BDWDRAP5430 | 1d |
| DUKHCONI2BZ1DRGL5120 |  | Laying of Drainage line | 25d | 2013-08-29 | 2013-09-26 | DUKHCONI2BZ1DRGL5115 FF+6d, DUKHCONI2BZ1DRGL5115 SS+6d | 1d |
| DUKHCONI2BZ1DRGL5125 |  | Testing of Drainage line | 25d | 2013-09-07 | 2013-10-05 | DUKHCONI2BZ1DRGL5120 SS+7d, DUKHCONI2BZ1DRGL5120 FF+7d | 1d |
| DUKHCONI2BZ1DRGL5130 |  | Backfilling Drainage line | 15d | 2013-09-24 | 2013-10-10 | DUKHCONI2BZ1DRGL5125 FF+5d, DUKHCONI2BZ1DRGL5125 SS+10d | 1d |
|  | 15 | **MANHOLES & SOAKAWAY** |  | 2013-09-24 | 2013-12-16 |  |  |
| DUKHCONI2BZ1SAGL5135 |  | Construction of manholes Drainage | 25d | 2013-09-24 | 2013-10-24 | DUKHCONI2BZ1DRGL5115, DUKHENGI2BDWDRAP5430, DUKHCONI2BZ1DRGL5130 FF+10d | 52d |
| DUKHCONI2BZ1SAGL5140 |  | Construction of soakaways | 25d | 2013-09-24 | 2013-10-24 | DUKHCONI2BZ1DRGL5115, DUKHCONI2BZ1DRGL5130 FF+10d | 1d |
| DUKHCONI2BZ1SAGL5145 |  | Construction of Road gullies | 25d | 2013-10-26 | 2013-11-23 | DUKHCONI2BZ1SAGL5140 | 1d |
| DUKHCONI2BZ1SAGL5150 |  | Connection with existing sewer manhole | 20d | 2013-11-24 | 2013-12-16 | DUKHCONI2BZ1SAGL5135, DUKHCONI2BZ1SAGL5145 | 27d |
|  | 20 | **WATER SUPPLY SYSTEM** |  | 2013-10-06 | 2013-12-23 |  |  |
| DUKHCONI2BZ1WSGL5155 |  | Excavation for water line | 25d | 2013-10-06 | 2013-11-05 | DUKHCONI2BZ1DRGL5130 SS+10d, DUKHENGI2BDWWSAP5450 | 1d |
| DUKHCONI2BZ1WSGL5160 |  | Laying of water line | 25d | 2013-10-12 | 2013-11-11 | DUKHCONI2BZ1WSGL5155 SS+5d | 1d |
| DUKHCONI2BZ1WSGL5165 |  | Testing of potable water line | 25d | 2013-10-20 | 2013-11-17 | DUKHCONI2BZ1WSGL5160 SS+5d | 1d |
| DUKHCONI2BZ1WSGL5170 |  | Backfilling potable water line | 25d | 2013-10-26 | 2013-11-23 | DUKHCONI2BZ1SAGL5145 FF, DUKHCONI2BZ1WSGL5165 SS+5d | 1d |
| DUKHCONI2BZ1WSGL5175 |  | Construction of valve chambers & Thrust Blocks | 25d | 2013-10-31 | 2013-11-28 | DUKHCONI2BZ1WSGL5155 SS+10d, DUKHCONI2BZ1WSGL5170 FF+5d | 22d |
| DUKHCONI2BZ1WSGL5180 |  | Installation of meter ,Accessories & Connection | 20d | 2013-11-30 | 2013-12-23 | DUKHCONI2BZ1WSGL5175 | 22d |
|  | 25 | **FIREFIGHTING LINES** |  | 2013-10-31 | 2013-12-31 |  |  |
| DUKHCONI2BZ1FFGL5185 |  | Excavation for firefighting line | 25d | 2013-10-31 | 2013-11-28 | DUKHENGI2BDWFFAP5440, DUKHCONI2BZ1WSGL5170 SS+5d | 1d |
| DUKHCONI2BZ1FFGL5190 |  | Laying of firefighting line | 25d | 2013-11-09 | 2013-12-07 | DUKHCONI2BZ1FFGL5185 SS+7d | 1d |
| DUKHCONI2BZ1FFGL5195 |  | Testing of firefighting line | 25d | 2013-11-14 | 2013-12-12 | DUKHCONI2BZ1FFGL5190 SS+5d | 1d |
| DUKHCONI2BZ1FFGL5200 |  | Backfilling firefighting line | 25d | 2013-11-20 | 2013-12-19 | DUKHCONI2BZ1FFGL5195 SS+5d | 1d |
| DUKHCONI2BZ1FFGL5205 |  | Construction of valve chambers & Thrust Blocks | 25d | 2013-11-26 | 2013-12-25 | DUKHCONI2BZ1FFGL5200 FF+5d, DUKHCONI2BZ1FFGL5185 SS+10d | 15d |
| DUKHCONI2BZ1FFGL5210 |  | Connection with existing Firewater System | 25d | 2013-12-02 | 2013-12-31 | DUKHCONI2BZ1FFGL5205 FF+5d, DUKHCONI2BZ1WSGL5180 FF | 15d |
|  | 30 | **ELECTRICAL LINES** |  | 2013-11-28 | 2014-01-22 |  |  |
| DUKHCONI2BZ1ELGL5215 |  | Excavation Cable Trenches & Duct Banks | 25d | 2013-11-28 | 2013-12-28 | DUKHENGI2BDWELAP5460, DUKHCONI2BZ1FFGL5200 SS+7d | 3d |
| DUKHCONI2BZ1ELGL5220 |  | Laying of electrical cables | 25d | 2013-12-04 | 2014-01-02 | DUKHCONI2BZ1ELGL5215 SS+5d | 6d |
| DUKHCONI2BZ1ELGL5225 |  | Backfilling Electrical trench | 25d | 2013-12-12 | 2014-01-11 | DUKHCONI2BZ1ELGL5215 FF+7d, DUKHCONI2BZ1ELGL5220 SS+7d | 6d |
| DUKHCONI2BZ1ELGL5230 |  | Construction of Submain Board & Feeder Pillar | 25d | 2013-12-25 | 2014-01-22 | DUKHCONI2BZ1ELGL5225 SS+10d, DUKHCONI2BZ1ELGL5225 FF+10d | 46d |
|  | 35 | **STREET LIGHTING** |  | 2013-11-28 | 2014-02-22 |  |  |
| DUKHCONI2BZ1STGL5235 |  | Excavation for Street lighting | 25d | 2013-11-28 | 2013-12-28 | DUKHCONI2BZ1ELGL5215 SS, DUKHENGI2BDWSTAP5470 | 3d |
| DUKHCONI2BZ1STGL5240 |  | Construction of Duct Banks | 25d | 2013-12-04 | 2014-01-02 | DUKHCONI2BZ1STGL5235 SS+5d | 3d |
| DUKHCONI2BZ1STGL5245 |  | Construction of Foundation | 25d | 2013-12-04 | 2014-01-02 | DUKHCONI2BZ1STGL5240 SS | 3d |
| DUKHCONI2BZ1STGL5250 |  | Backfilling Street Lighting | 25d | 2013-12-10 | 2014-01-08 | DUKHCONI2BZ1STGL5235 FF+5d, DUKHCONI2BZ1STGL5245 SS+5d | 3d |
| DUKHCONI2BZ1STGL5255 |  | Installation of light Post | 25d | 2013-12-23 | 2014-01-20 | DUKHCONI2BZ1STGL5250 SS+10d | 66d |
| DUKHCONI2BZ1STGL5260 |  | Electrical Works | 25d | 2014-01-23 | 2014-02-22 | DUKHCONI2BZ1ELGL5230, DUKHCONI2BZ1STGL5255 SS+7d | 46d |
|  | 40 | **IRRIGATION LINES** |  | 2014-01-12 | 2014-03-19 |  |  |
| DUKHCONI2BZ1IRGL5265 |  | Excavation for irrigation line | 25d | 2014-01-12 | 2014-02-09 | DUKHCONI2BZ1ELGL5225, DUKHENGI2BDWIRAP5490 | 14d |
| DUKHCONI2BZ1IRGL5270 |  | Laying of irrigationline | 25d | 2014-01-18 | 2014-02-16 | DUKHCONI2BZ1IRGL5265 SS+5d | 14d |
| DUKHCONI2BZ1IRGL5275 |  | Testing of irrigation line | 25d | 2014-01-23 | 2014-02-22 | DUKHCONI2BZ1IRGL5270 SS+5d | 14d |
| DUKHCONI2BZ1IRGL5280 |  | Backfilling irrigation line | 25d | 2014-01-29 | 2014-02-27 | DUKHCONI2BZ1IRGL5275 SS+5d | 14d |
| DUKHCONI2BZ1IRGL5285 |  | Construction of Thrust Blocks,Pull boxes | 25d | 2014-02-10 | 2014-03-11 | DUKHCONI2BZ1IRGL5280 FF+10d, DUKHCONI2BZ1ELGL5225 SS+10d | 19d |
| DUKHCONI2BZ1IRGL5290 |  | Irrigation Fittings (Nozzle,Values) | 25d | 2014-02-19 | 2014-03-19 | DUKHCONI2BZ1IRGL5280 SS+10d, DUKHCONI2BZ1IRGL5285 SS+7d | 19d |
|  | 45 | **TELECOMMUNICATION LINES** |  | 2013-12-23 | 2014-02-12 |  |  |
| DUKHCONI2BZ1TCGL5295 |  | Excavation Telecommunication trenches | 20d | 2013-12-23 | 2014-01-14 | DUKHENGI2BDWTCAP5480, DUKHCONI2BZ1STGL5250 SS+10d | 3d |
| DUKHCONI2BZ1TCGL5300 |  | Laying of cables | 20d | 2013-12-29 | 2014-01-20 | DUKHCONI2BZ1TCGL5295 SS+5d | 3d |
| DUKHCONI2BZ1TCGL5305 |  | Backfilling telecommunication trench | 20d | 2014-01-04 | 2014-01-26 | DUKHCONI2BZ1TCGL5300 SS+5d | 3d |
| DUKHCONI2BZ1TCGL5310 |  | Connection & Installation | 20d | 2014-01-20 | 2014-02-12 | DUKHCONI2BZ1TCGL5305 SS+14d | 44d |
|  | 50 | **BOUNDARY WALL** |  | 2013-12-23 | 2014-03-19 |  |  |
| DUKHCONI2BZ1BWGL5315 |  | Construction of Boundary Wall (Ht-3m) | 25d | 2013-12-23 | 2014-01-20 | DUKHCONI2BZ1STGL5250 SS+10d, DUKHENGI2BDWBWAP5510 | 27d |
| DUKHCONI2BZ1BWGL5320 |  | Install.Steel Gate,Entance Barrier (3m Wall) | 25d | 2014-01-08 | 2014-02-05 | DUKHCONI2BZ1BWGL5315 SS+14d | 27d |

| ID | WBS | Task | Duration | Start | Finish | Predecessors | Total float |
| --- | --- | --- | --- | --- | --- | --- | --- |
| DUKHCONI2BZ1BWGL5325 |  | Const. of Villa Front Boundary Wall (Ht-2m) | 25d | 2014-02-06 | 2014-03-08 | DUKHCONI2BZ1BWGL5320, DUKHCONI2BZ1BWGL5315 SS+5d | 27d |
| DUKHCONI2BZ1BWGL5330 |  | Const. of Blockwork fence Wall (Ht-1.85m) | 25d | 2014-02-19 | 2014-03-19 | DUKHCONI2BZ1BWGL5325 SS+10d | 44d |
|  | 55 | **ROAD WORKS** |  | 2014-01-15 | 2014-04-01 |  |  |
| DUKHCONI2BZ1RWGL6000 |  | Excavation & Earth Filling | 10d | 2014-01-15 | 2014-01-26 | DUKHCONI2BZ1ELGL5225, DUKHCONI2BZ1FFGL5210, DUKHENGI2BDWBWAP5510, DUKHCONI2BZ1FFGL5200, DUKHCONI2BZ1STGL5250, DUKHCONI2BZ1SAGL5150, DUKHCONI2BZ1TCGL5305 SS+10d | 3d |
| DUKHCONI2BZ1RWGL6005 |  | Laying of Sub Grade | 25d | 2014-01-27 | 2014-02-25 | DUKHCONI2BZ1RWGL6000 | 3d |
| DUKHCONI2BZ1RWGL6010 |  | Laying of Precast Kerbs | 25d | 2014-02-08 | 2014-03-09 | DUKHCONI2BZ1RWGL6005 SS+10d | 3d |
| DUKHCONI2BZ1RWGL6015 |  | Laying of Granular Sub Base Coarse | 20d | 2014-02-20 | 2014-03-15 | DUKHCONI2BZ1RWGL6010 SS+10d | 3d |
| DUKHCONI2BZ1RWGL6020 |  | Laying of Road Base Asphalt Concrete | 5d | 2014-03-16 | 2014-03-20 | DUKHCONI2BZ1RWGL6015 | 18d |
| DUKHCONI2BZ1RWGL6025 |  | Laying of Asphalt Wearing Coarse | 5d | 2014-03-22 | 2014-03-26 | DUKHCONI2BZ1RWGL6020 | 33d |
| DUKHCONI2BZ1RWGL6030 |  | Traffic Signage & Road Marking | 5d | 2014-03-27 | 2014-04-01 | DUKHCONI2BZ1RWGL6025 | 33d |
|  | 60 | **PARKING SHED** |  | 2014-02-26 | 2014-04-24 |  |  |
| DUKHCONI2BZ1PSGL7000 |  | Excavation | 15d | 2014-02-26 | 2014-03-15 | DUKHCONI2BZ1RWGL6015 SS+5d, DUKHENGI2BDWPSAP5520 | 23d |
| DUKHCONI2BZ1PSGL7005 |  | Foundation casting | 15d | 2014-03-10 | 2014-03-26 | DUKHCONI2BZ1PSGL7000 SS+5d, DUKHCONI2BZ1RWGL6015 FF+10d, DUKHCONI2BZ1PSGL7000 FF+5d | 18d |
| DUKHCONI2BZ1PSGL7010 |  | Column, Frame& Fabrics Erection | 25d | 2014-03-22 | 2014-04-19 | DUKHCONI2BZ1PSGL7005 SS+10d, DUKHCONI2BZ1BWGL5330 FF, DUKHCONI2BZ1RWGL6030 FF, DUKHCONI2BZ1RWGL6020 | 18d |
| DUKHCONI2BZ1PSGL7015 |  | Electrical Works-Parking Shed | 25d | 2014-03-27 | 2014-04-24 | DUKHCONI2BZ1PSGL7010 SS+5d, DUKHCONI2BZ1STGL5260 | 18d |
|  | 65 | **HARD LANDSCAPING** |  | 2014-01-15 | 2014-04-07 |  |  |
| DUKHCONI2BZ1HDGL7020 |  | Precast Concrete Kerbs works | 20d | 2014-01-15 | 2014-02-06 | DUKHENGI2BDWSLAP5500, DUKHCONI2BZ1RWGL6000 SS | 18d |
| DUKHCONI2BZ1HDGL7025 |  | Interlocking for Walkways | 25d | 2014-01-27 | 2014-02-25 | DUKHCONI2BZ1HDGL7020 SS+10d | 18d |
| DUKHCONI2BZ1HDGL7030 |  | Construction of Retaining wall | 25d | 2014-02-08 | 2014-03-09 | DUKHCONI2BZ1HDGL7025 SS+10d | 18d |
| DUKHCONI2BZ1HDGL7035 |  | Construction of Wash Stone Boulders | 25d | 2014-02-08 | 2014-03-09 | DUKHCONI2BZ1HDGL7030 SS | 18d |
| DUKHCONI2BZ1HDGL7040 |  | Construction of Speed Humps | 10d | 2014-03-27 | 2014-04-07 | DUKHCONI2BZ1HDGL7035 SS, DUKHCONI2BZ1RWGL6025 | 48d |
|  | 70 | **SOFT LANDSCAPING** |  | 2014-02-20 | 2014-04-13 |  |  |
| DUKHCONI2BZ1SLGL7200 |  | Excavation | 25d | 2014-02-20 | 2014-03-20 | DUKHCONI2BZ1IRGL5290 SS, DUKHCONI2BZ1HDGL7035 SS+10d, DUKHENGI2BDWSLAP5500 | 18d |
| DUKHCONI2BZ1SLGL7205 |  | Sweet Soil Laying | 25d | 2014-03-04 | 2014-04-01 | DUKHCONI2BZ1SLGL7200 SS+10d | 18d |
| DUKHCONI2BZ1SLGL7210 |  | Plantation works | 25d | 2014-03-16 | 2014-04-13 | DUKHCONI2BZ1SLGL7205 SS+10d | 28d |
|  | 15 | **ZONE - 2** |  | 2013-10-02 | 2014-06-12 |  |  |
|  | 10 | **INFRASTRUCTURE WORKS** |  | 2013-10-02 | 2014-06-12 |  |  |
|  | 10 | **DRAINAGE LINES** |  | 2013-10-02 | 2013-11-23 |  |  |
| DUKHCONI2BZ2DRGL5115 |  | Excavation for Drainage line | 25d | 2013-10-02 | 2013-11-02 | DUKHCONI2BZ1DRGL5130 SS+7d | 8d |
| DUKHCONI2BZ2DRGL5120 |  | Laying of Drainage line | 25d | 2013-10-09 | 2013-11-09 | DUKHCONI2BZ2DRGL5115 SS+6d, DUKHCONI2BZ2DRGL5115 FF+6d | 8d |
| DUKHCONI2BZ2DRGL5125 |  | Testing of Drainage line | 25d | 2013-10-20 | 2013-11-17 | DUKHCONI2BZ2DRGL5120 SS+7d, DUKHCONI2BZ2DRGL5120 FF+7d | 8d |
| DUKHCONI2BZ2DRGL5130 |  | Backfilling Drainage line | 15d | 2013-11-06 | 2013-11-23 | DUKHCONI2BZ2DRGL5125 SS+10d, DUKHCONI2BZ2DRGL5125 FF+5d | 8d |
|  | 15 | **MANHOLES & SOAKAWAY** |  | 2013-11-06 | 2014-01-27 |  |  |
| DUKHCONI2BZ2SAGL5135 |  | Construction of manholes Drainage | 25d | 2013-11-06 | 2013-12-04 | DUKHCONI2BZ2DRGL5130 FF+10d, DUKHCONI2BZ1SAGL5135, DUKHCONI2BZ2DRGL5115 | 57d |
| DUKHCONI2BZ2SAGL5140 |  | Construction of soakaways | 25d | 2013-11-06 | 2013-12-04 | DUKHCONI2BZ2DRGL5115, DUKHCONI2BZ2DRGL5130 FF+10d | 8d |
| DUKHCONI2BZ2SAGL5145 |  | Construction of Road gullies | 25d | 2013-12-05 | 2014-01-04 | DUKHCONI2BZ2SAGL5140, DUKHCONI2BZ1SAGL5145 | 8d |
| DUKHCONI2BZ2SAGL5150 |  | Connection with existing sewer manhole | 20d | 2014-01-05 | 2014-01-27 | DUKHCONI2BZ2SAGL5135, DUKHCONI2BZ2SAGL5145 | 32d |
|  | 20 | **WATER SUPPLY SYSTEM** |  | 2013-11-24 | 2014-02-08 |  |  |
| DUKHCONI2BZ2WSGL5155 |  | Excavation for water line | 25d | 2013-11-24 | 2013-12-23 | DUKHCONI2BZ1WSGL5170, DUKHCONI2BZ2DRGL5130 SS+10d | 3d |
| DUKHCONI2BZ2WSGL5160 |  | Laying of water line | 25d | 2013-11-30 | 2013-12-29 | DUKHCONI2BZ2WSGL5155 SS+5d | 3d |
| DUKHCONI2BZ2WSGL5165 |  | Testing of potable water line | 25d | 2013-12-05 | 2014-01-04 | DUKHCONI2BZ2WSGL5160 SS+5d | 3d |
| DUKHCONI2BZ2WSGL5170 |  | Backfilling potable water line | 25d | 2013-12-11 | 2014-01-09 | DUKHCONI2BZ2SAGL5145 FF, DUKHCONI2BZ2WSGL5165 SS+5d | 3d |
| DUKHCONI2BZ2WSGL5175 |  | Construction of valve chambers & Thrust Blocks | 25d | 2013-12-17 | 2014-01-15 | DUKHCONI2BZ2WSGL5170 FF+5d, DUKHCONI2BZ2WSGL5155 SS+10d, DUKHCONI2BZ1WSGL5175 | 22d |
| DUKHCONI2BZ2WSGL5180 |  | Installation of meter ,Accessories & Connection | 20d | 2014-01-16 | 2014-02-08 | DUKHCONI2BZ1WSGL5180, DUKHCONI2BZ2WSGL5175 | 22d |
|  | 25 | **FIREFIGHTING LINES** |  | 2013-12-21 | 2014-02-19 |  |  |
| DUKHCONI2BZ2FFGL5185 |  | Excavation for firefighting line | 25d | 2013-12-21 | 2014-01-18 | DUKHCONI2BZ2WSGL5170 SS+5d, DUKHCONI2BZ1FFGL5200 | 1d |
| DUKHCONI2BZ2FFGL5190 |  | Laying of firefighting line | 25d | 2013-12-29 | 2014-01-26 | DUKHCONI2BZ2FFGL5185 SS+7d | 1d |
| DUKHCONI2BZ2FFGL5195 |  | Testing of firefighting line | 25d | 2014-01-04 | 2014-02-01 | DUKHCONI2BZ2FFGL5190 SS+5d | 1d |
| DUKHCONI2BZ2FFGL5200 |  | Backfilling firefighting line | 25d | 2014-01-09 | 2014-02-06 | DUKHCONI2BZ2FFGL5195 SS+5d | 1d |
| DUKHCONI2BZ2FFGL5205 |  | Construction of valve chambers & Thrust Blocks | 25d | 2014-01-15 | 2014-02-13 | DUKHCONI2BZ1FFGL5205, DUKHCONI2BZ2FFGL5185 SS+10d, DUKHCONI2BZ2FFGL5200 FF+5d | 13d |
| DUKHCONI2BZ2FFGL5210 |  | Connection with existing Firewater System | 25d | 2014-01-21 | 2014-02-19 | DUKHCONI2BZ2FFGL5205 FF+5d, DUKHCONI2BZ2WSGL5180 FF, DUKHCONI2BZ1FFGL5210 | 13d |
|  | 30 | **ELECTRICAL LINES** |  | 2014-01-18 | 2014-03-13 |  |  |
| DUKHCONI2BZ2ELGL5215 |  | Excavation Cable Trenches & Duct Banks | 25d | 2014-01-18 | 2014-02-16 | DUKHCONI2BZ2FFGL5200 SS+7d, DUKHCONI2BZ1ELGL5225 | 1d |
| DUKHCONI2BZ2ELGL5220 |  | Laying of electrical cables | 25d | 2014-01-23 | 2014-02-22 | DUKHCONI2BZ2ELGL5215 SS+5d | 4d |
| DUKHCONI2BZ2ELGL5225 |  | Backfilling Electrical trench | 25d | 2014-02-01 | 2014-03-02 | DUKHCONI2BZ2ELGL5215 FF+7d, DUKHCONI2BZ2ELGL5220 SS+7d | 4d |
| DUKHCONI2BZ2ELGL5230 |  | Construction of Submain Board & Feeder Pillar | 25d | 2014-02-13 | 2014-03-13 | DUKHCONI2BZ2ELGL5225 FF+10d, DUKHCONI2BZ2ELGL5225 SS+10d, DUKHCONI2BZ1ELGL5230 | 29d |
|  | 35 | **STREET LIGHTING** |  | 2014-01-18 | 2014-04-12 |  |  |
| DUKHCONI2BZ2STGL5235 |  | Excavation for Street lighting | 25d | 2014-01-18 | 2014-02-16 | DUKHCONI2BZ1STGL5250, DUKHCONI2BZ2ELGL5215 SS | 1d |
| DUKHCONI2BZ2STGL5240 |  | Construction of Duct Banks | 25d | 2014-01-23 | 2014-02-22 | DUKHCONI2BZ2STGL5235 SS+5d | 1d |
| DUKHCONI2BZ2STGL5245 |  | Construction of Foundation | 25d | 2014-01-23 | 2014-02-22 | DUKHCONI2BZ2STGL5240 SS | 1d |
| DUKHCONI2BZ2STGL5250 |  | Backfilling Street Lighting | 25d | 2014-01-29 | 2014-02-27 | DUKHCONI2BZ2STGL5235 FF+5d, DUKHCONI2BZ2STGL5245 SS+5d | 1d |
| DUKHCONI2BZ2STGL5255 |  | Installation of light Post | 25d | 2014-02-10 | 2014-03-11 | DUKHCONI2BZ1STGL5255, DUKHCONI2BZ2STGL5250 SS+10d | 49d |
| DUKHCONI2BZ2STGL5260 |  | Electrical Works | 25d | 2014-03-15 | 2014-04-12 | DUKHCONI2BZ1STGL5260, DUKHCONI2BZ2ELGL5230, DUKHCONI2BZ2STGL5255 SS+7d | 29d |
|  | 40 | **IRRIGATION LINES** |  | 2014-03-03 | 2014-05-07 |  |  |
| DUKHCONI2BZ2IRGL5265 |  | Excavation for irrigation line | 25d | 2014-03-03 | 2014-03-31 | DUKHCONI2BZ2ELGL5225, DUKHCONI2BZ1IRGL5280 | 12d |
| DUKHCONI2BZ2IRGL5270 |  | Laying of irrigationline | 25d | 2014-03-09 | 2014-04-06 | DUKHCONI2BZ2IRGL5265 SS+5d | 12d |
| DUKHCONI2BZ2IRGL5275 |  | Testing of irrigation line | 25d | 2014-03-15 | 2014-04-12 | DUKHCONI2BZ2IRGL5270 SS+5d | 12d |
| DUKHCONI2BZ2IRGL5280 |  | Backfilling irrigation line | 25d | 2014-03-20 | 2014-04-17 | DUKHCONI2BZ2IRGL5275 SS+5d | 12d |
| DUKHCONI2BZ2IRGL5285 |  | Construction of Thrust Blocks,Pull boxes | 25d | 2014-04-01 | 2014-04-29 | DUKHCONI2BZ2IRGL5280 FF+10d, DUKHCONI2BZ2ELGL5225 SS+10d | 12d |
| DUKHCONI2BZ2IRGL5290 |  | Irrigation Fittings (Nozzle,Values) | 25d | 2014-04-09 | 2014-05-07 | DUKHCONI2BZ2IRGL5280 SS+10d, DUKHCONI2BZ2IRGL5285 SS+7d | 12d |

| ID | WBS | Task | Duration | Start | Finish | Predecessors | Complete | Total float |
| --- | --- | --- | --- | --- | --- | --- | --- | --- |
|  | 45 | **TELECOMMUNICATION LINES** |  | 2014-02-10 | 2014-03-29 |  |  |  |
| DUKHCONI2BZ2TCGL5295 |  | Excavation Telecommunication trenches | 20d | 2014-02-10 | 2014-03-05 | DUKHCONI2BZ2STGL5250 SS+10d, DUKHCONI2BZ1TCGL5305 |  | 1d |
| DUKHCONI2BZ2TCGL5300 |  | Laying of cables | 20d | 2014-02-17 | 2014-03-11 | DUKHCONI2BZ2TCGL5295 SS+5d |  | 1d |
| DUKHCONI2BZ2TCGL5305 |  | Backfilling telecommunication trench | 20d | 2014-02-23 | 2014-03-17 | DUKHCONI2BZ2TCGL5300 SS+5d |  | 1d |
| DUKHCONI2BZ2TCGL5310 |  | Connection & Installation | 20d | 2014-03-06 | 2014-03-29 | DUKHCONI2BZ1TCGL5310, DUKHCONI2BZ2TCGL5305 SS+10d |  | 26d |
|  | 50 | **BOUNDARY WALL** |  | 2014-02-10 | 2014-05-07 |  |  |  |
| DUKHCONI2BZ2BWGL5315 |  | Construction of Boundary Wall (Ht-3m) | 25d | 2014-02-10 | 2014-03-11 | DUKHCONI2BZ1BWGL5315, DUKHCONI2BZ2STGL5250 SS+10d |  | 10d |
| DUKHCONI2BZ2BWGL5320 |  | Install.Steel Gate,Entance Barrier (3m Wall) | 25d | 2014-02-27 | 2014-03-27 | DUKHCONI2BZ2BWGL5315 SS+14d |  | 10d |
| DUKHCONI2BZ2BWGL5325 |  | Const. of Villa Front Boundary Wall (Ht-2m) | 25d | 2014-03-29 | 2014-04-26 | DUKHCONI2BZ2BWGL5320, DUKHCONI2BZ1BWGL5325, DUKHCONI2BZ2BWGL5315 SS+5d |  | 10d |
| DUKHCONI2BZ2BWGL5330 |  | Const. of Blockwork fence Wall (Ht-1.85m) | 25d | 2014-04-09 | 2014-05-07 | DUKHCONI2BZ1BWGL5330, DUKHCONI2BZ2BWGL5325 SS+10d |  | 27d |
|  | 55 | **ROAD WORKS** |  | 2014-03-06 | 2014-05-20 |  |  |  |
| DUKHCONI2BZ2RWGL6000 |  | Excavation & Earth Filling | 10d | 2014-03-06 | 2014-03-17 | DUKHCONI2BZ2STGL5250, DUKHCONI2BZ2FFGL5200, DUKHCONI2BZ2ELGL5225, DUKHCONI2BZ2SAGL5150, DUKHCONI2BZ1RWGL6015 SS+10d, DUKHCONI2BZ2TCGL5305 SS+10d, DUKHCONI2BZ2FFGL5210 |  | 1d |
| DUKHCONI2BZ2RWGL6005 |  | Laying of Sub Grade | 25d | 2014-03-18 | 2014-04-15 | DUKHCONI2BZ2RWGL6000 |  | 1d |
| DUKHCONI2BZ2RWGL6010 |  | Laying of Precast Kerbs | 25d | 2014-03-30 | 2014-04-27 | DUKHCONI2BZ2RWGL6005 SS+10d |  | 1d |
| DUKHCONI2BZ2RWGL6015 |  | Laying of Granular Sub Base Coarse | 20d | 2014-04-10 | 2014-05-03 | DUKHCONI2BZ2RWGL6010 SS+10d |  | 1d |
| DUKHCONI2BZ2RWGL6020 |  | Laying of Road Base Asphalt Concrete | 5d | 2014-05-04 | 2014-05-08 | DUKHCONI2BZ2RWGL6015 |  | 1d |
| DUKHCONI2BZ2RWGL6025 |  | Laying of Asphalt Wearing Coarse | 5d | 2014-05-10 | 2014-05-14 | DUKHCONI2BZ1RWGL6025, DUKHCONI2BZ2RWGL6020 |  | 16d |
| DUKHCONI2BZ2RWGL6030 |  | Traffic Signage & Road Marking | 5d | 2014-05-15 | 2014-05-20 | DUKHCONI2BZ2RWGL6025, DUKHCONI2BZ1RWGL6030 |  | 16d |
|  | 60 | **PARKING SHED** |  | 2014-04-16 | 2014-06-12 |  |  |  |
| DUKHCONI2BZ2PSGL7000 |  | Excavation | 15d | 2014-04-16 | 2014-05-03 | DUKHCONI2BZ1PSGL7005, DUKHCONI2BZ2RWGL6015 SS+5d |  | 6d |
| DUKHCONI2BZ2PSGL7005 |  | Foundation casting | 15d | 2014-04-28 | 2014-05-14 | DUKHCONI2BZ2PSGL7000 FF+5d, DUKHCONI2BZ2RWGL6015 FF+10d, DUKHCONI2BZ2PSGL7000 SS+5d |  | 1d |
| DUKHCONI2BZ2PSGL7010 |  | Column, Frame& Fabrics Erection | 25d | 2014-05-10 | 2014-06-07 | DUKHCONI2BZ2RWGL6030 FF, DUKHCONI2BZ2RWGL6020, DUKHCONI2BZ2PSGL7005 SS+10d, DUKHCONI2BZ2BWGL5330 FF, DUKHCONI2BZ1PSGL7010 |  | 1d |
| DUKHCONI2BZ2PSGL7015 |  | Electrical Works-Parking Shed | 25d | 2014-05-15 | 2014-06-12 | DUKHCONI2BZ2STGL5260, DUKHCONI2BZ2PSGL7010 SS+5d, DUKHCONI2BZ1PSGL7015 |  | 1d |
|  | 65 | **HARD LANDSCAPING** |  | 2014-03-06 | 2014-05-26 |  |  |  |
| DUKHCONI2BZ2HDGL7020 |  | Precast Concrete Kerbs works | 20d | 2014-03-06 | 2014-03-29 | DUKHCONI2BZ2RWGL6000 SS |  | 11d |
| DUKHCONI2BZ2HDGL7025 |  | Interlocking for Walkways | 25d | 2014-03-18 | 2014-04-15 | DUKHCONI2BZ2HDGL7020 SS+10d, DUKHCONI2BSBGZGL7910 FF |  | 11d |
| DUKHCONI2BZ2HDGL7030 |  | Construction of Retaining wall | 25d | 2014-03-30 | 2014-04-27 | DUKHCONI2BZ1HDGL7030, DUKHCONI2BZ2HDGL7025 SS+10d |  | 11d |
| DUKHCONI2BZ2HDGL7035 |  | Construction of Wash Stone Boulders | 25d | 2014-03-30 | 2014-04-27 | DUKHCONI2BZ2HDGL7030 SS, DUKHCONI2BZ1HDGL7035 |  | 11d |
| DUKHCONI2BZ2HDGL7040 |  | Construction of Speed Humps | 10d | 2014-05-15 | 2014-05-26 | DUKHCONI2BZ1HDGL7040, DUKHCONI2BZ2HDGL7035 SS, DUKHCONI2BZ2RWGL6025 |  | 16d |
|  | 70 | **SOFT LANDSCAPING** |  | 2014-04-10 | 2014-06-01 |  |  |  |
| DUKHCONI2BZ2SLGL7200 |  | Excavation for Landscaping | 25d | 2014-04-10 | 2014-05-08 | DUKHCONI2BZ1SLGL7205, DUKHCONI2BZ2HDGL7035 SS+10d, DUKHCONI2BZ2IRGL5290 SS |  | 11d |
| DUKHCONI2BZ2SLGL7205 |  | Sweet Soil Laying | 25d | 2014-04-22 | 2014-05-20 | DUKHCONI2BZ2SLGL7200 SS+10d |  | 11d |
| DUKHCONI2BZ2SLGL7210 |  | Plantation works | 25d | 2014-05-04 | 2014-06-01 | DUKHCONI2BZ1SLGL7210, DUKHCONI2BZ2SLGL7205 SS+10d |  | 11d |
|  | 25 | **SECONDARY BUILDINGS** |  | 2014-02-08 | 2014-08-07 |  |  |  |
|  | 10 | **INFRASTRUCTURE WORKS** |  | 2014-02-08 | 2014-08-07 |  |  |  |
|  | 10 | **IRRIGATION WATER TANK & PUMP ROOM** |  | 2014-02-16 | 2014-08-07 |  |  |  |
| DUKHCONI2BSBIWGL7400 |  | Excavation | 15d | 2014-02-16 | 2014-03-04 | DUKHCONP2BZ5STRF2060, DUKHENGI2BDWIWAP5540 |  | -44d |
| DUKHCONI2BSBIWGL7405 |  | Blinding & base waterproofing | 10d | 2014-03-05 | 2014-03-16 | DUKHCONI2BSBIWGL7400 |  | -44d |
| DUKHCONI2BSBIWGL7410 |  | Construction of Raft slab | 10d | 2014-03-17 | 2014-03-27 | DUKHCONI2BSBIWGL7405 |  | -44d |
| DUKHCONI2BSBIWGL7415 |  | Construction of RCC Wall | 25d | 2014-03-29 | 2014-04-26 | DUKHCONI2BSBIWGL7410 |  | -44d |
| DUKHCONI2BSBIWGL7420 |  | Construction of Roof Slab | 20d | 2014-04-27 | 2014-05-19 | DUKHCONI2BSBIWGL7415 |  | -44d |
| DUKHCONI2BSBIWGL7425 |  | Waterproofing & Backfilling | 15d | 2014-05-20 | 2014-06-05 | DUKHCONI2BSBIWGL7420 |  | -38d |
| DUKHCONI2BSBIWGL7950 |  | Laying of Interlock | 10d | 2014-06-07 | 2014-06-17 | DUKHCONI2BSBIWGL7425 |  | -23d |
| DUKHCONI2BSBIWGL7430 |  | Floor screed | 5d | 2014-06-14 | 2014-06-18 | DUKHCONI2BSBIWGL7425, DUKHCONI2BSBIWGL7420 FS+21d |  | -44d |
| DUKHCONI2BSBIWGL7435 |  | Installation of Boundary Fences | 15d | 2014-06-18 | 2014-07-05 | DUKHCONI2BSBIWGL7950 |  | -23d |
| DUKHCONI2BSBIWGL7440 |  | Plumbing , Drainage & Firefighting works | 25d | 2014-06-19 | 2014-07-17 | DUKHCONI2BSBIWGL7430, DUKHCONI2BZ2FFGL5210, DUKHCONI2BZ1FFGL5210 |  | -44d |
| DUKHCONI2BSBIWGL7445 |  | AC Works | 25d | 2014-06-19 | 2014-07-17 | DUKHCONI2BSBIWGL7440 SS |  | -44d |
| DUKHCONI2BSBIWGL7450 |  | Electrical Works | 25d | 2014-06-19 | 2014-07-17 | DUKHCONI2BSBIWGL7445 SS, DUKHCONI2BZ2STGL5260 SS, DUKHCONI2BZ2TCGL5310, DUKHCONI2BZ2ELGL5230 |  | -44d |
| DUKHCONI2BSBIWGL7455 |  | Internal epoxy coating & Painting | 5d | 2014-07-19 | 2014-07-23 | DUKHCONI2BSBIWGL7450 |  | -44d |
| DUKHCONI2BSBIWGL7460 |  | Installation of Steel Ladder | 5d | 2014-07-24 | 2014-07-29 | DUKHCONI2BSBIWGL7455 |  | -44d |
| DUKHCONI2BSBIWGL7465 |  | Installation of G.I Handrails | 5d | 2014-07-30 | 2014-08-07 | DUKHCONI2BSBIWGL7460, DUKHCONI2BSBIWGL7435 |  | -44d |
|  | 25 | **GAZEBO** |  | 2014-02-08 | 2014-04-07 |  |  |  |
| DUKHCONI2BSBGZGL7900 |  | Construction of Concrete structure | 20d | 2014-02-08 | 2014-03-03 | DUKHENGI2BDWGZAP5550, DUKHCONI2BZ1HDGL7020 |  | 18d |
| DUKHCONI2BSBGZGL7905 |  | Installation of Wooden Works | 25d | 2014-02-20 | 2014-03-20 | DUKHCONI2BSBGZGL7900 SS+10d |  | 18d |
| DUKHCONI2BSBGZGL7915 |  | Park Benches Installation | 15d | 2014-02-20 | 2014-03-09 | DUKHCONI2BSBGZGL7905 SS |  | 28d |
| DUKHCONI2BSBGZGL7910 |  | Electrical Works-Gazebo | 15d | 2014-03-22 | 2014-04-07 | DUKHCONI2BSBGZGL7905, DUKHCONI2BSBGZGL7915 |  | 18d |
|  | L55 | **PACKAGE-3** |  | 2012-12-01 | 2014-09-15 |  |  |  |
|  | 03 | **SITE PREPARATORY WORKS** |  | 2012-12-01 | 2013-02-20 |  |  |  |
| DUKHCONP03GNSP001000 |  | Survey works, | 20d | 2012-12-01 A | 2012-12-24 A | DUKHMOBP030000004000 | 100% |  |
| DUKHCONP03GNSP002000 |  | Scanning for Existing Services for rerouting | 10d | 2012-12-01 A | 2012-12-21 A | DUKHCONP03GNSP001000 SS | 100% |  |
| DUKHCONP03GNSP003000 |  | Site stripping | 20d | 2012-12-08 A | 2012-12-31 A | DUKHCONP03GNSP002000 SS+6d | 100% |  |
| DUKHCONP03GNSP002100 |  | Submission of Scanning Reports | 5d | 2012-12-12 A | 2012-12-17 A | DUKHCONP03GNSP002000 | 100% |  |
| DUKHCONP03GNSP004000 |  | Demolition of Existing building & landscaping | 20d | 2012-12-13 A | 2013-01-06 A | DUKHCONP03GNSP003000 SS+5d | 100% |  |
| DUKHCONP03GNSP002200 |  | Information Required for Rerouting | 14d | 2012-12-19 A | 2013-01-03 A | DUKHCONP03GNSP002100 | 100% |  |
| DUKHCONP03GNSP005000 |  | Demolition of existing services works | 20d | 2012-12-20 A | 2013-01-12 A | DUKHCONP03GNSP004000 SS+5d | 100% |  |
| DUKHCONP03GNSP002300 |  | Preparation & Submission for New Layout | 5d | 2013-01-05 A | 2013-01-09 A | DUKHCONP03GNSP002200 | 100% |  |
| DUKHCONP03GNSP002400 |  | Approval for new Layout for rerouting | 10d | 2013-01-10 A | 2013-01-21 A | DUKHCONP03GNSP002300 | 100% |  |
| DUKHCONP03GNSP002500 |  | Rerouting Works | 25d | 2013-01-22 A | 2013-02-20 A | DUKHCONP03GNSP002400 | 100% |  |
|  | 05 | **MOCK UP** |  | 2013-09-10 | 2014-02-08 |  |  |  |
|  | 15 | **FINISHING WORKS** |  | 2013-09-10 | 2014-02-08 |  |  |  |

| ID | WBS | Task | Duration | Start | Finish | Predecessors | Total float |
| --- | --- | --- | --- | --- | --- | --- | --- |
|  | 10 | **INTERNAL FINISHES** |  | 2013-09-10 | 2014-02-08 |  |  |
|  | 10 | **GROUND FLOOR** |  | 2013-09-10 | 2014-02-02 |  |  |
| DUKHCONP03MKARGF3000 |  | Block work | 6d | 2013-09-10 | 2013-09-16 | DUKHCONP03Z1STGF2015 SS+21d | 8d |
| DUKHCONP03MKARGF3005 |  | Plastering work | 7d | 2013-09-23 | 2013-09-30 | DUKHPROGEN00PRDV3040, DUKHCONP03MKELGF4000, DUKHCONP03MKARGF3000 | 15d |
| DUKHCONP03MKARGF3010 |  | Flooring screed | 7d | 2013-09-26 | 2013-10-03 | DUKHCONP03MKARGF3005 SS+3d | 24d |
| DUKHCONP03MKARGF3015 |  | Wet area waterproofing & Protection Screed | 5d | 2013-09-30 | 2013-10-05 | DUKHCONP03MKARGF3010 SS+3d, DUKHCONP03MKARGF3005 FF+3d | 24d |
| DUKHCONP03MKARGF3020 |  | Ceramic Wall Tiling | 6d | 2013-10-06 | 2013-10-12 | DUKHCONP03MKARGF3015, DUKHCONP03MKPLGF4310, DUKHPROGEN00PRDV3120 | 24d |
| DUKHCONP03MKARGF3025 |  | Porcelain Tile flooring | 6d | 2013-10-13 | 2013-10-21 | DUKHPROGEN00PRDV3130, DUKHCONP03MKARGF3020, DUKHCONP03MKARGF3010 | 24d |
| DUKHCONP03MKARGF3040 |  | Cobble Tile flooring | 5d | 2013-10-22 | 2013-10-27 | DUKHPROGEN00PRDV3090, DUKHCONP03MKARGF3010, DUKHCONP03MKARGF3025 | 38d |
| DUKHCONP03MKARGF3035 |  | Slate Tile Flooring & Skirting | 5d | 2013-10-28 | 2013-11-02 | DUKHCONP03MKARGF3040, DUKHPROGEN00PRDV3100, DUKHCONP03MKARGF3010 | 38d |
| DUKHCONP03MKARGF3030 |  | Paint First coat | 5d | 2013-11-16 | 2013-11-20 | DUKHPROGEN00PRDV3320, DUKHCONP03MKARGF3005 SS+14d | 1d |
| DUKHCONP03MKARGF3045 |  | Fixing of Suspension systems | 7d | 2013-11-21 | 2013-11-28 | DUKHCONP03MKELGF4010, DUKHCONP03MKARGF3030, DUKHCONP03MKARGF3025 | 6d |
| DUKHCONP03MKARGF3060 |  | Gypsum board false ceiling | 7d | 2013-12-07 | 2013-12-14 | DUKHCONP03MKACGF4600, DUKHPROGEN00PRDV3300, DUKHCONP03MKARGF3045 | 3d |
| DUKHCONP03MKARGF3050 |  | Granite - Stair case flooring & Skirting | 7d | 2013-12-16 | 2013-12-24 | DUKHPROGEN00PRDV3480, DUKHCONP03MKARGF3040, DUKHCONP03MKARGF3025 | 5d |
| DUKHCONP03MKARGF3055 |  | Aluminum tile false ceiling | 7d | 2013-12-16 | 2013-12-24 | DUKHCONP03MKACGF4600, DUKHCONP03MKARGF3045, DUKHPROGEN00PRDV3310 | -4d |
| DUKHCONP03MKARGF3065 |  | Wooden door | 5d | 2013-12-25 | 2013-12-30 | DUKHCONP03MKARGF3060, DUKHPROGEN00PRDV3490, DUKHPROGEN00PRDV3450, DUKHCONP03MKARGF3050, DUKHCONP03MKARGF3055 | 7d |
| DUKHCONP03MKARGF3070 |  | Aluminum doors | 5d | 2013-12-31 | 2014-01-05 | DUKHCONP03MKARGF3065, DUKHPROGEN00PRDV3440, DUKHPROGEN00PRDV3460 | 7d |
| DUKHCONP03MKARGF3075 |  | Carpentry & Joinery Works | 10d | 2014-01-06 | 2014-01-16 | DUKHCONP03MKARGF3070, DUKHPROGEN00PRDV3550, DUKHPROGEN00PRDV3560, DUKHPROGEN00PRDV3570 | 7d |
| DUKHCONP03MKARGF3080 |  | Aluminum windows | 5d | 2014-01-06 | 2014-01-11 | DUKHPROGEN00PRDV3470, DUKHCONP03MKARGF3070 | 23d |
| DUKHCONP03MKARGF3085 |  | S.S.Handrails & Balustrade | 7d | 2014-01-18 | 2014-01-25 | DUKHCONP03MKARGF3075, DUKHCONP03MKARGF3050 | 12d |
| DUKHCONP03MKARGF3090 |  | Installation of Granite Counter Top | 7d | 2014-01-18 | 2014-01-25 | DUKHCONP03MKARGF3075 | 11d |
| DUKHCONP03MKARGF3095 |  | Final Painting | 7d | 2014-01-26 | 2014-02-02 | DUKHCONP03MKARGF3030, DUKHCONP03MKARGF3060, DUKHCONP03MKARGF3085, DUKHCONP03MKARGF3035, DUKHCONP03MKARGF3080, DUKHCONP03MKARGF3090, DUKHPROGEN00PRDV3420, DUKHCONP03MKARGF3040, DUKHCONP03MKARGF3070 | 12d |
|  | 15 | **FIRST FLOORS** |  | 2013-10-26 | 2014-02-02 |  |  |
| DUKHCONP03MKARFF3300 |  | Block work | 6d | 2013-10-26 | 2013-10-31 | DUKHPROGEN00PRDV3010, DUKHCONP03Z1STFF2035 SS+21d, DUKHENGP03DWARAP5610 | -27d |
| DUKHCONP03MKARFF3305 |  | Plastering work | 7d | 2013-11-07 | 2013-11-14 | DUKHCONP03MKARFF3300, DUKHPROGEN00PRDV3040, DUKHCONP03MKELFF4035 | -19d |
| DUKHCONP03MKARFF3310 |  | Flooring screed | 7d | 2013-11-11 | 2013-11-18 | DUKHCONP03MKARFF3305 SS+3d | -5d |
| DUKHCONP03MKARFF3315 |  | Wet area waterproofing & Protection Screed | 5d | 2013-11-14 | 2013-11-19 | DUKHCONP03MKARFF3310 SS+3d, DUKHCONP03MKARFF3305 FF+3d | -5d |
| DUKHCONP03MKARFF3320 |  | Ceramic Wall Tiling | 6d | 2013-11-20 | 2013-11-26 | DUKHCONP03MKPLFF4330, DUKHCONP03MKARFF3315, DUKHPROGEN00PRDV3120, DUKHCONP03MKPLFF4325 | -3d |
| DUKHCONP03MKARFF3330 |  | Paint First coat | 5d | 2013-11-24 | 2013-11-28 | DUKHCONP03MKARFF3305 SS+14d, DUKHPROGEN00PRDV3320 | 1d |
| DUKHCONP03MKARFF3325 |  | Porcelain Tile flooring | 6d | 2013-11-27 | 2013-12-03 | DUKHCONP03MKARFF3320, DUKHPROGEN00PRDV3130, DUKHCONP03MKARFF3310 | -3d |
| DUKHCONP03MKARFF3335 |  | Slate Tile Flooring & Skirting | 5d | 2013-12-04 | 2013-12-09 | DUKHCONP03MKARFF3310, DUKHCONP03MKARFF3325, DUKHPROGEN00PRDV3100 | 17d |
| DUKHCONP03MKARFF3345 |  | Fixing of Suspension systems | 7d | 2013-12-04 | 2013-12-11 | DUKHCONP03MKELFF4045, DUKHCONP03MKARFF3325, DUKHCONP03MKARFF3330 | 2d |
| DUKHCONP03MKARFF3360 |  | Gypsum board false ceiling | 7d | 2013-12-12 | 2013-12-21 | DUKHCONP03MKACFF4615, DUKHCONP03MKARFF3345, DUKHPROGEN00PRDV3300 | 2d |
| DUKHCONP03MKARFF3350 |  | Granite - Stair case flooring & Skirting | 7d | 2013-12-16 | 2013-12-24 | DUKHPROGEN00PRDV3480, DUKHCONP03MKARFF3325, DUKHCONP03MKARFF3310 | 0d |
| DUKHCONP03MKARFF3355 |  | Aluminum tile false ceiling | 7d | 2013-12-16 | 2013-12-24 | DUKHCONP03MKACFF4615, DUKHCONP03MKARFF3345, DUKHPROGEN00PRDV3310 | 4d |
| DUKHCONP03MKARFF3365 |  | Wooden door | 5d | 2013-12-25 | 2013-12-30 | DUKHPROGEN00PRDV3490, DUKHPROGEN00PRDV3450, DUKHCONP03MKARFF3350, DUKHCONP03MKARFF3360, DUKHCONP03MKARFF3355 | 6d |
| DUKHCONP03MKARFF3370 |  | Aluminum doors | 5d | 2013-12-31 | 2014-01-05 | DUKHCONP03MKARFF3365, DUKHPROGEN00PRDV3460 | 6d |
| DUKHCONP03MKARFF3375 |  | Carpentry & Joinery Works | 10d | 2014-01-06 | 2014-01-16 | DUKHPROGEN00PRDV3550, DUKHPROGEN00PRDV3560, DUKHCONP03MKARFF3370 | 6d |
| DUKHCONP03MKARFF3380 |  | Aluminum windows | 5d | 2014-01-06 | 2014-01-11 | DUKHPROGEN00PRDV3470, DUKHCONP03MKARFF3370 | 19d |
| DUKHCONP03MKARFF3385 |  | S.S.Handrails & Balustrade | 7d | 2014-01-18 | 2014-01-25 | DUKHCONP03MKARFF3350, DUKHPROGEN00PRDV3570, DUKHCONP03MKARFF3375, DUKHPROGEN00PRDV3580 | 7d |
| DUKHCONP03MKARFF3390 |  | Installation of Granite Counter Top | 7d | 2014-01-18 | 2014-01-25 | DUKHCONP03MKARFF3375 | 7d |
| DUKHCONP03MKARFF3395 |  | Final Painting | 7d | 2014-01-26 | 2014-02-02 | DUKHCONP03MKARFF3370, DUKHCONP03MKARFF3355, DUKHCONP03MKARFF3390, DUKHCONP03MKARFF3360, DUKHCONP03MKARFF3335, DUKHCONP03MKARFF3385, DUKHCONP03MKARFF3330, DUKHCONP03MKARFF3325, DUKHCONP03MKARFF3310, DUKHCONP03MKARFF3380 | 7d |
|  | 20 | **ROOF** |  | 2013-11-13 | 2014-02-08 |  |  |
| DUKHCONP03MKARRF3600 |  | Block work | 5d | 2013-11-13 | 2013-11-18 | DUKHCONP03Z1STRF2055 SS+21d | -24d |
| DUKHCONP03MKARRF3605 |  | Plastering work | 5d | 2013-11-17 | 2013-11-21 | DUKHCONP03MKARRF3600 SS+3d, DUKHCONP03MKARRF3600 FF+3d | -24d |
| DUKHCONP03MKARRF3610 |  | Flooring screed | 6d | 2013-12-05 | 2013-12-11 | DUKHCONP03MKARFF3335 FF+2d, DUKHCONP03MKARRF3605 | 46d |
| DUKHCONP03MKARRF3695 |  | Painting | 5d | 2014-01-28 | 2014-02-02 | DUKHCONP03MKARRF3605 FS+7d, DUKHCONP03MKARFF3395 FF, DUKHCONP03MKARRF3610 | 7d |
| DUKHCONP03MKARRF3620 |  | Epoxy Painting | 5d | 2014-02-03 | 2014-02-08 | DUKHCONP03MKARRF3695, DUKHCONP03MKARFF3395 FF, DUKHPROGEN00PRDV3420 | 17d |
|  | 15 | **EXTERNAL FINISHES** |  | 2013-11-23 | 2014-01-07 |  |  |
|  | 10 | **ROOF** |  | 2013-11-23 | 2014-01-05 |  |  |
| DUKHCONP03MKARRF3630 |  | Leveling Screed for Waterproofing | 2d | 2013-11-23 | 2013-11-24 | DUKHCONP03MKARRF3605, DUKHCONP03Z1STRF2060 SS+10d, DUKHCONP03Z1STRF2065 SS+7d, DUKHCONP03Z1STRF2055 SS+10d | -24d |
| DUKHCONP03MKARRF3635 |  | Laying of Waterproofing Membrane | 5d | 2013-11-25 | 2013-11-30 | DUKHCONP03MKARRF3630 | -24d |
| DUKHCONP03MKARRF3640 |  | Installation of Insulation & Protection | 4d | 2013-12-01 | 2013-12-04 | DUKHCONP03MKARRF3635 | -24d |
| DUKHCONP03MKARRF3645 |  | Lime Stone Chips & Paving slab Installation | 4d | 2013-12-05 | 2013-12-09 | DUKHCONP03MKARRF3640 | -24d |
| DUKHCONP03MKARRF3650 |  | Install. of Gal. Frame & Aluminum Slat Screen | 6d | 2013-12-16 | 2013-12-23 | DUKHPROGEN00PRDV3410, DUKHCONP03MKARRF3645 | 29d |
| DUKHCONP03MKARRF3655 |  | Installation of Pumps Protection cabinets | 6d | 2013-12-24 | 2013-12-30 | DUKHCONP03MKARRF3645, DUKHCONP03MKARRF3650 | 34d |
| DUKHCONP03MKARRF3660 |  | Installation of Access Ladder | 5d | 2013-12-31 | 2014-01-05 | DUKHCONP03MKARRF3655, DUKHPROGEN00PRDV3400 | 46d |
|  | 15 | **ELEVATION** |  | 2013-12-10 | 2014-01-07 |  |  |
| DUKHCONP03MKAREL3665 |  | External Plastering | 10d | 2013-12-10 | 2013-12-22 | DUKHCONP03MKARRF3645, DUKHCONP03MKARRF3605, DUKHCONP03Z1STRF2060 SS+10d | -8d |
| DUKHCONP03MKAREL3675 |  | GRC Panel Works | 7d | 2013-12-23 | 2013-12-30 | DUKHPROGEN00PRDV3390, DUKHCONP03MKAREL3665 | -8d |
| DUKHCONP03MKAREL3680 |  | External Painting | 7d | 2013-12-31 | 2014-01-07 | DUKHCONP03MKAREL3675 | 39d |
|  | 20 | **MEP WORKS** |  | 2013-09-17 | 2014-01-29 |  |  |
|  | 10 | **ELECTRICAL WORKS** |  | 2013-09-17 | 2014-01-25 |  |  |
|  | 10 | **GROUND FLOOR** |  | 2013-09-17 | 2014-01-05 |  |  |
| DUKHCONP03MKELGF4000 |  | Fixing of wall conduits & switch socket boxes | 5d | 2013-09-17 | 2013-09-22 | DUKHCONP03MKARGF3000 | 15d |
| DUKHCONP03MKELGF4005 |  | Cable tray & trunking installation | 5d | 2013-10-01 | 2013-10-06 | DUKHCONP03MKELGF4000, DUKHCONP03MKARGF3005 | 33d |
| DUKHCONP03MKELGF4010 |  | Installation of wiring & Main Cabling | 5d | 2013-10-26 | 2013-10-30 | DUKHPROGEN00PRDV3180, DUKHCONP03MKELGF4005 | 21d |
| DUKHCONP03MKELGF4015 |  | Install. of CAMS & Fire Fighting Accessories | 7d | 2013-12-25 | 2014-01-01 | DUKHPROGEN00PRDV3260, DUKHPROGEN00PRDV3380, DUKHPROGEN00PRDV3210, DUKHPROGEN00PRDV3360, DUKHCONP03MKARGF3055, DUKHPROGEN00PRDV3370, DUKHCONP03MKARGF3060 | 7d |
| DUKHCONP03MKELGF4020 |  | Installation of DBS,MCCB Accessories. | 5d | 2013-12-25 | 2013-12-30 | DUKHPROGEN00PRDV3170, DUKHCONP03MKELGF4010, DUKHCONP03MKARGF3055, DUKHCONP03MKARGF3060 | 3d |
| DUKHCONP03MKELGF4025 |  | Installation of Lighting fixtures & Accessories | 5d | 2013-12-31 | 2014-01-05 | DUKHCONP03MKARGF3055, DUKHPROGEN00PRDV3190, DUKHCONP03MKELGF4020, DUKHCONP03MKARGF3060 | 9d |

| ID | WBS | Task | Duration | Start | Finish | Predecessors | Complete | Total float |
| --- | --- | --- | --- | --- | --- | --- | --- | --- |
| DUKHCONP03MKELGF4030 |  | Installation of Telephone System | 5d | 2013-12-31 | 2014-01-05 | DUKHPROGEN00PRDV3270, DUKHPROGEN00PRDV3280, DUKHCONP03MKELGF4020, DUKHCONP03MKARGF3055, DUKHCONP03MKARGF3060 |  | 8d |
|  | 15 | **FIRST FLOORS** |  | 2013-11-02 | 2014-01-11 |  |  |  |
| DUKHCONP03MKELFF4035 |  | Fixing of wall conduits & switch socket boxes | 5d | 2013-11-02 | 2013-11-06 | DUKHCONP03MKARFF3300 |  | -19d |
| DUKHCONP03MKELFF4040 |  | Cable tray & trunking installation | 5d | 2013-11-16 | 2013-11-20 | DUKHCONP03MKARFF3305, DUKHCONP03MKELFF4035 |  | 3d |
| DUKHCONP03MKELFF4045 |  | Installation of wiring & Main Cabling | 5d | 2013-11-21 | 2013-11-26 | DUKHPROGEN00PRDV3180, DUKHCONP03MKELFF4040 |  | 5d |
| DUKHCONP03MKELFF4060 |  | Installation of DBS,MCCB Accessories. | 5d | 2013-12-25 | 2013-12-30 | DUKHCONP03MKELFF4045, DUKHCONP03MKARFF3360, DUKHCONP03MKARFF3355, DUKHPROGEN00PRDV3170 |  | 8d |
| DUKHCONP03MKELFF4055 |  | Install. of CAMS & Fire Fighting Accessories | 7d | 2014-01-02 | 2014-01-09 | DUKHCONP03MKARFF3360, DUKHCONP03MKELGF4015, DUKHCONP03MKARFF3355, DUKHPROGEN00PRDV3210, DUKHPROGEN00PRDV3260, DUKHPROGEN00PRDV3360 |  | 7d |
| DUKHCONP03MKELFF4050 |  | Installation of Telephone System | 5d | 2014-01-06 | 2014-01-11 | DUKHCONP03MKELGF4030, DUKHCONP03MKELFF4060, DUKHPROGEN00PRDV3280, DUKHCONP03MKARFF3360, DUKHPROGEN00PRDV3270, DUKHCONP03MKARFF3355 |  | 13d |
| DUKHCONP03MKELFF4065 |  | Installation of Lighting fixtures & Accessories | 5d | 2014-01-06 | 2014-01-11 | DUKHPROGEN00PRDV3190, DUKHCONP03MKARFF3360, DUKHCONP03MKELGF4025, DUKHCONP03MKARFF3355, DUKHCONP03MKELFF4060 |  | 9d |
|  | 20 | **ROOF** |  | 2014-01-12 | 2014-01-25 |  |  |  |
| DUKHCONP03MKELRF4070 |  | Installation of Isolator | 5d | 2014-01-12 | 2014-01-16 | DUKHCONP03MKELFF4065, DUKHCONP03MKARRF3645, DUKHPROGEN00PRDV3200, DUKHCONP03MKELFF4045, DUKHCONP03MKELFF4050 |  | 21d |
| DUKHCONP03MKELRF4075 |  | Installation of TV Dish Antenna | 7d | 2014-01-18 | 2014-01-25 | DUKHCONP03MKELRF4070, DUKHPROGEN00PRDV3290 |  | 21d |
|  | 15 | **PLUMBING, DRAINAGE & FIRE FIGHTING WORKS** |  | 2013-09-17 | 2014-01-29 |  |  |  |
|  | 10 | **GROUND FLOOR** |  | 2013-09-17 | 2014-01-13 |  |  |  |
| DUKHCONP03MKPLGF4305 |  | Installation of Plumbing pipes & testing | 5d | 2013-09-17 | 2013-09-22 | DUKHCONP03MKARGF3000 |  | 17d |
| DUKHCONP03MKPLGF4310 |  | Installation of Drainage pipes &testing | 5d | 2013-09-17 | 2013-09-22 | DUKHCONP03MKPLGF4305 SS, DUKHCONP03MKARGF3000 |  | 35d |
| DUKHCONP03MKPLGF4315 |  | Sanitary Fittings & Accessories | 7d | 2013-12-31 | 2014-01-07 | DUKHPROGEN00PRDV3150, DUKHPROGEN00PRDV3230, DUKHCONP03MKPLGF4310, DUKHPROGEN00PRDV3770, DUKHCONP03MKARGF3065 |  | 12d |
| DUKHCONP03MKPLGF4320 |  | Installation of Water Heater | 5d | 2014-01-08 | 2014-01-13 | DUKHCONP03MKPLGF4315, DUKHCONP03MKARGF3060, DUKHCONP03MKARGF3055 |  | 39d |
|  | 15 | **FIRST FLOORS** |  | 2013-11-02 | 2014-01-21 |  |  |  |
| DUKHCONP03MKPLFF4325 |  | Installation of Plumbing pipes & testing | 5d | 2013-11-02 | 2013-11-06 | DUKHCONP03MKARFF3300, DUKHPROGEN00PRDV3080 |  | -18d |
| DUKHCONP03MKPLFF4330 |  | Installation of Drainage pipes & testing | 5d | 2013-11-02 | 2013-11-06 | DUKHCONP03MKPLFF4325 SS |  | 7d |
| DUKHCONP03MKPLFF4335 |  | Sanitary Fittings & Accessories | 7d | 2014-01-08 | 2014-01-15 | DUKHCONP03MKPLFF4330, DUKHCONP03MKPLGF4315, DUKHCONP03MKARFF3365 |  | 12d |
| DUKHCONP03MKPLFF4340 |  | Installation of Water Heater | 5d | 2014-01-16 | 2014-01-21 | DUKHCONP03MKARFF3360, DUKHCONP03MKPLFF4335, DUKHCONP03MKARFF3355 |  | 15d |
|  | 20 | **ROOF** |  | 2013-12-10 | 2014-01-29 |  |  |  |
| DUKHCONP03MKPLRF4345 |  | Installation of Plumbing pipes & fittings | 5d | 2013-12-10 | 2013-12-15 | DUKHCONP03MKARRF3645, DUKHCONP03MKARRF3605 |  | -24d |
| DUKHCONP03MKPLRF4350 |  | Installation of Rain water Pipes | 5d | 2013-12-16 | 2013-12-22 | DUKHCONP03MKPLRF4345, DUKHCONP03MKPLFF4330 |  | 41d |
| DUKHCONP03MKPLRF4355 |  | Roof Water Tank Installation & Connections | 7d | 2014-01-22 | 2014-01-29 | DUKHCONP03MKPLRF4345, DUKHCONP03MKPLRF4350, DUKHCONP03MKARRF3645, DUKHCONP03MKARRF3655, DUKHCONP03MKPLFF4340 |  | 15d |
|  | 20 | **AC WORKS** |  | 2013-11-16 | 2014-01-16 |  |  |  |
|  | 10 | **GROUND FLOOR** |  | 2013-11-16 | 2014-01-05 |  |  |  |
| DUKHCONP03MKACGF4600 |  | Installation AC Pipes | 5d | 2013-11-16 | 2013-11-20 | DUKHCONP03MKARGF3005, DUKHPROGEN00PRDV3160 |  | 15d |
| DUKHCONP03MKACGF4605 |  | Fixing of Ventilation Equipments | 5d | 2013-12-25 | 2013-12-30 | DUKHPROGEN00PRDV3340, DUKHCONP03MKACGF4600, DUKHCONP03MKARGF3060, DUKHPROGEN00PRDV3530, DUKHCONP03MKARGF3055 |  | 8d |
| DUKHCONP03MKACGF4610 |  | Fixing of Split AC | 5d | 2013-12-31 | 2014-01-05 | DUKHPROGEN00PRDV3240, DUKHCONP03MKACGF4605 |  | 21d |
|  | 15 | **FIRST FLOORS** |  | 2013-11-21 | 2014-01-11 |  |  |  |
| DUKHCONP03MKACFF4615 |  | Installation AC Pipes | 5d | 2013-11-21 | 2013-11-26 | DUKHPROGEN00PRDV3160, DUKHCONP03MKACGF4600, DUKHCONP03MKARFF3305 |  | 15d |
| DUKHCONP03MKACFF4620 |  | Fixing of Ventilation Equipments | 5d | 2013-12-31 | 2014-01-05 | DUKHCONP03MKARFF3360, DUKHCONP03MKACGF4605, DUKHCONP03MKACFF4615, DUKHCONP03MKARFF3355, DUKHPROGEN00PRDV3340 |  | 8d |
| DUKHCONP03MKACFF4625 |  | Fixing of Split AC | 5d | 2014-01-06 | 2014-01-11 | DUKHCONP03MKACGF4610, DUKHCONP03MKACFF4620, DUKHPROGEN00PRDV3240 |  | 21d |
|  | 20 | **ROOF** |  | 2013-12-10 | 2014-01-16 |  |  |  |
| DUKHCONP03MKACRF4630 |  | Installation of Refrigerant Pipes | 7d | 2013-12-10 | 2013-12-17 | DUKHCONP03MKARRF3645, DUKHCONP03MKACGF4600, DUKHCONP03MKACFF4615 |  | 46d |
| DUKHCONP03MKACRF4635 |  | Installation of Condensing Unit | 5d | 2014-01-12 | 2014-01-16 | DUKHCONP03MKACGF4610, DUKHCONP03MKACRF4630, DUKHCONP03MKACFF4625, DUKHCONP03MKARRF3645 |  | 26d |
|  | 25 | **EXTERNAL WORKS** |  | 2013-12-16 | 2014-01-13 |  |  |  |
|  | 10 | **MISCELLANEOUS** |  | 2013-12-16 | 2014-01-13 |  |  |  |
| DUKHCONP03MKMSEX5000 |  | Construction of Manholes | 7d | 2013-12-16 | 2013-12-24 | DUKHCONP03MKPLFF4330, DUKHCONP03MKPLGF4310, DUKHCONP03MKPLRF4345 |  | -24d |
| DUKHCONP03MKMSEX5005 |  | Construction of Soak pit, Chambers | 7d | 2013-12-25 | 2014-01-01 | DUKHCONP03MKMSEX5000 |  | -4d |
| DUKHCONP03MKMSEX5020 |  | Construction Entrance Ramp | 7d | 2013-12-31 | 2014-01-07 | DUKHCONP03MKAREL3665, DUKHCONP03MKAREL3675 |  | -8d |
| DUKHCONP03MKMSEX5015 |  | Construction of grease Trap | 7d | 2014-01-02 | 2014-01-09 | DUKHCONP03MKMSEX5005 |  | 27d |
| DUKHCONP03MKMSEX5025 |  | SS.Handrails and Balustrades | 5d | 2014-01-08 | 2014-01-13 | DUKHCONP03MKMSEX5020 |  | 4d |
|  | 10 | **ZONE - 1 (3 Apartments)** |  | 2013-02-02 | 2014-05-18 |  |  |  |
|  | 10 | **STRUCTURAL WORKS** |  | 2013-02-02 | 2013-11-25 |  |  |  |
|  | 10 | **SUB STRUCTURE** |  | 2013-02-02 | 2013-07-16 |  |  |  |
|  | 10 | **UPTO GRADE SLAB** |  | 2013-02-02 | 2013-07-16 |  |  |  |
| DUKHCONP03Z1STUG1000 |  | Footing Excavation | 25d | 2013-02-02 A | 2013-03-01 A | DUKHMOBP030000004050 SS+10d, DUKHCONP03GNSP005000 SS+5d, DUKHCONP03GNSP002500 SS+6d | 100% |  |
| DUKHCONP03Z1STUG1020 |  | Construction of foundations | 20d | 2013-03-19 A | 2013-04-16 A | DUKHMOBP030000004060 SS, DUKHMOBP030000004080 SS, DUKHMOBP030000004070 SS, DUKHMOBP030000004090, DUKHCONP03Z1STUG1015 FF+8d, DUKHCONP03Z1STUG1015 SS+7d | 100% |  |
| DUKHCONP03Z1STUG1005 |  | Footing Antitermite | 0d | 2013-03-30 A | 2013-03-30 A | DUKHCONP03Z1STUG1000 SS+9d, DUKHCONP03Z1STUG1000 FF+5d | 100% |  |
| DUKHCONP03Z1STUG1010 |  | Footing Blinding | 0d | 2013-04-02 A | 2013-04-02 A | DUKHCONP03Z1STUG1005 SS+3d, DUKHCONP03Z1STUG1005 FF+3d | 100% |  |
| DUKHCONP03Z1STUG1015 |  | Footing Waterproofing & Screed | 0d | 2013-04-08 A | 2013-04-08 A | DUKHENGP03DWSTAP5560, DUKHPROGEN00PRDV3020, DUKHCONP03Z1STUG1010 SS+5d, DUKHCONP03Z1STUG1010 FF+5d | 100% |  |
| DUKHCONP03Z1STUG1025 |  | Construction of neck of columns | 9d | 2013-04-16 A | 2013-04-25 A | DUKHCONP03Z1STUG1020 SS+8d, DUKHCONP03Z1STUG1020 FF+7d | 100% |  |
| DUKHCONP03Z1STUG1030 |  | Waterproofing Footing & Neck Column | 25d | 2013-04-25 A | 2013-05-23 | DUKHCONP03Z1STUG1025 FF+8d, DUKHCONP03Z1STUG1025 SS+8d | 4% | -27d |
| DUKHCONP03Z1STUG1035 |  | Backfilling Upto Grade Beam Bottom | 25d | 2013-05-06 | 2013-06-03 | DUKHCONP03Z1STUG1030 SS+9d, DUKHCONP03Z1STUG1030 FF+9d |  | -27d |
| DUKHCONP03Z1STUG1040 |  | Construction of Grade Beams | 25d | 2013-05-22 | 2013-06-19 | DUKHENGP03DWSTAP5570, DUKHCONP03Z1STUG1035 FF+14d, DUKHCONP03Z1STUG1035 SS+14d |  | -27d |
| DUKHCONP03Z1STUG1045 |  | Construction of slab on grade | 25d | 2013-06-18 | 2013-07-16 | DUKHENGP03DWSTAP5570, DUKHCONP03Z1PLUG4300 FF+8d, DUKHCONP03Z1STUG1040 FF+10d, DUKHCONP03Z1PLUG4300 SS+8d, DUKHCONP03Z1STUG1040 SS+10d |  | -27d |
|  | 15 | **SUPERSTRUCTURE** |  | 2013-07-04 | 2013-11-25 |  |  |  |
|  | 10 | **GROUND FLOOR** |  | 2013-07-04 | 2013-09-02 |  |  |  |
| DUKHCONP03Z1STGF2000 |  | Column-Rebar & Formwork | 25d | 2013-07-04 | 2013-08-01 | DUKHENGP03DWSTAP5580, DUKHCONP03Z1STUG1045 SS+14d, DUKHCONP03Z1STUG1045 FF+7d |  | -27d |
| DUKHCONP03Z1STGF2005 |  | Column-Concrete | 24d | 2013-07-14 | 2013-08-13 | DUKHCONP03Z1STGF2000 FF+2d, DUKHCONP03Z1STGF2000 SS+8d |  | -27d |
| DUKHCONP03Z1STGF2010 |  | Beam, Stairs ,Slab-Rebar & Formwork | 25d | 2013-07-29 | 2013-08-29 | DUKHCONP03Z1STGF2005 FF+14d, DUKHCONP03Z1STGF2005 SS+2d, DUKHENGP03DWSTAP5590 |  | -27d |
| DUKHCONP03Z1STGF2015 |  | Beam, Stairs ,Slab-Concrete | 15d | 2013-08-17 | 2013-09-02 | DUKHCONP03Z1STGF2010 SS+10d, DUKHCONP03Z1STGF2010 FF+3d |  | -27d |
|  | 15 | **FIRST FLOORS** |  | 2013-08-19 | 2013-10-15 |  |  |  |
| DUKHCONP03Z1STFF2020 |  | Column-Rebar & Formwork | 25d | 2013-08-19 | 2013-09-16 | DUKHCONP03Z1STGF2015 SS+2d, DUKHCONP03Z1STGF2015 FF+5d, DUKHENGP03DWSTAP5600 |  | -27d |
| DUKHCONP03Z1STFF2025 |  | Column-Concrete | 24d | 2013-08-29 | 2013-09-25 | DUKHCONP03Z1STFF2020 FF+2d, DUKHCONP03Z1STFF2020 SS+9d |  | -27d |
| DUKHCONP03Z1STFF2030 |  | Beam, Stairs ,Slab-Rebar & Formwork | 25d | 2013-09-14 | 2013-10-12 | DUKHCONP03Z1STFF2025 FF+14d, DUKHCONP03Z1STFF2025 SS+2d |  | -27d |

| ID | WBS | Task | Duration | Start | Finish | Predecessors | Total float |
| --- | --- | --- | --- | --- | --- | --- | --- |
| DUKHCONP03Z1STFF2035 |  | Beam, Stairs ,Slab-Concrete | 15d | 2013-09-29 | 2013-10-15 | DUKHCONP03Z1STFF2030 SS+10d, DUKHCONP03Z1STFF2030 FF+3d | -27d |
|  | 20 | **ROOF** |  | 2013-10-01 | 2013-11-25 |  |  |
| DUKHCONP03Z1STRF2040 |  | Column-Rebar & Formwork | 18d | 2013-10-01 | 2013-10-23 | DUKHCONP03Z1STFF2035 SS+2d, DUKHCONP03Z1STFF2035 FF+3d | -24d |
| DUKHCONP03Z1STRF2045 |  | Column-Concrete | 17d | 2013-10-05 | 2013-10-26 | DUKHCONP03Z1STRF2040 FF+1d, DUKHCONP03Z1STRF2040 SS+3d | -24d |
| DUKHCONP03Z1STRF2050 |  | Slab-Rebar & Formwork | 20d | 2013-10-07 | 2013-10-31 | DUKHCONP03Z1STRF2045 SS+2d, DUKHCONP03Z1STRF2045 FF+5d | -24d |
| DUKHCONP03Z1STRF2055 |  | Slab-Concrete | 13d | 2013-10-20 | 2013-11-03 | DUKHCONP03Z1STRF2050 FF+2d, DUKHCONP03Z1STRF2050 SS+5d | -24d |
| DUKHCONP03Z1STRF2060 |  | Construction of Parapets | 25d | 2013-10-22 | 2013-11-19 | DUKHCONP03Z1STRF2055 SS+2d, DUKHCONP03Z1STRF2055 FF+10d | -9d |
| DUKHCONP03Z1STRF2065 |  | Construction of up stands/Plinth | 25d | 2013-10-28 | 2013-11-25 | DUKHCONP03Z1STRF2060 FF+5d, DUKHCONP03Z1STRF2060 SS+5d | -9d |
|  | 15 | **FINISHING WORKS** |  | 2013-09-17 | 2014-04-19 |  |  |
|  | 10 | **INTERNAL FINISHES** |  | 2013-09-17 | 2014-04-19 |  |  |
|  | 10 | **GROUND FLOOR** |  | 2013-09-17 | 2014-03-12 |  |  |
| DUKHCONP03Z1ARGF3000 |  | Block work | 25d | 2013-09-17 | 2013-10-15 | DUKHCONP03MKARGF3000, DUKHCONP03Z1STGF2015 FF+21d, DUKHCONP03Z1STGF2015 SS+21d | 8d |
| DUKHCONP03Z1ARGF3005 |  | Plastering work | 25d | 2013-10-09 | 2013-11-09 | DUKHCONP03MKARGF3005, DUKHCONP03Z1ELGF4000 FF+5d, DUKHCONP03Z1PLGF4305 FF+5d, DUKHCONP03Z1ARGF3000 SS+7d, DUKHCONP03Z1ELGF4000 SS+5d, DUKHCONP03Z1PLGF4305 SS+5d, DUKHCONP03Z1ARGF3000 FF+7d | 8d |
| DUKHCONP03Z1ARGF3010 |  | Flooring screed | 21d | 2013-10-20 | 2013-11-12 | DUKHCONP03Z1ARGF3005 SS+7d, DUKHCONP03Z1ARGF3005 FF+3d, DUKHCONP03MKARGF3010 | 16d |
| DUKHCONP03Z1ARGF3015 |  | Wet area waterproofing & Protection Screed | 15d | 2013-10-29 | 2013-11-14 | DUKHCONP03Z1ARGF3005 SS+7d, DUKHCONP03Z1ARGF3005 FF+5d, DUKHCONP03MKARGF3015 | 8d |
| DUKHCONP03Z1ARGF3020 |  | Ceramic Wall Tiling | 25d | 2013-11-04 | 2013-12-02 | DUKHCONP03Z1PLGF4310 FF+4d, DUKHCONP03Z1PLGF4305 FF+4d, DUKHCONP03Z1PLGF4305 SS+4d, DUKHCONP03Z1ARGF3015 FF+5d, DUKHCONP03MKARGF3020, DUKHCONP03Z1PLGF4310 SS+4d, DUKHCONP03Z1ARGF3015 SS+5d | 8d |
| DUKHCONP03Z1ARGF3025 |  | Porcelain Tile flooring | 25d | 2013-11-10 | 2013-12-08 | DUKHCONP03Z1ARGF3010 FF+10d, DUKHCONP03MKARGF3025, DUKHCONP03Z1ARGF3020 SS+5d, DUKHCONP03Z1ARGF3020 FF+5d, DUKHCONP03Z1ARGF3010 SS+10d | 8d |
| DUKHCONP03Z1ARGF3030 |  | Paint First coat | 25d | 2013-11-21 | 2013-12-21 | DUKHCONP03MKARGF3030, DUKHCONP03Z1ARGF3005 FF+14d, DUKHCONP03Z1ARGF3005 SS+14d | 1d |
| DUKHCONP03Z1ARGF3035 |  | Slate Tile Flooring & Skirting | 15d | 2013-11-30 | 2013-12-16 | DUKHCONP03Z1ARGF3025 FF+7d, DUKHCONP03MKARGF3035, DUKHCONP03Z1ARGF3010 FF+13d, DUKHCONP03Z1ARGF3010 SS+13d, DUKHCONP03Z1ARGF3025 SS+13d | 15d |
| DUKHCONP03Z1ARGF3045 |  | Fixing of Suspension systems | 20d | 2013-12-05 | 2013-12-29 | DUKHCONP03Z1ARGF3030 FF+7d, DUKHCONP03Z1ARGF3025 FF+10d, DUKHCONP03Z1ARGF3030 SS+7d, DUKHCONP03Z1ELGF4010 SS+5d, DUKHCONP03MKARGF3045, DUKHCONP03Z1ARGF3025 SS+10d, DUKHCONP03Z1ELGF4010 FF+5d | 1d |
| DUKHCONP03Z1ARGF3040 |  | Cobble Tile flooring | 15d | 2013-12-07 | 2013-12-24 | DUKHCONP03Z1ARGF3035 SS+4d, DUKHCONP03Z1ARGF3010 FF+13d, DUKHCONP03Z1ARGF3025 FF+13d, DUKHCONP03MKARGF3040, DUKHCONP03Z1ARGF3010 SS+13d, DUKHCONP03Z1ARGF3025 SS+13d, DUKHCONP03Z1ARGF3035 FF+4d | 13d |
| DUKHCONP03Z1ARGF3060 |  | Gypsum board false ceiling | 25d | 2013-12-17 | 2014-01-15 | DUKHCONP03Z1ARGF3045 FF+10d, DUKHCONP03MKARGF3060, DUKHCONP03Z1ACGF4600 FF+7d, DUKHCONP03Z1ARGF3045 SS+10d, DUKHCONP03Z1ACGF4600 SS+7d | 1d |
| DUKHCONP03Z1ARGF3050 |  | Granite - Stair case flooring & Skirting | 20d | 2013-12-25 | 2014-01-16 | DUKHCONP03Z1ARGF3025 SS+13d, DUKHCONP03Z1ARGF3040 FF+7d, DUKHCONP03Z1ARGF3040 SS+7d, DUKHCONP03Z1ARGF3025 FF+13d, DUKHCONP03MKARGF3050 | 5d |
| DUKHCONP03Z1ARGF3055 |  | Aluminum tile false ceiling | 25d | 2013-12-25 | 2014-01-22 | DUKHCONP03Z1ACGF4600 FF+7d, DUKHCONP03Z1ARGF3045 SS+7d, DUKHCONP03MKARGF3055, DUKHCONP03Z1ACGF4600 SS+7d, DUKHCONP03Z1ARGF3045 FF+7d | -4d |
| DUKHCONP03Z1ARGF3065 |  | Wooden door | 15d | 2014-01-08 | 2014-01-25 | DUKHCONP03Z1ARGF3035 SS+7d, DUKHCONP03Z1ARGF3050 FF+7d, DUKHCONP03Z1ARGF3035 FF+7d, DUKHCONP03MKARGF3065, DUKHCONP03Z1ARGF3050 SS+7d | 5d |
| DUKHCONP03Z1ARGF3070 |  | Aluminum doors | 15d | 2014-01-14 | 2014-01-30 | DUKHCONP03MKARGF3070, DUKHCONP03Z1ARGF3065 FF+5d, DUKHCONP03Z1ARGF3065 SS+5d | 5d |
| DUKHCONP03Z1ARGF3075 |  | Carpentry & Joinery Works | 20d | 2014-01-20 | 2014-02-12 | DUKHCONP03Z1ARGF3070 FF+7d, DUKHCONP03Z1ARGF3070 SS+5d, DUKHCONP03MKARGF3075 | 5d |
| DUKHCONP03Z1ARGF3080 |  | Aluminum windows | 20d | 2014-01-21 | 2014-02-13 | DUKHCONP03MKARGF3080, DUKHCONP03Z1ARGF3070 SS+6d, DUKHCONP03Z1ARGF3070 FF+6d | 15d |
| DUKHCONP03Z1ARGF3085 |  | S.S.Balustrade | 20d | 2014-01-28 | 2014-02-20 | DUKHCONP03Z1ARGF3050 SS+7d, DUKHCONP03Z1ARGF3050 FF+7d, DUKHCONP03Z1ARGF3075 FF+7d, DUKHCONP03MKARGF3085, DUKHCONP03Z1ARGF3075 SS+7d | 10d |
| DUKHCONP03Z1ARGF3090 |  | Installation of Granite Counter Top | 15d | 2014-02-02 | 2014-02-19 | DUKHCONP03Z1ARGF3075 FF+6d, DUKHCONP03Z1ARGF3075 SS+7d, DUKHCONP03MKARGF3090 | 5d |
| DUKHCONP03Z1ARGF3095 |  | Final Painting | 25d | 2014-02-12 | 2014-03-12 | DUKHCONP03Z1ARGF3090 FF+8d, DUKHCONP03MKARGF3095, DUKHCONP03Z1ACGF4610 SS+10d, DUKHCONP03Z1ARGF3080 SS+8d, DUKHCONP03Z1ARGF3085 SS+7d, DUKHCONP03Z1ARGF3040 SS+13d, DUKHCONP03Z1ARGF3035 SS+13d, DUKHCONP03Z1ARGF3080 FF+8d, DUKHCONP03Z1ARGF3085 FF+7d, DUKHCONP03Z1ACGF4610 FF+10d, DUKHCONP03Z1ARGF3060 SS+8d, DUKHCONP03Z1ARGF3070 SS+5d, DUKHCONP03Z1ARGF3030 SS+10d, DUKHCONP03Z1ARGF3090 SS+8d, DUKHCONP03Z1ARGF3030 FF+10d, DUKHCONP03Z1ARGF3060 FF+8d, DUKHCONP03Z1ARGF3070 FF+5d, DUKHCONP03Z1ARGF3040 FF+13d, DUKHCONP03Z1ARGF3035 FF+13d | 5d |
|  | 15 | **FIRST FLOORS** |  | 2013-11-02 | 2014-04-19 |  |  |
| DUKHCONP03Z1ARFF3300 |  | Block work | 24d | 2013-11-02 | 2013-11-28 | DUKHCONP03Z1STFF2035 SS+21d, DUKHCONP03Z1STFF2020 FF+21d, DUKHCONP03Z1STFF2035 FF+21d, DUKHCONP03Z1STFF2020 SS+21d, DUKHCONP03MKARFF3300 | -27d |
| DUKHCONP03Z1ARFF3305 |  | Plastering work | 25d | 2013-11-25 | 2013-12-24 | DUKHCONP03MKARFF3305, DUKHCONP03Z1ELFF4035 SS+5d, DUKHCONP03Z1PLFF4325 SS+6d, DUKHCONP03Z1ELFF4035 FF+5d, DUKHCONP03Z1ARFF3300 SS+7d, DUKHCONP03Z1ARFF3300 FF+7d, DUKHCONP03Z1PLFF4325 FF+6d | -27d |
| DUKHCONP03Z1ARFF3310 |  | Flooring screed | 21d | 2013-12-03 | 2013-12-28 | DUKHCONP03Z1ARFF3305 SS+7d, DUKHCONP03MKARFF3310, DUKHCONP03Z1ARFF3305 FF+3d | -12d |
| DUKHCONP03Z1ARFF3330 |  | Paint First coat | 25d | 2013-12-11 | 2014-01-09 | DUKHCONP03Z1ARFF3305 SS+14d, DUKHCONP03MKARFF3330, DUKHCONP03Z1ARFF3305 FF+14d | -9d |
| DUKHCONP03Z1ARFF3315 |  | Wet area waterproofing | 15d | 2013-12-16 | 2014-01-02 | DUKHCONP03Z1ARFF3305 SS+7d, DUKHCONP03Z1ARFF3305 FF+8d, DUKHCONP03MKARFF3315 | -27d |
| DUKHCONP03Z1ARFF3320 |  | Ceramic Wall Tiling | 25d | 2013-12-26 | 2014-01-23 | DUKHCONP03Z1PLFF4330 SS+7d, DUKHCONP03Z1PLFF4325 FF+4d, DUKHCONP03Z1ARFF3315 SS+8d, DUKHCONP03Z1PLFF4325 SS+4d, DUKHCONP03MKARFF3320, DUKHCONP03Z1PLFF4330 FF+7d, DUKHCONP03Z1ARFF3315 FF+7d | -27d |
| DUKHCONP03Z1ARFF3325 |  | Porcelain Tile flooring | 25d | 2014-01-02 | 2014-01-30 | DUKHCONP03Z1ARFF3320 FF+6d, DUKHCONP03Z1ARFF3310 FF+10d, DUKHCONP03Z1ARFF3310 SS+10d, DUKHCONP03MKARFF3325, DUKHCONP03Z1ARFF3320 SS+6d | -27d |
| DUKHCONP03Z1ARFF3345 |  | Fixing of Suspension systems | 20d | 2014-01-16 | 2014-02-08 | DUKHCONP03Z1ARFF3325 FF+7d, DUKHCONP03MKARFF3345, DUKHCONP03Z1ARFF3330 SS+7d, DUKHCONP03Z1ELFF4045 FF+5d, DUKHCONP03Z1ARFF3325 SS+7d, DUKHCONP03Z1ARFF3330 FF+7d, DUKHCONP03Z1ELFF4045 SS+5d | -27d |
| DUKHCONP03Z1ARFF3335 |  | Slate Tile Flooring & Skirting | 15d | 2014-01-20 | 2014-02-05 | DUKHCONP03Z1ARFF3310 FF+13d, DUKHCONP03MKARFF3335, DUKHCONP03Z1ARFF3325 FF+5d, DUKHCONP03Z1ARFF3325 SS+13d, DUKHCONP03Z1ARFF3310 SS+13d | -17d |
| DUKHCONP03Z1ARFF3350 |  | Granite - Stair case flooring & Skirting | 20d | 2014-01-23 | 2014-02-16 | DUKHCONP03Z1ARFF3325 SS+13d, DUKHCONP03MKARFF3350, DUKHCONP03Z1ARFF3325 FF+13d | -25d |
| DUKHCONP03Z1ARFF3360 |  | Gypsum board false ceiling | 25d | 2014-01-25 | 2014-02-23 | DUKHCONP03Z1ARFF3345 SS+7d, DUKHCONP03MKARFF3360, DUKHCONP03Z1ACFF4615 FF+7d, DUKHCONP03Z1ACFF4615 SS+7d, DUKHCONP03Z1ARFF3345 FF+7d | -27d |
| DUKHCONP03Z1ARFF3355 |  | Aluminum tile false ceiling | 20d | 2014-01-28 | 2014-02-20 | DUKHCONP03Z1ACFF4615 SS+7d, DUKHCONP03Z1ACFF4615 FF+7d, DUKHCONP03MKARFF3355, DUKHCONP03Z1ARFF3345 SS+10d, DUKHCONP03Z1ARFF3345 FF+10d | -25d |
| DUKHCONP03Z1ARFF3365 |  | Wooden door | 15d | 2014-02-09 | 2014-02-26 | DUKHCONP03Z1ARFF3350 SS+7d, DUKHCONP03Z1ARFF3355 SS+3d, DUKHCONP03Z1ARFF3335 FF+7d, DUKHCONP03Z1ARFF3350 FF+7d, DUKHCONP03Z1ARFF3360 SS+3d, DUKHCONP03Z1ARFF3360 FF+3d, DUKHCONP03MKARFF3365, DUKHCONP03Z1ARFF3335 SS+7d, DUKHCONP03Z1ARFF3355 FF+3d | -27d |
| DUKHCONP03Z1ARFF3370 |  | Aluminum Door | 20d | 2014-02-18 | 2014-03-12 | DUKHCONP03MKARFF3370, DUKHCONP03Z1ARFF3365 SS+7d, DUKHCONP03Z1ARFF3365 FF+5d | -27d |
| DUKHCONP03Z1ARFF3380 |  | Aluminum windows | 20d | 2014-02-25 | 2014-03-19 | DUKHCONP03Z1ARFF3370 FF+6d, DUKHCONP03Z1ARFF3370 SS+6d, DUKHCONP03MKARFF3380 | -16d |
| DUKHCONP03Z1ARFF3375 |  | Carpentry & Joinery Works | 25d | 2014-02-26 | 2014-03-26 | DUKHCONP03Z1ARFF3370 SS+7d, DUKHCONP03MKARFF3375, DUKHCONP03Z1ARFF3370 FF+5d | -27d |
| DUKHCONP03Z1ARFF3385 |  | Handrail & Balustrade | 20d | 2014-03-10 | 2014-04-01 | DUKHCONP03Z1ARFF3350 SS+7d, DUKHCONP03Z1ARFF3350 FF+7d, DUKHCONP03Z1ARFF3375 SS+5d, DUKHCONP03MKARFF3385, DUKHCONP03Z1ARFF3375 FF+5d | -26d |
| DUKHCONP03Z1ARFF3390 |  | Installation of Granite Counter Top | 20d | 2014-03-12 | 2014-04-03 | DUKHCONP03Z1ARFF3375 FF+7d, DUKHCONP03MKARFF3390, DUKHCONP03Z1ARFF3375 SS+7d | -27d |
| DUKHCONP03Z1ARFF3395 |  | Final Painting | 25d | 2014-03-22 | 2014-04-19 | DUKHCONP03Z1ARFF3380 SS+10d, DUKHCONP03Z1ACFF4625 FF+10d, DUKHCONP03Z1ARFF3355 SS+10d, DUKHCONP03Z1ARFF3385 SS+9d, DUKHCONP03Z1ARFF3355 FF+10d, DUKHCONP03Z1ARFF3365 SS+8d, DUKHCONP03Z1ARFF3330 SS+10d, DUKHCONP03Z1ARFF3330 FF+10d, DUKHCONP03Z1ACFF4625 SS+10d, DUKHCONP03Z1ARFF3380 FF+10d, DUKHCONP03Z1ARFF3375 SS+8d, DUKHCONP03Z1ARFF3390 SS+8d, DUKHCONP03Z1ARFF3385 FF+10d, DUKHCONP03Z1ARFF3335 SS+8d, DUKHCONP03Z1ARFF3350 FF+8d, DUKHCONP03Z1ARFF3360 SS+10d, DUKHCONP03Z1ARFF3375 FF+8d, DUKHCONP03Z1ARFF3335 FF+8d, DUKHCONP03MKARFF3395, DUKHCONP03Z1ARFF3350 SS+8d, DUKHCONP03Z1ARFF3360 FF+10d, DUKHCONP03Z1ARFF3365 FF+8d, DUKHCONP03Z1ARFF3390 FF+8d | -27d |
|  | 20 | **ROOF** |  | 2013-11-19 | 2014-03-10 |  |  |
| DUKHCONP03Z1ARRF3600 |  | Block work | 20d | 2013-11-19 | 2013-12-11 | DUKHCONP03Z1STRF2055 SS+21d, DUKHCONP03MKARRF3600, DUKHCONP03Z1STRF2055 FF+21d | 40d |
| DUKHCONP03Z1ARRF3605 |  | Plastering work | 20d | 2013-11-27 | 2013-12-21 | DUKHCONP03MKARRF3605, DUKHCONP03Z1ARRF3600 SS+7d, DUKHCONP03Z1ARRF3600 FF+7d | 40d |
| DUKHCONP03Z1ARRF3610 |  | Flooring screed | 15d | 2013-12-11 | 2013-12-29 | DUKHCONP03Z1ARRF3605 SS+7d, DUKHCONP03Z1ARRF3605 FF+7d | 45d |
| DUKHCONP03Z1ARRF3695 |  | Painting | 20d | 2014-02-03 | 2014-02-26 | DUKHCONP03Z1ARRF3610 SS+7d, DUKHCONP03Z1ARRF3610 FF+7d, DUKHCONP03MKARRF3695 | 7d |
| DUKHCONP03Z1ARRF3620 |  | Epoxy Painting | 15d | 2014-02-22 | 2014-03-10 | DUKHCONP03MKARRF3620, DUKHCONP03Z1ARRF3695 FF+10d, DUKHCONP03Z1ARRF3695 SS+10d | 7d |
|  | 15 | **EXTERNAL FINISHES** |  | 2013-11-25 | 2014-03-03 |  |  |
|  | 10 | **ROOF** |  | 2013-11-25 | 2014-02-05 |  |  |
| DUKHCONP03Z1ARRF3630 |  | Leveling Screed for Waterproofing | 25d | 2013-11-25 | 2013-12-24 | DUKHCONP03Z1STRF2065 SS+10d, DUKHCONP03Z1STRF2065 FF+10d, DUKHCONP03Z1STRF2060 FF+10d, DUKHCONP03Z1STRF2060 SS+10d, DUKHCONP03MKARRF3630 | 35d |
| DUKHCONP03Z1ARRF3635 |  | Laying of Waterproofing Membrane | 25d | 2013-12-01 | 2013-12-30 | DUKHPROGEN00PRDV3050, DUKHCONP03Z1ARRF3630 SS+3d, DUKHCONP03MKARRF3635, DUKHCONP03Z1ARRF3630 FF+3d | 33d |
| DUKHCONP03Z1ARRF3640 |  | Installation of Insulation & Protection | 25d | 2013-12-05 | 2014-01-04 | DUKHCONP03Z1ARRF3635 FF+4d, DUKHCONP03Z1ARRF3635 SS+4d, DUKHCONP03MKARRF3640 | 33d |
| DUKHCONP03Z1ARRF3645 |  | Lime Stone Chips & Paving slab Installation | 25d | 2013-12-10 | 2014-01-08 | DUKHCONP03Z1ARRF3640 FF+4d, DUKHCONP03Z1ARRF3640 SS+4d, DUKHCONP03MKARRF3645 | 33d |
| DUKHCONP03Z1ARRF3650 |  | Install. of Gal. Frame & Aluminum Slat Screen | 25d | 2013-12-24 | 2014-01-21 | DUKHCONP03MKARRF3650, DUKHCONP03Z1ARRF3645 SS+7d, DUKHCONP03Z1ARRF3645 FF+7d | 29d |
| DUKHCONP03Z1ARRF3655 |  | Installation of Pumps Protection cabinets | 20d | 2014-01-08 | 2014-01-30 | DUKHCONP03Z1ARRF3645 FF+7d, DUKHCONP03Z1ARRF3650 SS+8d, DUKHCONP03Z1ARRF3650 FF+8d, DUKHCONP03MKARRF3655, DUKHCONP03Z1ARRF3645 SS+7d | 29d |
| DUKHCONP03Z1ARRF3660 |  | Installation of Access Ladder | 15d | 2014-01-20 | 2014-02-05 | DUKHCONP03MKARRF3660, DUKHCONP03Z1ARRF3655 FF+5d, DUKHCONP03Z1ARRF3655 SS+5d | 34d |
|  | 15 | **ELEVATION** |  | 2013-12-23 | 2014-03-03 |  |  |
| DUKHCONP03Z1AREL3665 |  | External Plastering | 25d | 2013-12-23 | 2014-01-20 | DUKHCONP03Z1STRF2065 SS+7d, DUKHCONP03Z1ARFF3305 SS+7d, DUKHCONP03MKAREL3665, DUKHCONP03Z1STRF2065 FF+7d, DUKHCONP03Z1ARFF3305 FF+7d, DUKHCONP03Z1ARRF3605 SS+7d | 26d |
| DUKHCONP03Z1AREL3675 |  | GRC Panel Works | 20d | 2014-01-09 | 2014-02-01 | DUKHPROGEN00PRDV3390, DUKHCONP03Z1AREL3665 FF+10d, DUKHCONP03Z1AREL3665 SS+10d, DUKHCONP03MKAREL3675 | 28d |
| DUKHCONP03Z1AREL3680 |  | External Painting | 20d | 2014-02-08 | 2014-03-03 | DUKHCONP03Z1ARRF3695 FF+4d, DUKHCONP03MKAREL3680, DUKHCONP03Z1ARRF3695 SS+4d, DUKHCONP03Z1AREL3675 SS+10d, DUKHCONP03Z1AREL3675 FF+10d | 13d |

| ID | WBS | Task | Duration | Start | Finish | Predecessors | Total float |
| --- | --- | --- | --- | --- | --- | --- | --- |
|  | 20 | **MEP WORKS** |  | 2013-06-09 | 2014-04-16 |  |  |
|  | 10 | **ELECTRICAL WORKS** |  | 2013-09-23 | 2014-04-16 |  |  |
|  | 10 | **GROUND FLOOR** |  | 2013-09-23 | 2014-02-18 |  |  |
| DUKHCONP03Z1ELGF4000 |  | Fixing of wall conduits & switch socket boxes | 25d | 2013-09-23 | 2013-10-23 | DUKHCONP03MKELGF4000, DUKHCONP03Z1ARGF3000 SS+5d, DUKHCONP03Z1ARGF3000 FF+5d | 17d |
| DUKHCONP03Z1ELGF4005 |  | Cable tray & trunking installation | 20d | 2013-10-07 | 2013-10-31 | DUKHCONP03MKELGF4005, DUKHCONP03Z1ELGF4000 SS+5d, DUKHCONP03Z1ELGF4000 FF+5d | 33d |
| DUKHCONP03Z1ELGF4010 |  | Installation of wiring & Main Cabling | 25d | 2013-10-31 | 2013-11-28 | DUKHCONP03Z1ELGF4005 SS+7d, DUKHCONP03Z1ELGF4005 FF+7d, DUKHCONP03MKELGF4010 | 21d |
| DUKHCONP03Z1ELGF4015 |  | Install. of CAMS & Fire Fighting Accessories | 25d | 2014-01-02 | 2014-01-30 | DUKHCONP03Z1ARGF3060 SS+7d, DUKHCONP03Z1ARGF3055 FF+7d, DUKHCONP03MKELGF4015, DUKHCONP03Z1ARGF3055 SS+7d, DUKHCONP03Z1ARGF3060 FF+7d | 9d |
| DUKHCONP03Z1ELGF4020 |  | Installation of DBS,MCCB Accessories. | 20d | 2014-01-08 | 2014-01-30 | DUKHCONP03MKELGF4020, DUKHCONP03Z1ELGF4010 SS+5d, DUKHCONP03Z1ARGF3060 FF+7d, DUKHCONP03Z1ELGF4010 FF+5d, DUKHCONP03Z1ARGF3055 SS+7d, DUKHCONP03Z1ARGF3060 SS+7d, DUKHCONP03Z1ARGF3055 FF+7d | -4d |
| DUKHCONP03Z1ELGF4025 |  | Installation of Lighting fixtures & Accessories | 25d | 2014-01-20 | 2014-02-18 | DUKHCONP03Z1ELGF4020 FF+10d, DUKHCONP03Z1ARGF3055 SS+10d, DUKHCONP03MKELGF4025, DUKHCONP03Z1ARGF3055 FF+10d, DUKHCONP03Z1ARGF3060 FF+10d, DUKHCONP03Z1ELGF4020 SS+10d, DUKHCONP03Z1ARGF3060 SS+10d | -3d |
| DUKHCONP03Z1ELGF4030 |  | Installation of Telephone System | 20d | 2014-01-20 | 2014-02-12 | DUKHCONP03Z1ELGF4020 SS+10d, DUKHCONP03Z1ELGF4020 FF+10d, DUKHCONP03Z1ARGF3060 FF+5d, DUKHCONP03MKELGF4030, DUKHCONP03Z1ARGF3060 SS+5d | -4d |
|  | 15 | **FIRST FLOORS** |  | 2013-11-07 | 2014-03-23 |  |  |
| DUKHCONP03Z1ELFF4035 |  | Fixing of wall conduits & switch socket boxes | 25d | 2013-11-07 | 2013-12-05 | DUKHCONP03Z1ARFF3300 FF+5d, DUKHCONP03MKELFF4035, DUKHCONP03Z1ARFF3300 SS+5d | -17d |
| DUKHCONP03Z1ELFF4040 |  | Cable tray & trunking installation | 20d | 2013-11-21 | 2013-12-14 | DUKHCONP03Z1ELFF4035 SS+5d, DUKHCONP03MKELFF4040, DUKHCONP03Z1ELFF4035 FF+5d | 3d |
| DUKHCONP03Z1ELFF4045 |  | Installation of wiring & Main Cabling | 25d | 2013-11-30 | 2013-12-29 | DUKHCONP03MKELFF4045, DUKHCONP03Z1ELFF4040 FF+7d, DUKHCONP03Z1ELFF4040 SS+7d | 3d |
| DUKHCONP03Z1ELFF4055 |  | Install. of CAMS & Fire Fighting Accessories | 25d | 2014-02-05 | 2014-03-06 | DUKHCONP03Z1ELGF4015 FF+5d, DUKHCONP03Z1ARFF3355 FF+7d, DUKHCONP03Z1ELGF4015 SS+5d, DUKHCONP03Z1ARFF3360 SS+7d, DUKHCONP03Z1ARFF3360 FF+7d, DUKHCONP03MKELFF4055, DUKHCONP03Z1ARFF3355 SS+7d | -15d |
| DUKHCONP03Z1ELFF4050 |  | Installation of Telephone System | 25d | 2014-02-06 | 2014-03-08 | DUKHCONP03Z1ELGF4030 SS+10d, DUKHCONP03Z1ARFF3355 SS+5d, DUKHCONP03Z1ARFF3360 FF+5d, DUKHCONP03Z1ARFF3360 SS+5d, DUKHCONP03MKELFF4050, DUKHCONP03Z1ELGF4030 FF+10d, DUKHCONP03Z1ARFF3355 FF+5d, DUKHCONP03Z1MSEX5010 FF | -9d |
| DUKHCONP03Z1ELFF4060 |  | Installation of DBS,MCCB Accessories. | 20d | 2014-02-09 | 2014-03-04 | DUKHCONP03Z1ARFF3360 FF+8d, DUKHCONP03Z1ELFF4045 FF+5d, DUKHCONP03Z1ARFF3360 SS+8d, DUKHCONP03Z1ELFF4045 SS+5d, DUKHCONP03Z1ARFF3355 SS+8d, DUKHCONP03MKELFF4060, DUKHCONP03Z1ARFF3355 FF+8d | -26d |
| DUKHCONP03Z1ELFF4065 |  | Installation of Lighting fixtures & Accessories | 25d | 2014-02-23 | 2014-03-23 | DUKHCONP03MKELFF4065, DUKHCONP03Z1ELFF4060 SS+11d, DUKHCONP03Z1ARFF3360 FF+10d, DUKHCONP03Z1ELGF4025 SS+5d, DUKHCONP03Z1ELFF4060 FF+11d, DUKHCONP03Z1ARFF3360 SS+10d, DUKHCONP03Z1ARFF3355 FF+10d, DUKHCONP03Z1ELGF4025 FF+5d, DUKHCONP03Z1ARFF3355 SS+10d | -26d |
|  | 20 | **ROOF** |  | 2014-03-15 | 2014-04-16 |  |  |
| DUKHCONP03Z1ELRF4070 |  | Installation of Isolator | 18d | 2014-03-15 | 2014-04-03 | DUKHCONP03Z1ELFF4045 SS+10d, DUKHCONP03Z1ELFF4050 SS+5d, DUKHCONP03Z1ARRF3645 SS+7d, DUKHCONP03Z1ELFF4065 SS+10d, DUKHCONP03Z1ARRF3645 FF+7d, DUKHCONP03MKELRF4070, DUKHCONP03Z1ELFF4065 FF+10d, DUKHCONP03Z1ELFF4045 FF+10d, DUKHCONP03Z1ELFF4050 FF+7d | -25d |
| DUKHCONP03Z1ELRF4075 |  | Installation of TV Dish Antenna | 23d | 2014-03-22 | 2014-04-16 | DUKHCONP03Z1ELRF4070 FF+10d, DUKHCONP03MKELRF4075, DUKHCONP03Z1ELRF4070 SS+6d | -25d |
|  | 15 | **PLUMBING, DRAINAGE & FIRE FIGHTING WORKS** |  | 2013-06-09 | 2014-04-02 |  |  |
|  | 10 | **GROUND FLOOR** |  | 2013-06-09 | 2014-02-12 |  |  |
| DUKHCONP03Z1PLUG4300 |  | Drainage / Storm Pipes in Grade Slab | 20d | 2013-06-09 | 2013-07-01 | DUKHCONP03Z1STUG1040 FF+10d, DUKHPROGEN00PRDV3060, DUKHPROGEN00PRDV3070, DUKHCONP03Z1STUG1040 SS+10d | -27d |
| DUKHCONP03Z1PLGF4305 |  | Installation of Plumbing pipes & testing | 18d | 2013-10-03 | 2013-10-26 | DUKHCONP03Z1ARGF3000 SS+7d, DUKHCONP03Z1ARGF3000 FF+7d, DUKHCONP03MKPLGF4305 | 8d |
| DUKHCONP03Z1PLGF4310 |  | Installation of Drainage pipes &testing | 18d | 2013-10-03 | 2013-10-26 | DUKHCONP03MKPLGF4310, DUKHCONP03Z1ARGF3000 FF+7d, DUKHCONP03Z1ARGF3000 SS+7d, DUKHCONP03Z1PLGF4305 SS, DUKHCONP03Z1PLGF4305 FF | 29d |
| DUKHCONP03Z1PLGF4315 |  | Sanitary Fittings & Accessories | 20d | 2014-01-14 | 2014-02-05 | DUKHCONP03MKPLGF4315, DUKHCONP03Z1ARGF3065 SS+5d, DUKHCONP03Z1ARGF3065 FF+5d, DUKHCONP03Z1PLGF4310 FF+5d, DUKHCONP03Z1PLGF4310 SS+5d | 29d |
| DUKHCONP03Z1PLGF4320 |  | Installation of Water Heater | 15d | 2014-01-26 | 2014-02-12 | DUKHCONP03Z1PLGF4315 SS+5d, DUKHCONP03Z1ARGF3060 FF+5d, DUKHCONP03MKPLGF4320, DUKHCONP03Z1ARGF3060 SS+5d, DUKHCONP03Z1PLGF4315 FF+5d | 29d |
|  | 15 | **FIRST FLOORS** |  | 2013-11-18 | 2014-03-16 |  |  |
| DUKHCONP03Z1PLFF4325 |  | Installation of Plumbing pipes & testing | 18d | 2013-11-18 | 2013-12-08 | DUKHCONP03MKPLFF4325, DUKHCONP03Z1ARFF3300 FF+8d, DUKHCONP03Z1ARFF3300 SS+8d | -27d |
| DUKHCONP03Z1PLFF4330 |  | Installation of Drainage pipes & testing | 18d | 2013-11-18 | 2013-12-08 | DUKHCONP03Z1ARFF3300 SS+7d, DUKHCONP03Z1ARFF3300 FF+7d, DUKHCONP03MKPLFF4330, DUKHCONP03Z1PLFF4325 FF, DUKHCONP03Z1PLFF4325 SS | -2d |
| DUKHCONP03Z1PLFF4335 |  | Sanitary Fittings & Accessories | 20d | 2014-02-16 | 2014-03-10 | DUKHCONP03MKPLFF4335, DUKHCONP03Z1PLFF4330 FF+5d, DUKHCONP03Z1ARFF3365 SS+5d, DUKHCONP03Z1ARFF3365 FF+5d, DUKHCONP03Z1PLFF4330 SS+5d | -13d |
| DUKHCONP03Z1PLFF4340 |  | Installation of Water Heater | 15d | 2014-02-27 | 2014-03-16 | DUKHCONP03MKPLFF4340, DUKHCONP03Z1ARFF3355 SS+5d, DUKHCONP03Z1ARFF3360 SS+5d, DUKHCONP03Z1PLFF4335 FF+5d, DUKHCONP03Z1ARFF3355 FF+5d, DUKHCONP03Z1PLFF4335 SS+5d, DUKHCONP03Z1ARFF3360 FF+5d | -13d |
|  | 20 | **ROOF** |  | 2013-12-16 | 2014-04-02 |  |  |
| DUKHCONP03Z1PLRF4345 |  | Installation of Plumbing pipes & fittings | 15d | 2013-12-16 | 2014-01-02 | DUKHCONP03MKPLRF4345, DUKHCONP03Z1ARRF3605 SS+7d, DUKHCONP03Z1ARRF3605 FF+7d | 40d |
| DUKHCONP03Z1PLRF4350 |  | Installation of Rain water Pipes | 15d | 2014-01-12 | 2014-01-28 | DUKHCONP03Z1PLFF4330 FF+5d, DUKHCONP03Z1PLRF4345 SS+8d, DUKHCONP03Z1PLRF4345 FF+8d, DUKHCONP03MKPLRF4350, DUKHCONP03Z1ARRF3645 FF+5d, DUKHCONP03Z1AREL3665 SS+7d, DUKHCONP03Z1PLFF4330 SS+5d, DUKHCONP03Z1ARRF3645 SS+5d, DUKHCONP03Z1AREL3665 FF+7d | 26d |
| DUKHCONP03Z1PLRF4355 |  | Roof Water Tank Installation & Connections | 25d | 2014-03-05 | 2014-04-02 | DUKHCONP03Z1PLRF4345 FF+8d, DUKHCONP03Z1PLRF4350 FF+5d, DUKHCONP03Z1ARRF3655 FF+5d, DUKHCONP03MKPLRF4355, DUKHCONP03Z1PLRF4345 SS+8d, DUKHCONP03Z1PLFF4340 SS+5d, DUKHCONP03Z1ARRF3655 SS+5d, DUKHCONP03Z1PLRF4350 SS+5d, DUKHCONP03Z1PLFF4340 FF+5d | -13d |
|  | 20 | **AC WORKS** |  | 2013-11-21 | 2014-04-02 |  |  |
|  | 10 | **GROUND FLOOR** |  | 2013-11-21 | 2014-02-16 |  |  |
| DUKHCONP03Z1ACGF4600 |  | Installation AC Pipes | 20d | 2013-11-21 | 2013-12-14 | DUKHCONP03Z1ARGF3005 SS+7d, DUKHCONP03Z1ARGF3005 FF+7d, DUKHCONP03MKACGF4600 | 16d |
| DUKHCONP03Z1ACGF4605 |  | Fixing of Ventilation Equipments | 25d | 2014-01-02 | 2014-01-30 | DUKHCONP03Z1ARGF3060 FF+7d, DUKHCONP03Z1ACGF4600 FF+10d, DUKHCONP03Z1ARGF3055 FF+7d, DUKHCONP03MKACGF4605, DUKHCONP03Z1ACGF4600 SS+10d, DUKHCONP03Z1ARGF3055 SS+7d, DUKHCONP03Z1ARGF3060 SS+7d | 11d |
| DUKHCONP03Z1ACGF4610 |  | Fixing of Split AC | 20d | 2014-01-23 | 2014-02-16 | DUKHCONP03Z1ACGF4605 SS+13d, DUKHCONP03Z1ACGF4605 FF+13d, DUKHCONP03MKACGF4610 | 11d |
|  | 15 | **FIRST FLOORS** |  | 2013-12-09 | 2014-03-22 |  |  |
| DUKHCONP03Z1ACFF4615 |  | Installation AC Pipes | 20d | 2013-12-09 | 2014-01-01 | DUKHCONP03MKACFF4615, DUKHCONP03Z1ARFF3305 SS+7d, DUKHCONP03Z1ARFF3305 FF+7d | 5d |
| DUKHCONP03Z1ACFF4620 |  | Fixing of Ventilation Equipments | 25d | 2014-02-05 | 2014-03-06 | DUKHCONP03Z1ARFF3355 SS+7d, DUKHCONP03Z1ARFF3355 FF+7d, DUKHCONP03Z1ARFF3360 FF+7d, DUKHCONP03Z1ACFF4615 SS+10d, DUKHCONP03Z1ACFF4615 FF+10d, DUKHCONP03Z1ARFF3360 SS+7d, DUKHCONP03MKACFF4620 | -18d |
| DUKHCONP03Z1ACFF4625 |  | Fixing of Split AC | 20d | 2014-02-27 | 2014-03-22 | DUKHCONP03MKACFF4625, DUKHCONP03Z1ACFF4620 SS+13d, DUKHCONP03Z1ACFF4620 FF+13d | -18d |
|  | 20 | **ROOF** |  | 2013-12-19 | 2014-04-02 |  |  |
| DUKHCONP03Z1ACRF4630 |  | Installation of Refrigerant Pipes | 25d | 2013-12-19 | 2014-01-16 | DUKHCONP03MKACRF4630, DUKHCONP03Z1ACGF4600 FF+7d, DUKHCONP03Z1ACFF4615 SS+7d, DUKHCONP03Z1ACFF4615 FF+7d, DUKHCONP03Z1ARRF3645 SS+7d, DUKHCONP03Z1ACGF4600 SS+7d, DUKHCONP03Z1ARRF3645 FF+7d | 46d |
| DUKHCONP03Z1ACRF4635 |  | Installation of Condensing Unit | 25d | 2014-03-05 | 2014-04-02 | DUKHCONP03Z1ACFF4625 FF+5d, DUKHCONP03Z1ACGF4610 FF+5d, DUKHCONP03Z1ACFF4625 SS+5d, DUKHCONP03MKACRF4635, DUKHCONP03Z1ACRF4630 SS+5d, DUKHCONP03Z1ACRF4630 FF+5d, DUKHCONP03Z1ACGF4610 SS+5d | -13d |
|  | 25 | **EXTERNAL WORKS** |  | 2013-11-03 | 2014-03-27 |  |  |
|  | 10 | **MISCELLANEOUS** |  | 2013-12-25 | 2014-03-08 |  |  |
| DUKHCONP03Z1MSEX5000 |  | Construction of Manholes | 25d | 2013-12-25 | 2014-01-22 | DUKHCONP03Z1PLGF4310 SS+10d, DUKHCONP03Z1STRF2055 FF+5d, DUKHCONP03MKMSEX5000, DUKHCONP03Z1STRF2055 SS+5d, DUKHCONP03Z1PLGF4310 FF+10d | -24d |
| DUKHCONP03Z1MSEX5005 |  | Construction of Soak pit, Chambers | 25d | 2014-01-08 | 2014-02-05 | DUKHCONP03Z1MSEX5000 FF+12d, DUKHCONP03Z1MSEX5000 SS+12d, DUKHCONP03MKMSEX5005 | -9d |
| DUKHCONP03Z1MSEX5020 |  | Construction Entrance Ramp | 25d | 2014-01-08 | 2014-02-05 | DUKHCONP03Z1STRF2055 SS, DUKHCONP03Z1STRF2055 FF, DUKHCONP03MKMSEX5020 | -8d |
| DUKHCONP03Z1MSEX5015 |  | Construction of grease Trap | 20d | 2014-01-28 | 2014-02-20 | DUKHCONP03Z1MSEX5005 FF+12d, DUKHCONP03MKMSEX5015, DUKHCONP03Z1MSEX5005 SS+12d | 12d |
| DUKHCONP03Z1MSEX5025 |  | SS.Handrails and Balustrades | 20d | 2014-01-28 | 2014-02-20 | DUKHCONP03MKMSEX5025, DUKHCONP03Z1MSEX5020 SS+12d, DUKHCONP03Z1MSEX5020 FF+12d | -8d |
| DUKHCONP03Z1MSEX5010 |  | Telephone Cable laying | 25d | 2014-02-06 | 2014-03-08 | DUKHCONP03Z1MSEX5005 | -9d |
|  | 15 | **DOMESTIC WATER TANK & PUMP ROOM** |  | 2013-11-03 | 2014-03-27 |  |  |
| DUKHCONP03Z1WTEX5030 |  | Excavation | 20d | 2013-11-03 | 2013-11-25 | DUKHCONP03Z1STRF2065 SS+5d, DUKHCONP03Z1STRF2055 FF+5d, DUKHCONP03Z1STRF2055 SS+5d | 36d |
| DUKHCONP03Z1WTEX5035 |  | Construction of Raft & slab | 25d | 2013-11-09 | 2013-12-07 | DUKHCONP03Z1WTEX5030 FF+10d, DUKHCONP03Z1WTEX5030 SS+5d | 36d |
| DUKHCONP03Z1WTEX5040 |  | Block works & Plastering | 25d | 2013-11-18 | 2013-12-16 | DUKHCONP03Z1WTEX5035 FF+8d, DUKHCONP03Z1WTEX5035 SS+8d | 36d |
| DUKHCONP03Z1WTEX5070 |  | Domestic Water Tank Plumbings works | 25d | 2013-11-26 | 2013-12-25 | DUKHCONP03Z1WTEX5080 SS | 36d |
| DUKHCONP03Z1WTEX5075 |  | Domestic Water Tank AC works | 25d | 2013-11-26 | 2013-12-25 | DUKHCONP03Z1WTEX5070 SS | 36d |
| DUKHCONP03Z1WTEX5080 |  | Domestic Water Tank Electrical works | 25d | 2013-11-26 | 2013-12-25 | DUKHCONP03Z1WTEX5040 SS+7d | 36d |
| DUKHCONP03Z1WTEX5085 |  | Domestic Water Tank Firefighting works | 25d | 2013-11-26 | 2013-12-25 | DUKHCONP03Z1WTEX5075 SS | 36d |
| DUKHCONP03Z1WTEX5045 |  | Flooring & Painting | 25d | 2013-12-01 | 2013-12-30 | DUKHCONP03Z1WTEX5040 FF+10d, DUKHCONP03Z1WTEX5085 FF+4d, DUKHCONP03Z1WTEX5040 SS+10d | 36d |
| DUKHCONP03Z1WTEX5050 |  | Installation of Steel Gate | 20d | 2014-02-09 | 2014-03-04 | DUKHPROGEN00PRDV3500, DUKHCONP03Z1WTEX5045 SS+5d, DUKHCONP03Z1WTEX5045 FF+10d, DUKHCONP03Z1MSEX5025 FF+10d | -8d |
| DUKHCONP03Z1WTEX5060 |  | SS Shed cover installation | 25d | 2014-02-16 | 2014-03-16 | DUKHCONP03Z1MSEX5025 FF+10d, DUKHCONP03Z1WTEX5050 SS+5d, DUKHCONP03Z1WTEX5050 FF+10d, DUKHPROGEN00PRDV3610 | -8d |
| DUKHCONP03Z1WTEX5065 |  | Install. of Water Tank,Chiller,Pump & Meter | 25d | 2014-02-27 | 2014-03-27 | DUKHCONP03Z1PLRF4350 SS+5d, DUKHCONP03Z1WTEX5060 SS+10d, DUKHCONP03Z1WTEX5060 FF+10d, DUKHPROGEN00PRDV3330, DUKHCONP03Z1MSEX5015 SS+5d, DUKHCONP03Z1MSEX5015 FF+5d, DUKHCONP03Z1PLRF4350 FF+5d, DUKHPROGEN00PRDV3220 | -8d |
|  | 30 | **TESTING AND COMMISSIONING** |  | 2014-04-20 | 2014-05-18 |  |  |

| ID | WBS | Task | Duration | Start | Finish | Predecessors | Complete | Total float |
| --- | --- | --- | --- | --- | --- | --- | --- | --- |
| DUKHCONP03Z1ACTC8000 |  | Pre-Commissioning & Testing of AC Works | 25d | 2014-04-20 | 2014-05-18 | DUKHMOBP03PS00002310 FF, DUKHCONP03MKELFF4065, DUKHCONP03MKACRF4635, DUKHCONP03MKACFF4625, DUKHCONP03MKELGF4015, DUKHCONP03MKELFF4050, DUKHCONP03Z1MSEX5005, DUKHCONP03MKARFF3395, DUKHMOBI03PS00002345 FF, DUKHCONP03MKELGF4025, DUKHCONP03MKELFF4055, DUKHCONP03MKPLRF4350, DUKHCONP03MKARRF3620, DUKHCONP03MKAREL3680, DUKHCONP03MKPLRF4355, DUKHCONP03MKPLGF4320, DUKHCONP03Z1ACFF4625, DUKHCONP03MKELGF4030, DUKHCONP03Z1ACRF4635, DUKHCONP03MKARRF3655, DUKHCONP03Z1ARGF3095, DUKHCONP03Z1ARFF3395, DUKHCONP03MKELRF4075, DUKHCONP03Z1ARRF3620, DUKHCONP03MKMSEX5005, DUKHCONP03Z1AREL3680, DUKHCONP03MKARGF3095 |  | -27d |
| DUKHCONP03Z1ELTC8010 |  | Pre-Commissioning & Testing of Electrical Works | 25d | 2014-04-20 | 2014-05-18 | DUKHCONP03Z1ELGF4030, DUKHCONP03Z1ARRF3660, DUKHCONP03MKELFF4055, DUKHCONP03MKARRF3620, DUKHMOBP03PS00002310 FF, DUKHCONP03MKACRF4635, DUKHCONP03Z1ELRF4075, DUKHCONP03Z1AREL3680, DUKHCONP03MKARGF3095, DUKHCONP03MKELGF4015, DUKHCONP03MKELGF4030, DUKHCONP03MKELFF4065, DUKHCONP03Z1ELFF4055, DUKHCONP03Z1ELFF4050, DUKHCONP03Z1ARFF3395, DUKHCONP03Z1ARRF3620, DUKHCONP03Z1ARRF3655, DUKHCONP03MKMSEX5005, DUKHCONP03MKARFF3395, DUKHCONP03MKARRF3655, DUKHCONP03MKELRF4075, DUKHCONP03MKPLRF4350, DUKHCONP03Z1MSEX5005, DUKHCONP03Z1ARGF3095, DUKHCONP03MKAREL3680, DUKHCONP03MKELGF4025, DUKHCONP03MKPLRF4355, DUKHCONP03MKPLGF4320, DUKHCONP03Z1ELFF4065, DUKHMOBI03PS00002345 FF, DUKHCONP03MKELFF4050, DUKHCONP03Z1ELGF4025, DUKHCONP03Z1ELGF4015, DUKHCONP03MKACFF4625 |  | -27d |
| DUKHCONP03Z1PLTC8005 |  | Pre-Commissioning & Testing of Plumbing Works | 25d | 2014-04-20 | 2014-05-18 | DUKHCONP03Z1ARRF3655, DUKHMOBI03PS00002345 FF, DUKHCONP03Z1PLRF4350, DUKHCONP03Z1PLGF4320, DUKHCONP03Z1ARRF3620, DUKHCONP03MKARGF3095, DUKHCONP03Z1ARGF3095, DUKHCONP03Z1ARRF3660, DUKHMOBP03PS00002310 FF, DUKHCONP03MKPLRF4350, DUKHCONP03MKPLRF4355, DUKHCONP03MKPLGF4320, DUKHCONP03MKAREL3680, DUKHCONP03MKELFF4065, DUKHCONP03MKELFF4055, DUKHCONP03MKACRF4635, DUKHCONP03Z1MSEX5005, DUKHCONP03MKELRF4075, DUKHCONP03Z1ARFF3395, DUKHCONP03MKMSEX5005, DUKHCONP03MKELGF4025, DUKHCONP03MKELGF4015, DUKHCONP03MKELGF4030, DUKHCONP03MKACFF4625, DUKHCONP03Z1WTEX5065, DUKHCONP03Z1PLRF4355, DUKHCONP03MKARRF3655, DUKHCONP03MKELFF4050, DUKHCONP03Z1AREL3680, DUKHCONP03MKARFF3395, DUKHCONP03MKARRF3620 |  | -27d |
|  | 15 | **ZONE - 2 (3 Apartments)** |  | 2013-03-02 | 2014-06-16 |  |  |  |
|  | 10 | **STRUCTURAL WORKS** |  | 2013-03-02 | 2013-12-31 |  |  |  |
|  | 10 | **SUB STRUCTURE** |  | 2013-03-02 | 2013-08-18 |  |  |  |
|  | 10 | **UPTO GRADE SLAB** |  | 2013-03-02 | 2013-08-18 |  |  |  |
| DUKHCONP03Z2STUG1000 |  | Footing Excavation | 25d | 2013-03-02 A | 2013-03-30 A | DUKHCONP03Z1STUG1000 | 100% |  |
| DUKHCONP03Z2STUG1005 |  | Footing Antitermite | 23d | 2013-03-12 A | 2013-04-07 A | DUKHCONP03Z2STUG1000 FF+5d, DUKHCONP03Z2STUG1000 SS+9d | 100% |  |
| DUKHCONP03Z2STUG1010 |  | Footing Blinding | 23d | 2013-03-16 A | 2013-04-10 A | DUKHCONP03Z2STUG1005 SS+3d, DUKHCONP03Z2STUG1005 FF+3d | 100% |  |
| DUKHCONP03Z2STUG1015 |  | Footing Waterproofing & Screed | 2d | 2013-04-17 A | 2013-04-18 A | DUKHCONP03Z2STUG1010 FS+5d | 100% |  |
| DUKHCONP03Z2STUG1020 |  | Construction of foundations | 20d | 2013-04-25 A | 2013-05-18 | DUKHCONP03Z2STUG1015 SS+7d, DUKHCONP03Z2STUG1015 FF+8d | 5% | -18d |
| DUKHCONP03Z2STUG1025 |  | Construction of neck of columns | 25d | 2013-05-05 | 2013-06-02 | DUKHCONP03Z2STUG1020 SS+8d, DUKHCONP03Z2STUG1020 FF+7d, DUKHCONP03Z1STUG1025 |  | -18d |
| DUKHCONP03Z2STUG1030 |  | Waterproofing Footing & Neck Column | 25d | 2013-05-14 | 2013-06-11 | DUKHCONP03Z2STUG1025 SS+8d, DUKHCONP03Z2STUG1025 FF+8d |  | -18d |
| DUKHCONP03Z2STUG1035 |  | Backfilling Upto Grade Beam Bottom | 25d | 2013-06-04 | 2013-07-02 | DUKHCONP03Z2STUG1030 SS+9d, DUKHCONP03Z1STUG1035, DUKHCONP03Z2STUG1030 FF+9d |  | -27d |
| DUKHCONP03Z2STUG1040 |  | Construction of Grade Beams | 25d | 2013-06-20 | 2013-07-18 | DUKHCONP03Z2STUG1035 FF+14d, DUKHCONP03Z2STUG1035 SS+14d |  | -27d |
| DUKHCONP03Z2STUG1045 |  | Construction of slab on grade | 25d | 2013-07-17 | 2013-08-18 | DUKHCONP03Z1STUG1045, DUKHCONP03Z2STUG1040 FF+10d, DUKHCONP03Z2PLUG4300 SS+8d, DUKHCONP03Z2PLUG4300 FF+8d, DUKHCONP03Z2STUG1040 SS+10d |  | -27d |
|  | 15 | **SUPERSTRUCTURE** |  | 2013-08-03 | 2013-12-31 |  |  |  |
|  | 10 | **GROUND FLOOR** |  | 2013-08-03 | 2013-10-01 |  |  |  |
| DUKHCONP03Z2STGF2000 |  | Column-Rebar & Formwork | 25d | 2013-08-03 | 2013-09-03 | DUKHCONP03Z2STUG1045 SS+14d, DUKHCONP03Z1STGF2000, DUKHCONP03Z2STUG1045 FF+7d |  | -27d |
| DUKHCONP03Z2STGF2005 |  | Column-Concrete | 24d | 2013-08-15 | 2013-09-11 | DUKHCONP03Z2STGF2000 SS+8d, DUKHCONP03Z2STGF2000 FF+2d |  | -27d |
| DUKHCONP03Z2STGF2010 |  | Beam, Stairs ,Slab-Rebar & Formwork | 25d | 2013-08-31 | 2013-09-28 | DUKHCONP03Z2STGF2005 SS+2d, DUKHCONP03Z2STGF2005 FF+14d |  | -27d |
| DUKHCONP03Z2STGF2015 |  | Beam, Stairs ,Slab-Concrete | 15d | 2013-09-15 | 2013-10-01 | DUKHCONP03Z2STGF2010 FF+3d, DUKHCONP03Z1STGF2015, DUKHCONP03Z2STGF2010 SS+10d |  | -27d |
|  | 15 | **FIRST FLOORS** |  | 2013-09-17 | 2013-11-21 |  |  |  |
| DUKHCONP03Z2STFF2020 |  | Column-Rebar & Formwork | 25d | 2013-09-17 | 2013-10-15 | DUKHCONP03Z2STGF2015 SS+2d, DUKHCONP03Z2STGF2015 FF+5d, DUKHCONP03Z1STFF2020 |  | -27d |
| DUKHCONP03Z2STFF2025 |  | Column-Concrete | 24d | 2013-09-28 | 2013-10-27 | DUKHCONP03Z2STFF2020 SS+9d, DUKHCONP03Z2STFF2020 FF+2d |  | -27d |
| DUKHCONP03Z2STFF2030 |  | Beam, Stairs ,Slab-Rebar & Formwork | 25d | 2013-10-13 | 2013-11-12 | DUKHCONP03Z2STFF2025 SS+2d, DUKHCONP03Z2STFF2025 FF+14d |  | -27d |
| DUKHCONP03Z2STFF2035 |  | Beam, Stairs ,Slab-Concrete | 15d | 2013-11-05 | 2013-11-21 | DUKHCONP03Z1STFF2035, DUKHCONP03Z2STFF2030 FF+8d, DUKHCONP03Z2STFF2030 SS+10d |  | -27d |
|  | 20 | **ROOF** |  | 2013-11-07 | 2013-12-31 |  |  |  |
| DUKHCONP03Z2STRF2040 |  | Column-Rebar & Formwork | 18d | 2013-11-07 | 2013-11-27 | DUKHCONP03Z2STFF2035 FF+3d, DUKHCONP03Z1STRF2040, DUKHCONP03Z2STFF2035 SS+2d |  | 9d |
| DUKHCONP03Z2STRF2045 |  | Column-Concrete | 17d | 2013-11-11 | 2013-11-30 | DUKHCONP03Z2STRF2040 FF+1d, DUKHCONP03Z2STRF2040 SS+3d |  | 24d |
| DUKHCONP03Z2STRF2050 |  | Slab-Rebar & Formwork | 20d | 2013-11-13 | 2013-12-05 | DUKHCONP03Z2STRF2045 FF+5d, DUKHCONP03Z2STRF2045 SS+2d |  | 24d |
| DUKHCONP03Z2STRF2055 |  | Slab-Concrete | 13d | 2013-11-24 | 2013-12-08 | DUKHCONP03Z2STRF2050 SS+5d, DUKHCONP03Z2STRF2050 FF+2d, DUKHCONP03Z1STRF2055 |  | 24d |
| DUKHCONP03Z2STRF2060 |  | Construction of Parapets | 25d | 2013-11-26 | 2013-12-25 | DUKHCONP03Z2STRF2055 SS+2d, DUKHCONP03Z2STRF2055 FF+10d |  | 31d |
| DUKHCONP03Z2STRF2065 |  | Construction of up stands/Plinth | 25d | 2013-12-02 | 2013-12-31 | DUKHCONP03Z1STRF2065, DUKHCONP03Z2STRF2060 FF+5d, DUKHCONP03Z2STRF2060 SS+5d |  | 31d |
|  | 15 | **FINISHING WORKS** |  | 2013-10-16 | 2014-05-18 |  |  |  |
|  | 10 | **INTERNAL FINISHES** |  | 2013-10-16 | 2014-05-18 |  |  |  |
|  | 10 | **GROUND FLOOR** |  | 2013-10-16 | 2014-04-10 |  |  |  |
| DUKHCONP03Z2ARGF3000 |  | Block work | 25d | 2013-10-16 | 2013-11-16 | DUKHCONP03Z2STGF2015 SS+21d, DUKHCONP03Z2STGF2015 FF+21d, DUKHCONP03Z1ARGF3000 |  | 8d |
| DUKHCONP03Z2ARGF3005 |  | Plastering work | 25d | 2013-11-10 | 2013-12-08 | DUKHCONP03Z2ELGF4000 FF+5d, DUKHCONP03Z2PLGF4305 FF+5d, DUKHCONP03Z2PLGF4305 SS+5d, DUKHCONP03Z2ARGF3000 SS+7d, DUKHCONP03Z2ARGF3000 FF+7d, DUKHCONP03Z1ARGF3005, DUKHCONP03Z2ELGF4000 SS+5d |  | 8d |
| DUKHCONP03Z2ARGF3010 |  | Flooring screed | 21d | 2013-11-18 | 2013-12-11 | DUKHCONP03Z2ARGF3005 SS+7d, DUKHCONP03Z2ARGF3005 FF+3d |  | 16d |
| DUKHCONP03Z2ARGF3015 |  | Wet area waterproofing & Protection Screed | 15d | 2013-11-27 | 2013-12-14 | DUKHCONP03Z2ARGF3005 SS+7d, DUKHCONP03Z2ARGF3005 FF+5d, DUKHCONP03Z1ARGF3015 |  | 8d |
| DUKHCONP03Z2ARGF3020 |  | Ceramic Wall Tiling | 25d | 2013-12-03 | 2014-01-01 | DUKHCONP03Z2ARGF3015 FF+5d, DUKHCONP03Z2PLGF4305 FF+4d, DUKHCONP03Z2PLGF4310 SS+4d, DUKHCONP03Z2PLGF4310 FF+4d, DUKHCONP03Z1ARGF3020, DUKHCONP03Z2PLGF4305 SS+4d, DUKHCONP03Z2ARGF3015 SS+5d |  | 8d |
| DUKHCONP03Z2ARGF3025 |  | Porcelain Tile flooring | 25d | 2013-12-09 | 2014-01-07 | DUKHCONP03Z2ARGF3010 FF+10d, DUKHCONP03Z2ARGF3020 SS+5d, DUKHCONP03Z2ARGF3020 FF+5d, DUKHCONP03Z1ARGF3025, DUKHCONP03Z2ARGF3010 SS+10d |  | 8d |
| DUKHCONP03Z2ARGF3030 |  | Paint First coat | 25d | 2013-12-22 | 2014-01-19 | DUKHCONP03Z1ARGF3030, DUKHCONP03Z2ARGF3005 SS+14d, DUKHCONP03Z2ARGF3005 FF+14d |  | 1d |
| DUKHCONP03Z2ARGF3035 |  | Slate Tile Flooring & Skirting | 15d | 2013-12-30 | 2014-01-15 | DUKHCONP03Z2ARGF3010 SS+13d, DUKHCONP03Z2ARGF3010 FF+13d, DUKHCONP03Z2ARGF3025 FF+7d, DUKHCONP03Z2ARGF3025 SS+13d |  | 15d |
| DUKHCONP03Z2ARGF3045 |  | Fixing of Suspension systems | 20d | 2014-01-05 | 2014-01-27 | DUKHCONP03Z2ARGF3030 SS+7d, DUKHCONP03Z1ARGF3045, DUKHCONP03Z2ARGF3025 FF+10d, DUKHCONP03Z2ELGF4010 SS+5d, DUKHCONP03Z2ARGF3025 SS+10d, DUKHCONP03Z2ARGF3030 FF+7d, DUKHCONP03Z2ELGF4010 FF+5d |  | 1d |
| DUKHCONP03Z2ARGF3040 |  | Cobble Tile flooring | 15d | 2014-01-06 | 2014-01-22 | DUKHCONP03Z2ARGF3035 SS+4d, DUKHCONP03Z2ARGF3035 FF+4d, DUKHCONP03Z2ARGF3025 FF+13d, DUKHCONP03Z2ARGF3010 SS+13d, DUKHCONP03Z2ARGF3025 SS+13d, DUKHCONP03Z2ARGF3010 FF+13d |  | 13d |
| DUKHCONP03Z2ARGF3055 |  | Aluminum tile false ceiling | 25d | 2014-01-13 | 2014-02-10 | DUKHCONP03Z2ARGF3045 FF+7d, DUKHCONP03Z2ACGF4600 FF+7d, DUKHCONP03Z2ARGF3045 SS+7d, DUKHCONP03Z2ACGF4600 SS+7d |  | 5d |
| DUKHCONP03Z2ARGF3050 |  | Granite - Stair case flooring & Skirting | 20d | 2014-01-14 | 2014-02-05 | DUKHCONP03Z2ARGF3040 SS+7d, DUKHCONP03Z2ARGF3025 FF+13d, DUKHCONP03Z2ARGF3025 SS+13d, DUKHCONP03Z2ARGF3040 FF+7d |  | 13d |
| DUKHCONP03Z2ARGF3060 |  | Gypsum board false ceiling | 25d | 2014-01-16 | 2014-02-15 | DUKHCONP03Z2ACGF4600 SS+7d, DUKHCONP03Z2ACGF4600 FF+7d, DUKHCONP03Z2ARGF3045 SS+10d, DUKHCONP03Z1ARGF3060, DUKHCONP03Z2ARGF3045 FF+10d |  | 1d |
| DUKHCONP03Z2ARGF3065 |  | Wooden door | 15d | 2014-01-28 | 2014-02-15 | DUKHCONP03Z2ARGF3050 SS+7d, DUKHCONP03Z1ARGF3065, DUKHCONP03Z2ARGF3050 FF+7d, DUKHCONP03Z2ARGF3035 FF+7d, DUKHCONP03Z2ARGF3035 SS+7d |  | 13d |
| DUKHCONP03Z2ARGF3070 |  | Aluminum doors | 15d | 2014-02-03 | 2014-02-20 | DUKHCONP03Z2ARGF3065 SS+5d, DUKHCONP03Z2ARGF3065 FF+5d, DUKHCONP03Z1ARGF3070 |  | 13d |
| DUKHCONP03Z2ARGF3075 |  | Carpentry & Joinery Works | 20d | 2014-02-13 | 2014-03-08 | DUKHCONP03Z2ARGF3070 FF+7d, DUKHCONP03Z1ARGF3075, DUKHCONP03Z2ARGF3070 SS+5d |  | 10d |
| DUKHCONP03Z2ARGF3080 |  | Aluminum windows | 20d | 2014-02-15 | 2014-03-09 | DUKHCONP03Z2ARGF3070 FF+6d, DUKHCONP03Z2ARGF3070 SS+6d, DUKHCONP03Z1ARGF3080 |  | 20d |
| DUKHCONP03Z2ARGF3085 |  | S.S.Balustrade | 20d | 2014-02-22 | 2014-03-16 | DUKHCONP03Z2ARGF3075 FF+7d, DUKHCONP03Z2ARGF3075 SS+7d, DUKHCONP03Z2ARGF3050 FF+7d, DUKHCONP03Z2ARGF3050 SS+7d |  | 15d |
| DUKHCONP03Z2ARGF3090 |  | Installation of Granite Counter Top | 15d | 2014-02-26 | 2014-03-15 | DUKHCONP03Z2ARGF3075 SS+7d, DUKHCONP03Z2ARGF3075 FF+6d |  | 10d |
| DUKHCONP03Z2ARGF3095 |  | Final Painting | 25d | 2014-03-13 | 2014-04-10 | DUKHCONP03Z2ARGF3035 SS+13d, DUKHCONP03Z2ARGF3060 FF+8d, DUKHCONP03Z2ARGF3060 SS+8d, DUKHCONP03Z2ARGF3080 FF+8d, DUKHCONP03Z2ARGF3090 SS+8d, DUKHCONP03Z2ARGF3040 SS+13d, DUKHCONP03Z2ARGF3040 FF+13d, DUKHCONP03Z2ARGF3085 SS+7d, DUKHCONP03Z2ARGF3085 FF+7d, DUKHCONP03Z2ACGF4610 SS+10d, DUKHCONP03Z2ARGF3035 FF+13d, DUKHCONP03Z2ARGF3070 FF+5d, DUKHCONP03Z2ARGF3070 SS+5d, DUKHCONP03Z2ARGF3030 FF+10d, DUKHCONP03Z1ARGF3095, DUKHCONP03Z2ARGF3030 SS+10d, DUKHCONP03Z2ARGF3080 SS+8d, DUKHCONP03Z2ARGF3090 FF+8d, DUKHCONP03Z2ACGF4610 FF+10d |  | 5d |
|  | 15 | **FIRST FLOORS** |  | 2013-11-30 | 2014-05-18 |  |  |  |
| DUKHCONP03Z2ARFF3300 |  | Block work | 25d | 2013-11-30 | 2013-12-29 | DUKHCONP03Z2STFF2035 FF+21d, DUKHCONP03Z2STFF2035 SS+21d, DUKHCONP03Z1ARFF3300, DUKHCONP03Z2STFF2020 FF+21d, DUKHCONP03Z2STFF2020 SS+21d |  | -27d |
| DUKHCONP03Z2ARFF3305 |  | Plastering work | 25d | 2013-12-25 | 2014-01-22 | DUKHCONP03Z2PLFF4325 FF+8d, DUKHCONP03Z2ELFF4035 SS+5d, DUKHCONP03Z2ARFF3300 FF+7d, DUKHCONP03Z2ARFF3300 SS+7d, DUKHCONP03Z2PLFF4325 SS+8d, DUKHCONP03Z2ELFF4035 FF+5d, DUKHCONP03Z1ARFF3305 |  | -27d |
| DUKHCONP03Z2ARFF3310 |  | Flooring screed | 21d | 2014-01-02 | 2014-01-26 | DUKHCONP03Z2ARFF3305 FF+3d, DUKHCONP03Z2ARFF3305 SS+7d |  | -12d |
| DUKHCONP03Z2ARFF3330 |  | Paint First coat | 25d | 2014-01-11 | 2014-02-08 | DUKHCONP03Z2ARFF3305 FF+14d, DUKHCONP03Z2ARFF3305 SS+14d |  | -9d |
| DUKHCONP03Z2ARFF3315 |  | Wet area waterproofing | 15d | 2014-01-15 | 2014-02-01 | DUKHCONP03Z2ARFF3305 FF+8d, DUKHCONP03Z1ARFF3315, DUKHCONP03Z2ARFF3305 SS+7d |  | -27d |
| DUKHCONP03Z2ARFF3320 |  | Ceramic Wall Tiling | 25d | 2014-01-25 | 2014-02-23 | DUKHCONP03Z2ARFF3315 SS+8d, DUKHCONP03Z2PLFF4325 FF+4d, DUKHCONP03Z2PLFF4325 SS+4d, DUKHCONP03Z2PLFF4330 FF+7d, DUKHCONP03Z1ARFF3320, DUKHCONP03Z2ARFF3315 FF+7d, DUKHCONP03Z2PLFF4330 SS+7d |  | -27d |
| DUKHCONP03Z2ARFF3325 |  | Porcelain Tile flooring | 25d | 2014-02-01 | 2014-03-02 | DUKHCONP03Z2ARFF3310 SS+10d, DUKHCONP03Z1ARFF3325, DUKHCONP03Z2ARFF3320 FF+6d, DUKHCONP03Z2ARFF3310 FF+10d, DUKHCONP03Z2ARFF3320 SS+6d |  | -27d |
| DUKHCONP03Z2ARFF3345 |  | Fixing of Suspension systems | 20d | 2014-02-16 | 2014-03-10 | DUKHCONP03Z2ELFF4045 SS+5d, DUKHCONP03Z2ARFF3330 SS+7d, DUKHCONP03Z2ARFF3330 FF+7d, DUKHCONP03Z1ARFF3345, DUKHCONP03Z2ELFF4045 FF+5d, DUKHCONP03Z2ARFF3325 FF+7d, DUKHCONP03Z2ARFF3325 SS+7d |  | -27d |
| DUKHCONP03Z2ARFF3335 |  | Slate Tile Flooring & Skirting | 15d | 2014-02-19 | 2014-03-08 | DUKHCONP03Z2ARFF3310 SS+13d, DUKHCONP03Z2ARFF3325 FF+5d, DUKHCONP03Z2ARFF3325 SS+13d, DUKHCONP03Z2ARFF3310 FF+13d |  | -17d |
| DUKHCONP03Z2ARFF3350 |  | Granite - Stair case flooring & Skirting | 20d | 2014-02-23 | 2014-03-17 | DUKHCONP03Z2ARFF3325 FF+13d, DUKHCONP03Z2ARFF3325 SS+13d |  | -25d |
| DUKHCONP03Z2ARFF3360 |  | Gypsum board false ceiling | 25d | 2014-02-24 | 2014-03-24 | DUKHCONP03Z2ARFF3345 FF+7d, DUKHCONP03Z2ARFF3345 SS+7d, DUKHCONP03Z2ACFF4615 FF+7d, DUKHCONP03Z2ACFF4615 SS+7d, DUKHCONP03Z1ARFF3360 |  | -27d |

| ID | WBS | Task | Duration | Start | Finish | Predecessors | Total float |
| --- | --- | --- | --- | --- | --- | --- | --- |
| DUKHCONP03Z2ARFF3355 |  | Aluminum tile false ceiling | 20d | 2014-02-27 | 2014-03-22 | DUKHCONP03Z2ACFF4615 SS+7d, DUKHCONP03Z2ACFF4615 FF+7d, DUKHCONP03Z2ARFF3345 FF+10d, DUKHCONP03Z2ARFF3345 SS+10d, DUKHCONP03Z1ARFF3360, DUKHCONP03Z1ARFF3355 | -25d |
| DUKHCONP03Z2ARFF3365 |  | Wooden door | 15d | 2014-03-11 | 2014-03-27 | DUKHCONP03Z2ARFF3335 FF+7d, DUKHCONP03Z2ARFF3355 FF+3d, DUKHCONP03Z2ARFF3350 FF+7d, DUKHCONP03Z2ARFF3360 SS+3d, DUKHCONP03Z2ARFF3355 SS+3d, DUKHCONP03Z1ARFF3365, DUKHCONP03Z2ARFF3350 SS+7d, DUKHCONP03Z2ARFF3335 SS+7d, DUKHCONP03Z2ARFF3360 FF+3d | -27d |
| DUKHCONP03Z2ARFF3370 |  | Aluminum Door | 20d | 2014-03-19 | 2014-04-10 | DUKHCONP03Z1ARFF3370, DUKHCONP03Z2ARFF3365 SS+7d, DUKHCONP03Z2ARFF3365 FF+5d | -27d |
| DUKHCONP03Z2ARFF3380 |  | Aluminum windows | 20d | 2014-03-26 | 2014-04-17 | DUKHCONP03Z2ARFF3370 FF+6d, DUKHCONP03Z2ARFF3370 SS+6d | -16d |
| DUKHCONP03Z2ARFF3375 |  | Carpentry & Joinery Works | 25d | 2014-03-27 | 2014-04-24 | DUKHCONP03Z2ARFF3370 SS+7d, DUKHCONP03Z1ARFF3375, DUKHCONP03Z2ARFF3370 FF+5d | -27d |
| DUKHCONP03Z2ARFF3385 |  | Handrail & Balustrade | 20d | 2014-04-08 | 2014-04-30 | DUKHCONP03Z2ARFF3350 SS+7d, DUKHCONP03Z2ARFF3375 FF+5d, DUKHCONP03Z2ARFF3375 SS+5d, DUKHCONP03Z2ARFF3350 FF+7d | -27d |
| DUKHCONP03Z2ARFF3390 |  | Installation of Granite Counter Top | 20d | 2014-04-10 | 2014-05-03 | DUKHCONP03Z2ARFF3375 SS+7d, DUKHCONP03Z2ARFF3375 FF+7d | -27d |
| DUKHCONP03Z2ARFF3395 |  | Final Painting | 25d | 2014-04-20 | 2014-05-18 | DUKHCONP03Z2ARFF3330 SS+10d, DUKHCONP03Z2ARFF3335 FF+8d, DUKHCONP03Z2ARFF3355 SS+10d, DUKHCONP03Z2ARFF3375 FF+8d, DUKHCONP03Z2ARFF3330 FF+10d, DUKHCONP03Z2ARFF3355 FF+10d, DUKHCONP03Z2ARFF3375 SS+8d, DUKHCONP03Z2ARFF3390 SS+8d, DUKHCONP03Z2ARFF3385 SS+10d, DUKHCONP03Z2ACFF4625 FF+10d, DUKHCONP03Z2ARFF3335 SS+8d, DUKHCONP03Z2ARFF3350 SS+8d, DUKHCONP03Z2ARFF3360 SS+10d, DUKHCONP03Z2ARFF3360 FF+10d, DUKHCONP03Z2ARFF3380 FF+10d, DUKHCONP03Z2ARFF3385 FF+10d, DUKHCONP03Z1ARFF3395, DUKHCONP03Z2ACFF4625 SS+10d, DUKHCONP03Z2ARFF3365 SS+8d, DUKHCONP03Z2ARFF3380 SS+10d, DUKHCONP03Z2ARFF3350 FF+8d, DUKHCONP03Z2ARFF3365 FF+8d, DUKHCONP03Z2ARFF3390 FF+8d | -27d |
|  | 20 | **ROOF** |  | 2013-12-19 | 2014-02-23 |  |  |
| DUKHCONP03Z2ARRF3600 |  | Block work | 20d | 2013-12-19 | 2014-01-11 | DUKHCONP03Z1ARRF3600, DUKHCONP03Z2STRF2055 SS+21d, DUKHCONP03Z2STRF2055 FF+21d | 40d |
| DUKHCONP03Z2ARRF3605 |  | Plastering work | 20d | 2013-12-28 | 2014-01-19 | DUKHCONP03Z2ARRF3600 SS+7d, DUKHCONP03Z2ARRF3600 FF+7d | 40d |
| DUKHCONP03Z2ARRF3610 |  | Flooring screed | 15d | 2014-01-11 | 2014-01-27 | DUKHCONP03Z2ARRF3605 SS+7d, DUKHCONP03Z2ARRF3605 FF+7d | 45d |
| DUKHCONP03Z2ARRF3695 |  | Painting | 20d | 2014-01-19 | 2014-02-10 | DUKHCONP03Z2ARRF3610 SS+7d, DUKHCONP03Z2ARRF3610 FF+7d | 45d |
| DUKHCONP03Z2ARRF3620 |  | Epoxy Painting | 15d | 2014-02-05 | 2014-02-23 | DUKHCONP03Z2ARRF3695 FF+10d, DUKHCONP03Z2ARRF3695 SS+10d | 45d |
|  | 15 | **EXTERNAL FINISHES** |  | 2013-12-25 | 2014-03-26 |  |  |
|  | 10 | **ROOF** |  | 2013-12-25 | 2014-03-02 |  |  |
| DUKHCONP03Z2ARRF3630 |  | Leveling Screed for Waterproofing | 25d | 2013-12-25 | 2014-01-22 | DUKHCONP03Z2STRF2065 SS+10d, DUKHCONP03Z2STRF2060 FF+10d, DUKHCONP03Z1ARRF3630, DUKHCONP03Z2STRF2060 SS+10d, DUKHCONP03Z2STRF2065 FF+10d | 35d |
| DUKHCONP03Z2ARRF3635 |  | Laying of Waterproofing Membrane | 25d | 2013-12-29 | 2014-01-26 | DUKHCONP03Z2ARRF3630 FF+3d, DUKHCONP03Z2ARRF3630 SS+3d | 35d |
| DUKHCONP03Z2ARRF3640 |  | Installation of Insulation & Protection | 25d | 2014-01-02 | 2014-01-30 | DUKHCONP03Z2ARRF3635 SS+4d, DUKHCONP03Z2ARRF3635 FF+4d | 35d |
| DUKHCONP03Z2ARRF3645 |  | Lime Stone Chips & Paving slab Installation | 25d | 2014-01-07 | 2014-02-04 | DUKHCONP03Z2ARRF3640 FF+4d, DUKHCONP03Z2ARRF3640 SS+4d | 35d |
| DUKHCONP03Z2ARRF3650 |  | Install. of Gal. Frame & Aluminum Slat Screen | 25d | 2014-01-15 | 2014-02-13 | DUKHCONP03Z2ARRF3645 SS+7d, DUKHCONP03Z2ARRF3645 FF+7d | 35d |
| DUKHCONP03Z2ARRF3655 |  | Installation of Pumps Protection cabinets | 20d | 2014-02-01 | 2014-02-24 | DUKHCONP03Z1ARRF3655, DUKHCONP03Z2ARRF3650 SS+8d, DUKHCONP03Z2ARRF3650 FF+8d, DUKHCONP03Z2ARRF3645 SS+7d, DUKHCONP03Z2ARRF3645 FF+7d | 34d |
| DUKHCONP03Z2ARRF3660 |  | Installation of Access Ladder | 15d | 2014-02-13 | 2014-03-02 | DUKHCONP03Z2ARRF3655 SS+5d, DUKHCONP03Z2ARRF3655 FF+5d | 39d |
|  | 15 | **ELEVATION** |  | 2014-01-21 | 2014-03-26 |  |  |
| DUKHCONP03Z2AREL3665 |  | External Plastering | 25d | 2014-01-21 | 2014-02-19 | DUKHCONP03Z2ARFF3305 SS+7d, DUKHCONP03Z1AREL3665, DUKHCONP03Z2ARRF3605 SS+7d, DUKHCONP03Z2STRF2065 FF+7d, DUKHCONP03Z2STRF2065 SS+7d, DUKHCONP03Z2ARFF3305 FF+7d | 26d |
| DUKHCONP03Z2AREL3675 |  | GRC Panel Works | 20d | 2014-02-08 | 2014-03-03 | DUKHCONP03Z2AREL3665 FF+10d, DUKHCONP03Z2AREL3665 SS+10d, DUKHCONP03Z1AREL3675 | 28d |
| DUKHCONP03Z2AREL3680 |  | External Painting | 20d | 2014-03-04 | 2014-03-26 | DUKHCONP03Z2AREL3675 SS+10d, DUKHCONP03Z1AREL3680, DUKHCONP03Z2AREL3675 FF+10d, DUKHCONP03Z2ARRF3695 FF+4d, DUKHCONP03Z2ARRF3695 SS+4d | 18d |
|  | 20 | **MEP WORKS** |  | 2013-07-08 | 2014-05-15 |  |  |
|  | 10 | **ELECTRICAL WORKS** |  | 2013-10-24 | 2014-05-15 |  |  |
|  | 10 | **GROUND FLOOR** |  | 2013-10-24 | 2014-03-19 |  |  |
| DUKHCONP03Z2ELGF4000 |  | Fixing of wall conduits & switch socket boxes | 25d | 2013-10-24 | 2013-11-21 | DUKHCONP03Z2ARGF3000 SS+5d, DUKHCONP03Z2ARGF3000 FF+5d | 17d |
| DUKHCONP03Z2ELGF4005 |  | Cable tray & trunking installation | 20d | 2013-11-05 | 2013-11-27 | DUKHCONP03Z1ELGF4005, DUKHCONP03Z2ELGF4000 SS+5d, DUKHCONP03Z2ELGF4000 FF+5d | 35d |
| DUKHCONP03Z2ELGF4010 |  | Installation of wiring & Main Cabling | 25d | 2013-11-13 | 2013-12-11 | DUKHCONP03Z2ELGF4005 FF+7d, DUKHCONP03Z2ELGF4005 SS+7d | 35d |
| DUKHCONP03Z2ELGF4020 |  | Installation of DBS,MCCB Accessories. | 20d | 2014-01-30 | 2014-02-23 | DUKHCONP03Z2ELGF4010 SS+5d, DUKHCONP03Z2ARGF3055 SS+7d, DUKHCONP03Z2ELGF4010 FF+5d, DUKHCONP03Z2ARGF3060 SS+7d, DUKHCONP03Z2ARGF3060 FF+7d, DUKHCONP03Z2ARGF3055 FF+7d | 2d |
| DUKHCONP03Z2ELGF4015 |  | Install. of CAMS & Fire Fighting Accessories | 25d | 2014-02-01 | 2014-03-02 | DUKHCONP03Z2ARGF3055 FF+7d, DUKHCONP03Z2ARGF3055 SS+7d, DUKHCONP03Z2ARGF3060 SS+7d, DUKHCONP03Z2ARGF3060 FF+7d, DUKHCONP03Z1ELGF4015 | 9d |
| DUKHCONP03Z2ELGF4030 |  | Installation of Telephone System | 20d | 2014-02-13 | 2014-03-08 | DUKHCONP03Z2ARGF3060 SS+5d, DUKHCONP03Z2ELGF4020 FF+10d, DUKHCONP03Z2ELGF4020 SS+10d, DUKHCONP03Z2ARGF3060 FF+5d, DUKHCONP03Z1ELGF4030 | 1d |
| DUKHCONP03Z2ELGF4025 |  | Installation of Lighting fixtures & Accessories | 25d | 2014-02-19 | 2014-03-19 | DUKHCONP03Z1ELGF4025, DUKHCONP03Z2ARGF3055 FF+10d, DUKHCONP03Z2ARGF3060 FF+10d, DUKHCONP03Z2ARGF3060 SS+10d, DUKHCONP03Z2ELGF4020 SS+10d, DUKHCONP03Z2ELGF4020 FF+10d, DUKHCONP03Z2ARGF3055 SS+10d | -3d |
|  | 15 | **FIRST FLOORS** |  | 2013-12-05 | 2014-04-21 |  |  |
| DUKHCONP03Z2ELFF4035 |  | Fixing of wall conduits & switch socket boxes | 25d | 2013-12-05 | 2014-01-04 | DUKHCONP03Z2ARFF3300 SS+5d, DUKHCONP03Z2ARFF3300 FF+5d | -16d |
| DUKHCONP03Z2ELFF4040 |  | Cable tray & trunking installation | 20d | 2013-12-17 | 2014-01-09 | DUKHCONP03Z2ELFF4035 FF+5d, DUKHCONP03Z2ELFF4035 SS+5d | 6d |
| DUKHCONP03Z2ELFF4045 |  | Installation of wiring & Main Cabling | 25d | 2013-12-30 | 2014-01-27 | DUKHCONP03Z2ELFF4040 FF+7d, DUKHCONP03Z2ELFF4040 SS+7d, DUKHCONP03Z1ELFF4045 | 3d |
| DUKHCONP03Z2ELFF4050 |  | Installation of Telephone System | 25d | 2014-03-05 | 2014-04-02 | DUKHCONP03Z2ELGF4030 FF+10d, DUKHCONP03Z2MSEX5010 FF, DUKHCONP03Z2ARFF3360 FF+5d, DUKHCONP03Z2ARFF3355 SS+5d, DUKHCONP03Z2ARFF3360 SS+5d, DUKHCONP03Z2ELGF4030 SS+10d, DUKHCONP03Z2ARFF3355 FF+5d | -6d |
| DUKHCONP03Z2ELFF4055 |  | Install. of CAMS & Fire Fighting Accessories | 25d | 2014-03-08 | 2014-04-05 | DUKHCONP03Z2ELGF4015 SS+5d, DUKHCONP03Z2ARFF3355 SS+7d, DUKHCONP03Z2ARFF3360 FF+7d, DUKHCONP03Z2ELGF4015 FF+5d, DUKHCONP03Z2ARFF3355 FF+7d, DUKHCONP03Z2ARFF3360 SS+7d, DUKHCONP03Z1ELFF4055 | -15d |
| DUKHCONP03Z2ELFF4060 |  | Installation of DBS,MCCB Accessories. | 20d | 2014-03-11 | 2014-04-02 | DUKHCONP03Z2ARFF3355 SS+8d, DUKHCONP03Z2ARFF3360 FF+8d, DUKHCONP03Z2ELFF4045 FF+5d, DUKHCONP03Z2ELFF4045 SS+5d, DUKHCONP03Z2ARFF3360 SS+8d, DUKHCONP03Z1ELFF4060, DUKHCONP03Z2ARFF3355 FF+8d | -26d |
| DUKHCONP03Z2ELFF4065 |  | Installation of Lighting fixtures & Accessories | 25d | 2014-03-24 | 2014-04-21 | DUKHCONP03Z2ELFF4060 SS+11d, DUKHCONP03Z2ARFF3355 FF+10d, DUKHCONP03Z2ARFF3355 SS+10d, DUKHCONP03Z2ARFF3360 FF+10d, DUKHCONP03Z2ELFF4060 FF+11d, DUKHCONP03Z2ELGF4025 FF+5d, DUKHCONP03Z2ARFF3360 SS+10d, DUKHCONP03Z1ELFF4065, DUKHCONP03Z2ELGF4025 SS+5d | -26d |
|  | 20 | **ROOF** |  | 2014-04-13 | 2014-05-15 |  |  |
| DUKHCONP03Z2ELRF4070 |  | Installation of Isolator | 18d | 2014-04-13 | 2014-05-03 | DUKHCONP03Z2ARRF3645 FF+7d, DUKHCONP03Z2ELFF4045 SS+10d, DUKHCONP03Z2ELFF4050 FF+7d, DUKHCONP03Z2ARRF3645 SS+7d, DUKHCONP03Z2ELFF4045 FF+10d, DUKHCONP03Z2ELFF4050 SS+5d, DUKHCONP03Z2ELFF4065 FF+10d, DUKHCONP03Z2ELFF4065 SS+10d | -25d |
| DUKHCONP03Z2ELRF4075 |  | Installation of TV Dish Antenna | 23d | 2014-04-20 | 2014-05-15 | DUKHCONP03Z2ELRF4070 FF+6d, DUKHCONP03Z2ELRF4070 SS+6d | -25d |
|  | 15 | **PLUMBING, DRAINAGE & FIRE FIGHTING WORKS** |  | 2013-07-08 | 2014-05-01 |  |  |
|  | 10 | **GROUND FLOOR** |  | 2013-07-08 | 2014-03-08 |  |  |
| DUKHCONP03Z2PLUG4300 |  | Drainage / Storm Pipes in Grade Slab | 20d | 2013-07-08 | 2013-07-30 | DUKHCONP03Z2STUG1040 SS+10d, DUKHCONP03Z2STUG1040 FF+10d | -27d |
| DUKHCONP03Z2PLGF4305 |  | Installation of Plumbing pipes & testing | 18d | 2013-11-04 | 2013-11-24 | DUKHCONP03Z1PLGF4305, DUKHCONP03Z2ARGF3000 FF+7d, DUKHCONP03Z2ARGF3000 SS+7d | 8d |
| DUKHCONP03Z2PLGF4310 |  | Installation of Drainage pipes &testing | 18d | 2013-11-04 | 2013-11-24 | DUKHCONP03Z2PLGF4305 SS, DUKHCONP03Z2ARGF3000 FF+7d, DUKHCONP03Z2ARGF3000 SS+7d, DUKHCONP03Z2PLGF4305 FF | 29d |
| DUKHCONP03Z2PLGF4315 |  | Sanitary Fittings & Accessories | 20d | 2014-02-06 | 2014-03-02 | DUKHCONP03Z2ARGF3065 SS+5d, DUKHCONP03Z2ARGF3065 FF+5d, DUKHCONP03Z2PLGF4310 SS+5d, DUKHCONP03Z2PLGF4310 FF+5d, DUKHCONP03Z1PLGF4315 | 34d |
| DUKHCONP03Z2PLGF4320 |  | Installation of Water Heater | 15d | 2014-02-19 | 2014-03-08 | DUKHCONP03Z2ARGF3060 SS+5d, DUKHCONP03Z2PLGF4315 FF+5d, DUKHCONP03Z1PLGF4320, DUKHCONP03Z2ARGF3060 FF+5d, DUKHCONP03Z2PLGF4315 SS+5d | 34d |
|  | 15 | **FIRST FLOORS** |  | 2013-12-15 | 2014-04-14 |  |  |
| DUKHCONP03Z2PLFF4325 |  | Installation of Plumbing pipes & testing | 18d | 2013-12-15 | 2014-01-05 | DUKHCONP03Z2ARFF3300 FF+6d, DUKHCONP03Z2ARFF3300 SS+6d | -27d |
| DUKHCONP03Z2PLFF4330 |  | Installation of Drainage pipes & testing | 18d | 2013-12-16 | 2014-01-06 | DUKHCONP03Z2ARFF3300 SS+7d, DUKHCONP03Z2PLFF4325 FF, DUKHCONP03Z2ARFF3300 FF+7d, DUKHCONP03Z2PLFF4325 SS, DUKHCONP03Z1PLFF4330 | -1d |
| DUKHCONP03Z2PLFF4335 |  | Sanitary Fittings & Accessories | 20d | 2014-03-17 | 2014-04-08 | DUKHCONP03Z2PLFF4330 FF+5d, DUKHCONP03Z2PLFF4330 SS+5d, DUKHCONP03Z2ARFF3365 SS+5d, DUKHCONP03Z2ARFF3365 FF+5d | -13d |
| DUKHCONP03Z2PLFF4340 |  | Installation of Water Heater | 15d | 2014-03-29 | 2014-04-14 | DUKHCONP03Z1PLFF4340, DUKHCONP03Z2PLFF4335 SS+5d, DUKHCONP03Z2ARFF3355 SS+5d, DUKHCONP03Z2ARFF3355 FF+5d, DUKHCONP03Z2ARFF3360 SS+5d, DUKHCONP03Z2ARFF3360 FF+5d, DUKHCONP03Z2PLFF4335 FF+5d | -13d |
|  | 20 | **ROOF** |  | 2014-01-11 | 2014-05-01 |  |  |
| DUKHCONP03Z2PLRF4345 |  | Installation of Plumbing pipes & fittings | 15d | 2014-01-11 | 2014-01-27 | DUKHCONP03Z2ARRF3605 FF+7d, DUKHCONP03Z2ARRF3605 SS+7d | 44d |
| DUKHCONP03Z2PLRF4350 |  | Installation of Rain water Pipes | 15d | 2014-02-10 | 2014-02-27 | DUKHCONP03Z1PLRF4350, DUKHCONP03Z2PLFF4330 FF+5d, DUKHCONP03Z2PLFF4330 SS+5d, DUKHCONP03Z2AREL3665 FF+7d, DUKHCONP03Z2AREL3665 SS+7d, DUKHCONP03Z2ARRF3645 SS+5d, DUKHCONP03Z2PLRF4345 FF+8d, DUKHCONP03Z2PLRF4345 SS+8d, DUKHCONP03Z2ARRF3645 FF+5d | 26d |
| DUKHCONP03Z2PLRF4355 |  | Roof Water Tank Installation & Connections | 25d | 2014-04-03 | 2014-05-01 | DUKHCONP03Z2PLFF4340 SS+5d, DUKHCONP03Z1PLRF4355, DUKHCONP03Z2ARRF3655 FF+5d, DUKHCONP03Z2ARRF3655 SS+5d, DUKHCONP03Z2PLRF4350 FF+5d, DUKHCONP03Z2PLRF4350 SS+5d, DUKHCONP03Z2PLRF4345 FF+8d, DUKHCONP03Z2PLRF4345 SS+8d, DUKHCONP03Z2PLFF4340 FF+5d | -13d |
|  | 20 | **AC WORKS** |  | 2013-12-15 | 2014-05-01 |  |  |
|  | 10 | **GROUND FLOOR** |  | 2013-12-15 | 2014-03-17 |  |  |
| DUKHCONP03Z2ACGF4600 |  | Installation AC Pipes | 20d | 2013-12-15 | 2014-01-07 | DUKHCONP03Z2ARGF3005 FF+7d, DUKHCONP03Z2ARGF3005 SS+7d, DUKHCONP03Z1ACGF4600 | 21d |
| DUKHCONP03Z2ACGF4605 |  | Fixing of Ventilation Equipments | 25d | 2014-02-01 | 2014-03-02 | DUKHCONP03Z2ARGF3055 SS+7d, DUKHCONP03Z2ARGF3060 SS+7d, DUKHCONP03Z2ACGF4600 SS+10d, DUKHCONP03Z2ARGF3055 FF+7d, DUKHCONP03Z2ACGF4600 FF+10d, DUKHCONP03Z2ARGF3060 FF+7d, DUKHCONP03Z1ACGF4605 | 11d |
| DUKHCONP03Z2ACGF4610 |  | Fixing of Split AC | 20d | 2014-02-23 | 2014-03-17 | DUKHCONP03Z1ACGF4610, DUKHCONP03Z2ACGF4605 FF+13d, DUKHCONP03Z2ACGF4605 SS+13d | 11d |
|  | 15 | **FIRST FLOORS** |  | 2014-01-08 | 2014-04-20 |  |  |

| ID | WBS | Task | Duration | Start | Finish | Predecessors | Complete | Total float |
| --- | --- | --- | --- | --- | --- | --- | --- | --- |
| DUKHCONP03Z2ACFF4615 |  | Installation AC Pipes | 20d | 2014-01-08 | 2014-01-30 | DUKHCONP03Z2ARFF3305 SS+7d, DUKHCONP03Z1ACFF4615, DUKHCONP03Z2ARFF3305 FF+7d |  | 5d |
| DUKHCONP03Z2ACFF4620 |  | Fixing of Ventilation Equipments | 25d | 2014-03-08 | 2014-04-05 | DUKHCONP03Z2ACFF4615 SS+10d, DUKHCONP03Z1ACFF4620, DUKHCONP03Z2ARFF3355 SS+7d, DUKHCONP03Z2ARFF3360 FF+7d, DUKHCONP03Z2ARFF3355 FF+7d, DUKHCONP03Z2ACFF4615 FF+10d, DUKHCONP03Z2ARFF3360 SS+7d |  | -18d |
| DUKHCONP03Z2ACFF4625 |  | Fixing of Split AC | 20d | 2014-03-29 | 2014-04-20 | DUKHCONP03Z2ACFF4620 SS+13d, DUKHCONP03Z2ACFF4620 FF+13d, DUKHCONP03Z1ACFF4625 |  | -18d |
|  | 20 | **ROOF** |  | 2014-01-18 | 2014-05-01 |  |  |  |
| DUKHCONP03Z2ACRF4630 |  | Installation of Refrigerant Pipes | 25d | 2014-01-18 | 2014-02-16 | DUKHCONP03Z2ACFF4615 FF+7d, DUKHCONP03Z2ACGF4600 SS+7d, DUKHCONP03Z2ARRF3645 SS+7d, DUKHCONP03Z2ACFF4615 SS+7d, DUKHCONP03Z2ARRF3645 FF+7d, DUKHCONP03Z2ACGF4600 FF+7d, DUKHCONP03Z1ACRF4630 |  | 46d |
| DUKHCONP03Z2ACRF4635 |  | Installation of Condensing Unit | 25d | 2014-04-03 | 2014-05-01 | DUKHCONP03Z1ACRF4635, DUKHCONP03Z2ACGF4610 SS+5d, DUKHCONP03Z2ACRF4630 FF+5d, DUKHCONP03Z2ACFF4625 FF+5d, DUKHCONP03Z2ACFF4625 SS+5d, DUKHCONP03Z2ACRF4630 SS+5d, DUKHCONP03Z2ACGF4610 FF+5d |  | -13d |
|  | 25 | **EXTERNAL WORKS** |  | 2013-11-30 | 2014-04-26 |  |  |  |
|  | 10 | **MISCELLANEOUS** |  | 2013-11-30 | 2014-03-19 |  |  |  |
| DUKHCONP03Z2MSEX5000 |  | Construction of Manholes | 25d | 2013-11-30 | 2013-12-29 | DUKHCONP03Z2STRF2055 SS+5d, DUKHCONP03Z2PLGF4310 FF+10d, DUKHCONP03Z2PLGF4310 SS+10d, DUKHCONP03Z2STRF2055 FF+5d |  | 25d |
| DUKHCONP03Z2MSEX5005 |  | Construction of Soak pit, Chambers | 25d | 2013-12-14 | 2014-01-12 | DUKHCONP03Z2MSEX5000 SS+12d, DUKHCONP03Z2MSEX5000 FF+12d |  | 25d |
| DUKHCONP03Z2MSEX5015 |  | Construction of grease Trap | 20d | 2014-01-04 | 2014-01-26 | DUKHCONP03Z2MSEX5005 FF+12d, DUKHCONP03Z2MSEX5005 SS+12d |  | 25d |
| DUKHCONP03Z2MSEX5010 |  | Telephone cable laying | 25d | 2014-01-27 | 2014-02-25 | DUKHCONP03Z2MSEX5015 |  | 25d |
| DUKHCONP03Z2MSEX5020 |  | Construction Entrance Ramp | 25d | 2014-02-06 | 2014-03-08 | DUKHCONP03Z2STRF2055 SS, DUKHCONP03Z2STRF2055 FF, DUKHCONP03Z1MSEX5020 |  | -6d |
| DUKHCONP03Z2MSEX5025 |  | SS.Handrails and Balustrades | 20d | 2014-02-25 | 2014-03-19 | DUKHCONP03Z2MSEX5020 SS+10d, DUKHCONP03Z2MSEX5020 FF+10d |  | -6d |
|  | 15 | **DOMESTIC WATER TANK & PUMP ROOM** |  | 2013-12-08 | 2014-04-26 |  |  |  |
| DUKHCONP03Z2WTEX5030 |  | Excavation | 20d | 2013-12-08 | 2013-12-31 | DUKHCONP03Z2STRF2055 SS+5d, DUKHCONP03Z2STRF2055 FF+5d, DUKHCONP03Z2STRF2065 SS+5d, DUKHCONP03Z1WTEX5030 |  | 31d |
| DUKHCONP03Z2WTEX5035 |  | Construction of Raft | 25d | 2013-12-14 | 2014-01-12 | DUKHCONP03Z2WTEX5030 SS+5d, DUKHCONP03Z2WTEX5030 FF+10d |  | 31d |
| DUKHCONP03Z2WTEX5040 |  | Block works & Plastering | 25d | 2013-12-24 | 2014-01-21 | DUKHCONP03Z2WTEX5035 SS+8d, DUKHCONP03Z2WTEX5035 FF+8d |  | 31d |
| DUKHCONP03Z2WTEX5070 |  | Domestic Water Tank Plumbings works | 25d | 2014-01-01 | 2014-01-29 | DUKHCONP03Z2WTEX5080 SS |  | 31d |
| DUKHCONP03Z2WTEX5075 |  | Domestic Water Tank AC works | 25d | 2014-01-01 | 2014-01-29 | DUKHCONP03Z2WTEX5070 SS |  | 31d |
| DUKHCONP03Z2WTEX5080 |  | Domestic Water Tank Electrical works | 25d | 2014-01-01 | 2014-01-29 | DUKHCONP03Z2WTEX5040 SS+7d |  | 31d |
| DUKHCONP03Z2WTEX5085 |  | Domestic Water Tank Firefighting works | 25d | 2014-01-01 | 2014-01-29 | DUKHCONP03Z2WTEX5075 SS |  | 31d |
| DUKHCONP03Z2WTEX5045 |  | Flooring & Painting | 25d | 2014-01-06 | 2014-02-03 | DUKHCONP03Z2WTEX5040 SS+10d, DUKHCONP03Z2WTEX5040 FF+10d, DUKHCONP03Z2WTEX5085 FF+4d |  | 31d |
| DUKHCONP03Z2WTEX5050 |  | Installation of Steel Gate | 20d | 2014-03-09 | 2014-03-31 | DUKHCONP03Z2WTEX5045 SS+5d, DUKHCONP03Z2MSEX5025 FF+10d, DUKHCONP03Z2WTEX5045 FF+10d |  | -6d |
| DUKHCONP03Z2WTEX5060 |  | Structural steel & SS Shed cover installation | 25d | 2014-03-17 | 2014-04-14 | DUKHCONP03Z2WTEX5050 SS+5d, DUKHCONP03Z2WTEX5050 FF+10d, DUKHCONP03Z2MSEX5025 FF+10d, DUKHCONP03Z1WTEX5060 |  | -8d |
| DUKHCONP03Z2WTEX5065 |  | Install. of Water Tank,Chiller,Pump & Meter | 25d | 2014-03-29 | 2014-04-26 | DUKHCONP03Z2WTEX5060 FF+10d, DUKHCONP03Z2PLRF4350 SS+5d, DUKHCONP03Z1WTEX5065, DUKHCONP03Z2WTEX5060 SS+10d, DUKHCONP03Z2MSEX5015 SS+5d, DUKHCONP03Z2MSEX5015 FF+5d, DUKHCONP03Z2PLRF4350 FF+5d |  | -8d |
|  | 30 | **TESTING AND COMMISSIONING** |  | 2014-05-19 | 2014-06-16 |  |  |  |
| DUKHCONP03Z2ACTC8000 |  | Pre-Commissioning & Testing of AC Works | 25d | 2014-05-19 | 2014-06-16 | DUKHCONP03Z2ARRF3620, DUKHCONP03Z1ACTC8000, DUKHCONP03Z2AREL3680, DUKHCONP03Z2ARGF3095, DUKHCONP03Z2ARFF3395, DUKHCONP03Z2ACFF4625, DUKHCONP03Z2ARRF3660, DUKHCONP03Z2ACRF4635, DUKHCONP03Z2MSEX5005 |  | -27d |
| DUKHCONP03Z2ELTC8010 |  | Pre-Commissioning & Testing of Electrical Works | 25d | 2014-05-19 | 2014-06-16 | DUKHCONP03Z2ARFF3395, DUKHCONP03Z2ELFF4050, DUKHCONP03Z2ELRF4075, DUKHCONP03Z2MSEX5005, DUKHCONP03Z2ELGF4030, DUKHCONP03Z1ELTC8010, DUKHCONP03Z2ARRF3620, DUKHCONP03Z2AREL3680, DUKHCONP03Z2ELGF4015, DUKHCONP03Z2ARRF3660, DUKHCONP03Z2ARRF3655, DUKHCONP03Z2ARGF3095, DUKHCONP03Z2ELFF4065, DUKHCONP03Z2ELFF4055, DUKHCONP03Z2ELGF4025 |  | -27d |
| DUKHCONP03Z2PLTC8005 |  | Pre-Commissioning & Testing of Plumbing Works | 25d | 2014-05-19 | 2014-06-16 | DUKHCONP03Z2MSEX5005, DUKHCONP03Z2AREL3680, DUKHCONP03Z2ARGF3095, DUKHCONP03Z2WTEX5065, DUKHCONP03Z2PLRF4355, DUKHCONP03Z2PLGF4320, DUKHCONP03Z2ARRF3620, DUKHCONP03Z2ARFF3395, DUKHCONP03Z1PLTC8005, DUKHCONP03Z2ARRF3655, DUKHCONP03Z2ARRF3660, DUKHCONP03Z2PLRF4350 |  | -27d |
|  | 20 | **ZONE - 3 (3 Apartments)** |  | 2013-03-30 | 2014-07-15 |  |  |  |
|  | 10 | **STRUCTURAL WORKS** |  | 2013-03-30 | 2014-01-29 |  |  |  |
|  | 10 | **SUB STRUCTURE** |  | 2013-03-30 | 2013-09-16 |  |  |  |
|  | 10 | **UPTO GRADE SLAB** |  | 2013-03-30 | 2013-09-16 |  |  |  |
| DUKHCONP03Z3STUG1000 |  | Footing Excavation | 25d | 2013-03-30 A | 2013-04-27 A | DUKHCONP03Z2STUG1000 | 100% |  |
| DUKHCONP03Z3STUG1005 |  | Footing Antitermite | 23d | 2013-04-09 A | 2013-05-18 | DUKHCONP03Z3STUG1000 SS+9d, DUKHCONP03Z3STUG1000 FF+5d | 17% | -9d |
| DUKHCONP03Z3STUG1010 |  | Footing Blinding | 23d | 2013-04-13 A | 2013-05-18 | DUKHCONP03Z3STUG1005 SS+3d, DUKHCONP03Z3STUG1005 FF+3d | 17% | -6d |
| DUKHCONP03Z3STUG1015 |  | Footing Waterproofing & Screed | 25d | 2013-04-18 A | 2013-05-18 | DUKHCONP03Z3STUG1010 FF+5d, DUKHCONP03Z3STUG1010 SS+5d | 24% | -1d |
| DUKHCONP03Z3STUG1020 |  | Construction of foundations | 20d | 2013-05-05 | 2013-05-27 | DUKHCONP03Z3STUG1015 SS+7d, DUKHCONP03Z3STUG1015 FF+8d |  | -1d |
| DUKHCONP03Z3STUG1025 |  | Construction of neck of columns | 25d | 2013-06-03 | 2013-07-01 | DUKHCONP03Z2STUG1025, DUKHCONP03Z3STUG1020 FF+7d, DUKHCONP03Z3STUG1020 SS+8d |  | -18d |
| DUKHCONP03Z3STUG1030 |  | Waterproofing Footing & Neck Column | 25d | 2013-06-12 | 2013-07-10 | DUKHCONP03Z3STUG1025 FF+8d, DUKHCONP03Z3STUG1025 SS+8d |  | -18d |
| DUKHCONP03Z3STUG1035 |  | Backfilling Upto Grade Beam Bottom | 25d | 2013-07-03 | 2013-07-31 | DUKHCONP03Z2STUG1035, DUKHCONP03Z3STUG1030 FF+9d, DUKHCONP03Z3STUG1030 SS+9d |  | -27d |
| DUKHCONP03Z3STUG1040 |  | Construction of Grade Beams | 25d | 2013-07-20 | 2013-08-20 | DUKHCONP03Z3STUG1035 SS+14d, DUKHCONP03Z3STUG1035 FF+14d |  | -27d |
| DUKHCONP03Z3STUG1045 |  | Construction of slab on grade | 25d | 2013-08-19 | 2013-09-16 | DUKHCONP03Z3PLUG4300 SS+8d, DUKHCONP03Z3PLUG4300 FF+8d, DUKHCONP03Z3STUG1040 FF+10d, DUKHCONP03Z2STUG1045, DUKHCONP03Z3STUG1040 SS+10d |  | -27d |
|  | 15 | **SUPERSTRUCTURE** |  | 2013-09-04 | 2014-01-29 |  |  |  |
|  | 10 | **GROUND FLOOR** |  | 2013-09-04 | 2013-11-02 |  |  |  |
| DUKHCONP03Z3STGF2000 |  | Column-Rebar & Formwork | 25d | 2013-09-04 | 2013-10-02 | DUKHCONP03Z3STUG1045 FF+7d, DUKHCONP03Z2STGF2000, DUKHCONP03Z3STUG1045 SS+14d |  | -27d |
| DUKHCONP03Z3STGF2005 |  | Column-Concrete | 24d | 2013-09-14 | 2013-10-10 | DUKHCONP03Z3STGF2000 SS+8d, DUKHCONP03Z3STGF2000 FF+2d |  | -27d |
| DUKHCONP03Z3STGF2010 |  | Beam, Stairs ,Slab-Rebar & Formwork | 25d | 2013-09-29 | 2013-10-29 | DUKHCONP03Z3STGF2005 FF+14d, DUKHCONP03Z3STGF2005 SS+2d |  | -27d |
| DUKHCONP03Z3STGF2015 |  | Beam, Stairs ,Slab-Concrete | 15d | 2013-10-14 | 2013-11-02 | DUKHCONP03Z3STGF2010 SS+10d, DUKHCONP03Z3STGF2010 FF+3d, DUKHCONP03Z2STGF2015 |  | -27d |
|  | 15 | **FIRST FLOORS** |  | 2013-10-16 | 2013-12-22 |  |  |  |
| DUKHCONP03Z3STFF2020 |  | Column-Rebar & Formwork | 25d | 2013-10-16 | 2013-11-16 | DUKHCONP03Z3STGF2015 SS+2d, DUKHCONP03Z3STGF2015 FF+5d, DUKHCONP03Z2STFF2020 |  | -27d |
| DUKHCONP03Z3STFF2025 |  | Column-Concrete | 24d | 2013-10-29 | 2013-11-25 | DUKHCONP03Z3STFF2020 SS+9d, DUKHCONP03Z3STFF2020 FF+2d |  | -27d |
| DUKHCONP03Z3STFF2030 |  | Beam, Stairs ,Slab-Rebar & Formwork | 25d | 2013-11-13 | 2013-12-11 | DUKHCONP03Z3STFF2025 SS+2d, DUKHCONP03Z3STFF2025 FF+14d |  | -27d |
| DUKHCONP03Z3STFF2035 |  | Beam, Stairs ,Slab-Concrete | 15d | 2013-12-04 | 2013-12-22 | DUKHCONP03Z3STFF2030 FF+8d, DUKHCONP03Z3STFF2030 SS+10d, DUKHCONP03Z2STFF2035 |  | -27d |
|  | 20 | **ROOF** |  | 2013-12-07 | 2014-01-29 |  |  |  |
| DUKHCONP03Z3STRF2040 |  | Column-Rebar & Formwork | 18d | 2013-12-07 | 2013-12-28 | DUKHCONP03Z2STRF2040, DUKHCONP03Z3STFF2035 FF+3d, DUKHCONP03Z3STFF2035 SS+2d |  | 2d |
| DUKHCONP03Z3STRF2045 |  | Column-Concrete | 17d | 2013-12-10 | 2013-12-30 | DUKHCONP03Z3STRF2040 SS+3d, DUKHCONP03Z3STRF2040 FF+1d |  | 12d |
| DUKHCONP03Z3STRF2050 |  | Slab-Rebar & Formwork | 20d | 2013-12-12 | 2014-01-05 | DUKHCONP03Z3STRF2045 SS+2d, DUKHCONP03Z3STRF2045 FF+5d |  | 12d |
| DUKHCONP03Z3STRF2055 |  | Slab-Concrete | 13d | 2013-12-24 | 2014-01-07 | DUKHCONP03Z2STRF2055, DUKHCONP03Z3STRF2050 FF+2d, DUKHCONP03Z3STRF2050 SS+5d |  | 12d |
| DUKHCONP03Z3STRF2060 |  | Construction of Parapets | 25d | 2013-12-26 | 2014-01-23 | DUKHCONP03Z3STRF2055 FF+10d, DUKHCONP03Z3STRF2055 SS+2d |  | 31d |
| DUKHCONP03Z3STRF2065 |  | Construction of up stands/Plinth | 25d | 2014-01-01 | 2014-01-29 | DUKHCONP03Z3STRF2060 FF+5d, DUKHCONP03Z2STRF2065, DUKHCONP03Z3STRF2060 SS+5d |  | 31d |
|  | 15 | **FINISHING WORKS** |  | 2013-11-17 | 2014-06-16 |  |  |  |
|  | 10 | **INTERNAL FINISHES** |  | 2013-11-17 | 2014-06-16 |  |  |  |
|  | 10 | **GROUND FLOOR** |  | 2013-11-17 | 2014-05-10 |  |  |  |
| DUKHCONP03Z3ARGF3000 |  | Block work | 25d | 2013-11-17 | 2013-12-15 | DUKHCONP03Z2ARGF3000, DUKHCONP03Z3STGF2015 SS+21d, DUKHCONP03Z3STGF2015 FF+21d |  | 8d |
| DUKHCONP03Z3ARGF3005 |  | Plastering work | 25d | 2013-12-09 | 2014-01-07 | DUKHCONP03Z3ARGF3000 SS+7d, DUKHCONP03Z3ELGF4000 FF+5d, DUKHCONP03Z3PLGF4305 SS+5d, DUKHCONP03Z3ARGF3000 FF+7d, DUKHCONP03Z3ELGF4000 SS+5d, DUKHCONP03Z2ARGF3005, DUKHCONP03Z3PLGF4305 FF+5d |  | 8d |
| DUKHCONP03Z3ARGF3010 |  | Flooring screed | 21d | 2013-12-17 | 2014-01-11 | DUKHCONP03Z3ARGF3005 SS+7d, DUKHCONP03Z3ARGF3005 FF+3d |  | 16d |
| DUKHCONP03Z3ARGF3015 |  | Wet area waterproofing & Protection Screed | 15d | 2013-12-28 | 2014-01-13 | DUKHCONP03Z3ARGF3005 FF+5d, DUKHCONP03Z2ARGF3015, DUKHCONP03Z3ARGF3005 SS+7d |  | 8d |
| DUKHCONP03Z3ARGF3020 |  | Ceramic Wall Tiling | 25d | 2014-01-02 | 2014-01-30 | DUKHCONP03Z3PLGF4305 SS+4d, DUKHCONP03Z2ARGF3020, DUKHCONP03Z3ARGF3015 FF+5d, DUKHCONP03Z3PLGF4305 FF+4d, DUKHCONP03Z3PLGF4310 FF+4d, DUKHCONP03Z3PLGF4310 SS+4d, DUKHCONP03Z3ARGF3015 SS+5d |  | 8d |

| ID | WBS | Task | Duration | Start | Finish | Predecessors | Total float |
| --- | --- | --- | --- | --- | --- | --- | --- |
| DUKHCONP03Z3ARGF3025 |  | Porcelain Tile flooring | 25d | 2014-01-08 | 2014-02-05 | DUKHCONP03Z3ARGF3020 FF+5d, DUKHCONP03Z3ARGF3020 SS+5d, DUKHCONP03Z3ARGF3010 SS+10d, DUKHCONP03Z2ARGF3025, DUKHCONP03Z3ARGF3010 FF+10d | 8d |
| DUKHCONP03Z3ARGF3030 |  | Paint First coat | 25d | 2014-01-20 | 2014-02-18 | DUKHCONP03Z3ARGF3005 SS+14d, DUKHCONP03Z2ARGF3030, DUKHCONP03Z3ARGF3005 FF+14d | 1d |
| DUKHCONP03Z3ARGF3035 |  | Slate Tile Flooring & Skirting | 15d | 2014-01-28 | 2014-02-15 | DUKHCONP03Z3ARGF3025 SS+13d, DUKHCONP03Z3ARGF3025 FF+7d, DUKHCONP03Z3ARGF3010 FF+13d, DUKHCONP03Z3ARGF3010 SS+13d | 15d |
| DUKHCONP03Z3ARGF3045 |  | Fixing of Suspension systems | 20d | 2014-02-03 | 2014-02-26 | DUKHCONP03Z3ARGF3025 FF+10d, DUKHCONP03Z2ARGF3045, DUKHCONP03Z3ARGF3030 FF+7d, DUKHCONP03Z3ARGF3025 SS+10d, DUKHCONP03Z3ELGF4010 SS+5d, DUKHCONP03Z3ELGF4010 FF+5d, DUKHCONP03Z3ARGF3030 SS+7d | 1d |
| DUKHCONP03Z3ARGF3040 |  | Cobble Tile flooring | 15d | 2014-02-04 | 2014-02-22 | DUKHCONP03Z3ARGF3025 SS+13d, DUKHCONP03Z3ARGF3025 FF+13d, DUKHCONP03Z3ARGF3010 SS+13d, DUKHCONP03Z3ARGF3010 FF+13d, DUKHCONP03Z3ARGF3035 FF+4d, DUKHCONP03Z3ARGF3035 SS+4d | 13d |
| DUKHCONP03Z3ARGF3055 |  | Aluminum tile false ceiling | 25d | 2014-02-12 | 2014-03-12 | DUKHCONP03Z3ARGF3045 SS+7d, DUKHCONP03Z3ACGF4600 SS+7d, DUKHCONP03Z3ACGF4600 FF+7d, DUKHCONP03Z3ARGF3045 FF+7d | 4d |
| DUKHCONP03Z3ARGF3050 |  | Granite - Stair case flooring & Skirting | 20d | 2014-02-13 | 2014-03-08 | DUKHCONP03Z3ARGF3025 SS+13d, DUKHCONP03Z3ARGF3040 FF+7d, DUKHCONP03Z3ARGF3025 FF+13d, DUKHCONP03Z3ARGF3040 SS+7d | 13d |
| DUKHCONP03Z3ARGF3060 |  | Gypsum board false ceiling | 25d | 2014-02-16 | 2014-03-16 | DUKHCONP03Z3ARGF3045 SS+10d, DUKHCONP03Z3ACGF4600 FF+7d, DUKHCONP03Z3ACGF4600 SS+7d, DUKHCONP03Z2ARGF3060, DUKHCONP03Z3ARGF3045 FF+10d | 1d |
| DUKHCONP03Z3ARGF3065 |  | Wooden door | 15d | 2014-02-27 | 2014-03-16 | DUKHCONP03Z3ARGF3050 SS+7d, DUKHCONP03Z2ARGF3065, DUKHCONP03Z3ARGF3035 FF+7d, DUKHCONP03Z3ARGF3035 SS+7d, DUKHCONP03Z3ARGF3050 FF+7d | 13d |
| DUKHCONP03Z3ARGF3070 |  | Aluminum doors | 15d | 2014-03-05 | 2014-03-22 | DUKHCONP03Z2ARGF3070, DUKHCONP03Z3ARGF3065 SS+5d, DUKHCONP03Z3ARGF3065 FF+5d | 13d |
| DUKHCONP03Z3ARGF3075 |  | Carpentry & Joinery Works | 20d | 2014-03-11 | 2014-04-02 | DUKHCONP03Z3ARGF3070 SS+5d, DUKHCONP03Z3ARGF3070 FF+7d, DUKHCONP03Z2ARGF3075 | 13d |
| DUKHCONP03Z3ARGF3080 |  | Aluminum windows | 20d | 2014-03-12 | 2014-04-03 | DUKHCONP03Z3ARGF3070 FF+6d, DUKHCONP03Z2ARGF3080, DUKHCONP03Z3ARGF3070 SS+6d | 23d |
| DUKHCONP03Z3ARGF3085 |  | S.S.Balustrade | 20d | 2014-03-19 | 2014-04-10 | DUKHCONP03Z3ARGF3050 SS+7d, DUKHCONP03Z3ARGF3075 SS+7d, DUKHCONP03Z3ARGF3050 FF+7d, DUKHCONP03Z3ARGF3075 FF+7d | 18d |
| DUKHCONP03Z3ARGF3090 |  | Installation of Granite Counter Top | 15d | 2014-03-24 | 2014-04-09 | DUKHCONP03Z3ARGF3075 SS+7d, DUKHCONP03Z3ARGF3075 FF+6d | 13d |
| DUKHCONP03Z3ARGF3095 |  | Final Painting | 25d | 2014-04-12 | 2014-05-10 | DUKHCONP03Z2ARGF3095, DUKHCONP03Z3ACGF4610 FF+10d, DUKHCONP03Z3ARGF3070 SS+5d, DUKHCONP03Z3ACGF4610 SS+10d, DUKHCONP03Z3ARGF3030 SS+10d, DUKHCONP03Z3ARGF3040 SS+13d, DUKHCONP03Z3ARGF3070 FF+5d, DUKHCONP03Z3ARGF3090 SS+8d, DUKHCONP03Z3ARGF3040 FF+13d, DUKHCONP03Z3ARGF3060 SS+8d, DUKHCONP03Z3ARGF3030 FF+10d, DUKHCONP03Z3ARGF3035 FF+13d, DUKHCONP03Z3ARGF3080 SS+8d, DUKHCONP03Z3ARGF3085 FF+7d, DUKHCONP03Z3ARGF3035 SS+13d, DUKHCONP03Z3ARGF3060 FF+8d, DUKHCONP03Z3ARGF3080 FF+8d, DUKHCONP03Z3ARGF3090 FF+8d, DUKHCONP03Z3ARGF3085 SS+7d | 5d |
|  | 15 | **FIRST FLOORS** |  | 2013-12-30 | 2014-06-16 |  |  |
| DUKHCONP03Z3ARFF3300 |  | Block work | 25d | 2013-12-30 | 2014-01-27 | DUKHCONP03Z2ARFF3300, DUKHCONP03Z3STFF2035 FF+21d, DUKHCONP03Z3STFF2035 SS+21d, DUKHCONP03Z3STFF2020 SS+21d, DUKHCONP03Z3STFF2020 FF+21d | -27d |
| DUKHCONP03Z3ARFF3305 |  | Plastering work | 25d | 2014-01-23 | 2014-02-22 | DUKHCONP03Z3ELFF4035 SS+5d, DUKHCONP03Z3ARFF3300 SS+7d, DUKHCONP03Z3PLFF4325 FF+8d, DUKHCONP03Z2ARFF3305, DUKHCONP03Z3ELFF4035 FF+5d, DUKHCONP03Z3PLFF4325 SS+8d, DUKHCONP03Z3ARFF3300 FF+7d | -27d |
| DUKHCONP03Z3ARFF3310 |  | Flooring screed | 21d | 2014-02-01 | 2014-02-25 | DUKHCONP03Z3ARFF3305 SS+7d, DUKHCONP03Z3ARFF3305 FF+3d | -12d |
| DUKHCONP03Z3ARFF3330 |  | Paint First coat | 25d | 2014-02-09 | 2014-03-10 | DUKHCONP03Z3ARFF3305 FF+14d, DUKHCONP03Z3ARFF3305 SS+14d | -9d |
| DUKHCONP03Z3ARFF3315 |  | Wet area waterproofing | 15d | 2014-02-15 | 2014-03-03 | DUKHCONP03Z2ARFF3315, DUKHCONP03Z3ARFF3305 SS+7d, DUKHCONP03Z3ARFF3305 FF+8d | -27d |
| DUKHCONP03Z3ARFF3320 |  | Ceramic Wall Tiling | 25d | 2014-02-24 | 2014-03-24 | DUKHCONP03Z3ARFF3315 SS+8d, DUKHCONP03Z3PLFF4330 SS+7d, DUKHCONP03Z3PLFF4330 FF+7d, DUKHCONP03Z3PLFF4325 SS+4d, DUKHCONP03Z3PLFF4325 FF+4d, DUKHCONP03Z2ARFF3320, DUKHCONP03Z3ARFF3315 FF+7d | -27d |
| DUKHCONP03Z3ARFF3325 |  | Porcelain Tile flooring | 25d | 2014-03-03 | 2014-03-31 | DUKHCONP03Z3ARFF3320 SS+6d, DUKHCONP03Z3ARFF3310 SS+10d, DUKHCONP03Z3ARFF3320 FF+6d, DUKHCONP03Z2ARFF3325, DUKHCONP03Z3ARFF3310 FF+10d | -27d |
| DUKHCONP03Z3ARFF3345 |  | Fixing of Suspension systems | 20d | 2014-03-17 | 2014-04-08 | DUKHCONP03Z3ELFF4045 SS+5d, DUKHCONP03Z3ARFF3330 FF+7d, DUKHCONP03Z3ARFF3325 FF+7d, DUKHCONP03Z3ARFF3325 SS+7d, DUKHCONP03Z3ELFF4045 FF+5d, DUKHCONP03Z3ARFF3330 SS+7d, DUKHCONP03Z2ARFF3345 | -27d |
| DUKHCONP03Z3ARFF3335 |  | Slate Tile Flooring & Skirting | 15d | 2014-03-20 | 2014-04-06 | DUKHCONP03Z3ARFF3310 FF+13d, DUKHCONP03Z3ARFF3310 SS+13d, DUKHCONP03Z3ARFF3325 SS+13d, DUKHCONP03Z3ARFF3325 FF+5d | -17d |
| DUKHCONP03Z3ARFF3350 |  | Granite - Stair case flooring & Skirting | 20d | 2014-03-24 | 2014-04-15 | DUKHCONP03Z3ARFF3325 SS+13d, DUKHCONP03Z3ARFF3325 FF+13d | -25d |
| DUKHCONP03Z3ARFF3360 |  | Gypsum board false ceiling | 25d | 2014-03-25 | 2014-04-22 | DUKHCONP03Z3ACFF4615 SS+7d, DUKHCONP03Z3ARFF3345 SS+7d, DUKHCONP03Z3ARFF3345 FF+7d, DUKHCONP03Z3ACFF4615 FF+7d, DUKHCONP03Z2ARFF3360 | -27d |
| DUKHCONP03Z3ARFF3355 |  | Aluminum tile false ceiling | 20d | 2014-03-29 | 2014-04-20 | DUKHCONP03Z3ACFF4615 FF+7d, DUKHCONP03Z2ARFF3355, DUKHCONP03Z3ARFF3345 SS+10d, DUKHCONP03Z3ACFF4615 SS+7d, DUKHCONP03Z3ARFF3345 FF+10d | -25d |
| DUKHCONP03Z3ARFF3365 |  | Wooden door | 15d | 2014-04-09 | 2014-04-26 | DUKHCONP03Z2ARFF3365, DUKHCONP03Z3ARFF3355 SS+3d, DUKHCONP03Z3ARFF3360 SS+3d, DUKHCONP03Z3ARFF3335 FF+7d, DUKHCONP03Z3ARFF3355 FF+3d, DUKHCONP03Z3ARFF3335 SS+7d, DUKHCONP03Z3ARFF3350 FF+7d, DUKHCONP03Z3ARFF3360 FF+3d, DUKHCONP03Z3ARFF3350 SS+7d | -27d |
| DUKHCONP03Z3ARFF3370 |  | Aluminum Door | 20d | 2014-04-17 | 2014-05-10 | DUKHCONP03Z3ARFF3365 FF+5d, DUKHCONP03Z2ARFF3370, DUKHCONP03Z3ARFF3365 SS+7d | -27d |
| DUKHCONP03Z3ARFF3380 |  | Aluminum windows | 20d | 2014-04-24 | 2014-05-17 | DUKHCONP03Z3ARFF3370 FF+6d, DUKHCONP03Z3ARFF3370 SS+6d | -16d |
| DUKHCONP03Z3ARFF3375 |  | Carpentry & Joinery Works | 25d | 2014-04-26 | 2014-05-24 | DUKHCONP03Z3ARFF3370 SS+7d, DUKHCONP03Z3ARFF3370 FF+5d, DUKHCONP03Z2ARFF3375 | -27d |
| DUKHCONP03Z3ARFF3385 |  | Handrail & Balustrade | 20d | 2014-05-07 | 2014-05-29 | DUKHCONP03Z3ARFF3375 SS+5d, DUKHCONP03Z3ARFF3350 FF+7d, DUKHCONP03Z3ARFF3375 FF+5d, DUKHCONP03Z3ARFF3350 SS+7d | -27d |
| DUKHCONP03Z3ARFF3390 |  | Installation of Granite Counter Top | 20d | 2014-05-10 | 2014-06-01 | DUKHCONP03Z3ARFF3375 FF+7d, DUKHCONP03Z3ARFF3375 SS+7d | -27d |
| DUKHCONP03Z3ARFF3395 |  | Final Painting | 25d | 2014-05-19 | 2014-06-16 | DUKHCONP03Z2ARFF3395, DUKHCONP03Z3ARFF3385 FF+10d, DUKHCONP03Z3ARFF3330 SS+10d, DUKHCONP03Z3ARFF3335 FF+8d, DUKHCONP03Z3ARFF3350 SS+8d, DUKHCONP03Z3ARFF3355 SS+10d, DUKHCONP03Z3ARFF3360 FF+10d, DUKHCONP03Z3ARFF3390 SS+8d, DUKHCONP03Z3ARFF3390 FF+8d, DUKHCONP03Z3ARFF3360 SS+10d, DUKHCONP03Z3ARFF3375 SS+8d, DUKHCONP03Z3ACFF4625 SS+10d, DUKHCONP03Z3ARFF3330 FF+10d, DUKHCONP03Z3ARFF3365 SS+8d, DUKHCONP03Z3ARFF3350 FF+8d, DUKHCONP03Z3ARFF3355 FF+10d, DUKHCONP03Z3ARFF3385 SS+10d, DUKHCONP03Z3ARFF3365 FF+8d, DUKHCONP03Z3ARFF3375 FF+8d, DUKHCONP03Z3ARFF3380 FF+10d, DUKHCONP03Z3ACFF4625 FF+10d, DUKHCONP03Z3ARFF3335 SS+8d, DUKHCONP03Z3ARFF3380 SS+10d | -27d |
|  | 20 | **ROOF** |  | 2014-01-18 | 2014-03-24 |  |  |
| DUKHCONP03Z3ARRF3600 |  | Block work | 20d | 2014-01-18 | 2014-02-09 | DUKHCONP03Z3STRF2055 SS+21d, DUKHCONP03Z2ARRF3600, DUKHCONP03Z3STRF2055 FF+21d | 40d |
| DUKHCONP03Z3ARRF3605 |  | Plastering work | 20d | 2014-01-26 | 2014-02-18 | DUKHCONP03Z3ARRF3600 SS+7d, DUKHCONP03Z3ARRF3600 FF+7d | 40d |
| DUKHCONP03Z3ARRF3610 |  | Flooring screed | 15d | 2014-02-09 | 2014-02-26 | DUKHCONP03Z3ARRF3605 SS+7d, DUKHCONP03Z3ARRF3605 FF+7d | 45d |
| DUKHCONP03Z3ARRF3695 |  | Painting | 20d | 2014-02-18 | 2014-03-12 | DUKHCONP03Z3ARRF3610 FF+7d, DUKHCONP03Z3ARRF3610 SS+7d | 45d |
| DUKHCONP03Z3ARRF3620 |  | Epoxy Painting | 15d | 2014-03-08 | 2014-03-24 | DUKHCONP03Z3ARRF3695 FF+10d, DUKHCONP03Z3ARRF3695 SS+10d | 45d |
|  | 15 | **EXTERNAL FINISHES** |  | 2014-01-23 | 2014-04-19 |  |  |
|  | 10 | **ROOF** |  | 2014-01-23 | 2014-03-30 |  |  |
| DUKHCONP03Z3ARRF3630 |  | Leveling Screed for Waterproofing | 25d | 2014-01-23 | 2014-02-22 | DUKHCONP03Z2ARRF3630, DUKHCONP03Z3STRF2065 SS+10d, DUKHCONP03Z3STRF2060 SS+10d, DUKHCONP03Z3STRF2060 FF+10d, DUKHCONP03Z3STRF2065 FF+10d | 35d |
| DUKHCONP03Z3ARRF3635 |  | Laying of Waterproofing Membrane | 25d | 2014-01-27 | 2014-02-25 | DUKHCONP03Z3ARRF3630 SS+3d, DUKHCONP03Z3ARRF3630 FF+3d | 35d |
| DUKHCONP03Z3ARRF3640 |  | Installation of Insulation & Protection | 25d | 2014-02-01 | 2014-03-02 | DUKHCONP03Z3ARRF3635 FF+4d, DUKHCONP03Z3ARRF3635 SS+4d | 35d |
| DUKHCONP03Z3ARRF3645 |  | Lime Stone Chips & Paving slab Installation | 25d | 2014-02-05 | 2014-03-06 | DUKHCONP03Z3ARRF3640 FF+4d, DUKHCONP03Z3ARRF3640 SS+4d | 35d |
| DUKHCONP03Z3ARRF3650 |  | Install. of Gal. Frame & Aluminum Slat Screen | 25d | 2014-02-15 | 2014-03-15 | DUKHCONP03Z3ARRF3645 SS+7d, DUKHCONP03Z3ARRF3645 FF+7d | 35d |
| DUKHCONP03Z3ARRF3655 |  | Installation of Pumps Protection cabinets | 20d | 2014-03-02 | 2014-03-24 | DUKHCONP03Z3ARRF3645 FF+7d, DUKHCONP03Z2ARRF3655, DUKHCONP03Z3ARRF3645 SS+7d, DUKHCONP03Z3ARRF3650 FF+8d, DUKHCONP03Z3ARRF3650 SS+8d | 35d |
| DUKHCONP03Z3ARRF3660 |  | Installation of Access Ladder | 15d | 2014-03-13 | 2014-03-30 | DUKHCONP03Z3ARRF3655 SS+5d, DUKHCONP03Z3ARRF3655 FF+5d | 40d |
|  | 15 | **ELEVATION** |  | 2014-02-20 | 2014-04-19 |  |  |
| DUKHCONP03Z3AREL3665 |  | External Plastering | 25d | 2014-02-20 | 2014-03-20 | DUKHCONP03Z3ARFF3305 FF+7d, DUKHCONP03Z3ARRF3605 SS+7d, DUKHCONP03Z3STRF2065 SS+7d, DUKHCONP03Z3ARFF3305 SS+7d, DUKHCONP03Z2AREL3665, DUKHCONP03Z3STRF2065 FF+7d | 26d |
| DUKHCONP03Z3AREL3675 |  | GRC Panel Works | 20d | 2014-03-10 | 2014-04-01 | DUKHCONP03Z2AREL3675, DUKHCONP03Z3AREL3665 SS+10d, DUKHCONP03Z3AREL3665 FF+10d | 28d |
| DUKHCONP03Z3AREL3680 |  | External Painting | 20d | 2014-03-27 | 2014-04-19 | DUKHCONP03Z3ARRF3695 SS+4d, DUKHCONP03Z2AREL3680, DUKHCONP03Z3ARRF3695 FF+4d, DUKHCONP03Z3AREL3675 FF+10d, DUKHCONP03Z3AREL3675 SS+10d | 23d |
|  | 20 | **MEP WORKS** |  | 2013-08-06 | 2014-06-15 |  |  |
|  | 10 | **ELECTRICAL WORKS** |  | 2013-11-23 | 2014-06-15 |  |  |
|  | 10 | **GROUND FLOOR** |  | 2013-11-23 | 2014-04-17 |  |  |
| DUKHCONP03Z3ELGF4000 |  | Fixing of wall conduits & switch socket boxes | 25d | 2013-11-23 | 2013-12-22 | DUKHCONP03Z3ARGF3000 SS+5d, DUKHCONP03Z3ARGF3000 FF+5d | 17d |
| DUKHCONP03Z3ELGF4005 |  | Cable tray & trunking installation | 20d | 2013-12-04 | 2013-12-28 | DUKHCONP03Z2ELGF4005, DUKHCONP03Z3ELGF4000 FF+5d, DUKHCONP03Z3ELGF4000 SS+5d | 35d |
| DUKHCONP03Z3ELGF4010 |  | Installation of wiring & Main Cabling | 25d | 2013-12-12 | 2014-01-11 | DUKHCONP03Z3ELGF4005 SS+7d, DUKHCONP03Z3ELGF4005 FF+7d | 35d |
| DUKHCONP03Z3ELGF4020 |  | Installation of DBS,MCCB Accessories. | 20d | 2014-03-02 | 2014-03-24 | DUKHCONP03Z3ELGF4010 FF+5d, DUKHCONP03Z3ARGF3055 SS+7d, DUKHCONP03Z3ARGF3055 FF+7d, DUKHCONP03Z3ARGF3060 SS+7d, DUKHCONP03Z3ELGF4010 SS+5d, DUKHCONP03Z3ARGF3060 FF+7d | 1d |
| DUKHCONP03Z3ELGF4015 |  | Install. of CAMS & Fire Fighting Accessories | 25d | 2014-03-03 | 2014-03-31 | DUKHCONP03Z2ELGF4015, DUKHCONP03Z3ARGF3060 FF+7d, DUKHCONP03Z3ARGF3055 SS+7d, DUKHCONP03Z3ARGF3055 FF+7d, DUKHCONP03Z3ARGF3060 SS+7d | 9d |
| DUKHCONP03Z3ELGF4030 |  | Installation of Telephone System | 20d | 2014-03-13 | 2014-04-05 | DUKHCONP03Z3ARGF3060 SS+5d, DUKHCONP03Z3ELGF4020 FF+10d, DUKHCONP03Z3ARGF3060 FF+5d, DUKHCONP03Z2ELGF4030, DUKHCONP03Z3ELGF4020 SS+10d | 1d |
| DUKHCONP03Z3ELGF4025 |  | Installation of Lighting fixtures & Accessories | 25d | 2014-03-20 | 2014-04-17 | DUKHCONP03Z3ARGF3060 SS+10d, DUKHCONP03Z2ELGF4025, DUKHCONP03Z3ARGF3055 SS+10d, DUKHCONP03Z3ELGF4020 SS+10d, DUKHCONP03Z3ARGF3055 FF+10d, DUKHCONP03Z3ARGF3060 FF+10d, DUKHCONP03Z3ELGF4020 FF+10d | -3d |
|  | 15 | **FIRST FLOORS** |  | 2014-01-05 | 2014-05-20 |  |  |
| DUKHCONP03Z3ELFF4035 |  | Fixing of wall conduits & switch socket boxes | 25d | 2014-01-05 | 2014-02-02 | DUKHCONP03Z3ARFF3300 SS+5d, DUKHCONP03Z3ARFF3300 FF+5d | -16d |
| DUKHCONP03Z3ELFF4040 |  | Cable tray & trunking installation | 20d | 2014-01-16 | 2014-02-08 | DUKHCONP03Z3ELFF4035 SS+5d, DUKHCONP03Z3ELFF4035 FF+5d | 6d |
| DUKHCONP03Z3ELFF4045 |  | Installation of wiring & Main Cabling | 25d | 2014-01-28 | 2014-02-26 | DUKHCONP03Z3ELFF4040 FF+7d, DUKHCONP03Z3ELFF4040 SS+7d, DUKHCONP03Z2ELFF4045 | 3d |
| DUKHCONP03Z3ELFF4050 |  | Installation of Telephone System | 25d | 2014-04-03 | 2014-05-01 | DUKHCONP03Z3ARFF3355 FF+5d, DUKHCONP03Z3ELGF4030 FF+10d, DUKHCONP03Z3ARFF3355 SS+5d, DUKHCONP03Z3ARFF3360 SS+5d, DUKHCONP03Z3MSEX5010 FF, DUKHCONP03Z3ARFF3360 FF+5d, DUKHCONP03Z3ELGF4030 SS+10d | -7d |
| DUKHCONP03Z3ELFF4055 |  | Install. of CAMS & Fire Fighting Accessories | 25d | 2014-04-06 | 2014-05-04 | DUKHCONP03Z3ARFF3355 SS+7d, DUKHCONP03Z3ELGF4015 FF+5d, DUKHCONP03Z3ARFF3355 FF+7d, DUKHCONP03Z3ARFF3360 FF+7d, DUKHCONP03Z3ELGF4015 SS+5d, DUKHCONP03Z2ELFF4055, DUKHCONP03Z3ARFF3360 SS+7d | -15d |

| ID | WBS | Task | Duration | Start | Finish | Predecessors | Total float |
| --- | --- | --- | --- | --- | --- | --- | --- |
| DUKHCONP03Z3ELFF4060 |  | Installation of DBS,MCCB Accessories. | 20d | 2014-04-09 | 2014-05-01 | DUKHCONP03Z3ARFF3360 FF+8d, DUKHCONP03Z3ARFF3355 SS+8d, DUKHCONP03Z3ARFF3360 SS+8d, DUKHCONP03Z2ELFF4060, DUKHCONP03Z3ARFF3355 FF+8d, DUKHCONP03Z3ELFF4045 FF+5d, DUKHCONP03Z3ELFF4045 SS+5d | -26d |
| DUKHCONP03Z3ELFF4065 |  | Installation of Lighting fixtures & Accessories | 25d | 2014-04-22 | 2014-05-20 | DUKHCONP03Z3ARFF3360 SS+10d, DUKHCONP03Z3ELFF4060 SS+11d, DUKHCONP03Z3ELFF4060 FF+11d, DUKHCONP03Z3ARFF3355 FF+10d, DUKHCONP03Z3ARFF3360 FF+10d, DUKHCONP03Z3ELGF4025 SS+5d, DUKHCONP03Z3ELGF4025 FF+5d, DUKHCONP03Z2ELFF4065, DUKHCONP03Z3ARFF3355 SS+10d | -26d |
|  | 20 | **ROOF** |  | 2014-05-12 | 2014-06-15 |  |  |
| DUKHCONP03Z3ELRF4070 |  | Installation of Isolator | 18d | 2014-05-12 | 2014-06-01 | DUKHCONP03Z3ELFF4050 FF+7d, DUKHCONP03Z3ELFF4045 SS+10d, DUKHCONP03Z3ELFF4065 FF+10d, DUKHCONP03Z3ELFF4045 FF+10d, DUKHCONP03Z3ELFF4050 SS+5d, DUKHCONP03Z3ARRF3645 FF+7d, DUKHCONP03Z3ARRF3645 SS+7d, DUKHCONP03Z3ELFF4065 SS+10d | -26d |
| DUKHCONP03Z3ELRF4075 |  | Installation of TV Dish Antenna | 23d | 2014-05-20 | 2014-06-15 | DUKHCONP03Z3ELRF4070 SS+7d, DUKHCONP03Z3ELRF4070 FF+7d | -26d |
|  | 15 | **PLUMBING, DRAINAGE & FIRE FIGHTING WORKS** |  | 2013-08-06 | 2014-05-31 |  |  |
|  | 10 | **GROUND FLOOR** |  | 2013-08-06 | 2014-04-02 |  |  |
| DUKHCONP03Z3PLUG4300 |  | Drainage / Storm Pipes in Grade Slab | 20d | 2013-08-06 | 2013-09-01 | DUKHCONP03Z3STUG1040 SS+10d, DUKHCONP03Z3STUG1040 FF+10d | -27d |
| DUKHCONP03Z3PLGF4305 |  | Installation of Plumbing pipes & testing | 18d | 2013-12-03 | 2013-12-24 | DUKHCONP03Z3ARGF3000 FF+7d, DUKHCONP03Z3ARGF3000 SS+7d, DUKHCONP03Z2PLGF4305 | 8d |
| DUKHCONP03Z3PLGF4310 |  | Installation of Drainage pipes &testing | 18d | 2013-12-03 | 2013-12-24 | DUKHCONP03Z3ARGF3000 FF+7d, DUKHCONP03Z3PLGF4305 FF, DUKHCONP03Z3PLGF4305 SS, DUKHCONP03Z3ARGF3000 SS+7d | 29d |
| DUKHCONP03Z3PLGF4315 |  | Sanitary Fittings & Accessories | 20d | 2014-03-05 | 2014-03-27 | DUKHCONP03Z3ARGF3065 SS+5d, DUKHCONP03Z3PLGF4310 SS+5d, DUKHCONP03Z3PLGF4310 FF+5d, DUKHCONP03Z2PLGF4315, DUKHCONP03Z3ARGF3065 FF+5d | 37d |
| DUKHCONP03Z3PLGF4320 |  | Installation of Water Heater | 15d | 2014-03-17 | 2014-04-02 | DUKHCONP03Z3ARGF3060 FF+5d, DUKHCONP03Z3PLGF4315 SS+5d, DUKHCONP03Z2PLGF4320, DUKHCONP03Z3ARGF3060 SS+5d, DUKHCONP03Z3PLGF4315 FF+5d | 37d |
|  | 15 | **FIRST FLOORS** |  | 2014-01-14 | 2014-05-13 |  |  |
| DUKHCONP03Z3PLFF4325 |  | Installation of Plumbing pipes & testing | 18d | 2014-01-14 | 2014-02-03 | DUKHCONP03Z3ARFF3300 SS+6d, DUKHCONP03Z3ARFF3300 FF+6d | -27d |
| DUKHCONP03Z3PLFF4330 |  | Installation of Drainage pipes & testing | 18d | 2014-01-15 | 2014-02-04 | DUKHCONP03Z3PLFF4325 SS, DUKHCONP03Z3ARFF3300 SS+7d, DUKHCONP03Z3ARFF3300 FF+7d, DUKHCONP03Z2PLFF4330, DUKHCONP03Z3PLFF4325 FF | -1d |
| DUKHCONP03Z3PLFF4335 |  | Sanitary Fittings & Accessories | 20d | 2014-04-15 | 2014-05-07 | DUKHCONP03Z3PLFF4330 FF+5d, DUKHCONP03Z3PLFF4330 SS+5d, DUKHCONP03Z3ARFF3365 SS+5d, DUKHCONP03Z3ARFF3365 FF+5d | -13d |
| DUKHCONP03Z3PLFF4340 |  | Installation of Water Heater | 15d | 2014-04-27 | 2014-05-13 | DUKHCONP03Z2PLFF4340, DUKHCONP03Z3ARFF3355 SS+5d, DUKHCONP03Z3PLFF4335 FF+5d, DUKHCONP03Z3PLFF4335 SS+5d, DUKHCONP03Z3ARFF3355 FF+5d, DUKHCONP03Z3ARFF3360 SS+5d, DUKHCONP03Z3ARFF3360 FF+5d | -13d |
|  | 20 | **ROOF** |  | 2014-02-09 | 2014-05-31 |  |  |
| DUKHCONP03Z3PLRF4345 |  | Installation of Plumbing pipes & fittings | 15d | 2014-02-09 | 2014-02-26 | DUKHCONP03Z3ARRF3605 SS+7d, DUKHCONP03Z3ARRF3605 FF+7d | 44d |
| DUKHCONP03Z3PLRF4350 |  | Installation of Rain water Pipes | 15d | 2014-03-12 | 2014-03-29 | DUKHCONP03Z3PLFF4330 FF+5d, DUKHCONP03Z3PLRF4345 FF+8d, DUKHCONP03Z3ARRF3645 FF+5d, DUKHCONP03Z3PLFF4330 SS+5d, DUKHCONP03Z3AREL3665 FF+7d, DUKHCONP03Z2PLRF4350, DUKHCONP03Z3AREL3665 SS+7d, DUKHCONP03Z3ARRF3645 SS+5d, DUKHCONP03Z3PLRF4345 SS+8d | 26d |
| DUKHCONP03Z3PLRF4355 |  | Roof Water Tank Installation & Connections | 25d | 2014-05-03 | 2014-05-31 | DUKHCONP03Z2PLRF4355, DUKHCONP03Z3ARRF3655 FF+5d, DUKHCONP03Z3PLFF4340 FF+5d, DUKHCONP03Z3PLFF4340 SS+5d, DUKHCONP03Z3PLRF4345 FF+8d, DUKHCONP03Z3PLRF4345 SS+8d, DUKHCONP03Z3PLRF4350 FF+5d, DUKHCONP03Z3ARRF3655 SS+5d, DUKHCONP03Z3PLRF4350 SS+5d | -13d |
|  | 20 | **AC WORKS** |  | 2014-01-08 | 2014-05-31 |  |  |
|  | 10 | **GROUND FLOOR** |  | 2014-01-08 | 2014-04-15 |  |  |
| DUKHCONP03Z3ACGF4600 |  | Installation AC Pipes | 20d | 2014-01-08 | 2014-01-30 | DUKHCONP03Z3ARGF3005 SS+7d, DUKHCONP03Z3ARGF3005 FF+7d, DUKHCONP03Z2ACGF4600 | 26d |
| DUKHCONP03Z3ACGF4605 |  | Fixing of Ventilation Equipments | 25d | 2014-03-03 | 2014-03-31 | DUKHCONP03Z3ARGF3055 SS+7d, DUKHCONP03Z2ACGF4605, DUKHCONP03Z3ACGF4600 FF+10d, DUKHCONP03Z3ARGF3055 FF+7d, DUKHCONP03Z3ACGF4600 SS+10d, DUKHCONP03Z3ARGF3060 FF+7d, DUKHCONP03Z3ARGF3060 SS+7d | 11d |
| DUKHCONP03Z3ACGF4610 |  | Fixing of Split AC | 20d | 2014-03-24 | 2014-04-15 | DUKHCONP03Z3ACGF4605 FF+13d, DUKHCONP03Z3ACGF4605 SS+13d, DUKHCONP03Z2ACGF4610 | 11d |
|  | 15 | **FIRST FLOORS** |  | 2014-02-06 | 2014-05-19 |  |  |
| DUKHCONP03Z3ACFF4615 |  | Installation AC Pipes | 20d | 2014-02-06 | 2014-03-02 | DUKHCONP03Z2ACFF4615, DUKHCONP03Z3ARFF3305 SS+7d, DUKHCONP03Z3ARFF3305 FF+7d | 5d |
| DUKHCONP03Z3ACFF4620 |  | Fixing of Ventilation Equipments | 25d | 2014-04-06 | 2014-05-04 | DUKHCONP03Z2ACFF4620, DUKHCONP03Z3ARFF3360 SS+7d, DUKHCONP03Z3ARFF3355 FF+7d, DUKHCONP03Z3ARFF3360 FF+7d, DUKHCONP03Z3ACFF4615 SS+10d, DUKHCONP03Z3ACFF4615 FF+10d, DUKHCONP03Z3ARFF3355 SS+7d | -18d |
| DUKHCONP03Z3ACFF4625 |  | Fixing of Split AC | 20d | 2014-04-27 | 2014-05-19 | DUKHCONP03Z2ACFF4625, DUKHCONP03Z3ACFF4620 FF+13d, DUKHCONP03Z3ACFF4620 SS+13d | -18d |
|  | 20 | **ROOF** |  | 2014-02-17 | 2014-05-31 |  |  |
| DUKHCONP03Z3ACRF4630 |  | Installation of Refrigerant Pipes | 25d | 2014-02-17 | 2014-03-17 | DUKHCONP03Z3ACGF4600 SS+7d, DUKHCONP03Z3ACGF4600 FF+7d, DUKHCONP03Z3ARRF3645 FF+7d, DUKHCONP03Z3ARRF3645 SS+7d, DUKHCONP03Z3ACFF4615 FF+7d, DUKHCONP03Z3ACFF4615 SS+7d, DUKHCONP03Z2ACRF4630 | 46d |
| DUKHCONP03Z3ACRF4635 |  | Installation of Condensing Unit | 25d | 2014-05-03 | 2014-05-31 | DUKHCONP03Z3ACRF4630 FF+5d, DUKHCONP03Z3ACRF4630 SS+5d, DUKHCONP03Z3ACGF4610 FF+5d, DUKHCONP03Z3ACFF4625 FF+5d, DUKHCONP03Z2ACRF4635, DUKHCONP03Z3ACGF4610 SS+5d, DUKHCONP03Z3ACFF4625 SS+5d | -13d |
|  | 25 | **EXTERNAL WORKS** |  | 2014-01-05 | 2014-05-25 |  |  |
|  | 10 | **MISCELLANEOUS** |  | 2014-01-05 | 2014-04-17 |  |  |
| DUKHCONP03Z3MSEX5000 |  | Construction of Manholes | 25d | 2014-01-05 | 2014-02-02 | DUKHCONP03Z3STRF2055 FF+10d, DUKHCONP03Z3PLGF4310 FF+10d, DUKHCONP03Z3STRF2055 SS+10d, DUKHCONP03Z3PLGF4310 SS+10d | 19d |
| DUKHCONP03Z3MSEX5005 |  | Construction of Soak pit, Chambers | 25d | 2014-01-19 | 2014-02-17 | DUKHCONP03Z3MSEX5000 FF+12d, DUKHCONP03Z3MSEX5000 SS+12d | 19d |
| DUKHCONP03Z3MSEX5015 |  | Construction of grease Trap | 20d | 2014-02-08 | 2014-03-03 | DUKHCONP03Z3MSEX5005 FF+12d, DUKHCONP03Z3MSEX5005 SS+12d | 19d |
| DUKHCONP03Z3MSEX5010 |  | Telephone cable laying | 25d | 2014-03-04 | 2014-04-01 | DUKHCONP03Z3MSEX5015 | 19d |
| DUKHCONP03Z3MSEX5020 |  | Construction Entrance Ramp | 25d | 2014-03-09 | 2014-04-06 | DUKHCONP03Z3STRF2055 SS, DUKHCONP03Z2MSEX5020, DUKHCONP03Z3STRF2055 FF | -6d |
| DUKHCONP03Z3MSEX5025 |  | SS.Handrails and Balustrades | 20d | 2014-03-26 | 2014-04-17 | DUKHCONP03Z3MSEX5020 FF+10d, DUKHCONP03Z3MSEX5020 SS+10d | -6d |
|  | 15 | **DOMESTIC WATER TANK & PUMP ROOM** |  | 2014-01-07 | 2014-05-25 |  |  |
| DUKHCONP03Z3WTEX5030 |  | Excavation | 20d | 2014-01-07 | 2014-01-29 | DUKHCONP03Z3STRF2055 SS+5d, DUKHCONP03Z3STRF2065 SS+5d, DUKHCONP03Z2WTEX5030, DUKHCONP03Z3STRF2055 FF+5d | 31d |
| DUKHCONP03Z3WTEX5035 |  | Construction of Raft | 25d | 2014-01-13 | 2014-02-10 | DUKHCONP03Z3WTEX5030 FF+10d, DUKHCONP03Z3WTEX5030 SS+5d | 31d |
| DUKHCONP03Z3WTEX5040 |  | Block works & Plastering | 25d | 2014-01-22 | 2014-02-20 | DUKHCONP03Z3WTEX5035 FF+8d, DUKHCONP03Z3WTEX5035 SS+8d | 31d |
| DUKHCONP03Z3WTEX5070 |  | Domestic Water Tank Plumbings works | 25d | 2014-01-30 | 2014-03-01 | DUKHCONP03Z3WTEX5080 SS | 31d |
| DUKHCONP03Z3WTEX5075 |  | Domestic Water Tank AC works | 25d | 2014-01-30 | 2014-03-01 | DUKHCONP03Z3WTEX5070 SS | 31d |
| DUKHCONP03Z3WTEX5080 |  | Domestic Water Tank Electrical works | 25d | 2014-01-30 | 2014-03-01 | DUKHCONP03Z3WTEX5040 SS+7d | 31d |
| DUKHCONP03Z3WTEX5085 |  | Domestic Water Tank Firefighting works | 25d | 2014-01-30 | 2014-03-01 | DUKHCONP03Z3WTEX5075 SS | 31d |
| DUKHCONP03Z3WTEX5045 |  | Flooring & Painting | 25d | 2014-02-04 | 2014-03-05 | DUKHCONP03Z3WTEX5040 FF+10d, DUKHCONP03Z3WTEX5040 SS+10d, DUKHCONP03Z3WTEX5085 FF+4d | 31d |
| DUKHCONP03Z3WTEX5050 |  | Installation of Steel Gate | 20d | 2014-04-07 | 2014-04-29 | DUKHCONP03Z3WTEX5045 FF+10d, DUKHCONP03Z3WTEX5045 SS+5d, DUKHCONP03Z3MSEX5025 FF+10d | -6d |
| DUKHCONP03Z3WTEX5060 |  | Structural steel & SS Shed cover installation | 25d | 2014-04-15 | 2014-05-13 | DUKHCONP03Z3WTEX5050 FF+10d, DUKHCONP03Z2WTEX5060, DUKHCONP03Z3WTEX5050 SS+5d, DUKHCONP03Z3MSEX5025 FF+10d | -8d |
| DUKHCONP03Z3WTEX5065 |  | Install. of Water Tank,Chiller,Pump & Meter | 25d | 2014-04-27 | 2014-05-25 | DUKHCONP03Z3WTEX5060 FF+10d, DUKHCONP03Z3PLRF4350 SS+5d, DUKHCONP03Z3PLRF4350 FF+5d, DUKHCONP03Z3MSEX5015 SS+5d, DUKHCONP03Z2WTEX5065, DUKHCONP03Z3MSEX5015 FF+5d, DUKHCONP03Z3WTEX5060 SS+10d | -8d |
|  | 30 | **TESTING AND COMMISSIONING** |  | 2014-06-17 | 2014-07-15 |  |  |
| DUKHCONP03Z3ACTC8000 |  | Pre-Commissioning & Testing of AC Works | 25d | 2014-06-17 | 2014-07-15 | DUKHCONP03Z3ARRF3620, DUKHCONP03Z3ARFF3395, DUKHCONP03Z3ARRF3660, DUKHCONP03Z3MSEX5005, DUKHCONP03Z2ACTC8000, DUKHCONP03Z3AREL3680, DUKHCONP03Z3ARGF3095, DUKHCONP03Z3ACRF4635, DUKHCONP03Z3ARRF3655, DUKHCONP03Z3ACFF4625 | -27d |
| DUKHCONP03Z3ELTC8010 |  | Pre-Commissioning & Testing of Electrical Works | 25d | 2014-06-17 | 2014-07-15 | DUKHCONP03Z3ARRF3620, DUKHCONP03Z3ARFF3395, DUKHCONP03Z3ARRF3655, DUKHCONP03Z2ELTC8010, DUKHCONP03Z3AREL3680, DUKHCONP03Z3ARRF3660, DUKHCONP03Z3ELFF4065, DUKHCONP03Z3ELRF4075, DUKHCONP03Z3MSEX5005, DUKHCONP03Z3ELGF4030, DUKHCONP03Z3ARGF3095, DUKHCONP03Z3ELFF4050, DUKHCONP03Z3ELFF4055, DUKHCONP03Z3ELGF4015, DUKHCONP03Z3ELGF4025 | -27d |
| DUKHCONP03Z3PLTC8005 |  | Pre-Commissioning & Testing of Plumbing Works | 25d | 2014-06-17 | 2014-07-15 | DUKHCONP03Z3ARRF3620, DUKHCONP03Z3ARRF3660, DUKHCONP03Z3PLRF4355, DUKHCONP03Z3MSEX5005, DUKHCONP03Z3AREL3680, DUKHCONP03Z2PLTC8005, DUKHCONP03Z3ARFF3395, DUKHCONP03Z3ARRF3655, DUKHCONP03Z3PLGF4320, DUKHCONP03Z3WTEX5065, DUKHCONP03Z3ARGF3095, DUKHCONP03Z3PLRF4350 | -27d |
|  | 25 | **ZONE - 4 (3 Apartments)** |  | 2013-04-27 | 2014-08-17 |  |  |
|  | 10 | **STRUCTURAL WORKS** |  | 2013-04-27 | 2014-03-01 |  |  |
|  | 10 | **SUB STRUCTURE** |  | 2013-04-27 | 2013-10-15 |  |  |
|  | 10 | **UPTO GRADE SLAB** |  | 2013-04-27 | 2013-10-15 |  |  |
| DUKHCONP03Z4STUG1000 |  | Footing Excavation | 25d | 2013-04-27 | 2013-05-25 | DUKHCONP03Z3STUG1000 | 1d |
| DUKHCONP03Z4STUG1005 |  | Footing Antitermite | 23d | 2013-05-07 | 2013-06-02 | DUKHCONP03Z4STUG1000 SS+9d, DUKHCONP03Z4STUG1000 FF+5d | 1d |
| DUKHCONP03Z4STUG1010 |  | Footing Blinding | 23d | 2013-05-11 | 2013-06-05 | DUKHCONP03Z4STUG1005 SS+3d, DUKHCONP03Z4STUG1005 FF+3d | 1d |
| DUKHCONP03Z4STUG1015 |  | Footing Waterproofing & Screed | 25d | 2013-05-16 | 2013-06-13 | DUKHCONP03Z4STUG1010 FF+5d, DUKHCONP03Z4STUG1010 SS+5d | 1d |
| DUKHCONP03Z4STUG1020 |  | Construction of foundations | 20d | 2013-06-01 | 2013-06-23 | DUKHCONP03Z4STUG1015 SS+7d, DUKHCONP03Z4STUG1015 FF+8d | 1d |
| DUKHCONP03Z4STUG1025 |  | Construction of neck of columns | 25d | 2013-07-02 | 2013-07-30 | DUKHCONP03Z3STUG1025, DUKHCONP03Z4STUG1020 FF+7d, DUKHCONP03Z4STUG1020 SS+8d | -18d |
| DUKHCONP03Z4STUG1030 |  | Waterproofing Footing & Neck Column | 25d | 2013-07-11 | 2013-08-08 | DUKHCONP03Z4STUG1025 FF+8d, DUKHCONP03Z4STUG1025 SS+8d | -18d |
| DUKHCONP03Z4STUG1035 |  | Backfilling Upto Grade Beam Bottom | 25d | 2013-08-01 | 2013-09-02 | DUKHCONP03Z4STUG1030 SS+9d, DUKHCONP03Z3STUG1035, DUKHCONP03Z4STUG1030 FF+9d | -27d |
| DUKHCONP03Z4STUG1040 |  | Construction of Grade Beams | 25d | 2013-08-21 | 2013-09-18 | DUKHCONP03Z4STUG1035 SS+14d, DUKHCONP03Z4STUG1035 FF+14d | -27d |

| ID | WBS | Task | Duration | Start | Finish | Predecessors | Total float |
| --- | --- | --- | --- | --- | --- | --- | --- |
| DUKHCONP03Z4STUG1045 |  | Construction of slab on grade | 25d | 2013-09-17 | 2013-10-15 | DUKHCONP03Z4PLUG4300 FF+8d, DUKHCONP03Z3STUG1045, DUKHCONP03Z4STUG1040 FF+10d, DUKHCONP03Z4STUG1040 SS+10d, DUKHCONP03Z4PLUG4300 SS+8d | -27d |
|  | 15 | **SUPERSTRUCTURE** |  | 2013-10-03 | 2014-03-01 |  |  |
|  | 10 | **GROUND FLOOR** |  | 2013-10-03 | 2013-12-01 |  |  |
| DUKHCONP03Z4STGF2000 |  | Column-Rebar & Formwork | 25d | 2013-10-03 | 2013-11-03 | DUKHCONP03Z3STGF2000, DUKHCONP03Z4STUG1045 FF+7d, DUKHCONP03Z4STUG1045 SS+14d | -27d |
| DUKHCONP03Z4STGF2005 |  | Column-Concrete | 24d | 2013-10-13 | 2013-11-11 | DUKHCONP03Z4STGF2000 FF+2d, DUKHCONP03Z4STGF2000 SS+8d | -27d |
| DUKHCONP03Z4STGF2010 |  | Beam, Stairs ,Slab-Rebar & Formwork | 25d | 2013-10-30 | 2013-11-27 | DUKHCONP03Z4STGF2005 SS+2d, DUKHCONP03Z4STGF2005 FF+14d | -27d |
| DUKHCONP03Z4STGF2015 |  | Beam, Stairs ,Slab-Concrete | 15d | 2013-11-14 | 2013-12-01 | DUKHCONP03Z4STGF2010 FF+3d, DUKHCONP03Z4STGF2010 SS+10d, DUKHCONP03Z3STGF2015 | -27d |
|  | 15 | **FIRST FLOORS** |  | 2013-11-17 | 2014-01-20 |  |  |
| DUKHCONP03Z4STFF2020 |  | Column-Rebar & Formwork | 25d | 2013-11-17 | 2013-12-15 | DUKHCONP03Z4STGF2015 SS+2d, DUKHCONP03Z3STFF2020, DUKHCONP03Z4STGF2015 FF+5d | -27d |
| DUKHCONP03Z4STFF2025 |  | Column-Concrete | 24d | 2013-11-27 | 2013-12-25 | DUKHCONP03Z4STFF2020 FF+2d, DUKHCONP03Z4STFF2020 SS+9d | -27d |
| DUKHCONP03Z4STFF2030 |  | Beam, Stairs ,Slab-Rebar & Formwork | 25d | 2013-12-12 | 2014-01-11 | DUKHCONP03Z4STFF2025 FF+14d, DUKHCONP03Z4STFF2025 SS+2d | -27d |
| DUKHCONP03Z4STFF2035 |  | Beam, Stairs ,Slab-Concrete | 15d | 2014-01-04 | 2014-01-20 | DUKHCONP03Z3STFF2035, DUKHCONP03Z4STFF2030 SS+10d, DUKHCONP03Z4STFF2030 FF+8d | -27d |
|  | 20 | **ROOF** |  | 2014-01-06 | 2014-03-01 |  |  |
| DUKHCONP03Z4STRF2040 |  | Column-Rebar & Formwork | 18d | 2014-01-06 | 2014-01-26 | DUKHCONP03Z4STFF2035 SS+2d, DUKHCONP03Z4STFF2035 FF+3d, DUKHCONP03Z3STRF2040 | -5d |
| DUKHCONP03Z4STRF2045 |  | Column-Concrete | 17d | 2014-01-09 | 2014-01-28 | DUKHCONP03Z4STRF2040 SS+3d, DUKHCONP03Z4STRF2040 FF+1d | 0d |
| DUKHCONP03Z4STRF2050 |  | Slab-Rebar & Formwork | 20d | 2014-01-12 | 2014-02-03 | DUKHCONP03Z4STRF2045 FF+5d, DUKHCONP03Z4STRF2045 SS+2d | 0d |
| DUKHCONP03Z4STRF2055 |  | Slab-Concrete | 13d | 2014-01-22 | 2014-02-05 | DUKHCONP03Z3STRF2055, DUKHCONP03Z4STRF2050 FF+2d, DUKHCONP03Z4STRF2050 SS+5d | 0d |
| DUKHCONP03Z4STRF2060 |  | Construction of Parapets | 25d | 2014-01-25 | 2014-02-23 | DUKHCONP03Z4STRF2055 SS+2d, DUKHCONP03Z4STRF2055 FF+10d | 31d |
| DUKHCONP03Z4STRF2065 |  | Construction of up stands/Plinth | 25d | 2014-01-30 | 2014-03-01 | DUKHCONP03Z3STRF2065, DUKHCONP03Z4STRF2060 FF+5d, DUKHCONP03Z4STRF2060 SS+5d | 31d |
|  | 15 | **FINISHING WORKS** |  | 2013-12-16 | 2014-07-15 |  |  |
|  | 10 | **INTERNAL FINISHES** |  | 2013-12-16 | 2014-07-15 |  |  |
|  | 10 | **GROUND FLOOR** |  | 2013-12-16 | 2014-06-08 |  |  |
| DUKHCONP03Z4ARGF3000 |  | Block work | 25d | 2013-12-16 | 2014-01-14 | DUKHCONP03Z3ARGF3000, DUKHCONP03Z4STGF2015 FF+21d, DUKHCONP03Z4STGF2015 SS+21d | 9d |
| DUKHCONP03Z4ARGF3005 |  | Plastering work | 25d | 2014-01-08 | 2014-02-05 | DUKHCONP03Z4PLGF4305 SS+5d, DUKHCONP03Z4PLGF4305 FF+5d, DUKHCONP03Z4ARGF3000 FF+7d, DUKHCONP03Z4ELGF4000 SS+5d, DUKHCONP03Z4ELGF4000 FF+5d, DUKHCONP03Z4ARGF3000 SS+7d, DUKHCONP03Z3ARGF3005 | 9d |
| DUKHCONP03Z4ARGF3010 |  | Flooring screed | 21d | 2014-01-16 | 2014-02-09 | DUKHCONP03Z4ARGF3005 FF+3d, DUKHCONP03Z4ARGF3005 SS+7d | 17d |
| DUKHCONP03Z4ARGF3015 |  | Wet area waterproofing & Protection Screed | 15d | 2014-01-26 | 2014-02-12 | DUKHCONP03Z4ARGF3005 SS+7d, DUKHCONP03Z4ARGF3005 FF+5d, DUKHCONP03Z3ARGF3015 | 9d |
| DUKHCONP03Z4ARGF3020 |  | Ceramic Wall Tiling | 25d | 2014-02-01 | 2014-03-02 | DUKHCONP03Z4ARGF3015 SS+5d, DUKHCONP03Z4PLGF4305 SS+4d, DUKHCONP03Z4PLGF4310 SS+4d, DUKHCONP03Z4ARGF3015 FF+5d, DUKHCONP03Z3ARGF3020, DUKHCONP03Z4PLGF4305 FF+4d, DUKHCONP03Z4PLGF4310 FF+4d | 9d |
| DUKHCONP03Z4ARGF3025 |  | Porcelain Tile flooring | 25d | 2014-02-06 | 2014-03-08 | DUKHCONP03Z3ARGF3025, DUKHCONP03Z4ARGF3010 FF+10d, DUKHCONP03Z4ARGF3010 SS+10d, DUKHCONP03Z4ARGF3020 FF+5d, DUKHCONP03Z4ARGF3020 SS+5d | 9d |
| DUKHCONP03Z4ARGF3030 |  | Paint First coat | 25d | 2014-02-19 | 2014-03-19 | DUKHCONP03Z4ARGF3005 FF+14d, DUKHCONP03Z3ARGF3030, DUKHCONP03Z4ARGF3005 SS+14d | 2d |
| DUKHCONP03Z4ARGF3035 |  | Slate Tile Flooring & Skirting | 15d | 2014-02-27 | 2014-03-16 | DUKHCONP03Z4ARGF3010 FF+13d, DUKHCONP03Z4ARGF3010 SS+13d, DUKHCONP03Z4ARGF3025 FF+7d, DUKHCONP03Z4ARGF3025 SS+13d | 15d |
| DUKHCONP03Z4ARGF3045 |  | Fixing of Suspension systems | 20d | 2014-03-05 | 2014-03-27 | DUKHCONP03Z4ARGF3025 FF+10d, DUKHCONP03Z4ELGF4010 SS+5d, DUKHCONP03Z4ARGF3030 FF+7d, DUKHCONP03Z4ARGF3030 SS+7d, DUKHCONP03Z4ARGF3025 SS+10d, DUKHCONP03Z3ARGF3045, DUKHCONP03Z4ELGF4010 FF+5d | 2d |
| DUKHCONP03Z4ARGF3040 |  | Cobble Tile flooring | 15d | 2014-03-06 | 2014-03-23 | DUKHCONP03Z4ARGF3010 FF+13d, DUKHCONP03Z4ARGF3035 FF+4d, DUKHCONP03Z4ARGF3035 SS+4d, DUKHCONP03Z4ARGF3010 SS+13d, DUKHCONP03Z4ARGF3025 FF+13d, DUKHCONP03Z4ARGF3025 SS+13d | 13d |
| DUKHCONP03Z4ARGF3055 |  | Aluminum tile false ceiling | 25d | 2014-03-13 | 2014-04-10 | DUKHCONP03Z4ARGF3045 FF+7d, DUKHCONP03Z4ARGF3045 SS+7d, DUKHCONP03Z4ACGF4600 SS+7d, DUKHCONP03Z4ACGF4600 FF+7d | 5d |
| DUKHCONP03Z4ARGF3050 |  | Granite - Stair case flooring & Skirting | 20d | 2014-03-15 | 2014-04-06 | DUKHCONP03Z4ARGF3040 SS+7d, DUKHCONP03Z4ARGF3025 FF+13d, DUKHCONP03Z4ARGF3025 SS+13d, DUKHCONP03Z4ARGF3040 FF+7d | 13d |
| DUKHCONP03Z4ARGF3060 |  | Gypsum board false ceiling | 25d | 2014-03-17 | 2014-04-14 | DUKHCONP03Z4ACGF4600 SS+7d, DUKHCONP03Z4ARGF3045 SS+10d, DUKHCONP03Z4ARGF3045 FF+10d, DUKHCONP03Z3ARGF3060, DUKHCONP03Z4ACGF4600 FF+7d | 2d |
| DUKHCONP03Z4ARGF3065 |  | Wooden door | 15d | 2014-03-29 | 2014-04-14 | DUKHCONP03Z4ARGF3035 SS+7d, DUKHCONP03Z4ARGF3050 SS+7d, DUKHCONP03Z4ARGF3035 FF+7d, DUKHCONP03Z4ARGF3050 FF+7d, DUKHCONP03Z3ARGF3065 | 13d |
| DUKHCONP03Z4ARGF3070 |  | Aluminum doors | 15d | 2014-04-03 | 2014-04-20 | DUKHCONP03Z4ARGF3065 SS+5d, DUKHCONP03Z4ARGF3065 FF+5d, DUKHCONP03Z3ARGF3070 | 13d |
| DUKHCONP03Z4ARGF3075 |  | Carpentry & Joinery Works | 20d | 2014-04-09 | 2014-05-01 | DUKHCONP03Z4ARGF3070 FF+7d, DUKHCONP03Z3ARGF3075, DUKHCONP03Z4ARGF3070 SS+5d | 13d |
| DUKHCONP03Z4ARGF3080 |  | Aluminum windows | 20d | 2014-04-10 | 2014-05-03 | DUKHCONP03Z4ARGF3070 FF+6d, DUKHCONP03Z3ARGF3080, DUKHCONP03Z4ARGF3070 SS+6d | 23d |
| DUKHCONP03Z4ARGF3085 |  | S.S.Balustrade | 20d | 2014-04-17 | 2014-05-10 | DUKHCONP03Z4ARGF3075 FF+7d, DUKHCONP03Z4ARGF3050 SS+7d, DUKHCONP03Z4ARGF3075 SS+7d, DUKHCONP03Z4ARGF3050 FF+7d | 18d |
| DUKHCONP03Z4ARGF3090 |  | Installation of Granite Counter Top | 15d | 2014-04-22 | 2014-05-08 | DUKHCONP03Z4ARGF3075 FF+6d, DUKHCONP03Z4ARGF3075 SS+7d | 13d |
| DUKHCONP03Z4ARGF3095 |  | Final Painting | 25d | 2014-05-11 | 2014-06-08 | DUKHCONP03Z4ARGF3060 FF+8d, DUKHCONP03Z4ARGF3070 SS+5d, DUKHCONP03Z4ARGF3080 FF+8d, DUKHCONP03Z4ARGF3085 SS+7d, DUKHCONP03Z4ACGF4610 SS+10d, DUKHCONP03Z4ARGF3030 SS+10d, DUKHCONP03Z4ARGF3040 SS+13d, DUKHCONP03Z3ARGF3095, DUKHCONP03Z4ARGF3040 FF+13d, DUKHCONP03Z4ARGF3090 SS+8d, DUKHCONP03Z4ARGF3085 FF+7d, DUKHCONP03Z4ARGF3035 SS+13d, DUKHCONP03Z4ARGF3070 FF+5d, DUKHCONP03Z4ARGF3080 SS+8d, DUKHCONP03Z4ACGF4610 FF+10d, DUKHCONP03Z4ARGF3030 FF+10d, DUKHCONP03Z4ARGF3035 FF+13d, DUKHCONP03Z4ARGF3060 SS+8d, DUKHCONP03Z4ARGF3090 FF+8d | 5d |
|  | 15 | **FIRST FLOORS** |  | 2014-01-28 | 2014-07-15 |  |  |
| DUKHCONP03Z4ARFF3300 |  | Block work | 25d | 2014-01-28 | 2014-02-26 | DUKHCONP03Z4STFF2020 SS+21d, DUKHCONP03Z4STFF2020 FF+21d, DUKHCONP03Z4STFF2035 FF+21d, DUKHCONP03Z4STFF2035 SS+21d, DUKHCONP03Z3ARFF3300 | -27d |
| DUKHCONP03Z4ARFF3305 |  | Plastering work | 25d | 2014-02-23 | 2014-03-23 | DUKHCONP03Z4PLFF4325 FF+8d, DUKHCONP03Z4ARFF3300 SS+7d, DUKHCONP03Z4ARFF3300 FF+7d, DUKHCONP03Z4ELFF4035 FF+5d, DUKHCONP03Z4ELFF4035 SS+5d, DUKHCONP03Z3ARFF3305, DUKHCONP03Z4PLFF4325 SS+8d | -27d |
| DUKHCONP03Z4ARFF3310 |  | Flooring screed | 21d | 2014-03-03 | 2014-03-26 | DUKHCONP03Z4ARFF3305 SS+7d, DUKHCONP03Z4ARFF3305 FF+3d | -12d |
| DUKHCONP03Z4ARFF3330 |  | Paint First coat | 25d | 2014-03-11 | 2014-04-08 | DUKHCONP03Z4ARFF3305 SS+14d, DUKHCONP03Z4ARFF3305 FF+14d | -9d |
| DUKHCONP03Z4ARFF3315 |  | Wet area waterproofing | 15d | 2014-03-16 | 2014-04-01 | DUKHCONP03Z3ARFF3315, DUKHCONP03Z4ARFF3305 FF+8d, DUKHCONP03Z4ARFF3305 SS+7d | -27d |
| DUKHCONP03Z4ARFF3320 |  | Ceramic Wall Tiling | 25d | 2014-03-25 | 2014-04-22 | DUKHCONP03Z4PLFF4325 SS+4d, DUKHCONP03Z4PLFF4330 SS+7d, DUKHCONP03Z4ARFF3315 SS+8d, DUKHCONP03Z3ARFF3320, DUKHCONP03Z4PLFF4325 FF+4d, DUKHCONP03Z4PLFF4330 FF+7d, DUKHCONP03Z4ARFF3315 FF+7d | -27d |
| DUKHCONP03Z4ARFF3325 |  | Porcelain Tile flooring | 25d | 2014-04-01 | 2014-04-29 | DUKHCONP03Z3ARFF3325, DUKHCONP03Z4ARFF3310 FF+10d, DUKHCONP03Z4ARFF3310 SS+10d, DUKHCONP03Z4ARFF3320 FF+6d, DUKHCONP03Z4ARFF3320 SS+6d | -27d |
| DUKHCONP03Z4ARFF3345 |  | Fixing of Suspension systems | 20d | 2014-04-15 | 2014-05-07 | DUKHCONP03Z3ARFF3345, DUKHCONP03Z4ARFF3330 FF+7d, DUKHCONP03Z4ELFF4045 FF+5d, DUKHCONP03Z4ARFF3325 SS+7d, DUKHCONP03Z4ELFF4045 SS+5d, DUKHCONP03Z4ARFF3325 FF+7d, DUKHCONP03Z4ARFF3330 SS+7d | -27d |
| DUKHCONP03Z4ARFF3335 |  | Slate Tile Flooring & Skirting | 15d | 2014-04-19 | 2014-05-05 | DUKHCONP03Z4ARFF3310 FF+13d, DUKHCONP03Z4ARFF3325 FF+5d, DUKHCONP03Z4ARFF3310 SS+13d, DUKHCONP03Z4ARFF3325 SS+13d | -17d |
| DUKHCONP03Z4ARFF3350 |  | Granite - Stair case flooring & Skirting | 20d | 2014-04-22 | 2014-05-14 | DUKHCONP03Z4ARFF3325 FF+13d, DUKHCONP03Z4ARFF3325 SS+13d | -25d |
| DUKHCONP03Z4ARFF3360 |  | Gypsum board false ceiling | 25d | 2014-04-23 | 2014-05-21 | DUKHCONP03Z4ACFF4615 FF+7d, DUKHCONP03Z4ARFF3345 FF+7d, DUKHCONP03Z4ACFF4615 SS+7d, DUKHCONP03Z3ARFF3360, DUKHCONP03Z4ARFF3345 SS+7d | -27d |
| DUKHCONP03Z4ARFF3355 |  | Aluminum tile false ceiling | 20d | 2014-04-27 | 2014-05-19 | DUKHCONP03Z4ARFF3345 FF+10d, DUKHCONP03Z4ACFF4615 SS+7d, DUKHCONP03Z4ARFF3345 SS+10d, DUKHCONP03Z3ARFF3355, DUKHCONP03Z4ACFF4615 FF+7d | -25d |
| DUKHCONP03Z4ARFF3365 |  | Wooden door | 15d | 2014-05-08 | 2014-05-25 | DUKHCONP03Z3ARFF3365, DUKHCONP03Z4ARFF3350 SS+7d, DUKHCONP03Z4ARFF3335 SS+7d, DUKHCONP03Z4ARFF3360 FF+3d, DUKHCONP03Z4ARFF3355 SS+3d, DUKHCONP03Z4ARFF3350 FF+7d, DUKHCONP03Z4ARFF3360 SS+3d, DUKHCONP03Z4ARFF3335 FF+7d, DUKHCONP03Z4ARFF3355 FF+3d | -27d |
| DUKHCONP03Z4ARFF3370 |  | Aluminum Door | 20d | 2014-05-17 | 2014-06-08 | DUKHCONP03Z3ARFF3370, DUKHCONP03Z4ARFF3365 FF+5d, DUKHCONP03Z4ARFF3365 SS+7d | -27d |
| DUKHCONP03Z4ARFF3380 |  | Aluminum windows | 20d | 2014-05-24 | 2014-06-15 | DUKHCONP03Z4ARFF3370 SS+6d, DUKHCONP03Z4ARFF3370 FF+6d | -16d |
| DUKHCONP03Z4ARFF3375 |  | Carpentry & Joinery Works | 25d | 2014-05-25 | 2014-06-22 | DUKHCONP03Z4ARFF3370 FF+5d, DUKHCONP03Z3ARFF3375, DUKHCONP03Z4ARFF3370 SS+7d | -27d |
| DUKHCONP03Z4ARFF3385 |  | Handrail & Balustrade | 20d | 2014-06-05 | 2014-06-28 | DUKHCONP03Z4ARFF3375 SS+5d, DUKHCONP03Z4ARFF3350 SS+7d, DUKHCONP03Z4ARFF3350 FF+7d, DUKHCONP03Z4ARFF3375 FF+5d | -27d |
| DUKHCONP03Z4ARFF3390 |  | Installation of Granite Counter Top | 20d | 2014-06-08 | 2014-06-30 | DUKHCONP03Z4ARFF3375 SS+7d, DUKHCONP03Z4ARFF3375 FF+7d | -27d |
| DUKHCONP03Z4ARFF3395 |  | Final Painting | 25d | 2014-06-17 | 2014-07-15 | DUKHCONP03Z4ARFF3360 FF+10d, DUKHCONP03Z4ARFF3380 SS+10d, DUKHCONP03Z4ARFF3380 FF+10d, DUKHCONP03Z4ARFF3375 SS+8d, DUKHCONP03Z4ARFF3365 FF+8d, DUKHCONP03Z4ARFF3335 SS+8d, DUKHCONP03Z4ARFF3365 SS+8d, DUKHCONP03Z4ARFF3375 FF+8d, DUKHCONP03Z4ACFF4625 FF+10d, DUKHCONP03Z4ARFF3335 FF+8d, DUKHCONP03Z4ARFF3355 SS+10d, DUKHCONP03Z4ARFF3385 SS+10d, DUKHCONP03Z4ARFF3350 FF+8d, DUKHCONP03Z4ARFF3355 FF+10d, DUKHCONP03Z4ARFF3350 SS+8d, DUKHCONP03Z4ARFF3360 SS+10d, DUKHCONP03Z4ARFF3385 FF+10d, DUKHCONP03Z3ARFF3395, DUKHCONP03Z4ARFF3330 SS+10d, DUKHCONP03Z4ARFF3390 SS+8d, DUKHCONP03Z4ACFF4625 SS+10d, DUKHCONP03Z4ARFF3330 FF+10d, DUKHCONP03Z4ARFF3390 FF+8d | -27d |
|  | 20 | **ROOF** |  | 2014-02-17 | 2014-04-22 |  |  |
| DUKHCONP03Z4ARRF3600 |  | Block work | 20d | 2014-02-17 | 2014-03-11 | DUKHCONP03Z3ARRF3600, DUKHCONP03Z4STRF2055 SS+21d, DUKHCONP03Z4STRF2055 FF+21d | 40d |
| DUKHCONP03Z4ARRF3605 |  | Plastering work | 20d | 2014-02-25 | 2014-03-19 | DUKHCONP03Z4ARRF3600 FF+7d, DUKHCONP03Z4ARRF3600 SS+7d | 40d |
| DUKHCONP03Z4ARRF3610 |  | Flooring screed | 15d | 2014-03-11 | 2014-03-27 | DUKHCONP03Z4ARRF3605 SS+7d, DUKHCONP03Z4ARRF3605 FF+7d | 45d |
| DUKHCONP03Z4ARRF3695 |  | Painting | 20d | 2014-03-19 | 2014-04-10 | DUKHCONP03Z4ARRF3610 FF+7d, DUKHCONP03Z4ARRF3610 SS+7d | 45d |
| DUKHCONP03Z4ARRF3620 |  | Epoxy Painting | 15d | 2014-04-06 | 2014-04-22 | DUKHCONP03Z4ARRF3695 SS+10d, DUKHCONP03Z4ARRF3695 FF+10d | 45d |
|  | 15 | **EXTERNAL FINISHES** |  | 2014-02-23 | 2014-05-12 |  |  |
|  | 10 | **ROOF** |  | 2014-02-23 | 2014-04-28 |  |  |

| ID | WBS | Task | Duration | Start | Finish | Predecessors | Total float |
| --- | --- | --- | --- | --- | --- | --- | --- |
| DUKHCONP03Z4ARRF3630 |  | Leveling Screed for Waterproofing | 25d | 2014-02-23 | 2014-03-23 | DUKHCONP03Z4STRF2060 SS+10d, DUKHCONP03Z3ARRF3630, DUKHCONP03Z4STRF2065 SS+10d, DUKHCONP03Z4STRF2060 FF+10d, DUKHCONP03Z4STRF2065 FF+10d | 35d |
| DUKHCONP03Z4ARRF3635 |  | Laying of Waterproofing Membrane | 25d | 2014-02-26 | 2014-03-26 | DUKHCONP03Z4ARRF3630 FF+3d, DUKHCONP03Z4ARRF3630 SS+3d | 35d |
| DUKHCONP03Z4ARRF3640 |  | Installation of Insulation & Protection | 25d | 2014-03-03 | 2014-03-31 | DUKHCONP03Z4ARRF3635 SS+4d, DUKHCONP03Z4ARRF3635 FF+4d | 35d |
| DUKHCONP03Z4ARRF3645 |  | Lime Stone Chips & Paving slab Installation | 25d | 2014-03-08 | 2014-04-05 | DUKHCONP03Z4ARRF3640 SS+4d, DUKHCONP03Z4ARRF3640 FF+4d | 35d |
| DUKHCONP03Z4ARRF3650 |  | Install. of Gal. Frame & Aluminum Slat Screen | 25d | 2014-03-16 | 2014-04-13 | DUKHCONP03Z4ARRF3645 SS+7d, DUKHCONP03Z4ARRF3645 FF+7d | 35d |
| DUKHCONP03Z4ARRF3655 |  | Installation of Pumps Protection cabinets | 20d | 2014-03-31 | 2014-04-22 | DUKHCONP03Z4ARRF3650 SS+8d, DUKHCONP03Z3ARRF3655, DUKHCONP03Z4ARRF3650 FF+8d, DUKHCONP03Z4ARRF3645 SS+7d, DUKHCONP03Z4ARRF3645 FF+7d | 35d |
| DUKHCONP03Z4ARRF3660 |  | Installation of Access Ladder | 15d | 2014-04-12 | 2014-04-28 | DUKHCONP03Z4ARRF3655 FF+5d, DUKHCONP03Z4ARRF3655 SS+5d | 40d |
|  | 15 | **ELEVATION** |  | 2014-03-22 | 2014-05-12 |  |  |
| DUKHCONP03Z4AREL3665 |  | External Plastering | 25d | 2014-03-22 | 2014-04-19 | DUKHCONP03Z3AREL3665, DUKHCONP03Z4ARFF3305 FF+7d, DUKHCONP03Z4STRF2065 SS+7d, DUKHCONP03Z4STRF2065 FF+7d, DUKHCONP03Z4ARRF3605 SS+7d, DUKHCONP03Z4ARFF3305 SS+7d | 26d |
| DUKHCONP03Z4AREL3675 |  | GRC Panel Works | 20d | 2014-04-08 | 2014-04-30 | DUKHCONP03Z4AREL3665 SS+10d, DUKHCONP03Z4AREL3665 FF+10d, DUKHCONP03Z3AREL3675 | 28d |
| DUKHCONP03Z4AREL3680 |  | External Painting | 20d | 2014-04-20 | 2014-05-12 | DUKHCONP03Z4ARRF3695 SS+4d, DUKHCONP03Z4AREL3675 SS+10d, DUKHCONP03Z3AREL3680, DUKHCONP03Z4ARRF3695 FF+4d, DUKHCONP03Z4AREL3675 FF+10d | 28d |
|  | 20 | **MEP WORKS** |  | 2013-09-08 | 2014-07-13 |  |  |
|  | 10 | **ELECTRICAL WORKS** |  | 2013-12-23 | 2014-07-13 |  |  |
|  | 10 | **GROUND FLOOR** |  | 2013-12-23 | 2014-05-17 |  |  |
| DUKHCONP03Z4ELGF4000 |  | Fixing of wall conduits & switch socket boxes | 25d | 2013-12-23 | 2014-01-20 | DUKHCONP03Z4ARGF3000 FF+5d, DUKHCONP03Z4ARGF3000 SS+5d | 18d |
| DUKHCONP03Z4ELGF4005 |  | Cable tray & trunking installation | 20d | 2014-01-04 | 2014-01-26 | DUKHCONP03Z4ELGF4000 FF+5d, DUKHCONP03Z4ELGF4000 SS+5d, DUKHCONP03Z3ELGF4005 | 36d |
| DUKHCONP03Z4ELGF4010 |  | Installation of wiring & Main Cabling | 25d | 2014-01-12 | 2014-02-09 | DUKHCONP03Z4ELGF4005 SS+7d, DUKHCONP03Z4ELGF4005 FF+7d | 36d |
| DUKHCONP03Z4ELGF4020 |  | Installation of DBS,MCCB Accessories. | 20d | 2014-03-31 | 2014-04-22 | DUKHCONP03Z4ELGF4010 SS+5d, DUKHCONP03Z4ARGF3055 SS+7d, DUKHCONP03Z4ELGF4010 FF+5d, DUKHCONP03Z4ARGF3060 FF+7d, DUKHCONP03Z4ARGF3060 SS+7d, DUKHCONP03Z4ARGF3055 FF+7d | 2d |
| DUKHCONP03Z4ELGF4015 |  | Install. of CAMS & Fire Fighting Accessories | 25d | 2014-04-01 | 2014-04-29 | DUKHCONP03Z4ARGF3055 SS+7d, DUKHCONP03Z4ARGF3060 SS+7d, DUKHCONP03Z4ARGF3060 FF+7d, DUKHCONP03Z4ARGF3055 FF+7d, DUKHCONP03Z3ELGF4015 | 9d |
| DUKHCONP03Z4ELGF4030 |  | Installation of Telephone System | 20d | 2014-04-12 | 2014-05-04 | DUKHCONP03Z4ARGF3060 FF+5d, DUKHCONP03Z4ARGF3060 SS+5d, DUKHCONP03Z3ELGF4030, DUKHCONP03Z4ELGF4020 FF+10d, DUKHCONP03Z4ELGF4020 SS+10d | 2d |
| DUKHCONP03Z4ELGF4025 |  | Installation of Lighting fixtures & Accessories | 25d | 2014-04-19 | 2014-05-17 | DUKHCONP03Z4ELGF4020 SS+10d, DUKHCONP03Z4ARGF3055 FF+10d, DUKHCONP03Z4ELGF4020 FF+10d, DUKHCONP03Z4ARGF3055 SS+10d, DUKHCONP03Z3ELGF4025, DUKHCONP03Z4ARGF3060 FF+10d, DUKHCONP03Z4ARGF3060 SS+10d | -2d |
|  | 15 | **FIRST FLOORS** |  | 2014-02-03 | 2014-06-18 |  |  |
| DUKHCONP03Z4ELFF4035 |  | Fixing of wall conduits & switch socket boxes | 25d | 2014-02-03 | 2014-03-04 | DUKHCONP03Z4ARFF3300 FF+5d, DUKHCONP03Z4ARFF3300 SS+5d | -16d |
| DUKHCONP03Z4ELFF4040 |  | Cable tray & trunking installation | 20d | 2014-02-16 | 2014-03-10 | DUKHCONP03Z4ELFF4035 FF+5d, DUKHCONP03Z4ELFF4035 SS+5d | 6d |
| DUKHCONP03Z4ELFF4045 |  | Installation of wiring & Main Cabling | 25d | 2014-02-27 | 2014-03-27 | DUKHCONP03Z4ELFF4040 SS+7d, DUKHCONP03Z3ELFF4045, DUKHCONP03Z4ELFF4040 FF+7d | 3d |
| DUKHCONP03Z4ELFF4050 |  | Installation of Telephone System | 25d | 2014-05-03 | 2014-05-31 | DUKHCONP03Z4ARFF3360 FF+5d, DUKHCONP03Z4MSEX5010 FF, DUKHCONP03Z4ELGF4030 SS+10d, DUKHCONP03Z4ARFF3355 FF+5d, DUKHCONP03Z4ARFF3360 SS+5d, DUKHCONP03Z4ELGF4030 FF+10d, DUKHCONP03Z4ARFF3355 SS+5d | -6d |
| DUKHCONP03Z4ELFF4055 |  | Install. of CAMS & Fire Fighting Accessories | 25d | 2014-05-05 | 2014-06-02 | DUKHCONP03Z4ELGF4015 SS+5d, DUKHCONP03Z4ARFF3355 FF+7d, DUKHCONP03Z4ELGF4015 FF+5d, DUKHCONP03Z4ARFF3360 FF+7d, DUKHCONP03Z3ELFF4055, DUKHCONP03Z4ARFF3355 SS+7d, DUKHCONP03Z4ARFF3360 SS+7d | -15d |
| DUKHCONP03Z4ELFF4060 |  | Installation of DBS,MCCB Accessories. | 20d | 2014-05-08 | 2014-05-31 | DUKHCONP03Z4ELFF4045 SS+5d, DUKHCONP03Z4ARFF3355 SS+8d, DUKHCONP03Z4ARFF3360 FF+8d, DUKHCONP03Z4ARFF3360 SS+8d, DUKHCONP03Z3ELFF4060, DUKHCONP03Z4ELFF4045 FF+5d, DUKHCONP03Z4ARFF3355 FF+8d | -25d |
| DUKHCONP03Z4ELFF4065 |  | Installation of Lighting fixtures & Accessories | 25d | 2014-05-21 | 2014-06-18 | DUKHCONP03Z4ELGF4025 SS+5d, DUKHCONP03Z4ARFF3355 SS+10d, DUKHCONP03Z4ELFF4060 FF+11d, DUKHCONP03Z4ARFF3355 FF+10d, DUKHCONP03Z4ELGF4025 FF+5d, DUKHCONP03Z4ARFF3360 FF+10d, DUKHCONP03Z3ELFF4065, DUKHCONP03Z4ELFF4060 SS+11d, DUKHCONP03Z4ARFF3360 SS+10d | -25d |
|  | 20 | **ROOF** |  | 2014-06-10 | 2014-07-13 |  |  |
| DUKHCONP03Z4ELRF4070 |  | Installation of Isolator | 18d | 2014-06-10 | 2014-06-30 | DUKHCONP03Z4ELFF4050 FF+7d, DUKHCONP03Z4ELFF4045 FF+10d, DUKHCONP03Z4ELFF4065 SS+10d, DUKHCONP03Z4ARRF3645 SS+7d, DUKHCONP03Z4ELFF4045 SS+10d, DUKHCONP03Z4ELFF4065 FF+10d, DUKHCONP03Z4ELFF4050 SS+5d, DUKHCONP03Z4ARRF3645 FF+7d | -25d |
| DUKHCONP03Z4ELRF4075 |  | Installation of TV Dish Antenna | 23d | 2014-06-17 | 2014-07-13 | DUKHCONP03Z4ELRF4070 FF+6d, DUKHCONP03Z4ELRF4070 SS+6d | -25d |
|  | 15 | **PLUMBING, DRAINAGE & FIRE FIGHTING WORKS** |  | 2013-09-08 | 2014-06-29 |  |  |
|  | 10 | **GROUND FLOOR** |  | 2013-09-08 | 2014-05-01 |  |  |
| DUKHCONP03Z4PLUG4300 |  | Drainage / Storm Pipes in Grade Slab | 20d | 2013-09-08 | 2013-09-30 | DUKHCONP03Z4STUG1040 SS+10d, DUKHCONP03Z4STUG1040 FF+10d | -27d |
| DUKHCONP03Z4PLGF4305 |  | Installation of Plumbing pipes & testing | 18d | 2014-01-02 | 2014-01-22 | DUKHCONP03Z4ARGF3000 FF+7d, DUKHCONP03Z3PLGF4305, DUKHCONP03Z4ARGF3000 SS+7d | 9d |
| DUKHCONP03Z4PLGF4310 |  | Installation of Drainage pipes &testing | 18d | 2014-01-02 | 2014-01-22 | DUKHCONP03Z4ARGF3000 FF+7d, DUKHCONP03Z4PLGF4305 FF, DUKHCONP03Z4PLGF4305 SS, DUKHCONP03Z4ARGF3000 SS+7d | 30d |
| DUKHCONP03Z4PLGF4315 |  | Sanitary Fittings & Accessories | 20d | 2014-04-03 | 2014-04-26 | DUKHCONP03Z4ARGF3065 FF+5d, DUKHCONP03Z3PLGF4315, DUKHCONP03Z4PLGF4310 FF+5d, DUKHCONP03Z4PLGF4310 SS+5d, DUKHCONP03Z4ARGF3065 SS+5d | 37d |
| DUKHCONP03Z4PLGF4320 |  | Installation of Water Heater | 15d | 2014-04-15 | 2014-05-01 | DUKHCONP03Z3PLGF4320, DUKHCONP03Z4ARGF3060 SS+5d, DUKHCONP03Z4PLGF4315 FF+5d, DUKHCONP03Z4ARGF3060 FF+5d, DUKHCONP03Z4PLGF4315 SS+5d | 37d |
|  | 15 | **FIRST FLOORS** |  | 2014-02-13 | 2014-06-11 |  |  |
| DUKHCONP03Z4PLFF4325 |  | Installation of Plumbing pipes & testing | 18d | 2014-02-13 | 2014-03-05 | DUKHCONP03Z4ARFF3300 FF+6d, DUKHCONP03Z4ARFF3300 SS+6d | -27d |
| DUKHCONP03Z4PLFF4330 |  | Installation of Drainage pipes & testing | 18d | 2014-02-15 | 2014-03-06 | DUKHCONP03Z3PLFF4330, DUKHCONP03Z4PLFF4325 SS, DUKHCONP03Z4ARFF3300 FF+7d, DUKHCONP03Z4PLFF4325 FF, DUKHCONP03Z4ARFF3300 SS+7d | -1d |
| DUKHCONP03Z4PLFF4335 |  | Sanitary Fittings & Accessories | 20d | 2014-05-14 | 2014-06-05 | DUKHCONP03Z4PLFF4330 FF+5d, DUKHCONP03Z4ARFF3365 SS+5d, DUKHCONP03Z4PLFF4330 SS+5d, DUKHCONP03Z4ARFF3365 FF+5d | -13d |
| DUKHCONP03Z4PLFF4340 |  | Installation of Water Heater | 15d | 2014-05-26 | 2014-06-11 | DUKHCONP03Z4ARFF3360 SS+5d, DUKHCONP03Z4ARFF3360 FF+5d, DUKHCONP03Z4ARFF3355 FF+5d, DUKHCONP03Z3PLFF4340, DUKHCONP03Z4ARFF3355 SS+5d, DUKHCONP03Z4PLFF4335 FF+5d, DUKHCONP03Z4PLFF4335 SS+5d | -13d |
|  | 20 | **ROOF** |  | 2014-03-11 | 2014-06-29 |  |  |
| DUKHCONP03Z4PLRF4345 |  | Installation of Plumbing pipes & fittings | 15d | 2014-03-11 | 2014-03-27 | DUKHCONP03Z4ARRF3605 SS+7d, DUKHCONP03Z4ARRF3605 FF+7d | 44d |
| DUKHCONP03Z4PLRF4350 |  | Installation of Rain water Pipes | 15d | 2014-04-10 | 2014-04-27 | DUKHCONP03Z4PLFF4330 SS+5d, DUKHCONP03Z4AREL3665 FF+7d, DUKHCONP03Z4PLFF4330 FF+5d, DUKHCONP03Z4ARRF3645 SS+5d, DUKHCONP03Z4ARRF3645 FF+5d, DUKHCONP03Z4AREL3665 SS+7d, DUKHCONP03Z3PLRF4350, DUKHCONP03Z4PLRF4345 FF+8d, DUKHCONP03Z4PLRF4345 SS+8d | 26d |
| DUKHCONP03Z4PLRF4355 |  | Roof Water Tank Installation & Connections | 25d | 2014-06-01 | 2014-06-29 | DUKHCONP03Z4PLRF4345 FF+8d, DUKHCONP03Z4PLRF4345 SS+8d, DUKHCONP03Z4PLFF4340 SS+5d, DUKHCONP03Z4PLRF4350 FF+5d, DUKHCONP03Z4PLRF4350 SS+5d, DUKHCONP03Z4ARRF3655 FF+5d, DUKHCONP03Z3PLRF4355, DUKHCONP03Z4PLFF4340 FF+5d, DUKHCONP03Z4ARRF3655 SS+5d | -13d |
|  | 20 | **AC WORKS** |  | 2014-02-01 | 2014-06-29 |  |  |
|  | 10 | **GROUND FLOOR** |  | 2014-02-01 | 2014-05-14 |  |  |
| DUKHCONP03Z4ACGF4600 |  | Installation AC Pipes | 20d | 2014-02-01 | 2014-02-24 | DUKHCONP03Z4ARGF3005 SS+7d, DUKHCONP03Z3ACGF4600, DUKHCONP03Z4ARGF3005 FF+7d | 32d |
| DUKHCONP03Z4ACGF4605 |  | Fixing of Ventilation Equipments | 25d | 2014-04-01 | 2014-04-29 | DUKHCONP03Z4ARGF3055 SS+7d, DUKHCONP03Z4ACGF4600 SS+10d, DUKHCONP03Z4ACGF4600 FF+10d, DUKHCONP03Z4ARGF3055 FF+7d, DUKHCONP03Z3ACGF4605, DUKHCONP03Z4ARGF3060 FF+7d, DUKHCONP03Z4ARGF3060 SS+7d | 11d |
| DUKHCONP03Z4ACGF4610 |  | Fixing of Split AC | 20d | 2014-04-22 | 2014-05-14 | DUKHCONP03Z4ACGF4605 SS+13d, DUKHCONP03Z3ACGF4610, DUKHCONP03Z4ACGF4605 FF+13d | 11d |
|  | 15 | **FIRST FLOORS** |  | 2014-03-09 | 2014-06-17 |  |  |
| DUKHCONP03Z4ACFF4615 |  | Installation AC Pipes | 20d | 2014-03-09 | 2014-03-31 | DUKHCONP03Z3ACFF4615, DUKHCONP03Z4ARFF3305 FF+7d, DUKHCONP03Z4ARFF3305 SS+7d | 5d |
| DUKHCONP03Z4ACFF4620 |  | Fixing of Ventilation Equipments | 25d | 2014-05-05 | 2014-06-02 | DUKHCONP03Z4ACFF4615 FF+10d, DUKHCONP03Z4ARFF3355 SS+7d, DUKHCONP03Z4ARFF3360 FF+7d, DUKHCONP03Z4ARFF3355 FF+7d, DUKHCONP03Z4ARFF3360 SS+7d, DUKHCONP03Z3ACFF4620, DUKHCONP03Z4ACFF4615 SS+10d | -18d |
| DUKHCONP03Z4ACFF4625 |  | Fixing of Split AC | 20d | 2014-05-26 | 2014-06-17 | DUKHCONP03Z4ACFF4620 SS+13d, DUKHCONP03Z3ACFF4625, DUKHCONP03Z4ACFF4620 FF+13d | -18d |
|  | 20 | **ROOF** |  | 2014-03-18 | 2014-06-29 |  |  |
| DUKHCONP03Z4ACRF4630 |  | Installation of Refrigerant Pipes | 25d | 2014-03-18 | 2014-04-15 | DUKHCONP03Z3ACRF4630, DUKHCONP03Z4ACFF4615 FF+7d, DUKHCONP03Z4ARRF3645 SS+7d, DUKHCONP03Z4ARRF3645 FF+7d, DUKHCONP03Z4ACGF4600 FF+7d, DUKHCONP03Z4ACGF4600 SS+7d, DUKHCONP03Z4ACFF4615 SS+7d | 46d |
| DUKHCONP03Z4ACRF4635 |  | Installation of Condensing Unit | 25d | 2014-06-01 | 2014-06-29 | DUKHCONP03Z4ACFF4625 FF+5d, DUKHCONP03Z4ACGF4610 FF+5d, DUKHCONP03Z3ACRF4635, DUKHCONP03Z4ACGF4610 SS+5d, DUKHCONP03Z4ACFF4625 SS+5d, DUKHCONP03Z4ACRF4630 FF+5d, DUKHCONP03Z4ACRF4630 SS+5d | -13d |
|  | 25 | **EXTERNAL WORKS** |  | 2014-02-03 | 2014-06-23 |  |  |
|  | 10 | **MISCELLANEOUS** |  | 2014-02-03 | 2014-05-17 |  |  |
| DUKHCONP03Z4MSEX5000 |  | Construction of Manholes | 25d | 2014-02-03 | 2014-03-04 | DUKHCONP03Z4STRF2055 SS+10d, DUKHCONP03Z4PLGF4310 SS+10d, DUKHCONP03Z4PLGF4310 FF+10d, DUKHCONP03Z4STRF2055 FF+10d | 20d |
| DUKHCONP03Z4MSEX5005 |  | Construction of Soak pit, Chambers | 25d | 2014-02-18 | 2014-03-18 | DUKHCONP03Z4MSEX5000 SS+12d, DUKHCONP03Z4MSEX5000 FF+12d | 20d |
| DUKHCONP03Z4MSEX5015 |  | Construction of grease Trap | 20d | 2014-03-10 | 2014-04-01 | DUKHCONP03Z4MSEX5005 FF+12d, DUKHCONP03Z4MSEX5005 SS+12d | 20d |
| DUKHCONP03Z4MSEX5010 |  | Telephone cable laying | 25d | 2014-04-02 | 2014-04-30 | DUKHCONP03Z4MSEX5015 | 20d |
| DUKHCONP03Z4MSEX5020 |  | Construction Entrance Ramp | 25d | 2014-04-07 | 2014-05-05 | DUKHCONP03Z4STRF2055 SS, DUKHCONP03Z4STRF2055 FF, DUKHCONP03Z3MSEX5020 | -6d |
| DUKHCONP03Z4MSEX5025 |  | SS.Handrails and Balustrades | 20d | 2014-04-24 | 2014-05-17 | DUKHCONP03Z4MSEX5020 FF+10d, DUKHCONP03Z4MSEX5020 SS+10d | -6d |
|  | 15 | **DOMESTIC WATER TANK & PUMP ROOM** |  | 2014-02-05 | 2014-06-23 |  |  |
| DUKHCONP03Z4WTEX5030 |  | Excavation | 20d | 2014-02-05 | 2014-03-01 | DUKHCONP03Z4STRF2055 FF+5d, DUKHCONP03Z3WTEX5030, DUKHCONP03Z4STRF2065 SS+5d, DUKHCONP03Z4STRF2055 SS+5d | 31d |

| ID | WBS | Task | Duration | Start | Finish | Predecessors | Total float |
| --- | --- | --- | --- | --- | --- | --- | --- |
| DUKHCONP03Z4WTEX5035 |  | Construction of Raft | 25d | 2014-02-12 | 2014-03-12 | DUKHCONP03Z4WTEX5030 FF+10d, DUKHCONP03Z4WTEX5030 SS+5d | 31d |
| DUKHCONP03Z4WTEX5040 |  | Block works & Plastering | 25d | 2014-02-22 | 2014-03-22 | DUKHCONP03Z4WTEX5035 SS+8d, DUKHCONP03Z4WTEX5035 FF+8d | 31d |
| DUKHCONP03Z4WTEX5070 |  | Domestic Water Tank Plumbings works | 25d | 2014-03-02 | 2014-03-30 | DUKHCONP03Z4WTEX5080 SS | 31d |
| DUKHCONP03Z4WTEX5075 |  | Domestic Water Tank AC works | 25d | 2014-03-02 | 2014-03-30 | DUKHCONP03Z4WTEX5070 SS | 31d |
| DUKHCONP03Z4WTEX5080 |  | Domestic Water Tank Electrical works | 25d | 2014-03-02 | 2014-03-30 | DUKHCONP03Z4WTEX5040 SS+7d | 31d |
| DUKHCONP03Z4WTEX5085 |  | Domestic Water Tank Firefighting works | 25d | 2014-03-02 | 2014-03-30 | DUKHCONP03Z4WTEX5075 SS | 31d |
| DUKHCONP03Z4WTEX5045 |  | Flooring & Painting | 25d | 2014-03-06 | 2014-04-03 | DUKHCONP03Z4WTEX5040 FF+10d, DUKHCONP03Z4WTEX5085 FF+4d, DUKHCONP03Z4WTEX5040 SS+10d | 31d |
| DUKHCONP03Z4WTEX5050 |  | Installation of Steel Gate | 20d | 2014-05-06 | 2014-05-28 | DUKHCONP03Z4WTEX5045 FF+10d, DUKHCONP03Z4WTEX5045 SS+5d, DUKHCONP03Z4MSEX5025 FF+10d | -6d |
| DUKHCONP03Z4WTEX5060 |  | Structural steel & SS Shed cover installation | 25d | 2014-05-14 | 2014-06-11 | DUKHCONP03Z4MSEX5025 FF+10d, DUKHCONP03Z4WTEX5050 SS+5d, DUKHCONP03Z4WTEX5050 FF+10d, DUKHCONP03Z3WTEX5060 | -8d |
| DUKHCONP03Z4WTEX5065 |  | Install. of Water Tank,Chiller,Pump & Meter | 25d | 2014-05-26 | 2014-06-23 | DUKHCONP03Z4PLRF4350 SS+5d, DUKHCONP03Z4WTEX5060 FF+10d, DUKHCONP03Z4WTEX5060 SS+10d, DUKHCONP03Z4MSEX5015 SS+5d, DUKHCONP03Z3WTEX5065, DUKHCONP03Z4PLRF4350 FF+5d, DUKHCONP03Z4MSEX5015 FF+5d | -8d |
|  | 30 | **TESTING AND COMMISSIONING** |  | 2014-07-16 | 2014-08-17 |  |  |
| DUKHCONP03Z4ACTC8000 |  | Pre-Commissioning & Testing of AC Works | 25d | 2014-07-16 | 2014-08-17 | DUKHCONP03Z3ACTC8000, DUKHCONP03Z4ARRF3620, DUKHCONP03Z4AREL3680, DUKHCONP03Z4ACFF4625, DUKHCONP03Z4ACRF4635, DUKHCONP03Z4ARGF3095, DUKHCONP03Z4ARFF3395, DUKHCONP03Z4ARRF3660, DUKHCONP03Z4MSEX5005 | -27d |
| DUKHCONP03Z4ELTC8010 |  | Pre-Commissioning & Testing of Electrical Works | 25d | 2014-07-16 | 2014-08-17 | DUKHCONP03Z4ARRF3655, DUKHCONP03Z4ELFF4055, DUKHCONP03Z4AREL3680, DUKHCONP03Z3ELTC8010, DUKHCONP03Z4ARRF3620, DUKHCONP03Z4ELGF4030, DUKHCONP03Z4ELGF4015, DUKHCONP03Z4ELGF4025, DUKHCONP03Z4ARFF3395, DUKHCONP03Z4ELRF4075, DUKHCONP03Z4ELFF4065, DUKHCONP03Z4ELFF4050, DUKHCONP03Z4MSEX5005, DUKHCONP03Z4ARGF3095, DUKHCONP03Z4ARRF3660 | -27d |
| DUKHCONP03Z4PLTC8005 |  | Pre-Commissioning & Testing of Plumbing Works | 25d | 2014-07-16 | 2014-08-17 | DUKHCONP03Z4ARRF3620, DUKHCONP03Z4ARFF3395, DUKHCONP03Z4PLRF4355, DUKHCONP03Z4ARGF3095, DUKHCONP03Z4ARRF3655, DUKHCONP03Z4MSEX5005, DUKHCONP03Z4PLGF4320, DUKHCONP03Z4AREL3680, DUKHCONP03Z4WTEX5065, DUKHCONP03Z4PLRF4350, DUKHCONP03Z3PLTC8005, DUKHCONP03Z4ARRF3660 | -27d |
|  | 30 | **ZONE - 5 (3 Apartments)** |  | 2013-05-26 | 2014-09-15 |  |  |
|  | 10 | **STRUCTURAL WORKS** |  | 2013-05-26 | 2014-03-30 |  |  |
|  | 10 | **SUB STRUCTURE** |  | 2013-05-26 | 2013-11-16 |  |  |
|  | 10 | **UPTO GRADE SLAB** |  | 2013-05-26 | 2013-11-16 |  |  |
| DUKHCONP03Z5STUG1000 |  | Footing Excavation | 25d | 2013-05-26 | 2013-06-23 | DUKHCONP03Z4STUG1000 | 1d |
| DUKHCONP03Z5STUG1005 |  | Footing Antitermite | 23d | 2013-06-05 | 2013-07-01 | DUKHCONP03Z5STUG1000 SS+9d, DUKHCONP03Z5STUG1000 FF+5d | 1d |
| DUKHCONP03Z5STUG1010 |  | Footing Blinding | 23d | 2013-06-09 | 2013-07-04 | DUKHCONP03Z5STUG1005 FF+3d, DUKHCONP03Z5STUG1005 SS+3d | 1d |
| DUKHCONP03Z5STUG1015 |  | Footing Waterproofing & Screed | 25d | 2013-06-15 | 2013-07-13 | DUKHCONP03Z5STUG1010 FF+5d, DUKHCONP03Z5STUG1010 SS+5d | 1d |
| DUKHCONP03Z5STUG1020 |  | Construction of foundations | 20d | 2013-06-30 | 2013-07-22 | DUKHCONP03Z5STUG1015 SS+7d, DUKHCONP03Z5STUG1015 FF+8d | 1d |
| DUKHCONP03Z5STUG1025 |  | Construction of neck of columns | 25d | 2013-07-31 | 2013-09-01 | DUKHCONP03Z5STUG1020 SS+8d, DUKHCONP03Z4STUG1025, DUKHCONP03Z5STUG1020 FF+7d | -18d |
| DUKHCONP03Z5STUG1030 |  | Waterproofing Footing & Neck Column | 25d | 2013-08-13 | 2013-09-10 | DUKHCONP03Z5STUG1025 SS+8d, DUKHCONP03Z5STUG1025 FF+8d | -18d |
| DUKHCONP03Z5STUG1035 |  | Backfilling Upto Grade Beam Bottom | 25d | 2013-09-03 | 2013-10-01 | DUKHCONP03Z5STUG1030 SS+9d, DUKHCONP03Z5STUG1030 FF+9d, DUKHCONP03Z4STUG1035 | -27d |
| DUKHCONP03Z5STUG1040 |  | Construction of Grade Beams | 25d | 2013-09-19 | 2013-10-20 | DUKHCONP03Z5STUG1035 SS+14d, DUKHCONP03Z5STUG1035 FF+14d | -27d |
| DUKHCONP03Z5STUG1045 |  | Construction of slab on grade | 25d | 2013-10-16 | 2013-11-16 | DUKHCONP03Z5STUG1040 FF+10d, DUKHCONP03Z5STUG1040 SS+10d, DUKHCONP03Z5PLUG4300 FF+8d, DUKHCONP03Z5PLUG4300 SS+8d, DUKHCONP03Z4STUG1045 | -27d |
|  | 15 | **SUPERSTRUCTURE** |  | 2013-11-04 | 2014-03-30 |  |  |
|  | 10 | **GROUND FLOOR** |  | 2013-11-04 | 2013-12-31 |  |  |
| DUKHCONP03Z5STGF2000 |  | Column-Rebar & Formwork | 25d | 2013-11-04 | 2013-12-02 | DUKHCONP03Z5STUG1045 SS+14d, DUKHCONP03Z5STUG1045 FF+7d, DUKHCONP03Z4STGF2000 | -27d |
| DUKHCONP03Z5STGF2005 |  | Column-Concrete | 24d | 2013-11-13 | 2013-12-10 | DUKHCONP03Z5STGF2000 SS+8d, DUKHCONP03Z5STGF2000 FF+2d | -27d |
| DUKHCONP03Z5STGF2010 |  | Beam, Stairs ,Slab-Rebar & Formwork | 25d | 2013-11-28 | 2013-12-28 | DUKHCONP03Z5STGF2005 SS+2d, DUKHCONP03Z5STGF2005 FF+14d | -27d |
| DUKHCONP03Z5STGF2015 |  | Beam, Stairs ,Slab-Concrete | 15d | 2013-12-14 | 2013-12-31 | DUKHCONP03Z5STGF2010 FF+3d, DUKHCONP03Z4STGF2015, DUKHCONP03Z5STGF2010 SS+10d | -27d |
|  | 15 | **FIRST FLOORS** |  | 2013-12-16 | 2014-02-19 |  |  |
| DUKHCONP03Z5STFF2020 |  | Column-Rebar & Formwork | 25d | 2013-12-16 | 2014-01-14 | DUKHCONP03Z5STGF2015 FF+5d, DUKHCONP03Z4STFF2020, DUKHCONP03Z5STGF2015 SS+2d | -27d |
| DUKHCONP03Z5STFF2025 |  | Column-Concrete | 24d | 2013-12-28 | 2014-01-23 | DUKHCONP03Z5STFF2020 FF+2d, DUKHCONP03Z5STFF2020 SS+9d | -27d |
| DUKHCONP03Z5STFF2030 |  | Beam, Stairs ,Slab-Rebar & Formwork | 25d | 2014-01-12 | 2014-02-09 | DUKHCONP03Z5STFF2025 FF+14d, DUKHCONP03Z5STFF2025 SS+2d | -27d |
| DUKHCONP03Z5STFF2035 |  | Beam, Stairs ,Slab-Concrete | 15d | 2014-02-02 | 2014-02-19 | DUKHCONP03Z4STFF2035, DUKHCONP03Z5STFF2030 SS+10d, DUKHCONP03Z5STFF2030 FF+8d | -27d |
|  | 20 | **ROOF** |  | 2014-02-04 | 2014-03-30 |  |  |
| DUKHCONP03Z5STRF2040 |  | Column-Rebar & Formwork | 18d | 2014-02-04 | 2014-02-25 | DUKHCONP03Z4STRF2040, DUKHCONP03Z5STFF2035 SS+2d, DUKHCONP03Z5STFF2035 FF+3d | -12d |
| DUKHCONP03Z5STRF2045 |  | Column-Concrete | 17d | 2014-02-08 | 2014-02-27 | DUKHCONP03Z5STRF2040 SS+3d, DUKHCONP03Z5STRF2040 FF+1d | -12d |
| DUKHCONP03Z5STRF2050 |  | Slab-Rebar & Formwork | 20d | 2014-02-10 | 2014-03-05 | DUKHCONP03Z5STRF2045 FF+5d, DUKHCONP03Z5STRF2045 SS+2d | -12d |
| DUKHCONP03Z5STRF2055 |  | Slab-Concrete | 13d | 2014-02-22 | 2014-03-08 | DUKHCONP03Z5STRF2050 SS+5d, DUKHCONP03Z5STRF2050 FF+2d, DUKHCONP03Z4STRF2055 | -12d |
| DUKHCONP03Z5STRF2060 |  | Construction of Parapets | 25d | 2014-02-24 | 2014-03-24 | DUKHCONP03Z5STRF2055 SS+2d, DUKHCONP03Z5STRF2055 FF+10d | 31d |
| DUKHCONP03Z5STRF2065 |  | Construction of up stands/Plinth | 25d | 2014-03-02 | 2014-03-30 | DUKHCONP03Z5STRF2060 FF+5d, DUKHCONP03Z4STRF2065, DUKHCONP03Z5STRF2060 SS+5d | 31d |
|  | 15 | **FINISHING WORKS** |  | 2014-01-15 | 2014-08-17 |  |  |
|  | 10 | **INTERNAL FINISHES** |  | 2014-01-15 | 2014-08-17 |  |  |
|  | 10 | **GROUND FLOOR** |  | 2014-01-15 | 2014-07-07 |  |  |
| DUKHCONP03Z5ARGF3000 |  | Block work | 25d | 2014-01-15 | 2014-02-13 | DUKHCONP03Z5STGF2015 SS+21d, DUKHCONP03Z4ARGF3000, DUKHCONP03Z5STGF2015 FF+21d | 13d |
| DUKHCONP03Z5ARGF3005 |  | Plastering work | 25d | 2014-02-06 | 2014-03-08 | DUKHCONP03Z5PLGF4305 FF+5d, DUKHCONP03Z5ARGF3000 FF+7d, DUKHCONP03Z5ARGF3000 SS+7d, DUKHCONP03Z4ARGF3005, DUKHCONP03Z5ELGF4000 SS+5d, DUKHCONP03Z5ELGF4000 FF+5d, DUKHCONP03Z5PLGF4305 SS+5d | 13d |
| DUKHCONP03Z5ARGF3010 |  | Flooring screed | 21d | 2014-02-16 | 2014-03-11 | DUKHCONP03Z5ARGF3005 FF+3d, DUKHCONP03Z5ARGF3005 SS+7d | 21d |
| DUKHCONP03Z5ARGF3015 |  | Wet area waterproofing & Protection Screed | 15d | 2014-02-25 | 2014-03-13 | DUKHCONP03Z5ARGF3005 FF+5d, DUKHCONP03Z4ARGF3015, DUKHCONP03Z5ARGF3005 SS+7d | 13d |
| DUKHCONP03Z5ARGF3020 |  | Ceramic Wall Tiling | 25d | 2014-03-03 | 2014-03-31 | DUKHCONP03Z5ARGF3015 FF+5d, DUKHCONP03Z5PLGF4305 SS+4d, DUKHCONP03Z5PLGF4310 FF+4d, DUKHCONP03Z5PLGF4310 SS+4d, DUKHCONP03Z5ARGF3015 SS+5d, DUKHCONP03Z5PLGF4305 FF+4d, DUKHCONP03Z4ARGF3020 | 13d |
| DUKHCONP03Z5ARGF3025 |  | Porcelain Tile flooring | 25d | 2014-03-09 | 2014-04-06 | DUKHCONP03Z4ARGF3025, DUKHCONP03Z5ARGF3020 SS+5d, DUKHCONP03Z5ARGF3020 FF+5d, DUKHCONP03Z5ARGF3010 SS+10d, DUKHCONP03Z5ARGF3010 FF+10d | 13d |
| DUKHCONP03Z5ARGF3030 |  | Paint First coat | 25d | 2014-03-20 | 2014-04-17 | DUKHCONP03Z5ARGF3005 FF+14d, DUKHCONP03Z4ARGF3030, DUKHCONP03Z5ARGF3005 SS+14d | 8d |
| DUKHCONP03Z5ARGF3035 |  | Slate Tile Flooring & Skirting | 15d | 2014-03-29 | 2014-04-14 | DUKHCONP03Z5ARGF3025 FF+7d, DUKHCONP03Z5ARGF3010 SS+13d, DUKHCONP03Z5ARGF3025 SS+13d, DUKHCONP03Z5ARGF3010 FF+13d | 15d |
| DUKHCONP03Z5ARGF3045 |  | Fixing of Suspension systems | 20d | 2014-04-03 | 2014-04-26 | DUKHCONP03Z5ARGF3030 SS+7d, DUKHCONP03Z5ARGF3025 FF+10d, DUKHCONP03Z5ELGF4010 SS+5d, DUKHCONP03Z5ELGF4010 FF+5d, DUKHCONP03Z5ARGF3030 FF+7d, DUKHCONP03Z4ARGF3045, DUKHCONP03Z5ARGF3025 SS+10d | 8d |
| DUKHCONP03Z5ARGF3040 |  | Cobble Tile flooring | 15d | 2014-04-05 | 2014-04-21 | DUKHCONP03Z5ARGF3025 SS+13d, DUKHCONP03Z5ARGF3035 SS+4d, DUKHCONP03Z5ARGF3010 SS+13d, DUKHCONP03Z5ARGF3010 FF+13d, DUKHCONP03Z5ARGF3025 FF+13d, DUKHCONP03Z5ARGF3035 FF+4d | 13d |
| DUKHCONP03Z5ARGF3055 |  | Aluminum tile false ceiling | 25d | 2014-04-12 | 2014-05-10 | DUKHCONP03Z5ACGF4600 SS+7d, DUKHCONP03Z5ACGF4600 FF+7d, DUKHCONP03Z5ARGF3045 SS+7d, DUKHCONP03Z5ARGF3045 FF+7d | 11d |
| DUKHCONP03Z5ARGF3050 |  | Granite - Stair case flooring & Skirting | 20d | 2014-04-13 | 2014-05-05 | DUKHCONP03Z5ARGF3025 FF+13d, DUKHCONP03Z5ARGF3040 SS+7d, DUKHCONP03Z5ARGF3025 SS+13d, DUKHCONP03Z5ARGF3040 FF+7d | 13d |
| DUKHCONP03Z5ARGF3060 |  | Gypsum board false ceiling | 25d | 2014-04-15 | 2014-05-13 | DUKHCONP03Z5ACGF4600 FF+7d, DUKHCONP03Z4ARGF3060, DUKHCONP03Z5ARGF3045 SS+10d, DUKHCONP03Z5ACGF4600 SS+7d, DUKHCONP03Z5ARGF3045 FF+10d | 8d |
| DUKHCONP03Z5ARGF3065 |  | Wooden door | 15d | 2014-04-27 | 2014-05-13 | DUKHCONP03Z5ARGF3035 SS+7d, DUKHCONP03Z4ARGF3065, DUKHCONP03Z5ARGF3035 FF+7d, DUKHCONP03Z5ARGF3050 FF+7d, DUKHCONP03Z5ARGF3050 SS+7d | 13d |
| DUKHCONP03Z5ARGF3070 |  | Aluminum doors | 15d | 2014-05-03 | 2014-05-19 | DUKHCONP03Z5ARGF3065 SS+5d, DUKHCONP03Z5ARGF3065 FF+5d, DUKHCONP03Z4ARGF3070 | 13d |
| DUKHCONP03Z5ARGF3075 |  | Carpentry & Joinery Works | 20d | 2014-05-08 | 2014-05-31 | DUKHCONP03Z5ARGF3070 SS+5d, DUKHCONP03Z4ARGF3075, DUKHCONP03Z5ARGF3070 FF+7d | 13d |
| DUKHCONP03Z5ARGF3080 |  | Aluminum windows | 20d | 2014-05-10 | 2014-06-01 | DUKHCONP03Z5ARGF3070 FF+6d, DUKHCONP03Z4ARGF3080, DUKHCONP03Z5ARGF3070 SS+6d | 23d |
| DUKHCONP03Z5ARGF3085 |  | S.S.Balustrade | 20d | 2014-05-17 | 2014-06-08 | DUKHCONP03Z5ARGF3050 FF+7d, DUKHCONP03Z5ARGF3050 SS+7d, DUKHCONP03Z5ARGF3075 SS+7d, DUKHCONP03Z5ARGF3075 FF+7d | 18d |
| DUKHCONP03Z5ARGF3090 |  | Installation of Granite Counter Top | 15d | 2014-05-21 | 2014-06-07 | DUKHCONP03Z5ARGF3075 FF+6d, DUKHCONP03Z5ARGF3075 SS+7d | 13d |
| DUKHCONP03Z5ARGF3095 |  | Final Painting | 25d | 2014-06-09 | 2014-07-07 | DUKHCONP03Z5ACGF4610 FF+10d, DUKHCONP03Z5ARGF3060 FF+8d, DUKHCONP03Z5ARGF3030 SS+10d, DUKHCONP03Z5ARGF3030 FF+10d, DUKHCONP03Z4ARGF3095, DUKHCONP03Z5ARGF3035 SS+13d, DUKHCONP03Z5ARGF3035 FF+13d, DUKHCONP03Z5ARGF3070 FF+5d, DUKHCONP03Z5ARGF3090 SS+8d, DUKHCONP03Z5ARGF3070 SS+5d, DUKHCONP03Z5ARGF3080 FF+8d, DUKHCONP03Z5ARGF3085 FF+7d, DUKHCONP03Z5ACGF4610 SS+10d, DUKHCONP03Z5ARGF3060 SS+8d, DUKHCONP03Z5ARGF3080 SS+8d, DUKHCONP03Z5ARGF3090 FF+8d, DUKHCONP03Z5ARGF3085 SS+7d, DUKHCONP03Z5ARGF3040 SS+13d, DUKHCONP03Z5ARGF3040 FF+13d | 5d |
|  | 15 | **FIRST FLOORS** |  | 2014-02-27 | 2014-08-17 |  |  |

| ID | WBS | Task | Duration | Start | Finish | Predecessors | Total float |
| --- | --- | --- | --- | --- | --- | --- | --- |
| DUKHCONP03Z5ARFF3300 |  | Block work | 25d | 2014-02-27 | 2014-03-27 | DUKHCONP03Z5STFF2035 SS+21d, DUKHCONP03Z5STFF2020 FF+21d, DUKHCONP03Z5STFF2020 SS+21d, DUKHCONP03Z5STFF2035 FF+21d, DUKHCONP03Z4ARFF3300 | -27d |
| DUKHCONP03Z5ARFF3305 |  | Plastering work | 25d | 2014-03-24 | 2014-04-21 | DUKHCONP03Z5PLFF4325 SS+8d, DUKHCONP03Z5ARFF3300 SS+7d, DUKHCONP03Z5PLFF4325 FF+8d, DUKHCONP03Z5ELFF4035 SS+5d, DUKHCONP03Z5ELFF4035 FF+5d, DUKHCONP03Z4ARFF3305, DUKHCONP03Z5ARFF3300 FF+7d | -27d |
| DUKHCONP03Z5ARFF3310 |  | Flooring screed | 21d | 2014-04-01 | 2014-04-24 | DUKHCONP03Z5ARFF3305 SS+7d, DUKHCONP03Z5ARFF3305 FF+3d | -12d |
| DUKHCONP03Z5ARFF3330 |  | Paint First coat | 25d | 2014-04-09 | 2014-05-07 | DUKHCONP03Z5ARFF3305 FF+14d, DUKHCONP03Z5ARFF3305 SS+14d | -9d |
| DUKHCONP03Z5ARFF3315 |  | Wet area waterproofing | 15d | 2014-04-14 | 2014-04-30 | DUKHCONP03Z5ARFF3305 SS+7d, DUKHCONP03Z5ARFF3305 FF+8d, DUKHCONP03Z4ARFF3315 | -27d |
| DUKHCONP03Z5ARFF3320 |  | Ceramic Wall Tiling | 25d | 2014-04-23 | 2014-05-21 | DUKHCONP03Z4ARFF3320, DUKHCONP03Z5PLFF4330 SS+7d, DUKHCONP03Z5ARFF3315 SS+8d, DUKHCONP03Z5PLFF4325 FF+4d, DUKHCONP03Z5PLFF4325 SS+4d, DUKHCONP03Z5PLFF4330 FF+7d, DUKHCONP03Z5ARFF3315 FF+7d | -27d |
| DUKHCONP03Z5ARFF3325 |  | Porcelain Tile flooring | 25d | 2014-04-30 | 2014-05-28 | DUKHCONP03Z4ARFF3325, DUKHCONP03Z5ARFF3310 FF+10d, DUKHCONP03Z5ARFF3320 SS+6d, DUKHCONP03Z5ARFF3310 SS+10d, DUKHCONP03Z5ARFF3320 FF+6d | -27d |
| DUKHCONP03Z5ARFF3345 |  | Fixing of Suspension systems | 20d | 2014-05-14 | 2014-06-05 | DUKHCONP03Z5ARFF3330 SS+7d, DUKHCONP03Z4ARFF3345, DUKHCONP03Z5ELFF4045 SS+5d, DUKHCONP03Z5ELFF4045 FF+5d, DUKHCONP03Z5ARFF3330 FF+7d, DUKHCONP03Z5ARFF3325 FF+7d, DUKHCONP03Z5ARFF3325 SS+7d | -27d |
| DUKHCONP03Z5ARFF3335 |  | Slate Tile Flooring & Skirting | 15d | 2014-05-18 | 2014-06-03 | DUKHCONP03Z5ARFF3310 FF+13d, DUKHCONP03Z5ARFF3325 FF+5d, DUKHCONP03Z5ARFF3310 SS+13d, DUKHCONP03Z5ARFF3325 SS+13d | -15d |
| DUKHCONP03Z5ARFF3350 |  | Granite - Stair case flooring & Skirting | 20d | 2014-05-21 | 2014-06-12 | DUKHCONP03Z5ARFF3325 SS+13d, DUKHCONP03Z5ARFF3325 FF+13d | -23d |
| DUKHCONP03Z5ARFF3360 |  | Gypsum board false ceiling | 25d | 2014-05-22 | 2014-06-19 | DUKHCONP03Z5ACFF4615 SS+7d, DUKHCONP03Z5ACFF4615 FF+7d, DUKHCONP03Z4ARFF3360, DUKHCONP03Z5ARFF3345 SS+7d, DUKHCONP03Z5ARFF3345 FF+7d | -27d |
| DUKHCONP03Z5ARFF3355 |  | Aluminum tile false ceiling | 20d | 2014-05-26 | 2014-06-17 | DUKHCONP03Z5ARFF3345 FF+10d, DUKHCONP03Z5ACFF4615 FF+7d, DUKHCONP03Z5ACFF4615 SS+7d, DUKHCONP03Z4ARFF3355, DUKHCONP03Z5ARFF3345 SS+10d | -23d |
| DUKHCONP03Z5ARFF3365 |  | Wooden door | 15d | 2014-06-09 | 2014-06-25 | DUKHCONP03Z5ARFF3355 FF+3d, DUKHCONP03Z5ARFF3350 FF+7d, DUKHCONP03Z5ARFF3360 FF+5d, DUKHCONP03Z5ARFF3350 SS+7d, DUKHCONP03Z5ARFF3335 SS+7d, DUKHCONP03Z5ARFF3335 FF+7d, DUKHCONP03Z5ARFF3360 SS+5d, DUKHCONP03Z5ARFF3355 SS+3d, DUKHCONP03Z4ARFF3365 | -27d |
| DUKHCONP03Z5ARFF3370 |  | Aluminum Door | 20d | 2014-06-15 | 2014-07-07 | DUKHCONP03Z4ARFF3370, DUKHCONP03Z5ARFF3365 FF+5d, DUKHCONP03Z5ARFF3365 SS+5d | -27d |
| DUKHCONP03Z5ARFF3380 |  | Aluminum windows | 20d | 2014-06-22 | 2014-07-14 | DUKHCONP03Z5ARFF3370 FF+6d, DUKHCONP03Z5ARFF3370 SS+6d | -16d |
| DUKHCONP03Z5ARFF3375 |  | Carpentry & Joinery Works | 25d | 2014-06-23 | 2014-07-21 | DUKHCONP03Z5ARFF3370 SS+7d, DUKHCONP03Z5ARFF3370 FF+5d, DUKHCONP03Z4ARFF3375 | -27d |
| DUKHCONP03Z5ARFF3385 |  | Handrail & Balustrade | 20d | 2014-07-05 | 2014-07-27 | DUKHCONP03Z5ARFF3350 FF+7d, DUKHCONP03Z5ARFF3350 SS+7d, DUKHCONP03Z5ARFF3375 SS+5d, DUKHCONP03Z5ARFF3375 FF+5d | -27d |
| DUKHCONP03Z5ARFF3390 |  | Installation of Granite Counter Top | 20d | 2014-07-08 | 2014-07-30 | DUKHCONP03Z5ARFF3375 FF+8d, DUKHCONP03Z5ARFF3375 SS+8d | -25d |
| DUKHCONP03Z5ARFF3395 |  | Final Painting | 25d | 2014-07-16 | 2014-08-17 | DUKHCONP03Z5ARFF3355 SS+10d, DUKHCONP03Z5ARFF3360 FF+10d, DUKHCONP03Z5ARFF3375 FF+8d, DUKHCONP03Z5ARFF3390 FF+8d, DUKHCONP03Z5ARFF3350 SS+8d, DUKHCONP03Z5ARFF3365 SS+8d, DUKHCONP03Z5ELFF4055, DUKHCONP03Z5ACFF4625 FF+10d, DUKHCONP03Z5ARFF3330 SS+10d, DUKHCONP03Z5ARFF3380 FF+10d, DUKHCONP03Z5ARFF3335 FF+8d, DUKHCONP03Z5ARFF3360 SS+10d, DUKHCONP03Z5ARFF3380 SS+10d, DUKHCONP03Z5ACFF4625 SS+10d, DUKHCONP03Z5ARFF3350 FF+8d, DUKHCONP03Z5ARFF3355 FF+10d, DUKHCONP03Z5ARFF3365 FF+8d, DUKHCONP03Z5ARFF3335 SS+8d, DUKHCONP03Z5ARFF3375 SS+8d, DUKHCONP03Z5ARFF3390 SS+5d, DUKHCONP03Z5ARFF3385 SS+10d, DUKHCONP03Z4ARFF3395, DUKHCONP03Z5ARFF3330 FF+10d, DUKHCONP03Z5ARFF3385 FF+10d | -27d |
|  | 20 | **ROOF** |  | 2014-03-18 | 2014-05-21 |  |  |
| DUKHCONP03Z5ARRF3600 |  | Block work | 20d | 2014-03-18 | 2014-04-09 | DUKHCONP03Z5STRF2055 SS+21d, DUKHCONP03Z5STRF2055 FF+21d, DUKHCONP03Z4ARRF3600 | 40d |
| DUKHCONP03Z5ARRF3605 |  | Plastering work | 20d | 2014-03-26 | 2014-04-17 | DUKHCONP03Z5ARRF3600 FF+7d, DUKHCONP03Z5ARRF3600 SS+7d | 40d |
| DUKHCONP03Z5ARRF3610 |  | Flooring screed | 15d | 2014-04-09 | 2014-04-26 | DUKHCONP03Z5ARRF3605 SS+7d, DUKHCONP03Z5ARRF3605 FF+7d | 45d |
| DUKHCONP03Z5ARRF3695 |  | Painting | 20d | 2014-04-17 | 2014-05-10 | DUKHCONP03Z5ARRF3610 FF+7d, DUKHCONP03Z5ARRF3610 SS+7d | 45d |
| DUKHCONP03Z5ARRF3620 |  | Epoxy Painting | 15d | 2014-05-05 | 2014-05-21 | DUKHCONP03Z5ARRF3695 SS+10d, DUKHCONP03Z5ARRF3695 FF+10d | 45d |
|  | 15 | **EXTERNAL FINISHES** |  | 2014-03-24 | 2014-06-10 |  |  |
|  | 10 | **ROOF** |  | 2014-03-24 | 2014-05-27 |  |  |
| DUKHCONP03Z5ARRF3630 |  | Leveling Screed for Waterproofing | 25d | 2014-03-24 | 2014-04-21 | DUKHCONP03Z5STRF2065 FF+10d, DUKHCONP03Z5STRF2060 FF+10d, DUKHCONP03Z5STRF2065 SS+10d, DUKHCONP03Z4ARRF3630, DUKHCONP03Z5STRF2060 SS+10d | 35d |
| DUKHCONP03Z5ARRF3635 |  | Laying of Waterproofing Membrane | 25d | 2014-03-27 | 2014-04-24 | DUKHCONP03Z5ARRF3630 SS+3d, DUKHCONP03Z5ARRF3630 FF+3d | 35d |
| DUKHCONP03Z5ARRF3640 |  | Installation of Insulation & Protection | 25d | 2014-04-01 | 2014-04-29 | DUKHCONP03Z5ARRF3635 FF+4d, DUKHCONP03Z5ARRF3635 SS+4d | 35d |
| DUKHCONP03Z5ARRF3645 |  | Lime Stone Chips & Paving slab Installation | 25d | 2014-04-06 | 2014-05-04 | DUKHCONP03Z5ARRF3640 SS+4d, DUKHCONP03Z5ARRF3640 FF+4d | 35d |
| DUKHCONP03Z5ARRF3650 |  | Install. of Gal. Frame & Aluminum Slat Screen | 25d | 2014-04-14 | 2014-05-12 | DUKHCONP03Z5ARRF3645 SS+7d, DUKHCONP03Z5ARRF3645 FF+7d | 35d |
| DUKHCONP03Z5ARRF3655 |  | Installation of Pumps Protection cabinets | 20d | 2014-04-29 | 2014-05-21 | DUKHCONP03Z4ARRF3655, DUKHCONP03Z5ARRF3645 FF+7d, DUKHCONP03Z5ARRF3650 SS+8d, DUKHCONP03Z5ARRF3650 FF+8d, DUKHCONP03Z5ARRF3645 SS+7d | 35d |
| DUKHCONP03Z5ARRF3660 |  | Installation of Access Ladder | 15d | 2014-05-11 | 2014-05-27 | DUKHCONP03Z5ARRF3655 SS+5d, DUKHCONP03Z5ARRF3655 FF+5d | 40d |
|  | 15 | **ELEVATION** |  | 2014-04-20 | 2014-06-10 |  |  |
| DUKHCONP03Z5AREL3665 |  | External Plastering | 25d | 2014-04-20 | 2014-05-18 | DUKHCONP03Z5STRF2065 SS+7d, DUKHCONP03Z5STRF2065 FF+7d, DUKHCONP03Z5ARRF3605 SS+7d, DUKHCONP03Z5ARFF3305 SS+7d, DUKHCONP03Z5ARFF3305 FF+7d, DUKHCONP03Z4AREL3665 | 26d |
| DUKHCONP03Z5AREL3675 |  | GRC Panel Works | 20d | 2014-05-07 | 2014-05-29 | DUKHCONP03Z5AREL3665 FF+10d, DUKHCONP03Z4AREL3675, DUKHCONP03Z5AREL3665 SS+10d | 28d |
| DUKHCONP03Z5AREL3680 |  | External Painting | 20d | 2014-05-19 | 2014-06-10 | DUKHCONP03Z5AREL3675 SS+10d, DUKHCONP03Z5ARRF3695 FF+4d, DUKHCONP03Z4AREL3680, DUKHCONP03Z5AREL3675 FF+10d, DUKHCONP03Z5ARRF3695 SS+4d | 28d |
|  | 20 | **MEP WORKS** |  | 2013-10-07 | 2014-08-19 |  |  |
|  | 10 | **ELECTRICAL WORKS** |  | 2014-01-21 | 2014-08-19 |  |  |
|  | 10 | **GROUND FLOOR** |  | 2014-01-21 | 2014-06-15 |  |  |
| DUKHCONP03Z5ELGF4000 |  | Fixing of wall conduits & switch socket boxes | 25d | 2014-01-21 | 2014-02-19 | DUKHCONP03Z5ARGF3000 FF+5d, DUKHCONP03Z5ARGF3000 SS+5d | 22d |
| DUKHCONP03Z5ELGF4005 |  | Cable tray & trunking installation | 20d | 2014-02-02 | 2014-02-25 | DUKHCONP03Z5ELGF4000 SS+5d, DUKHCONP03Z4ELGF4005, DUKHCONP03Z5ELGF4000 FF+5d | 42d |
| DUKHCONP03Z5ELGF4010 |  | Installation of wiring & Main Cabling | 25d | 2014-02-10 | 2014-03-11 | DUKHCONP03Z5ELGF4005 SS+7d, DUKHCONP03Z5ELGF4005 FF+7d | 42d |
| DUKHCONP03Z5ELGF4020 |  | Installation of DBS,MCCB Accessories. | 20d | 2014-04-29 | 2014-05-21 | DUKHCONP03Z5ARGF3055 FF+7d, DUKHCONP03Z5ELGF4010 FF+5d, DUKHCONP03Z5ARGF3060 SS+7d, DUKHCONP03Z5ARGF3060 FF+7d, DUKHCONP03Z5ARGF3055 SS+7d, DUKHCONP03Z5ELGF4010 SS+5d | 8d |
| DUKHCONP03Z5ELGF4015 |  | Install. of CAMS & Fire Fighting Accessories | 25d | 2014-04-30 | 2014-05-28 | DUKHCONP03Z5ARGF3060 FF+7d, DUKHCONP03Z5ARGF3055 FF+7d, DUKHCONP03Z5ARGF3055 SS+7d, DUKHCONP03Z5ARGF3060 SS+7d, DUKHCONP03Z4ELGF4015 | 9d |
| DUKHCONP03Z5ELGF4030 |  | Installation of Telephone System | 20d | 2014-05-11 | 2014-06-02 | DUKHCONP03Z4ELGF4030, DUKHCONP03Z5ELGF4020 FF+10d, DUKHCONP03Z5ARGF3060 FF+5d, DUKHCONP03Z5ELGF4020 SS+10d, DUKHCONP03Z5ARGF3060 SS+5d | 8d |
| DUKHCONP03Z5ELGF4025 |  | Installation of Lighting fixtures & Accessories | 25d | 2014-05-18 | 2014-06-15 | DUKHCONP03Z5ELGF4020 FF+10d, DUKHCONP03Z5ELGF4020 SS+10d, DUKHCONP03Z4ELGF4025, DUKHCONP03Z5ARGF3060 FF+10d, DUKHCONP03Z5ARGF3055 SS+10d, DUKHCONP03Z5ARGF3055 FF+10d, DUKHCONP03Z5ARGF3060 SS+10d | 4d |
|  | 15 | **FIRST FLOORS** |  | 2014-03-05 | 2014-07-17 |  |  |
| DUKHCONP03Z5ELFF4035 |  | Fixing of wall conduits & switch socket boxes | 25d | 2014-03-05 | 2014-04-02 | DUKHCONP03Z5ARFF3300 SS+5d, DUKHCONP03Z5ARFF3300 FF+5d | -16d |
| DUKHCONP03Z5ELFF4040 |  | Cable tray & trunking installation | 20d | 2014-03-17 | 2014-04-08 | DUKHCONP03Z5ELFF4035 FF+5d, DUKHCONP03Z5ELFF4035 SS+5d | 6d |
| DUKHCONP03Z5ELFF4045 |  | Installation of wiring & Main Cabling | 25d | 2014-03-29 | 2014-04-26 | DUKHCONP03Z5ELFF4040 FF+7d, DUKHCONP03Z5ELFF4040 SS+7d, DUKHCONP03Z4ELFF4045 | 3d |
| DUKHCONP03Z5ELFF4050 |  | Installation of Telephone System | 25d | 2014-06-01 | 2014-06-29 | DUKHCONP03Z5MSEX5010 FF, DUKHCONP03Z5ELGF4030 SS+10d, DUKHCONP03Z5ARFF3355 FF+5d, DUKHCONP03Z5ARFF3360 SS+5d, DUKHCONP03Z5ARFF3355 SS+5d, DUKHCONP03Z5ELGF4030 FF+10d, DUKHCONP03Z5ARFF3360 FF+5d | 0d |
| DUKHCONP03Z5ELFF4055 |  | Install. of CAMS & Fire Fighting Accessories | 25d | 2014-06-03 | 2014-07-01 | DUKHCONP03Z5ELGF4015 SS+5d, DUKHCONP03Z5ARFF3360 FF+7d, DUKHCONP03Z5ARFF3360 SS+7d, DUKHCONP03Z5ARFF3355 SS+7d, DUKHCONP03Z5ARFF3355 FF+7d, DUKHCONP03Z4ELFF4055, DUKHCONP03Z5ELGF4015 FF+5d | -15d |
| DUKHCONP03Z5ELFF4060 |  | Installation of DBS,MCCB Accessories. | 20d | 2014-06-07 | 2014-06-29 | DUKHCONP03Z5ARFF3355 SS+8d, DUKHCONP03Z5ELFF4045 FF+5d, DUKHCONP03Z5ELFF4045 SS+5d, DUKHCONP03Z5ARFF3355 FF+8d, DUKHCONP03Z4ELFF4060, DUKHCONP03Z5ARFF3360 SS+8d, DUKHCONP03Z5ARFF3360 FF+8d | -19d |
| DUKHCONP03Z5ELFF4065 |  | Installation of Lighting fixtures & Accessories | 25d | 2014-06-19 | 2014-07-17 | DUKHCONP03Z5ELGF4025 FF+5d, DUKHCONP03Z5ELFF4060 FF+11d, DUKHCONP03Z5ARFF3355 FF+10d, DUKHCONP03Z4ELFF4065, DUKHCONP03Z5ELFF4060 SS+11d, DUKHCONP03Z5ARFF3360 FF+10d, DUKHCONP03Z5ARFF3360 SS+10d, DUKHCONP03Z5ELGF4025 SS+5d, DUKHCONP03Z5ARFF3355 SS+10d | -19d |
|  | 20 | **ROOF** |  | 2014-07-09 | 2014-08-19 |  |  |
| DUKHCONP03Z5ELRF4070 |  | Installation of Isolator | 18d | 2014-07-09 | 2014-07-29 | DUKHCONP03Z5ELFF4065 FF+10d, DUKHCONP03Z5ELFF4050 SS+5d, DUKHCONP03Z5ARRF3645 SS+7d, DUKHCONP03Z5ARRF3645 FF+7d, DUKHCONP03Z5ELFF4045 SS+10d, DUKHCONP03Z5ELFF4050 FF+7d, DUKHCONP03Z5ELFF4045 FF+10d, DUKHCONP03Z5ELFF4065 SS+10d | -19d |
| DUKHCONP03Z5ELRF4075 |  | Installation of TV Dish Antenna | 23d | 2014-07-21 | 2014-08-19 | DUKHCONP03Z5ELRF4070 SS+10d, DUKHCONP03Z5ELRF4070 FF+10d | -19d |
|  | 15 | **PLUMBING, DRAINAGE & FIRE FIGHTING WORKS** |  | 2013-10-07 | 2014-07-30 |  |  |
|  | 10 | **GROUND FLOOR** |  | 2013-10-07 | 2014-05-31 |  |  |
| DUKHCONP03Z5PLUG4300 |  | Drainage / Storm Pipes in Grade Slab | 20d | 2013-10-07 | 2013-10-31 | DUKHCONP03Z5STUG1040 SS+10d, DUKHCONP03Z5STUG1040 FF+10d | -27d |
| DUKHCONP03Z5PLGF4305 |  | Installation of Plumbing pipes & testing | 18d | 2014-02-01 | 2014-02-22 | DUKHCONP03Z4PLGF4305, DUKHCONP03Z5ARGF3000 FF+7d, DUKHCONP03Z5ARGF3000 SS+7d | 13d |
| DUKHCONP03Z5PLGF4310 |  | Installation of Drainage pipes &testing | 18d | 2014-02-01 | 2014-02-22 | DUKHCONP03Z5ARGF3000 FF+7d, DUKHCONP03Z5ARGF3000 SS+7d, DUKHCONP03Z5PLGF4305 SS, DUKHCONP03Z5PLGF4305 FF | 34d |
| DUKHCONP03Z5PLGF4315 |  | Sanitary Fittings & Accessories | 20d | 2014-05-03 | 2014-05-25 | DUKHCONP03Z5PLGF4310 FF+5d, DUKHCONP03Z5ARGF3065 FF+5d, DUKHCONP03Z4PLGF4315, DUKHCONP03Z5ARGF3065 SS+5d, DUKHCONP03Z5PLGF4310 SS+5d | 37d |
| DUKHCONP03Z5PLGF4320 |  | Installation of Water Heater | 15d | 2014-05-14 | 2014-05-31 | DUKHCONP03Z5ARGF3060 FF+5d, DUKHCONP03Z5PLGF4315 SS+5d, DUKHCONP03Z5PLGF4315 FF+5d, DUKHCONP03Z5ARGF3060 SS+5d, DUKHCONP03Z4PLGF4320 | 37d |
|  | 15 | **FIRST FLOORS** |  | 2014-03-15 | 2014-07-13 |  |  |
| DUKHCONP03Z5PLFF4325 |  | Installation of Plumbing pipes & testing | 18d | 2014-03-15 | 2014-04-03 | DUKHCONP03Z5ARFF3300 SS+6d, DUKHCONP03Z5ARFF3300 FF+6d | -27d |
| DUKHCONP03Z5PLFF4330 |  | Installation of Drainage pipes & testing | 18d | 2014-03-16 | 2014-04-05 | DUKHCONP03Z5PLFF4325 FF, DUKHCONP03Z4PLFF4330, DUKHCONP03Z5PLFF4325 SS, DUKHCONP03Z5ARFF3300 FF+7d, DUKHCONP03Z5ARFF3300 SS+7d | -1d |
| DUKHCONP03Z5PLFF4335 |  | Sanitary Fittings & Accessories | 20d | 2014-06-15 | 2014-07-07 | DUKHCONP03Z5PLFF4330 FF+5d, DUKHCONP03Z5PLFF4330 SS+5d, DUKHCONP03Z5ARFF3365 FF+5d, DUKHCONP03Z5ARFF3365 SS+5d | -15d |

| ID | WBS | Task | Duration | Start | Finish | Predecessors | Total float |
| --- | --- | --- | --- | --- | --- | --- | --- |
| DUKHCONP03Z5PLFF4340 |  | Installation of Water Heater | 15d | 2014-06-26 | 2014-07-13 | DUKHCONP03Z5PLFF4335 FF+5d, DUKHCONP03Z5PLFF4335 SS+5d, DUKHCONP03Z5ARFF3355 FF+5d, DUKHCONP03Z5ARFF3355 SS+5d, DUKHCONP03Z5ARFF3360 SS+5d, DUKHCONP03Z5ARFF3360 FF+5d, DUKHCONP03Z4PLFF4340 | -15d |
|  | 20 | **ROOF** |  | 2014-04-09 | 2014-07-30 |  |  |
| DUKHCONP03Z5PLRF4345 |  | Installation of Plumbing pipes & fittings | 15d | 2014-04-09 | 2014-04-26 | DUKHCONP03Z5ARRF3605 SS+7d, DUKHCONP03Z5ARRF3605 FF+7d | 44d |
| DUKHCONP03Z5PLRF4350 |  | Installation of Rain water Pipes | 15d | 2014-05-10 | 2014-05-26 | DUKHCONP03Z5PLFF4330 SS+5d, DUKHCONP03Z5PLRF4345 FF+8d, DUKHCONP03Z5PLRF4345 SS+8d, DUKHCONP03Z5ARRF3645 SS+5d, DUKHCONP03Z5AREL3665 SS+7d, DUKHCONP03Z5AREL3665 FF+7d, DUKHCONP03Z5ARRF3645 FF+5d, DUKHCONP03Z4PLRF4350, DUKHCONP03Z5PLFF4330 FF+5d | 26d |
| DUKHCONP03Z5PLRF4355 |  | Roof Water Tank Installation & Connections | 25d | 2014-07-02 | 2014-07-30 | DUKHCONP03Z5PLFF4340 SS+5d, DUKHCONP03Z5PLRF4345 SS+8d, DUKHCONP03Z5PLRF4345 FF+8d, DUKHCONP03Z5ARRF3655 FF+5d, DUKHCONP03Z4PLRF4355, DUKHCONP03Z5PLFF4340 FF+5d, DUKHCONP03Z5PLRF4350 SS+5d, DUKHCONP03Z5PLRF4350 FF+5d, DUKHCONP03Z5ARRF3655 SS+5d | -15d |
|  | 20 | **AC WORKS** |  | 2014-02-25 | 2014-07-28 |  |  |
|  | 10 | **GROUND FLOOR** |  | 2014-02-25 | 2014-06-12 |  |  |
| DUKHCONP03Z5ACGF4600 |  | Installation AC Pipes | 20d | 2014-02-25 | 2014-03-19 | DUKHCONP03Z5ARGF3005 SS+7d, DUKHCONP03Z4ACGF4600, DUKHCONP03Z5ARGF3005 FF+7d | 43d |
| DUKHCONP03Z5ACGF4605 |  | Fixing of Ventilation Equipments | 25d | 2014-04-30 | 2014-05-28 | DUKHCONP03Z5ACGF4600 SS+10d, DUKHCONP03Z5ARGF3055 SS+7d, DUKHCONP03Z5ARGF3055 FF+7d, DUKHCONP03Z5ARGF3060 FF+7d, DUKHCONP03Z5ACGF4600 FF+10d, DUKHCONP03Z5ARGF3060 SS+7d, DUKHCONP03Z4ACGF4605 | 11d |
| DUKHCONP03Z5ACGF4610 |  | Fixing of Split AC | 20d | 2014-05-21 | 2014-06-12 | DUKHCONP03Z4ACGF4610, DUKHCONP03Z5ACGF4605 SS+13d, DUKHCONP03Z5ACGF4605 FF+13d | 11d |
|  | 15 | **FIRST FLOORS** |  | 2014-04-07 | 2014-07-16 |  |  |
| DUKHCONP03Z5ACFF4615 |  | Installation AC Pipes | 20d | 2014-04-07 | 2014-04-29 | DUKHCONP03Z5ARFF3305 SS+7d, DUKHCONP03Z4ACFF4615, DUKHCONP03Z5ARFF3305 FF+7d | 5d |
| DUKHCONP03Z5ACFF4620 |  | Fixing of Ventilation Equipments | 25d | 2014-06-03 | 2014-07-01 | DUKHCONP03Z5ACFF4615 FF+10d, DUKHCONP03Z5ARFF3360 SS+7d, DUKHCONP03Z4ACFF4620, DUKHCONP03Z5ARFF3355 SS+7d, DUKHCONP03Z5ACFF4615 SS+10d, DUKHCONP03Z5ARFF3355 FF+7d, DUKHCONP03Z5ARFF3360 FF+7d | -18d |
| DUKHCONP03Z5ACFF4625 |  | Fixing of Split AC | 20d | 2014-06-24 | 2014-07-16 | DUKHCONP03Z5ACFF4620 FF+13d, DUKHCONP03Z5ACFF4620 SS+13d, DUKHCONP03Z4ACFF4625 | -18d |
|  | 20 | **ROOF** |  | 2014-04-16 | 2014-07-28 |  |  |
| DUKHCONP03Z5ACRF4630 |  | Installation of Refrigerant Pipes | 25d | 2014-04-16 | 2014-05-14 | DUKHCONP03Z5ACGF4600 FF+7d, DUKHCONP03Z4ACRF4630, DUKHCONP03Z5ACFF4615 FF+7d, DUKHCONP03Z5ARRF3645 FF+7d, DUKHCONP03Z5ARRF3645 SS+7d, DUKHCONP03Z5ACFF4615 SS+7d, DUKHCONP03Z5ACGF4600 SS+7d | 46d |
| DUKHCONP03Z5ACRF4635 |  | Installation of Condensing Unit | 25d | 2014-06-30 | 2014-07-28 | DUKHCONP03Z5ACGF4610 SS+5d, DUKHCONP03Z5ACRF4630 SS+5d, DUKHCONP03Z5ACFF4625 SS+5d, DUKHCONP03Z5ACGF4610 FF+5d, DUKHCONP03Z5ACFF4625 FF+5d, DUKHCONP03Z5ACRF4630 FF+5d, DUKHCONP03Z4ACRF4635 | -13d |
|  | 25 | **EXTERNAL WORKS** |  | 2014-03-05 | 2014-07-22 |  |  |
|  | 10 | **MISCELLANEOUS** |  | 2014-03-05 | 2014-06-15 |  |  |
| DUKHCONP03Z5MSEX5000 |  | Construction of Manholes | 25d | 2014-03-05 | 2014-04-02 | DUKHCONP03Z5STRF2055 FF+10d, DUKHCONP03Z5PLGF4310 FF+10d, DUKHCONP03Z5STRF2055 SS+10d, DUKHCONP03Z5PLGF4310 SS+10d | 26d |
| DUKHCONP03Z5MSEX5005 |  | Construction of Soak pit, Chambers | 25d | 2014-03-19 | 2014-04-16 | DUKHCONP03Z5MSEX5000 FF+12d, DUKHCONP03Z5MSEX5000 SS+12d | 26d |
| DUKHCONP03Z5MSEX5015 |  | Construction of grease Trap | 20d | 2014-04-08 | 2014-04-30 | DUKHCONP03Z5MSEX5005 SS+12d, DUKHCONP03Z5MSEX5005 FF+12d | 26d |
| DUKHCONP03Z5MSEX5010 |  | Telephone cable laying | 25d | 2014-05-01 | 2014-05-29 | DUKHCONP03Z5MSEX5015 | 26d |
| DUKHCONP03Z5MSEX5020 |  | Construction Entrance Ramp | 25d | 2014-05-06 | 2014-06-03 | DUKHCONP03Z5STRF2055 FF, DUKHCONP03Z4MSEX5020, DUKHCONP03Z5STRF2055 SS | -6d |
| DUKHCONP03Z5MSEX5025 |  | SS.Handrails and Balustrades | 20d | 2014-05-24 | 2014-06-15 | DUKHCONP03Z5MSEX5020 FF+10d, DUKHCONP03Z5MSEX5020 SS+10d | -6d |
|  | 15 | **DOMESTIC WATER TANK & PUMP ROOM** |  | 2014-03-08 | 2014-07-22 |  |  |
| DUKHCONP03Z5WTEX5030 |  | Excavation | 20d | 2014-03-08 | 2014-03-30 | DUKHCONP03Z5STRF2055 SS+5d, DUKHCONP03Z5STRF2065 SS+5d, DUKHCONP03Z5STRF2055 FF+5d, DUKHCONP03Z4WTEX5030 | 31d |
| DUKHCONP03Z5WTEX5035 |  | Construction of Raft | 25d | 2014-03-13 | 2014-04-10 | DUKHCONP03Z5WTEX5030 SS+5d, DUKHCONP03Z5WTEX5030 FF+10d | 31d |
| DUKHCONP03Z5WTEX5040 |  | Block works & Plastering | 25d | 2014-03-23 | 2014-04-20 | DUKHCONP03Z5WTEX5035 SS+8d, DUKHCONP03Z5WTEX5035 FF+8d | 31d |
| DUKHCONP03Z5WTEX5070 |  | Domestic Water Tank Plumbings works | 25d | 2014-03-31 | 2014-04-28 | DUKHCONP03Z5WTEX5080 SS | 31d |
| DUKHCONP03Z5WTEX5075 |  | Domestic Water Tank AC works | 25d | 2014-03-31 | 2014-04-28 | DUKHCONP03Z5WTEX5070 SS | 31d |
| DUKHCONP03Z5WTEX5080 |  | Domestic Water Tank Electrical works | 25d | 2014-03-31 | 2014-04-28 | DUKHCONP03Z5WTEX5040 SS+7d | 31d |
| DUKHCONP03Z5WTEX5085 |  | Domestic Water Tank Firefighting works | 25d | 2014-03-31 | 2014-04-28 | DUKHCONP03Z5WTEX5075 SS | 31d |
| DUKHCONP03Z5WTEX5045 |  | Flooring & Painting | 25d | 2014-04-05 | 2014-05-03 | DUKHCONP03Z5WTEX5085 FF+4d, DUKHCONP03Z5WTEX5040 FF+10d, DUKHCONP03Z5WTEX5040 SS+10d | 31d |
| DUKHCONP03Z5WTEX5050 |  | Installation of Steel Gate | 20d | 2014-06-04 | 2014-06-26 | DUKHCONP03Z5WTEX5045 FF+10d, DUKHCONP03Z5WTEX5045 SS+5d, DUKHCONP03Z5MSEX5025 FF+10d | -6d |
| DUKHCONP03Z5WTEX5060 |  | Structural steel & SS Shed cover installation | 25d | 2014-06-12 | 2014-07-10 | DUKHCONP03Z5WTEX5050 FF+10d, DUKHCONP03Z4WTEX5060, DUKHCONP03Z5WTEX5050 SS+5d, DUKHCONP03Z5MSEX5025 FF+10d | -8d |
| DUKHCONP03Z5WTEX5065 |  | Install. of Water Tank,Chiller,Pump & Meter | 25d | 2014-06-24 | 2014-07-22 | DUKHCONP03Z5WTEX5060 SS+10d, DUKHCONP03Z5PLRF4350 SS+5d, DUKHCONP03Z5PLRF4350 FF+5d, DUKHCONP03Z4WTEX5065, DUKHCONP03Z5MSEX5015 FF+5d, DUKHCONP03Z5WTEX5060 FF+10d, DUKHCONP03Z5MSEX5015 SS+5d | -8d |
|  | 30 | **TESTING AND COMMISSIONING** |  | 2014-08-18 | 2014-09-15 |  |  |
| DUKHCONP03Z5ACTC8000 |  | Pre-Commissioning & Testing of AC Works | 25d | 2014-08-18 | 2014-09-15 | DUKHCONP03Z5AREL3680, DUKHCONP03Z5ARRF3620, DUKHCONP03Z5ARGF3095, DUKHCONP03Z5ACRF4635, DUKHCONP03Z5ARRF3660, DUKHCONP03Z5MSEX5005, DUKHCONP03Z5ACFF4625, DUKHCONP03Z5ARFF3395, DUKHCONP03Z4ACTC8000 | -27d |
| DUKHCONP03Z5ELTC8010 |  | Pre-Commissioning & Testing of Electrical Works | 25d | 2014-08-18 | 2014-09-15 | DUKHCONP03Z5ELFF4055, DUKHCONP03Z5ARRF3660, DUKHCONP03Z5ELGF4015, DUKHCONP03Z5ELRF4075 SS+13d, DUKHCONP03Z4ELTC8010, DUKHCONP03Z5ELFF4065, DUKHCONP03Z5ELGF4025, DUKHCONP03Z5ARRF3620, DUKHCONP03Z5ELFF4050, DUKHCONP03Z5ELGF4030, DUKHCONP03Z5ARRF3655, DUKHCONP03Z5AREL3680, DUKHCONP03Z5ARGF3095, DUKHCONP03Z5ARFF3395, DUKHCONP03Z5MSEX5005 | -27d |
| DUKHCONP03Z5PLTC8005 |  | Pre-Commissioning & Testing of Plumbing Works | 25d | 2014-08-18 | 2014-09-15 | DUKHCONP03Z5PLRF4355, DUKHCONP03Z5ARRF3620, DUKHCONP03Z5ARFF3395, DUKHCONP03Z5AREL3680, DUKHCONP03Z5ARGF3095, DUKHCONP03Z4PLTC8005, DUKHCONP03Z5MSEX5005, DUKHCONP03Z5ARRF3655, DUKHCONP03Z5WTEX5065, DUKHCONP03Z5PLRF4350, DUKHCONP03Z5PLGF4320, DUKHCONP03Z5ARRF3660 | -27d |
|  | L60 | **PACKAGE-3 INFRASTRUCTURE WORKS** |  | 2013-09-17 | 2014-09-01 |  |  |
|  | 10 | **ZONE - 1** |  | 2013-09-17 | 2014-05-20 |  |  |
|  | 10 | **INFRASTRUCTURE WORKS** |  | 2013-09-17 | 2014-05-20 |  |  |
|  | 10 | **DRAINAGE LINES** |  | 2013-09-17 | 2013-11-07 |  |  |
| DUKHCONI03Z1DRGL5115 |  | Excavation for Drainage line | 25d | 2013-09-17 | 2013-10-15 | DUKHCONP03Z2STFF2020 SS, DUKHENGI03DWDRAP5810 | -22d |
| DUKHCONI03Z1DRGL5120 |  | Laying of Drainage line | 25d | 2013-09-24 | 2013-10-24 | DUKHCONI03Z1DRGL5115 SS+6d, DUKHCONI03Z1DRGL5115 FF+6d | -15d |
| DUKHCONI03Z1DRGL5125 |  | Testing of Drainage line | 25d | 2013-10-02 | 2013-11-02 | DUKHCONI03Z1DRGL5120 FF+7d, DUKHCONI03Z1DRGL5120 SS+7d | -15d |
| DUKHCONI03Z1DRGL5130 |  | Backfilling Drainage line | 15d | 2013-10-22 | 2013-11-07 | DUKHCONI03Z1DRGL5125 FF+5d, DUKHCONI03Z1DRGL5125 SS+10d | -15d |
|  | 15 | **MANHOLES & SOAKAWAY** |  | 2013-10-22 | 2014-01-12 |  |  |
| DUKHCONI03Z1SAGL5135 |  | Construction of manholes Drainage | 25d | 2013-10-22 | 2013-11-19 | DUKHCONI03Z1DRGL5115, DUKHCONI03Z1DRGL5130 FF+10d | 40d |
| DUKHCONI03Z1SAGL5140 |  | Construction of soakaways | 25d | 2013-10-22 | 2013-11-19 | DUKHCONI03Z1DRGL5115, DUKHCONI03Z1DRGL5130 FF+10d | -13d |
| DUKHCONI03Z1SAGL5145 |  | Construction of Road gullies | 25d | 2013-11-20 | 2013-12-19 | DUKHCONI03Z1SAGL5140 | -13d |
| DUKHCONI03Z1SAGL5150 |  | Connection with existing sewer manhole | 20d | 2013-12-21 | 2014-01-12 | DUKHCONI03Z1SAGL5145, DUKHCONI03Z1SAGL5135 | 15d |
|  | 20 | **WATER SUPPLY SYSTEM** |  | 2013-11-03 | 2014-01-18 |  |  |
| DUKHCONI03Z1WSGL5155 |  | Excavation for water line | 25d | 2013-11-03 | 2013-12-01 | DUKHENGI03DWWSAP5830, DUKHCONI03Z1DRGL5130 SS+10d | -13d |
| DUKHCONI03Z1WSGL5160 |  | Laying of water line | 25d | 2013-11-09 | 2013-12-07 | DUKHCONI03Z1WSGL5155 SS+5d | -13d |
| DUKHCONI03Z1WSGL5165 |  | Testing of potable water line | 25d | 2013-11-14 | 2013-12-12 | DUKHCONI03Z1WSGL5160 SS+5d | -13d |
| DUKHCONI03Z1WSGL5170 |  | Backfilling potable water line | 25d | 2013-11-20 | 2013-12-19 | DUKHCONI03Z1SAGL5145 FF, DUKHCONI03Z1WSGL5165 SS+5d | -13d |
| DUKHCONI03Z1WSGL5175 |  | Construction of valve chambers & Thrust Blocks | 25d | 2013-11-26 | 2013-12-25 | DUKHCONI03Z1WSGL5170 FF+5d, DUKHCONI03Z1WSGL5155 SS+10d | 10d |
| DUKHCONI03Z1WSGL5180 |  | Installation of meter ,Accessories & Connection | 20d | 2013-12-26 | 2014-01-18 | DUKHCONI03Z1WSGL5175 | 10d |
|  | 25 | **FIREFIGHTING LINES** |  | 2013-11-26 | 2014-01-26 |  |  |
| DUKHCONI03Z1FFGL5185 |  | Excavation for firefighting line | 25d | 2013-11-26 | 2013-12-25 | DUKHENGI03DWFFAP5820, DUKHCONI03Z1WSGL5170 SS+5d | -13d |
| DUKHCONI03Z1FFGL5190 |  | Laying of firefighting line | 25d | 2013-12-04 | 2014-01-02 | DUKHCONI03Z1FFGL5185 SS+7d, DUKHPROGEN00PRDV3540, DUKHPROGEN00PRDV3650 | -13d |
| DUKHCONI03Z1FFGL5195 |  | Testing of firefighting line | 25d | 2013-12-10 | 2014-01-08 | DUKHCONI03Z1FFGL5190 SS+5d | -13d |
| DUKHCONI03Z1FFGL5200 |  | Backfilling firefighting line | 25d | 2013-12-16 | 2014-01-14 | DUKHCONI03Z1FFGL5195 SS+5d | -13d |
| DUKHCONI03Z1FFGL5205 |  | Construction of valve chambers & Thrust Blocks | 25d | 2013-12-23 | 2014-01-20 | DUKHCONI03Z1FFGL5185 SS+10d, DUKHCONI03Z1FFGL5200 FF+5d, DUKHPROGEN00PRDV3690 | 3d |
| DUKHCONI03Z1FFGL5210 |  | Connection with existing Firewater System | 25d | 2013-12-29 | 2014-01-26 | DUKHCONI03Z1WSGL5180 FF, DUKHCONI03Z1FFGL5205 FF+5d | 3d |
|  | 30 | **ELECTRICAL LINES** |  | 2013-12-25 | 2014-02-20 |  |  |
| DUKHCONI03Z1ELGL5215 |  | Excavation Cable Trenches & Duct Banks | 25d | 2013-12-25 | 2014-01-22 | DUKHENGI03DWELAP5840, DUKHCONI03Z1FFGL5200 SS+7d | -9d |

| ID | WBS | Task | Duration | Start | Finish | Predecessors | Total float |
| --- | --- | --- | --- | --- | --- | --- | --- |
| DUKHCONI03Z1ELGL5220 |  | Laying of electrical cables | 25d | 2013-12-31 | 2014-01-28 | DUKHCONI03Z1ELGL5215 SS+5d | -8d |
| DUKHCONI03Z1ELGL5225 |  | Backfilling Electrical trench | 25d | 2014-01-11 | 2014-02-08 | DUKHCONI03Z1ELGL5215 FF+7d, DUKHCONI03Z1ELGL5220 SS+9d | -8d |
| DUKHCONI03Z1ELGL5230 |  | Construction of Submain Board & Feeder Pillar | 25d | 2014-01-22 | 2014-02-20 | DUKHCONI03Z1ELGL5225 SS+10d, DUKHCONI03Z1ELGL5225 FF+10d | 27d |
|  | 35 | **STREET LIGHTING** |  | 2013-12-25 | 2014-03-22 |  |  |
| DUKHCONI03Z1STGL5235 |  | Excavation for Street lighting | 25d | 2013-12-25 | 2014-01-22 | DUKHENGI03DWSTAP5850, DUKHCONI03Z1ELGL5215 SS | -9d |
| DUKHCONI03Z1STGL5240 |  | Construction of Duct Banks | 25d | 2013-12-31 | 2014-01-28 | DUKHCONI03Z1STGL5235 SS+5d | -9d |
| DUKHCONI03Z1STGL5245 |  | Construction of Foundation | 25d | 2013-12-31 | 2014-01-28 | DUKHCONI03Z1STGL5240 SS | -9d |
| DUKHCONI03Z1STGL5250 |  | Backfilling Street Lighting | 25d | 2014-01-06 | 2014-02-03 | DUKHCONI03Z1STGL5245 SS+5d, DUKHCONI03Z1STGL5235 FF+5d | -9d |
| DUKHCONI03Z1STGL5255 |  | Installation of light Post | 25d | 2014-02-06 | 2014-03-08 | DUKHPROGEN00PRDV3350, DUKHPROGEN00PRDV3250, DUKHCONI03Z1STGL5250 SS+10d, DUKHCONI03Z1ELGL5230 SS+13d | 32d |
| DUKHCONI03Z1STGL5260 |  | Electrical Works | 25d | 2014-02-22 | 2014-03-22 | DUKHCONI03Z1ELGL5230, DUKHCONI03Z1STGL5255 SS+7d | 27d |
|  | 40 | **IRRIGATION LINES** |  | 2014-02-09 | 2014-04-16 |  |  |
| DUKHCONI03Z1IRGL5265 |  | Excavation for irrigation line | 25d | 2014-02-09 | 2014-03-10 | DUKHCONI03Z1ELGL5225, DUKHENGI03DWIRAP5870 | 0d |
| DUKHCONI03Z1IRGL5270 |  | Laying of irrigationline | 25d | 2014-02-16 | 2014-03-16 | DUKHCONI03Z1IRGL5265 SS+5d | 0d |
| DUKHCONI03Z1IRGL5275 |  | Testing of irrigation line | 25d | 2014-02-22 | 2014-03-22 | DUKHCONI03Z1IRGL5270 SS+5d | 0d |
| DUKHCONI03Z1IRGL5280 |  | Backfilling irrigation line | 25d | 2014-02-27 | 2014-03-27 | DUKHCONI03Z1IRGL5275 SS+5d | 0d |
| DUKHCONI03Z1IRGL5285 |  | Construction of Thrust Blocks,Pull boxes | 25d | 2014-03-11 | 2014-04-08 | DUKHCONI03Z1IRGL5280 FF+10d, DUKHCONI03Z1ELGL5225 SS+10d | 10d |
| DUKHCONI03Z1IRGL5290 |  | Irrigation Fittings (Nozzle,Values) | 25d | 2014-03-19 | 2014-04-16 | DUKHPROGEN00PRDV3870, DUKHPROGEN00PRDV3760, DUKHPROGEN00PRDV3840, DUKHPROGEN00PRDV3860, DUKHCONI03Z1IRGL5280 SS+10d, DUKHCONI03Z1IRGL5285 SS+7d, DUKHPROGEN00PRDV3810, DUKHPROGEN00PRDV3830 | 10d |
|  | 45 | **TELECOMMUNICATION LINES** |  | 2014-01-18 | 2014-05-20 |  |  |
| DUKHCONI03Z1TCGL5295 |  | Excavation Telecommunication trenches | 20d | 2014-01-18 | 2014-02-09 | DUKHCONI03Z1STGL5250 SS+10d, DUKHENGI03DWTCAP5860 | -9d |
| DUKHCONI03Z1TCGL5300 |  | Laying of cables | 20d | 2014-01-23 | 2014-02-16 | DUKHCONI03Z1TCGL5295 SS+5d | -9d |
| DUKHCONI03Z1TCGL5305 |  | Backfilling telecommunication trench | 20d | 2014-01-29 | 2014-02-22 | DUKHCONI03Z1TCGL5300 SS+5d | -9d |
| DUKHCONI03Z1TCGL5310 |  | Connection & Installation | 20d | 2014-04-28 | 2014-05-20 | DUKHCONI03Z1PSGL7015 FF, DUKHCONI03Z1TCGL5305 FF+10d, DUKHCONI03Z1TCGL5305 SS+10d | 1d |
|  | 50 | **BOUNDARY WALL** |  | 2014-01-18 | 2014-03-04 |  |  |
| DUKHCONI03Z1BWGL5315 |  | Construction of Boundary Wall (Ht-3m) | 25d | 2014-01-18 | 2014-02-16 | DUKHENGI03DWBWAP5890, DUKHCONI03Z1STGL5250 SS+10d, DUKHPROGEN00PRDV3820 | 32d |
| DUKHCONI03Z1BWGL5320 |  | Install.Steel Gate,Entance Barrier (3m Wall) | 25d | 2014-02-03 | 2014-03-04 | DUKHPROGEN00PRDV3800, DUKHCONI03Z1BWGL5315 SS+14d | 32d |
|  | 55 | **ROAD WORKS** |  | 2014-02-10 | 2014-04-27 |  |  |
| DUKHCONI03Z1RWGL6000 |  | Excavation & Earth Filling | 10d | 2014-02-10 | 2014-02-22 | DUKHCONI03Z1FFGL5210, DUKHCONI03Z1TCGL5305 SS+10d, DUKHCONI03Z1ELGL5225, DUKHENGI03DWBWAP5890, DUKHCONI03Z1STGL5250, DUKHCONI03Z1SAGL5150, DUKHCONI03Z1FFGL5200 | -9d |
| DUKHCONI03Z1RWGL6005 |  | Laying of Sub Grade | 25d | 2014-02-23 | 2014-03-23 | DUKHCONI03Z1RWGL6000 | -9d |
| DUKHCONI03Z1RWGL6010 |  | Laying of Precast Kerbs | 25d | 2014-03-06 | 2014-04-03 | DUKHCONI03Z1RWGL6005 SS+10d | -9d |
| DUKHCONI03Z1RWGL6015 |  | Laying of Granular Sub Base Coarse | 20d | 2014-03-18 | 2014-04-09 | DUKHCONI03Z1RWGL6010 SS+10d | -9d |
| DUKHCONI03Z1RWGL6020 |  | Laying of Road Base Asphalt Concrete | 5d | 2014-04-10 | 2014-04-15 | DUKHCONI03Z1RWGL6015 | 1d |
| DUKHCONI03Z1RWGL6025 |  | Laying of Asphalt Wearing Coarse | 5d | 2014-04-16 | 2014-04-21 | DUKHCONI03Z1RWGL6020 | 16d |
| DUKHCONI03Z1RWGL6030 |  | Traffic Signage & Road Marking | 5d | 2014-04-22 | 2014-04-27 | DUKHCONI03Z1RWGL6025, DUKHPROGEN00PRDV3700, DUKHPROGEN00PRDV3710, DUKHPROGEN00PRDV3720 | 16d |
|  | 60 | **PARKING SHED** |  | 2014-03-24 | 2014-05-20 |  |  |
| DUKHCONI03Z1PSGL7000 |  | Excavation | 15d | 2014-03-24 | 2014-04-09 | DUKHENGI03DWPSAP5900, DUKHCONI03Z1RWGL6015 SS+5d | 6d |
| DUKHCONI03Z1PSGL7005 |  | Foundation casting | 15d | 2014-04-05 | 2014-04-21 | DUKHCONI03Z1PSGL7000 FF+5d, DUKHCONI03Z1RWGL6015 FF+10d, DUKHCONI03Z1PSGL7000 SS+5d | 1d |
| DUKHCONI03Z1PSGL7010 |  | Column, Frame& Fabrics Erection | 25d | 2014-04-16 | 2014-05-14 | DUKHCONI03Z1RWGL6020, DUKHPROGEN00PRDV3730, DUKHCONI03Z1RWGL6030 FF, DUKHCONI03Z1PSGL7005 SS+10d | 1d |
| DUKHCONI03Z1PSGL7015 |  | Electrical Works-Parking Shed | 25d | 2014-04-22 | 2014-05-20 | DUKHCONI03Z1STGL5260, DUKHCONI03Z1PSGL7010 SS+5d | 1d |
|  | 65 | **HARD LANDSCAPING** |  | 2014-02-10 | 2014-05-03 |  |  |
| DUKHCONI03Z1HDGL7020 |  | Precast Concrete Kerbs works | 20d | 2014-02-10 | 2014-03-05 | DUKHCONI03Z1RWGL6000 SS, DUKHENGI03DWSLAP5880 | 11d |
| DUKHCONI03Z1HDGL7025 |  | Interlocking for Walkways | 25d | 2014-02-23 | 2014-03-23 | DUKHCONI03Z1HDGL7020 SS+10d, DUKHPROGEN00PRDV3600 | 11d |
| DUKHCONI03Z1HDGL7030 |  | Construction of Retaining wall | 25d | 2014-03-06 | 2014-04-03 | DUKHCONI03Z1HDGL7025 SS+10d | 11d |
| DUKHCONI03Z1HDGL7035 |  | Construction of Wash Stone Boulders | 25d | 2014-03-06 | 2014-04-03 | DUKHPROGEN00PRDV3740, DUKHCONI03Z1HDGL7030 SS | 11d |
| DUKHCONI03Z1HDGL7040 |  | Construction of Speed Humps | 10d | 2014-04-22 | 2014-05-03 | DUKHCONI03Z1HDGL7035 SS, DUKHCONI03Z1RWGL6025, DUKHPROGEN00PRDV3750 | 36d |
|  | 70 | **SOFT LANDSCAPING** |  | 2014-03-19 | 2014-05-10 |  |  |
| DUKHCONI03Z1SLGL7200 |  | Excavation | 25d | 2014-03-19 | 2014-04-16 | DUKHCONI03Z1IRGL5290 SS, DUKHCONI03Z1HDGL7035 SS+10d, DUKHENGI03DWSLAP5880 | 10d |
| DUKHCONI03Z1SLGL7205 |  | Sweet Soil Laying | 25d | 2014-03-31 | 2014-04-28 | DUKHCONI03Z1SLGL7200 SS+10d | 10d |
| DUKHCONI03Z1SLGL7210 |  | Plantation works | 25d | 2014-04-12 | 2014-05-10 | DUKHCONI03Z1HDGL7040 FF, DUKHCONI03Z1SLGL7205 SS+10d | 30d |
|  | 15 | **ZONE- 2** |  | 2013-11-09 | 2014-07-09 |  |  |
|  | 10 | **INFRASTRUCTURE WORKS** |  | 2013-11-09 | 2014-07-09 |  |  |
|  | 10 | **DRAINAGE LINES** |  | 2013-11-09 | 2013-12-29 |  |  |
| DUKHCONI03Z2DRGL5115 |  | Excavation for Drainage line | 25d | 2013-11-09 | 2013-12-07 | DUKHCONI03Z1DRGL5130 | -15d |
| DUKHCONI03Z2DRGL5120 |  | Laying of Drainage line | 25d | 2013-11-16 | 2013-12-14 | DUKHCONI03Z2DRGL5115 FF+6d, DUKHCONI03Z2DRGL5115 SS+6d | -15d |
| DUKHCONI03Z2DRGL5125 |  | Testing of Drainage line | 25d | 2013-11-24 | 2013-12-23 | DUKHCONI03Z2DRGL5120 SS+7d, DUKHCONI03Z2DRGL5120 FF+7d | -15d |
| DUKHCONI03Z2DRGL5130 |  | Backfilling Drainage line | 15d | 2013-12-11 | 2013-12-29 | DUKHCONI03Z2DRGL5125 SS+10d, DUKHCONI03Z2DRGL5125 FF+5d | -15d |
|  | 15 | **MANHOLES & SOAKAWAY** |  | 2013-12-11 | 2014-03-04 |  |  |
| DUKHCONI03Z2SAGL5135 |  | Construction of manholes Drainage | 25d | 2013-12-11 | 2014-01-09 | DUKHCONI03Z2DRGL5130 FF+10d, DUKHCONI03Z1SAGL5135, DUKHCONI03Z2DRGL5115 | 37d |
| DUKHCONI03Z2SAGL5140 |  | Construction of soakaways | 25d | 2013-12-11 | 2014-01-09 | DUKHCONI03Z2DRGL5130 FF+10d, DUKHCONI03Z2DRGL5115 | -14d |
| DUKHCONI03Z2SAGL5145 |  | Construction of Road gullies | 25d | 2014-01-11 | 2014-02-08 | DUKHCONI03Z1SAGL5145, DUKHCONI03Z2SAGL5140 | -14d |
| DUKHCONI03Z2SAGL5150 |  | Connection with existing sewer manhole | 20d | 2014-02-09 | 2014-03-04 | DUKHCONI03Z2SAGL5135, DUKHCONI03Z2SAGL5145 | 12d |
|  | 20 | **WATER SUPPLY SYSTEM** |  | 2013-12-24 | 2014-03-10 |  |  |
| DUKHCONI03Z2WSGL5155 |  | Excavation for water line | 25d | 2013-12-24 | 2014-01-21 | DUKHCONI03Z1WSGL5170, DUKHCONI03Z2DRGL5130 SS+10d | -14d |
| DUKHCONI03Z2WSGL5160 |  | Laying of water line | 25d | 2013-12-30 | 2014-01-27 | DUKHCONI03Z2WSGL5155 SS+5d | -14d |
| DUKHCONI03Z2WSGL5165 |  | Testing of potable water line | 25d | 2014-01-05 | 2014-02-02 | DUKHCONI03Z2WSGL5160 SS+5d | -14d |
| DUKHCONI03Z2WSGL5170 |  | Backfilling potable water line | 25d | 2014-01-11 | 2014-02-08 | DUKHCONI03Z2SAGL5145 FF, DUKHCONI03Z2WSGL5165 SS+5d | -14d |
| DUKHCONI03Z2WSGL5175 |  | Construction of valve chambers & Thrust Blocks | 25d | 2014-01-16 | 2014-02-15 | DUKHCONI03Z1WSGL5175, DUKHCONI03Z2WSGL5155 SS+10d, DUKHCONI03Z2WSGL5170 FF+5d | 7d |
| DUKHCONI03Z2WSGL5180 |  | Installation of meter ,Accessories & Connection | 20d | 2014-02-16 | 2014-03-10 | DUKHCONI03Z2WSGL5175, DUKHCONI03Z1WSGL5180 | 7d |
|  | 25 | **FIREFIGHTING LINES** |  | 2014-01-16 | 2014-03-18 |  |  |
| DUKHCONI03Z2FFGL5185 |  | Excavation for firefighting line | 25d | 2014-01-16 | 2014-02-15 | DUKHCONI03Z1FFGL5200, DUKHCONI03Z2WSGL5170 SS+5d | -14d |
| DUKHCONI03Z2FFGL5190 |  | Laying of firefighting line | 25d | 2014-01-25 | 2014-02-23 | DUKHCONI03Z2FFGL5185 SS+7d | -14d |

| ID | WBS | Task | Duration | Start | Finish | Predecessors | Total float |
| --- | --- | --- | --- | --- | --- | --- | --- |
| DUKHCONI03Z2FFGL5195 |  | Testing of firefighting line | 25d | 2014-01-30 | 2014-03-01 | DUKHCONI03Z2FFGL5190 SS+5d | -14d |
| DUKHCONI03Z2FFGL5200 |  | Backfilling firefighting line | 25d | 2014-02-05 | 2014-03-06 | DUKHCONI03Z2FFGL5195 SS+5d | -14d |
| DUKHCONI03Z2FFGL5205 |  | Construction of valve chambers & Thrust Blocks | 25d | 2014-02-12 | 2014-03-12 | DUKHCONI03Z2FFGL5185 SS+10d, DUKHCONI03Z1FFGL5205, DUKHCONI03Z2FFGL5200 FF+5d | 0d |
| DUKHCONI03Z2FFGL5210 |  | Connection with existing Firewater System | 25d | 2014-02-18 | 2014-03-18 | DUKHCONI03Z1FFGL5210, DUKHCONI03Z2WSGL5180 FF, DUKHCONI03Z2FFGL5205 FF+5d | 0d |
|  | 30 | **ELECTRICAL LINES** |  | 2014-02-15 | 2014-04-09 |  |  |
| DUKHCONI03Z2ELGL5215 |  | Excavation Cable Trenches & Duct Banks | 25d | 2014-02-15 | 2014-03-15 | DUKHCONI03Z2FFGL5200 SS+7d, DUKHCONI03Z1ELGL5225 | -12d |
| DUKHCONI03Z2ELGL5220 |  | Laying of electrical cables | 25d | 2014-02-20 | 2014-03-20 | DUKHCONI03Z2ELGL5215 SS+5d | -9d |
| DUKHCONI03Z2ELGL5225 |  | Backfilling Electrical trench | 25d | 2014-03-01 | 2014-03-29 | DUKHCONI03Z2ELGL5215 FF+7d, DUKHCONI03Z2ELGL5220 SS+7d | -9d |
| DUKHCONI03Z2ELGL5230 |  | Construction of Submain Board & Feeder Pillar | 25d | 2014-03-12 | 2014-04-09 | DUKHCONI03Z1ELGL5230, DUKHCONI03Z2ELGL5225 SS+10d, DUKHCONI03Z2ELGL5225 FF+10d | 31d |
|  | 35 | **STREET LIGHTING** |  | 2014-02-15 | 2014-05-08 |  |  |
| DUKHCONI03Z2STGL5235 |  | Excavation for Street lighting | 25d | 2014-02-15 | 2014-03-15 | DUKHCONI03Z1STGL5250 SS+10d, DUKHCONI03Z2ELGL5215 SS | -12d |
| DUKHCONI03Z2STGL5240 |  | Construction of Duct Banks | 25d | 2014-02-20 | 2014-03-20 | DUKHCONI03Z2STGL5235 SS+5d | -12d |
| DUKHCONI03Z2STGL5245 |  | Construction of Foundation | 25d | 2014-02-20 | 2014-03-20 | DUKHCONI03Z2STGL5240 SS | -12d |
| DUKHCONI03Z2STGL5250 |  | Backfilling Street Lighting | 25d | 2014-02-26 | 2014-03-26 | DUKHCONI03Z2STGL5245 SS+5d, DUKHCONI03Z2STGL5235 FF+5d | -12d |
| DUKHCONI03Z2STGL5255 |  | Installation of light Post | 25d | 2014-03-10 | 2014-04-07 | DUKHCONI03Z1STGL5255, DUKHCONI03Z2STGL5250 SS+10d | 51d |
| DUKHCONI03Z2STGL5260 |  | Electrical Works | 25d | 2014-04-10 | 2014-05-08 | DUKHCONI03Z2STGL5255 SS+7d, DUKHCONI03Z1STGL5260, DUKHCONI03Z2ELGL5230 | 31d |
|  | 40 | **IRRIGATION LINES** |  | 2014-03-30 | 2014-06-03 |  |  |
| DUKHCONI03Z2IRGL5265 |  | Excavation for irrigation line | 25d | 2014-03-30 | 2014-04-27 | DUKHCONI03Z1IRGL5280, DUKHCONI03Z2ELGL5225 | -1d |
| DUKHCONI03Z2IRGL5270 |  | Laying of irrigationline | 25d | 2014-04-05 | 2014-05-03 | DUKHCONI03Z2IRGL5265 SS+5d | -1d |
| DUKHCONI03Z2IRGL5275 |  | Testing of irrigation line | 25d | 2014-04-10 | 2014-05-08 | DUKHCONI03Z2IRGL5270 SS+5d | -1d |
| DUKHCONI03Z2IRGL5280 |  | Backfilling irrigation line | 25d | 2014-04-16 | 2014-05-14 | DUKHCONI03Z2IRGL5275 SS+5d | -1d |
| DUKHCONI03Z2IRGL5285 |  | Construction of Thrust Blocks,Pull boxes | 25d | 2014-04-28 | 2014-05-26 | DUKHCONI03Z2ELGL5225 SS+10d, DUKHCONI03Z2IRGL5280 FF+10d | 4d |
| DUKHCONI03Z2IRGL5290 |  | Irrigation Fittings (Nozzle,Values) | 25d | 2014-05-06 | 2014-06-03 | DUKHCONI03Z2IRGL5285 SS+7d, DUKHCONI03Z2IRGL5280 SS+10d | 4d |
|  | 45 | **TELECOMMUNICATION LINES** |  | 2014-03-10 | 2014-06-12 |  |  |
| DUKHCONI03Z2TCGL5295 |  | Excavation Telecommunication trenches | 20d | 2014-03-10 | 2014-04-01 | DUKHCONI03Z1TCGL5305 SS+10d, DUKHCONI03Z2STGL5250 SS+10d | -12d |
| DUKHCONI03Z2TCGL5300 |  | Laying of cables | 20d | 2014-03-16 | 2014-04-07 | DUKHCONI03Z2TCGL5295 SS+5d | -12d |
| DUKHCONI03Z2TCGL5305 |  | Backfilling telecommunication trench | 20d | 2014-03-22 | 2014-04-13 | DUKHCONI03Z2TCGL5300 SS+5d | -12d |
| DUKHCONI03Z2TCGL5310 |  | Connection & Installation | 20d | 2014-05-21 | 2014-06-12 | DUKHCONI03Z1TCGL5310, DUKHCONI03Z2TCGL5305 SS+10d | 1d |
|  | 50 | **BOUNDARY WALL** |  | 2014-03-10 | 2014-04-23 |  |  |
| DUKHCONI03Z2BWGL5315 |  | Construction of Boundary Wall (Ht-3m) | 25d | 2014-03-10 | 2014-04-07 | DUKHCONI03Z2STGL5250 SS+10d, DUKHCONI03Z1BWGL5315 | 14d |
| DUKHCONI03Z2BWGL5320 |  | Install.Steel Gate,Entance Barrier (3m Wall) | 25d | 2014-03-26 | 2014-04-23 | DUKHCONI03Z2BWGL5315 SS+14d, DUKHCONI03Z1BWGL5320 | 14d |
|  | 55 | **ROAD WORKS** |  | 2014-04-02 | 2014-06-16 |  |  |
| DUKHCONI03Z2RWGL6000 |  | Excavation & Earth Filling | 10d | 2014-04-02 | 2014-04-13 | DUKHCONI03Z2ELGL5225, DUKHCONI03Z1RWGL6015 SS+10d, DUKHCONI03Z2STGL5250, DUKHCONI03Z2FFGL5200, DUKHCONI03Z2TCGL5305 SS+10d, DUKHCONI03Z2FFGL5210, DUKHCONI03Z2SAGL5150 | -12d |
| DUKHCONI03Z2RWGL6005 |  | Laying of Sub Grade | 25d | 2014-04-14 | 2014-05-12 | DUKHCONI03Z2RWGL6000 | -12d |
| DUKHCONI03Z2RWGL6010 |  | Laying of Precast Kerbs | 25d | 2014-04-26 | 2014-05-24 | DUKHCONI03Z2RWGL6005 SS+10d | -12d |
| DUKHCONI03Z2RWGL6015 |  | Laying of Granular Sub Base Coarse | 20d | 2014-05-07 | 2014-05-29 | DUKHCONI03Z2RWGL6010 SS+10d | -12d |
| DUKHCONI03Z2RWGL6020 |  | Laying of Road Base Asphalt Concrete | 5d | 2014-05-31 | 2014-06-04 | DUKHCONI03Z2RWGL6015 | 3d |
| DUKHCONI03Z2RWGL6025 |  | Laying of Asphalt Wearing Coarse | 5d | 2014-06-05 | 2014-06-10 | DUKHCONI03Z1RWGL6025, DUKHCONI03Z2RWGL6020 | 18d |
| DUKHCONI03Z2RWGL6030 |  | Traffic Signage & Road Marking | 5d | 2014-06-11 | 2014-06-16 | DUKHCONI03Z1RWGL6030, DUKHCONI03Z2RWGL6025 | 18d |
|  | 60 | **PARKING SHED** |  | 2014-05-13 | 2014-07-09 |  |  |
| DUKHCONI03Z2PSGL7000 |  | Excavation | 15d | 2014-05-13 | 2014-05-29 | DUKHCONI03Z2RWGL6015 SS+5d, DUKHCONI03Z1PSGL7005 | 8d |
| DUKHCONI03Z2PSGL7005 |  | Foundation casting | 15d | 2014-05-25 | 2014-06-10 | DUKHCONI03Z2PSGL7000 FF+5d, DUKHCONI03Z2RWGL6015 FF+10d, DUKHCONI03Z2PSGL7000 SS+5d | 3d |
| DUKHCONI03Z2PSGL7010 |  | Column, Frame& Fabrics Erection | 25d | 2014-06-05 | 2014-07-03 | DUKHCONI03Z1PSGL7010, DUKHCONI03Z2PSGL7005 SS+10d, DUKHCONI03Z2RWGL6020, DUKHCONI03Z2RWGL6030 FF | 3d |
| DUKHCONI03Z2PSGL7015 |  | Electrical Works-Parking Shed | 25d | 2014-06-11 | 2014-07-09 | DUKHCONI03Z1PSGL7015, DUKHCONI03Z2PSGL7010 SS+5d, DUKHCONI03Z2STGL5260 | 3d |
|  | 65 | **HARD LANDSCAPING** |  | 2014-04-02 | 2014-06-22 |  |  |
| DUKHCONI03Z2HDGL7020 |  | Precast Concrete Kerbs works | 20d | 2014-04-02 | 2014-04-24 | DUKHCONI03Z2RWGL6000 SS | 3d |
| DUKHCONI03Z2HDGL7025 |  | Interlocking for Walkways | 25d | 2014-04-14 | 2014-05-12 | DUKHCONI03Z2HDGL7020 SS+10d | 3d |
| DUKHCONI03Z2HDGL7030 |  | Construction of Retaining wall | 25d | 2014-04-26 | 2014-05-24 | DUKHCONI03Z2HDGL7025 SS+10d, DUKHCONI03Z1HDGL7030 | 3d |
| DUKHCONI03Z2HDGL7035 |  | Construction of Wash Stone Boulders | 25d | 2014-04-26 | 2014-05-24 | DUKHCONI03Z1HDGL7035, DUKHCONI03Z2HDGL7030 SS | 3d |
| DUKHCONI03Z2HDGL7040 |  | Construction of Speed Humps | 10d | 2014-06-11 | 2014-06-22 | DUKHCONI03Z1HDGL7040, DUKHCONI03Z2RWGL6025, DUKHCONI03Z2HDGL7035 SS | 33d |
|  | 70 | **SOFT LANDSCAPING** |  | 2014-05-07 | 2014-06-28 |  |  |
| DUKHCONI03Z2SLGL7200 |  | Excavation | 25d | 2014-05-07 | 2014-06-04 | DUKHCONI03Z2HDGL7035 SS+10d, DUKHCONI03Z2IRGL5290 SS, DUKHCONI03Z1SLGL7205 | 3d |
| DUKHCONI03Z2SLGL7205 |  | Sweet Soil Laying | 25d | 2014-05-19 | 2014-06-16 | DUKHCONI03Z2SLGL7200 SS+10d | 3d |
| DUKHCONI03Z2SLGL7210 |  | Plantation works | 25d | 2014-05-31 | 2014-06-28 | DUKHCONI03Z2SLGL7205 SS+10d, DUKHCONI03Z1SLGL7210 | 13d |
|  | 20 | **ZONE - 3** |  | 2013-12-30 | 2014-09-01 |  |  |
|  | 10 | **INFRASTRUCTURE WORKS** |  | 2013-12-30 | 2014-09-01 |  |  |
|  | 10 | **DRAINAGE LINES** |  | 2013-12-30 | 2014-02-18 |  |  |
| DUKHCONI03Z3DRGL5115 |  | Excavation for Drainage line | 25d | 2013-12-30 | 2014-01-27 | DUKHCONI03Z2DRGL5130 | -15d |
| DUKHCONI03Z3DRGL5120 |  | Laying of Drainage line | 25d | 2014-01-06 | 2014-02-03 | DUKHCONI03Z3DRGL5115 SS+6d, DUKHCONI03Z3DRGL5115 FF+6d | -15d |
| DUKHCONI03Z3DRGL5125 |  | Testing of Drainage line | 25d | 2014-01-14 | 2014-02-12 | DUKHCONI03Z3DRGL5120 FF+7d, DUKHCONI03Z3DRGL5120 SS+7d | -15d |
| DUKHCONI03Z3DRGL5130 |  | Backfilling Drainage line | 15d | 2014-02-01 | 2014-02-18 | DUKHCONI03Z3DRGL5125 FF+5d, DUKHCONI03Z3DRGL5125 SS+10d | -15d |
|  | 15 | **MANHOLES & SOAKAWAY** |  | 2014-02-01 | 2014-04-23 |  |  |
| DUKHCONI03Z3SAGL5135 |  | Construction of manholes Drainage | 25d | 2014-02-01 | 2014-03-02 | DUKHCONI03Z3DRGL5115, DUKHCONI03Z3DRGL5130 FF+10d, DUKHCONI03Z2SAGL5135 | 34d |
| DUKHCONI03Z3SAGL5140 |  | Construction of soakaways | 25d | 2014-02-01 | 2014-03-02 | DUKHCONI03Z3DRGL5130 FF+10d, DUKHCONI03Z3DRGL5115 | -15d |
| DUKHCONI03Z3SAGL5145 |  | Construction of Road gullies | 25d | 2014-03-03 | 2014-03-31 | DUKHCONI03Z3SAGL5140, DUKHCONI03Z2SAGL5145 | -15d |
| DUKHCONI03Z3SAGL5150 |  | Connection with existing sewer manhole | 20d | 2014-04-01 | 2014-04-23 | DUKHCONI03Z3SAGL5145, DUKHCONI03Z3SAGL5135 | 9d |
|  | 20 | **WATER SUPPLY SYSTEM** |  | 2014-02-13 | 2014-04-29 |  |  |
| DUKHCONI03Z3WSGL5155 |  | Excavation for water line | 25d | 2014-02-13 | 2014-03-13 | DUKHCONI03Z3DRGL5130 SS+10d, DUKHCONI03Z2WSGL5170 | -15d |
| DUKHCONI03Z3WSGL5160 |  | Laying of water line | 25d | 2014-02-19 | 2014-03-19 | DUKHCONI03Z3WSGL5155 SS+5d | -15d |
| DUKHCONI03Z3WSGL5165 |  | Testing of potable water line | 25d | 2014-02-25 | 2014-03-25 | DUKHCONI03Z3WSGL5160 SS+5d | -15d |

| ID | WBS | Task | Duration | Start | Finish | Predecessors | Total float |
| --- | --- | --- | --- | --- | --- | --- | --- |
| DUKHCONI03Z3WSGL5170 |  | Backfilling potable water line | 25d | 2014-03-03 | 2014-03-31 | DUKHCONI03Z3SAGL5145 FF, DUKHCONI03Z3WSGL5165 SS+5d | -15d |
| DUKHCONI03Z3WSGL5175 |  | Construction of valve chambers & Thrust Blocks | 25d | 2014-03-09 | 2014-04-06 | DUKHCONI03Z3WSGL5170 FF+5d, DUKHCONI03Z3WSGL5155 SS+10d, DUKHCONI03Z2WSGL5175 | 4d |
| DUKHCONI03Z3WSGL5180 |  | Installation of meter ,Accessories & Connection | 20d | 2014-04-07 | 2014-04-29 | DUKHCONI03Z3WSGL5175, DUKHCONI03Z2WSGL5180 | 4d |
|  | 25 | **FIREFIGHTING LINES** |  | 2014-03-09 | 2014-05-07 |  |  |
| DUKHCONI03Z3FFGL5185 |  | Excavation for firefighting line | 25d | 2014-03-09 | 2014-04-06 | DUKHCONI03Z3WSGL5170 SS+5d, DUKHCONI03Z2FFGL5200 | -15d |
| DUKHCONI03Z3FFGL5190 |  | Laying of firefighting line | 25d | 2014-03-17 | 2014-04-14 | DUKHCONI03Z3FFGL5185 SS+7d | -15d |
| DUKHCONI03Z3FFGL5195 |  | Testing of firefighting line | 25d | 2014-03-23 | 2014-04-20 | DUKHCONI03Z3FFGL5190 SS+5d | -15d |
| DUKHCONI03Z3FFGL5200 |  | Backfilling firefighting line | 25d | 2014-03-29 | 2014-04-26 | DUKHCONI03Z3FFGL5195 SS+5d | -15d |
| DUKHCONI03Z3FFGL5205 |  | Construction of valve chambers & Thrust Blocks | 25d | 2014-04-03 | 2014-05-01 | DUKHCONI03Z3FFGL5200 FF+5d, DUKHCONI03Z2FFGL5205, DUKHCONI03Z3FFGL5185 SS+10d | -3d |
| DUKHCONI03Z3FFGL5210 |  | Connection with existing Firewater System | 25d | 2014-04-09 | 2014-05-07 | DUKHCONI03Z3FFGL5205 FF+5d, DUKHCONI03Z2FFGL5210, DUKHCONI03Z3WSGL5180 FF | -3d |
|  | 30 | **ELECTRICAL LINES** |  | 2014-04-06 | 2014-05-29 |  |  |
| DUKHCONI03Z3ELGL5215 |  | Excavation Cable Trenches & Duct Banks | 25d | 2014-04-06 | 2014-05-04 | DUKHCONI03Z2ELGL5225, DUKHCONI03Z3FFGL5200 SS+7d | -15d |
| DUKHCONI03Z3ELGL5220 |  | Laying of electrical cables | 25d | 2014-04-12 | 2014-05-10 | DUKHCONI03Z3ELGL5215 SS+5d | -12d |
| DUKHCONI03Z3ELGL5225 |  | Backfilling Electrical trench | 25d | 2014-04-20 | 2014-05-18 | DUKHCONI03Z3ELGL5215 FF+7d, DUKHCONI03Z3ELGL5220 SS+7d | -12d |
| DUKHCONI03Z3ELGL5230 |  | Construction of Submain Board & Feeder Pillar | 25d | 2014-05-01 | 2014-05-29 | DUKHCONI03Z3ELGL5225 SS+10d, DUKHCONI03Z2ELGL5230, DUKHCONI03Z3ELGL5225 FF+10d | 13d |
|  | 35 | **STREET LIGHTING** |  | 2014-04-06 | 2014-06-28 |  |  |
| DUKHCONI03Z3STGL5235 |  | Excavation for Street lighting | 25d | 2014-04-06 | 2014-05-04 | DUKHCONI03Z3ELGL5215 SS, DUKHCONI03Z2STGL5250 SS+10d | -15d |
| DUKHCONI03Z3STGL5240 |  | Construction of Duct Banks | 25d | 2014-04-12 | 2014-05-10 | DUKHCONI03Z3STGL5235 SS+5d | -15d |
| DUKHCONI03Z3STGL5245 |  | Construction of Foundation | 25d | 2014-04-12 | 2014-05-10 | DUKHCONI03Z3STGL5240 SS | -15d |
| DUKHCONI03Z3STGL5250 |  | Backfilling Street Lighting | 25d | 2014-04-17 | 2014-05-15 | DUKHCONI03Z3STGL5235 FF+5d, DUKHCONI03Z3STGL5245 SS+5d | -15d |
| DUKHCONI03Z3STGL5255 |  | Installation of light Post | 25d | 2014-04-29 | 2014-05-27 | DUKHCONI03Z3STGL5250 SS+10d, DUKHCONI03Z2STGL5255 | 33d |
| DUKHCONI03Z3STGL5260 |  | Electrical Works | 25d | 2014-05-31 | 2014-06-28 | DUKHCONI03Z3ELGL5230, DUKHCONI03Z2STGL5260, DUKHCONI03Z3STGL5255 SS+7d | 13d |
|  | 40 | **IRRIGATION LINES** |  | 2014-05-19 | 2014-07-23 |  |  |
| DUKHCONI03Z3IRGL5265 |  | Excavation for irrigation line | 25d | 2014-05-19 | 2014-06-16 | DUKHCONI03Z2IRGL5280, DUKHCONI03Z3ELGL5225 | -4d |
| DUKHCONI03Z3IRGL5270 |  | Laying of irrigationline | 25d | 2014-05-25 | 2014-06-22 | DUKHCONI03Z3IRGL5265 SS+5d | -4d |
| DUKHCONI03Z3IRGL5275 |  | Testing of irrigation line | 25d | 2014-05-31 | 2014-06-28 | DUKHCONI03Z3IRGL5270 SS+5d | -4d |
| DUKHCONI03Z3IRGL5280 |  | Backfilling irrigation line | 25d | 2014-06-05 | 2014-07-03 | DUKHCONI03Z3IRGL5275 SS+5d | -4d |
| DUKHCONI03Z3IRGL5285 |  | Construction of Thrust Blocks,Pull boxes | 25d | 2014-06-17 | 2014-07-15 | DUKHCONI03Z3IRGL5280 FF+10d, DUKHCONI03Z3ELGL5225 SS+10d | -4d |
| DUKHCONI03Z3IRGL5290 |  | Irrigation Fittings (Nozzle,Values) | 25d | 2014-06-25 | 2014-07-23 | DUKHCONI03Z3IRGL5280 SS+10d, DUKHCONI03Z3IRGL5285 SS+7d | -4d |
|  | 45 | **TELECOMMUNICATION LINES** |  | 2014-04-29 | 2014-07-06 |  |  |
| DUKHCONI03Z3TCGL5295 |  | Excavation Telecommunication trenches | 20d | 2014-04-29 | 2014-05-21 | DUKHCONI03Z3STGL5250 SS+10d, DUKHCONI03Z2TCGL5305 SS+10d | -15d |
| DUKHCONI03Z3TCGL5300 |  | Laying of cables | 20d | 2014-05-05 | 2014-05-27 | DUKHCONI03Z3TCGL5295 SS+5d | -15d |
| DUKHCONI03Z3TCGL5305 |  | Backfilling telecommunication trench | 20d | 2014-05-11 | 2014-06-02 | DUKHCONI03Z3TCGL5300 SS+5d | -15d |
| DUKHCONI03Z3TCGL5310 |  | Connection & Installation | 20d | 2014-06-14 | 2014-07-06 | DUKHCONI03Z3TCGL5305 SS+10d, DUKHCONI03Z2TCGL5310 | 1d |
|  | 50 | **BOUNDARY WALL** |  | 2014-04-29 | 2014-06-12 |  |  |
| DUKHCONI03Z3BWGL5315 |  | Construction of Boundary Wall (Ht-3m) | 25d | 2014-04-29 | 2014-05-27 | DUKHCONI03Z2BWGL5315, DUKHCONI03Z3STGL5250 SS+10d | -4d |
| DUKHCONI03Z3BWGL5320 |  | Install.Steel Gate,Entance Barrier (3m Wall) | 25d | 2014-05-15 | 2014-06-12 | DUKHCONI03Z2BWGL5320, DUKHCONI03Z3BWGL5315 SS+14d | -4d |
|  | 55 | **ROAD WORKS** |  | 2014-05-22 | 2014-08-09 |  |  |
| DUKHCONI03Z3RWGL6000 |  | Excavation & Earth Filling | 10d | 2014-05-22 | 2014-06-02 | DUKHCONI03Z3STGL5250, DUKHCONI03Z3SAGL5150, DUKHCONI03Z3FFGL5200, DUKHCONI03Z3TCGL5305 SS+10d, DUKHCONI03Z2RWGL6015 SS+10d, DUKHCONI03Z3FFGL5210, DUKHCONI03Z3ELGL5225 | -15d |
| DUKHCONI03Z3RWGL6005 |  | Laying of Sub Grade | 25d | 2014-06-03 | 2014-07-01 | DUKHCONI03Z3RWGL6000 | -15d |
| DUKHCONI03Z3RWGL6010 |  | Laying of Precast Kerbs | 25d | 2014-06-15 | 2014-07-13 | DUKHCONI03Z3RWGL6005 SS+10d | -15d |
| DUKHCONI03Z3RWGL6015 |  | Laying of Granular Sub Base Coarse | 20d | 2014-06-26 | 2014-07-19 | DUKHCONI03Z3RWGL6010 SS+10d | -15d |
| DUKHCONI03Z3RWGL6020 |  | Laying of Road Base Asphalt Concrete | 5d | 2014-07-20 | 2014-07-24 | DUKHCONI03Z3RWGL6015 | -15d |
| DUKHCONI03Z3RWGL6025 |  | Laying of Asphalt Wearing Coarse | 5d | 2014-07-26 | 2014-07-30 | DUKHCONI03Z2RWGL6025, DUKHCONI03Z3RWGL6020 | 0d |
| DUKHCONI03Z3RWGL6030 |  | Traffic Signage & Road Marking | 5d | 2014-07-31 | 2014-08-09 | DUKHCONI03Z2RWGL6030, DUKHCONI03Z3RWGL6025 | 0d |
|  | 60 | **PARKING SHED** |  | 2014-07-02 | 2014-09-01 |  |  |
| DUKHCONI03Z3PSGL7000 |  | Excavation | 15d | 2014-07-02 | 2014-07-19 | DUKHCONI03Z2PSGL7005, DUKHCONI03Z3RWGL6015 SS+5d | -10d |
| DUKHCONI03Z3PSGL7005 |  | Foundation casting | 15d | 2014-07-14 | 2014-07-30 | DUKHCONI03Z3RWGL6015 FF+10d, DUKHCONI03Z3PSGL7000 FF+5d, DUKHCONI03Z3PSGL7000 SS+5d | -15d |
| DUKHCONI03Z3PSGL7010 |  | Column, Frame& Fabrics Erection | 25d | 2014-07-26 | 2014-08-26 | DUKHCONI03Z3PSGL7005 SS+10d, DUKHCONI03Z3RWGL6020, DUKHCONI03Z3RWGL6030 FF, DUKHCONI03Z2PSGL7010 | -15d |
| DUKHCONI03Z3PSGL7015 |  | Electrical Works-Parking Shed | 25d | 2014-07-31 | 2014-09-01 | DUKHCONI03Z3STGL5260, DUKHCONI03Z2PSGL7015, DUKHCONI03Z3PSGL7010 SS+5d | -15d |
|  | 65 | **HARD LANDSCAPING** |  | 2014-05-22 | 2014-08-14 |  |  |
| DUKHCONI03Z3HDGL7020 |  | Precast Concrete Kerbs works | 20d | 2014-05-22 | 2014-06-14 | DUKHCONI03Z3RWGL6000 SS | -5d |
| DUKHCONI03Z3HDGL7025 |  | Interlocking for Walkways | 25d | 2014-06-03 | 2014-07-01 | DUKHCONI03SBGZGL7910 FF, DUKHCONI03Z3HDGL7020 SS+10d | -5d |
| DUKHCONI03Z3HDGL7030 |  | Construction of Retaining wall | 25d | 2014-06-15 | 2014-07-13 | DUKHCONI03Z2HDGL7030, DUKHCONI03Z3BWGL5320, DUKHCONI03Z3HDGL7025 SS+10d | -5d |
| DUKHCONI03Z3HDGL7035 |  | Construction of Wash Stone Boulders | 25d | 2014-06-15 | 2014-07-13 | DUKHCONI03Z3HDGL7030 SS, DUKHCONI03Z2HDGL7035 | -5d |
| DUKHCONI03Z3HDGL7040 |  | Construction of Speed Humps | 10d | 2014-07-31 | 2014-08-14 | DUKHCONI03Z3RWGL6025, DUKHCONI03Z3HDGL7035 SS, DUKHCONI03Z2HDGL7040 | 0d |
|  | 70 | **SOFT LANDSCAPING** |  | 2014-06-26 | 2014-08-20 |  |  |
| DUKHCONI03Z3SLGL7200 |  | Excavation for Landscaping | 25d | 2014-06-26 | 2014-07-24 | DUKHCONI03Z3IRGL5290 SS, DUKHCONI03Z2SLGL7205, DUKHCONI03Z3HDGL7035 SS+10d | -5d |
| DUKHCONI03Z3SLGL7205 |  | Sweet Soil Laying | 25d | 2014-07-08 | 2014-08-09 | DUKHCONI03Z3SLGL7200 SS+10d | -5d |
| DUKHCONI03Z3SLGL7210 |  | Plantation works | 25d | 2014-07-20 | 2014-08-20 | DUKHCONI03Z2SLGL7210, DUKHCONI03Z3SLGL7205 SS+10d | -5d |
|  | 25 | **SECONDARY BUILDINGS** |  | 2014-03-09 | 2014-08-28 |  |  |
|  | 10 | **INFRASTRUCTURE WORKS** |  | 2014-03-09 | 2014-08-28 |  |  |
|  | 10 | **IRRIGATION WATER TANK & PUMP ROOM** |  | 2014-03-09 | 2014-08-28 |  |  |
| DUKHCONI03SBIWGL7400 |  | Excavation | 15d | 2014-03-09 | 2014-03-25 | DUKHCONP03Z5STRF2055, DUKHENGI03DWIWAP5920 | -12d |
| DUKHCONI03SBIWGL7405 |  | Blinding & base waterproofing | 10d | 2014-03-26 | 2014-04-06 | DUKHCONI03SBIWGL7400 | -12d |
| DUKHCONI03SBIWGL7410 |  | Construction of Raft slab | 10d | 2014-04-07 | 2014-04-17 | DUKHCONI03SBIWGL7405 | -12d |
| DUKHCONI03SBIWGL7415 |  | Construction of RCC Wall | 25d | 2014-04-19 | 2014-05-17 | DUKHCONI03SBIWGL7410 | -12d |
| DUKHCONI03SBIWGL7420 |  | Construction of Roof Slab | 20d | 2014-05-18 | 2014-06-09 | DUKHCONI03SBIWGL7415 | -12d |
| DUKHCONI03SBIWGL7425 |  | Waterproofing & Backfilling | 15d | 2014-06-10 | 2014-06-26 | DUKHCONI03SBIWGL7420 | -6d |
| DUKHCONI03SBIWGL7950 |  | Laying of Interlock | 10d | 2014-06-28 | 2014-07-08 | DUKHCONI03SBIWGL7425 | 9d |

| ID | WBS | Task | Duration | Start | Finish | Predecessors | Total float |
| --- | --- | --- | --- | --- | --- | --- | --- |
| DUKHCONI03SBIWGL7430 |  | Floor screed | 5d | 2014-07-05 | 2014-07-09 | DUKHCONI03SBIWGL7420 FS+21d, DUKHCONI03SBIWGL7425 | -12d |
| DUKHCONI03SBIWGL7435 |  | Installation of Boundary Fences | 15d | 2014-07-09 | 2014-07-26 | DUKHCONI03SBIWGL7950, DUKHPROGEN00PRDV3850 | 9d |
| DUKHCONI03SBIWGL7440 |  | Plumbing , Drainage & Firefighting works | 25d | 2014-07-10 | 2014-08-11 | DUKHCONI03Z2FFGL5210, DUKHCONI03Z1FFGL5210, DUKHCONI03Z3FFGL5210, DUKHCONI03SBIWGL7430 | -12d |
| DUKHCONI03SBIWGL7445 |  | AC Works | 25d | 2014-07-10 | 2014-08-11 | DUKHCONI03SBIWGL7440 SS | -12d |
| DUKHCONI03SBIWGL7450 |  | Electrical Works | 25d | 2014-07-10 | 2014-08-11 | DUKHCONI03Z3STGL5260 SS, DUKHCONI03Z3ELGL5230, DUKHCONI03SBIWGL7445 SS | -12d |
| DUKHCONI03SBIWGL7455 |  | Internal epoxy coating & Painting | 5d | 2014-08-12 | 2014-08-17 | DUKHCONI03SBIWGL7450 | -12d |
| DUKHCONI03SBIWGL7460 |  | Installation of Steel Ladder | 5d | 2014-08-18 | 2014-08-23 | DUKHCONI03SBIWGL7455 | -12d |
| DUKHCONI03SBIWGL7465 |  | Installation of G.I Handrails | 5d | 2014-08-24 | 2014-08-28 | DUKHCONI03SBIWGL7435, DUKHCONI03SBIWGL7460 | -12d |
|  | 15 | **TELECOMMUNICATION ROOM** |  | 2014-03-26 | 2014-08-13 |  |  |
| DUKHCONI03SBTRGL7600 |  | Excavation | 10d | 2014-03-26 | 2014-04-06 | DUKHCONI03SBIWGL7400, DUKHENGI03DWTRAP5930 | -2d |
| DUKHCONI03SBTRGL7605 |  | Construction of foundation & Grade slab | 20d | 2014-04-07 | 2014-04-29 | DUKHCONI03SBTRGL7600 | 8d |
| DUKHCONI03SBTRGL7610 |  | Construction Column,Beams & Roof Slab | 20d | 2014-04-30 | 2014-05-22 | DUKHCONI03SBTRGL7605 | 8d |
| DUKHCONI03SBTRGL7615 |  | Finishing Works | 25d | 2014-06-17 | 2014-07-15 | DUKHCONI03SBTRGL7610 FS+21d | 8d |
| DUKHCONI03SBTRGL7620 |  | Plumbing , Drainage & Firefighting works | 25d | 2014-06-29 | 2014-07-27 | DUKHCONI03SBTRGL7615 SS+10d | 8d |
| DUKHCONI03SBTRGL7625 |  | AC Works | 25d | 2014-06-29 | 2014-07-27 | DUKHCONI03SBTRGL7620 SS | 8d |
| DUKHCONI03SBTRGL7630 |  | Electrical Works-Telecom Room | 25d | 2014-07-07 | 2014-08-07 | DUKHCONI03Z1TCGL5310, DUKHCONI03SBTRGL7625 SS, DUKHCONI03Z2TCGL5310, DUKHCONI03Z3TCGL5310 | 1d |
| DUKHCONI03SBTRGL7635 |  | Final Paintings | 5d | 2014-08-09 | 2014-08-13 | DUKHCONI03SBTRGL7625, DUKHCONI03SBTRGL7630, DUKHCONI03SBTRGL7620, DUKHCONI03SBTRGL7615 | 1d |
|  | 20 | **GUARD HOUSE** |  | 2014-04-07 | 2014-08-17 |  |  |
| DUKHCONI03SBGHGL7800 |  | Excavation | 10d | 2014-04-07 | 2014-04-17 | DUKHCONI03SBTRGL7600, DUKHENGI03DWGHAP5950 | -2d |
| DUKHCONI03SBGHGL7805 |  | Construction of foundation & Grade slab | 20d | 2014-04-19 | 2014-05-11 | DUKHCONI03SBGHGL7800 | -2d |
| DUKHCONI03SBGHGL7810 |  | Construction Column,Beams & Roof Slab | 20d | 2014-05-12 | 2014-06-03 | DUKHCONI03SBGHGL7805 | -2d |
| DUKHCONI03SBGHGL7815 |  | Finishing Works | 25d | 2014-06-29 | 2014-07-27 | DUKHCONI03SBGHGL7810 FS+21d | -2d |
| DUKHCONI03SBGHGL7820 |  | Plumbing , Drainage & Firefighting works | 25d | 2014-07-10 | 2014-08-11 | DUKHCONI03SBGHGL7815 SS+10d | -2d |
| DUKHCONI03SBGHGL7825 |  | AC Works | 25d | 2014-07-10 | 2014-08-11 | DUKHCONI03SBGHGL7820 SS | -2d |
| DUKHCONI03SBGHGL7830 |  | Electrical Works-Telecom Room | 25d | 2014-07-10 | 2014-08-11 | DUKHCONI03SBGHGL7825 SS | -2d |
| DUKHCONI03SBGHGL7835 |  | Final Paintings | 5d | 2014-08-12 | 2014-08-17 | DUKHCONI03SBGHGL7830, DUKHCONI03SBGHGL7815, DUKHCONI03SBGHGL7820, DUKHCONI03SBGHGL7825 | -2d |
|  | 25 | **GAZEBO** |  | 2014-04-26 | 2014-06-22 |  |  |
| DUKHCONI03SBGZGL7900 |  | Construction of Concrete structure | 20d | 2014-04-26 | 2014-05-18 | DUKHCONI03Z2HDGL7020, DUKHENGI03DWGZAP5940, DUKHPROGEN00PRDV3780 | 3d |
| DUKHCONI03SBGZGL7905 |  | Installation of Wooden Works | 25d | 2014-05-07 | 2014-06-04 | DUKHCONI03SBGZGL7900 SS+10d | 3d |
| DUKHCONI03SBGZGL7915 |  | Park Benches Installation | 25d | 2014-05-07 | 2014-06-04 | DUKHCONI03SBGZGL7905 SS | 3d |
| DUKHCONI03SBGZGL7910 |  | Electrical Works-Gazebo | 15d | 2014-06-05 | 2014-06-22 | DUKHCONI03SBGZGL7905, DUKHCONI03SBGZGL7915 | 3d |
|  | 30 | **PLAY GROUND** |  | 2014-05-19 | 2014-07-27 |  |  |
| DUKHCONI03SBPGGL7940 |  | Intial Work Play Ground Works | 30d | 2014-05-19 | 2014-06-22 | DUKHCONI03SBGZGL7900 | 13d |
| DUKHCONI03SBPGGL7945 |  | Final Work Play Ground Works | 30d | 2014-06-23 | 2014-07-27 | DUKHCONI03SBPGGL7940 | 13d |
|  | K35 | **COMMISSIONING & HANDING OVER** |  | 2014-08-31 | 2015-04-28 |  |  |
|  | L20 | **PACKAGE-1A** |  | 2015-01-13 | 2015-04-28 |  |  |
| DUKHHANP1AGNACTC9000 |  | Submission & Clearance of Punch list,Final Testing & Commissioning of AC Works | 30d | 2015-01-13 | 2015-02-17 | DUKHCONP1AZ6ACTC8000, DUKHCONP1AZ7ACTC8000, DUKHCONP1AZ1ACTC8000, DUKHCONP1AZ4ACTC8000, DUKHCONP1AZ2ACTC8000, DUKHCONP1AZ5ACTC8000, DUKHCONI1ASBIWGL7465, DUKHCONI1ASBGHGL7835, DUKHCONI1ASBTRGL7635, DUKHCONP1AZ9ACTC8000, DUKHCONP1AZ3ACTC8000, DUKHCONP1AZ8ACTC8000 | -24d |
| DUKHHANP1AGNELTC9010 |  | Submission & Clearance Punch list,Final Testing & Commissioning of Electrical Works | 30d | 2015-01-13 | 2015-02-17 | DUKHCONP1AZ2ELTC8010, DUKHCONI1AZ5HDGL7040, DUKHCONP1AZ9MSEX5335, DUKHCONP1AZ9ELTC8010, DUKHCONI1AZ5PSGL7015 FF+14d, DUKHCONP1AZ8ELTC8010, DUKHCONI1AZ5FFGL5210, DUKHCONI1AZ5WSGL5180, DUKHCONI1ASBGHGL7835, DUKHCONP1AZ3ELTC8010, DUKHCONP1AZ6ELTC8010, DUKHCONP1AZ7ELTC8010, DUKHCONP1AZ4ELTC8010, DUKHCONI1AZ5SLGL7210 FF+10d, DUKHCONI1AZ5STGL5260, DUKHCONI1AZ5TCGL5310, DUKHCONI1ASBTRGL7635, DUKHCONI1ASBIWGL7465, DUKHCONP1AZ5ELTC8010, DUKHCONP1AZ1ELTC8010 | -24d |
| DUKHHANP1AGNPLTC9005 |  | Submission & Clearance of Punch list, Final Testing &Commissioning of Plumbing/Drainage | 30d | 2015-01-13 | 2015-02-17 | DUKHCONP1AZ8ELTC8010, DUKHCONP1AZ1PLTC8005, DUKHCONI1AZ5SLGL7210 FF+10d, DUKHCONI1AZ5TCGL5310, DUKHCONP1AZ1ELTC8010, DUKHCONP1AZ4PLTC8005, DUKHCONP1AZ5PLTC8005, DUKHCONP1AZ9MSEX5335, DUKHCONP1AZ6ELTC8010, DUKHCONI1AZ5HDGL7040, DUKHCONI1ASBIWGL7465, DUKHCONP1AZ8PLTC8005, DUKHCONP1AZ4ELTC8010, DUKHCONI1AZ5STGL5260, DUKHCONI1AZ5PSGL7015 FF+14d, DUKHCONP1AZ3ELTC8010, DUKHCONP1AZ5ELTC8010, DUKHCONP1AZ9PLTC8005, DUKHCONP1AZ7ELTC8010, DUKHCONP1AZ2PLTC8005, DUKHCONI1AZ5WSGL5180, DUKHCONP1AZ3PLTC8005, DUKHCONP1AZ2ELTC8010, DUKHCONP1AZ9ELTC8010, DUKHCONP1AZ6PLTC8005, DUKHCONP1AZ7PLTC8005, DUKHCONI1AZ5FFGL5210, DUKHCONI1ASBGHGL7835, DUKHCONI1ASBTRGL7635 | -24d |
| DUKHHANP1AGNAB009015 |  | Submission & Approval of As-Built Drawings & O&M Manuals | 20d | 2015-02-05 | 2015-03-01 | DUKHHANP1AGNACTC9000 SS+10d, DUKHHANP1AGNPLTC9005 SS+10d, DUKHHANP1AGNACTC9000 FF+10d, DUKHHANP1AGNPLTC9005 FF+10d, DUKHHANP1AGNELTC9010 FF+10d, DUKHHANP1AGNELTC9010 SS+10d | -24d |
| DUKHHANP1AGNDM009020 |  | Demobilization & Handing Over | 60d | 2015-02-18 | 2015-04-28 | DUKHHANP1AGNELTC9010, DUKHHANP1AGNACTC9000, DUKHHANP1AGNPLTC9005, DUKHHANP1AGNAB009015 FF+10d, DUKHHANP1AGNAB009015 SS+10d | -24d |
|  | L25 | **PACKAGE-1B** |  | 2014-12-29 | 2015-04-13 |  |  |
| DUKHHANP1BGNACTC9000 |  | Submission & Clearance of Punch list,Final Testing & Commissioning of AC Works | 30d | 2014-12-29 | 2015-02-01 | DUKHCONP1BZ5ACTC8000, DUKHCONP1BZ3ACTC8000, DUKHCONI1BZ4PSGL7015 FF+9d, DUKHCONP1BZ4ACTC8000, DUKHCONI1BSBIWGL7465, DUKHCONP1BZ6ACTC8000, DUKHCONI1BSBTRGL7635, DUKHCONP1BZ1ACTC8000, DUKHCONI1BZ4HDGL7040, DUKHCONP1BZ2ACTC8000, DUKHCONI1BSBGHGL7835 | -11d |
| DUKHHANP1BGNELTC9010 |  | Submission & Clearance Punch list,Final Testing & Commissioning of Electrical Works | 30d | 2014-12-29 | 2015-02-01 | DUKHCONP1BZ2ELTC8010, DUKHCONP1BZ3ELTC8010, DUKHCONP1BZ4MSEX5335, DUKHCONI1BZ4FFGL5210, DUKHCONI1BZ4PSGL7015 FF+9d, DUKHCONI1BSBIWGL7465, DUKHCONI1BZ4HDGL7040, DUKHCONI1BZ4WSGL5180, DUKHCONP1BZ1ELTC8010, DUKHCONP1BZ4ELTC8010, DUKHCONP1BZ6MSEX5335, DUKHCONP1BZ6ELTC8010, DUKHCONI1BZ4STGL5260, DUKHCONP1BZ5ELTC8010, DUKHCONI1BSBTRGL7635, DUKHCONP1BZ5MSEX5335, DUKHCONI1BSBGHGL7835, DUKHCONI1BZ4TCGL5310 | -11d |
| DUKHHANP1BGNPLTC9005 |  | Submission & Clearance of Punch list, Final Testing &Commissioning of Plumbing/Drainage | 30d | 2014-12-29 | 2015-02-01 | DUKHCONI1BSBIWGL7465, DUKHCONP1BZ5MSEX5335, DUKHCONP1BZ5ELTC8010, DUKHCONP1BZ1ELTC8010, DUKHCONP1BZ1PLTC8005, DUKHCONP1BZ4PLTC8005, DUKHCONP1BZ6ELTC8010, DUKHCONI1BZ4HDGL7040, DUKHCONP1BZ4MSEX5335, DUKHCONP1BZ6PLTC8005, DUKHCONI1BSBGHGL7835, DUKHCONI1BZ4STGL5260, DUKHCONI1BZ4PSGL7015 FF+9d, DUKHCONP1BZ5PLTC8005, DUKHCONP1BZ4ELTC8010, DUKHCONI1BZ4SLGL7210, DUKHCONP1BZ2ELTC8010, DUKHCONP1BZ6MSEX5335, DUKHCONI1BSBTRGL7635, DUKHCONI1BZ4TCGL5310, DUKHCONP1BZ3ELTC8010, DUKHCONP1BZ2PLTC8005, DUKHCONP1BZ3PLTC8005, DUKHCONI1BZ4FFGL5210, DUKHCONI1BZ4WSGL5180 | -11d |
| DUKHHANP1BGNAB009015 |  | Submission & Approval of As-Built Drawings & O&M Manuals | 20d | 2015-01-21 | 2015-02-14 | DUKHHANP1BGNPLTC9005 FF+10d, DUKHHANP1BGNPLTC9005 SS+10d, DUKHHANP1BGNACTC9000 SS+10d, DUKHHANP1BGNELTC9010 SS+10d, DUKHHANP1BGNACTC9000 FF+10d, DUKHHANP1BGNELTC9010 FF+10d | -11d |
| DUKHHANP1BGNDM009020 |  | Demobilization & Handing Over | 60d | 2015-02-02 | 2015-04-13 | DUKHHANP1BGNACTC9000, DUKHHANP1BGNPLTC9005, DUKHHANP1BGNAB009015 FF+10d, DUKHHANP1BGNAB009015 SS+10d, DUKHHANP1BGNELTC9010 | -11d |
|  | L35 | **PACKAGE-2A** |  | 2014-08-31 | 2014-12-15 |  |  |
| DUKHHANP2AGNACTC9000 |  | Submission & Clearance of Punch list,Final Testing & Commissioning of AC Works | 30d | 2014-08-31 | 2014-10-04 | DUKHCONI2AZ2TCGL5310, DUKHCONI2AZ2STGL5260, DUKHCONP2AZ1ACTC8000, DUKHCONI2AZ2WSGL5180, DUKHCONP2AZ2MSEX5335, DUKHCONP2AZ2ACTC8000, DUKHCONI2ASBIWGL7465, DUKHCONI2AZ2FFGL5210, DUKHCONP2AZ2ELTC8010, DUKHHANP2AGNELTC9010 FF, DUKHCONP2AZ1ELTC8010 | -63d |
| DUKHHANP2AGNELTC9010 |  | Submission & Clearance Punch list,Final Testing & Commissioning of Electrical Works | 30d | 2014-08-31 | 2014-10-04 | DUKHCONI2AZ2WSGL5180, DUKHCONI2AZ2TCGL5310, DUKHCONI2AZ2PSGL7015 FF+12d, DUKHCONP2AZ2ELTC8010, DUKHCONI2AZ2FFGL5210, DUKHCONI2AZ2HDGL7040, DUKHCONP2AZ1ELTC8010, DUKHCONI2ASBIWGL7465, DUKHCONI2AZ2STGL5260, DUKHCONP2AZ2MSEX5335 | -63d |
| DUKHHANP2AGNPLTC9005 |  | Submission & Clearance of Punch list, Final Testing &Commissioning of Plumbing/Drainage | 30d | 2014-08-31 | 2014-10-04 | DUKHCONP2AZ1PLTC8005, DUKHHANP2AGNELTC9010 FF, DUKHCONI2AZ2HDGL7040 FF, DUKHCONI2AZ2STGL5260, DUKHCONI2AZ2WSGL5180, DUKHCONP2AZ2MSEX5335, DUKHCONP2AZ2PLTC8005, DUKHCONI2ASBIWGL7465, DUKHCONI2AZ2SLGL7210 FF+10d, DUKHCONI2AZ2TCGL5310, DUKHCONI2AZ2FFGL5210 | -63d |
| DUKHHANP2AGNAB009015 |  | Submission & Approval of As-Built Drawings & O&M Manuals | 20d | 2014-09-23 | 2014-10-18 | DUKHHANP2AGNELTC9010 FF+10d, DUKHHANP2AGNACTC9000 FF+10d, DUKHHANP2AGNPLTC9005 SS+10d, DUKHHANP2AGNELTC9010 SS+10d, DUKHHANP2AGNACTC9000 SS+10d, DUKHHANP2AGNPLTC9005 FF+10d | -63d |
| DUKHHANP2AGNDM009020 |  | Demobilization & Handing Over | 60d | 2014-10-05 | 2014-12-15 | DUKHHANP2AGNAB009015 FF+10d, DUKHHANP2AGNAB009015 SS+10d, DUKHHANP2AGNACTC9000, DUKHHANP2AGNELTC9010, DUKHHANP2AGNPLTC9005 | -63d |
|  | L40 | **PACKAGE-2B** |  | 2014-09-07 | 2014-12-23 |  |  |
| DUKHHANP2BGNACTC9000 |  | Submission & Clearance of Punch list,Final Testing & Commissioning of AC Works | 30d | 2014-09-07 | 2014-10-13 | DUKHCONI2BZ2TCGL5310, DUKHCONP2BZ5ELTC8010, DUKHCONP2BZ5MSEX5335 FF+10d, DUKHCONI2BZ2WSGL5180, DUKHCONP2BZ4ELTC8010, DUKHCONP2BZ3ELTC8010, DUKHCONP2BZ4ACTC8000, DUKHCONP2BZ5ACTC8000, DUKHCONI2BZ2SLGL7210 FF, DUKHCONI2BZ2FFGL5210, DUKHCONI2BZ2STGL5260, DUKHCONI2BSBIWGL7465, DUKHCONP2BZ3ACTC8000, DUKHCONI2BZ2PSGL7015 FF+10d | -69d |
| DUKHHANP2BGNELTC9010 |  | Submission & Clearance Punch list,Final Testing & Commissioning of Electrical Works | 30d | 2014-09-07 | 2014-10-13 | DUKHCONI2BZ2HDGL7040, DUKHCONI2BSBIWGL7465, DUKHCONP2BZ4MSEX5335, DUKHCONI2BZ2PSGL7015, DUKHCONI2BZ2FFGL5210, DUKHCONP2BZ5ELTC8010, DUKHCONP2BZ5MSEX5335, DUKHCONP2BZ4ELTC8010, DUKHCONI2BZ2STGL5260, DUKHCONP2BZ3ELTC8010, DUKHCONI2BZ2TCGL5310 | -69d |
| DUKHHANP2BGNPLTC9005 |  | Submission & Clearance of Punch list, Final Testing &Commissioning of Plumbing/Drainage | 30d | 2014-09-07 | 2014-10-13 | DUKHCONP2BZ3PLTC8005, DUKHCONP2BZ5MSEX5335, DUKHCONI2BZ2STGL5260, DUKHCONP2BZ4PLTC8005, DUKHCONI2BZ2HDGL7040, DUKHCONI2BSBIWGL7465, DUKHCONI2BZ2TCGL5310, DUKHCONI2BZ2FFGL5210, DUKHCONP2BZ5PLTC8005, DUKHCONI2BZ2PSGL7015, DUKHCONI2BZ2SLGL7210, DUKHCONI2BZ2WSGL5180 | -69d |
| DUKHHANP2BGNAB009015 |  | Submission & Approval of As-Built Drawings & O&M Manuals | 20d | 2014-09-30 | 2014-10-25 | DUKHHANP2BGNPLTC9005 FF+10d, DUKHHANP2BGNPLTC9005 SS+10d, DUKHHANP2BGNACTC9000 SS+10d, DUKHHANP2BGNACTC9000 FF+10d, DUKHHANP2BGNELTC9010 FF+10d, DUKHHANP2BGNELTC9010 SS+10d | -69d |
| DUKHHANP2BGNDM009020 |  | Demobilization & Handing Over | 60d | 2014-10-14 | 2014-12-23 | DUKHHANP2BGNAB009015 FF+10d, DUKHHANP2BGNPLTC9005, DUKHHANP2BGNACTC9000, DUKHHANP2BGNELTC9010, DUKHHANP2BGNAB009015 SS+10d | -69d |
|  | L45 | **PACKAGE-3** |  | 2014-09-16 | 2015-01-01 |  |  |
| DUKHHANP03GNACTC9000 |  | Submission & Clearance of Punch list,Final Testing & Commissioning of AC Works | 30d | 2014-09-16 | 2014-10-22 | DUKHCONP03Z4ELTC8010, DUKHCONP03Z3ELTC8010, DUKHCONI03Z3FFGL5210, DUKHCONP03Z2ACTC8000, DUKHCONI03SBTRGL7635, DUKHCONI03Z3TCGL5310, DUKHCONP03Z1ACTC8000, DUKHCONI03Z3STGL5260, DUKHCONI03Z3PSGL7015, DUKHCONI03SBIWGL7465, DUKHCONI03SBGHGL7835, DUKHCONP03Z5ACTC8000, DUKHCONI03SBPGGL7945, DUKHCONP03Z3ACTC8000, DUKHCONP03Z4ACTC8000, DUKHCONI03Z3HDGL7040 | -27d |
| DUKHHANP03GNELTC9010 |  | Submission & Clearance Punch list,Final Testing & Commissioning of Electrical Works | 30d | 2014-09-16 | 2014-10-22 | DUKHCONI03Z3WSGL5180, DUKHCONI03SBGHGL7835, DUKHCONI03Z3STGL5260, DUKHCONI03Z3TCGL5310, DUKHCONP03Z3ELTC8010, DUKHCONI03Z3FFGL5210, DUKHCONI03Z3SLGL7210, DUKHCONI03Z3HDGL7040, DUKHCONI03SBTRGL7635, DUKHCONP03Z4ELTC8010, DUKHCONI03Z3PSGL7015, DUKHCONP03Z2ELTC8010, DUKHCONP03Z5ELTC8010, DUKHCONI03SBIWGL7465, DUKHCONI03SBPGGL7945, DUKHCONP03Z1ELTC8010 | -27d |
| DUKHHANP03GNPLTC9005 |  | Submission & Clearance of Punch list, Final Testing &Commissioning of Plumbing/Drainage | 30d | 2014-09-16 | 2014-10-22 | DUKHCONI03Z3FFGL5210, DUKHCONI03Z3TCGL5310, DUKHCONI03SBIWGL7465, DUKHCONI03SBPGGL7945, DUKHCONP03Z4PLTC8005, DUKHCONI03Z3WSGL5180, DUKHCONP03Z2PLTC8005, DUKHCONI03SBGHGL7835, DUKHCONP03Z1PLTC8005, DUKHCONP03Z5PLTC8005, DUKHCONP03Z3PLTC8005, DUKHCONI03Z3PSGL7015, DUKHCONI03Z3SLGL7210, DUKHCONI03Z3HDGL7040, DUKHCONI03SBTRGL7635 | -27d |
| DUKHHANP03GNAB009015 |  | Submission & Approval of As-Built Drawings & O&M Manuals | 20d | 2014-10-12 | 2014-11-03 | DUKHHANP03GNPLTC9005 SS+10d, DUKHHANP03GNACTC9000 FF+10d, DUKHHANP03GNELTC9010 SS+10d, DUKHHANP03GNACTC9000 SS+10d, DUKHHANP03GNELTC9010 FF+10d, DUKHHANP03GNPLTC9005 FF+10d | -27d |
| DUKHHANP03GNDM009020 |  | Demobilization & Handing Over | 60d | 2014-10-23 | 2015-01-01 | DUKHHANP03GNAB009015 SS+10d, DUKHHANP03GNPLTC9005, DUKHHANP03GNACTC9000, DUKHHANP03GNAB009015 FF+10d, DUKHHANP03GNELTC9010 | -27d |

## Version 2 (data date 2013-11-02, saved 2026-11-12, file dukhan-ph9-update-12.xer)

Note of the change: Add the Dukhan sample files and an MPXJ cross-check

Last finish 2015-04-28 → 2015-06-28 (+61d). Complete tasks 551 → 1276.

Added:

| ID | Task | Duration | Start | Finish |
| --- | --- | --- | --- | --- |
| DUKHPROGEN00MTAP1880 | New Activity | 10d | 2013-06-01 A | 2013-06-10 A |

Changed:

| ID | Task | Start | Finish | Duration | Complete | Total float | Other |
| --- | --- | --- | --- | --- | --- | --- | --- |
| K10 | **KEY DATES & MILESTONES** |  | 2015-04-28 → 2015-06-28 (+61d) |  |  |  |  |
| L10 | **GENERAL** |  | 2015-04-28 → 2015-06-28 (+61d) |  |  |  |  |
| DUKHKYDGEN0000002000 | Project Completion Date | 2015-04-28 → 2015-06-28 (+61d) | 2015-04-28 → 2015-06-28 (+61d) |  |  | -24d → -76d |  |
| L15 | **PACKAGE-1** | 2015-04-28 → 2015-06-28 (+61d) | 2015-04-28 → 2015-06-28 (+61d) |  |  |  |  |
| DUKHKYDP010000001000 | Package -1 (Milestone -1) -29 Months | 2015-04-28 → 2015-06-28 (+61d) | 2015-04-28 → 2015-06-28 (+61d) |  |  | -24d → -76d |  |
| L30 | **PACKAGE-2** | 2014-12-23 → 2014-12-29 (+6d) | 2014-12-23 → 2014-12-29 (+6d) |  |  |  |  |
| DUKHKYDP020000002000 | Package -2 (Milestone-2) -23 Months | 2014-12-23 → 2014-12-29 (+6d) | 2014-12-23 → 2014-12-29 (+6d) |  |  | -69d → -74d |  |
| L45 | **PACKAGE-3** | 2015-01-01 → 2015-02-15 (+45d) | 2015-01-01 → 2015-02-15 (+45d) |  |  |  |  |
| DUKHKYDP030000003000 | Package -3 (Milestone -3) -25 Months | 2015-01-01 → 2015-02-15 (+45d) | 2015-01-01 → 2015-02-15 (+45d) |  |  | -27d → -64d |  |
| L05 | **PROVISIONAL SUM** |  | 2014-12-10 → 2015-02-11 (+63d) |  |  |  |  |
| 05 | **PACKAGE 1A - VILLA** |  | 2014-12-10 → 2015-02-11 (+63d) |  |  |  |  |
| DUKHMOBP1APS00002025 | Engineering & Procurement |  | 2013-09-15 A |  | 37% → 100% | 91d → none |  |
| DUKHMOBP1APS00002030 | Commencement of Construction Work | 2013-12-31 → 2014-03-03 (+62d) | 2014-12-10 → 2015-02-11 (+63d) |  |  | 3d → -49d |  |
| 10 | **PACKAGE 1A - INFRASTRUCTURE** |  | 2014-11-13 → 2014-11-25 (+12d) |  |  |  |  |
| DUKHMOBI1APS00002060 | Engineering & Procurement |  | 2013-10-28 A |  | 14% → 100% | 26d → none |  |
| DUKHMOBI1APS00002065 | Commencement of Construction Work | 2013-10-29 → 2013-11-10 (+12d) | 2014-11-13 → 2014-11-25 (+12d) |  |  | 26d → 16d |  |
| 15 | **PACKAGE 1B - VILLA** |  | 2014-12-02 → 2014-12-17 (+15d) |  |  |  |  |
| DUKHMOBP1BPS00002095 | Engineering & Procurement |  | 2013-10-08 A |  | 26% → 100% | 81d → none |  |
| DUKHMOBP1BPS00002100 | Commencement of Construction Work | 2014-01-04 → 2014-01-19 (+15d) | 2014-12-02 → 2014-12-17 (+15d) |  |  | 10d → -3d |  |
| 20 | **PACKAGE 1B -INFRASTRUCTURE** |  | 2014-11-06 → 2014-11-23 (+17d) |  |  |  |  |
| DUKHMOBI1BPS00002130 | Engineering & Procurement |  | 2013-10-30 A |  | 24% → 100% | 64d → none |  |
| DUKHMOBI1BPS00002135 | Commencement of Construction Work | 2013-12-08 → 2013-12-25 (+17d) | 2014-11-06 → 2014-11-23 (+17d) |  |  | 32d → 18d |  |
| 25 | **PACKAGE 2A - VILLA** |  | 2014-07-05 → 2014-07-17 (+12d) |  |  |  |  |
| DUKHMOBP2APS00002165 | Engineering & Procurement |  | 2013-07-20 A |  | 40% → 100% | 95d → none |  |
| DUKHMOBP2APS00002170 | Commencement of Construction Work | 2013-12-05 → 2013-12-19 (+14d) | 2014-07-05 → 2014-07-17 (+12d) |  |  | -18d → -29d |  |
| 30 | **PACKAGE 2A- INFRASTRUCTURE** |  | 2014-07-16 → 2014-07-29 (+13d) |  |  |  |  |
| DUKHMOBI2APS00002200 | Engineering & Procurement |  | 2013-09-28 A |  | 0% → 100% | 8d → none |  |
| DUKHMOBI2APS00002205 | Commencement of Construction Work | 2013-11-12 → 2013-11-25 (+13d) | 2014-07-16 → 2014-07-29 (+13d) |  |  | -28d → -39d |  |
| 35 | **PACKAGE 2B - VILLA** |  | 2014-07-17 → 2014-07-30 (+13d) |  |  |  |  |
| DUKHMOBP2BPS00002235 | Engineering & Procurement |  | 2013-07-27 A |  | 47% → 100% | 89d → none |  |
| DUKHMOBP2BPS00002240 | Commencement of Construction Work | 2013-12-19 → 2014-01-01 (+13d) | 2014-07-17 → 2014-07-30 (+13d) |  |  | -29d → -40d |  |
| DUKHMOBI2BPS00002270 | Engineering & Procurement |  |  |  | 20% → 87% |  |  |
| 45 | **PACKAGE 3 - APARTMENT** |  | 2014-05-14 → 2014-06-26 (+43d) |  |  |  |  |
| DUKHMOBP03PS00002305 | Engineering & Procurement |  | 2013-07-27 A |  | 47% → 100% | 99d → none |  |
| DUKHMOBP03PS00002310 | Commencement of Construction Work | 2013-12-25 → 2014-02-06 (+43d) | 2014-05-14 → 2014-06-26 (+43d) |  |  | -24d → -61d |  |
| 50 | **PACKAGE 3 - INFRASTRUCTURE** |  | 2014-05-12 → 2014-06-24 (+43d) |  |  |  |  |
| DUKHMOBI03PS00002340 | Engineering & Procurement |  | 2013-06-29 A |  | 54% → 100% | 43d → none |  |
| DUKHMOBI03PS00002345 | Commencement of Construction Work | 2013-09-17 → 2013-11-02 (+46d) | 2014-05-12 → 2014-06-24 (+43d) |  |  | -22d → -59d |  |
| DUKHMOBGEN0000003025 | Construction Running Cost |  |  |  | 20% → 42% |  |  |
| K20 | **ENGINEERING** |  | 2013-09-07 → 2013-10-03 (+26d) |  |  |  |  |
| L20 | **PACKAGE-1A** |  | 2013-08-27 → 2013-10-03 (+37d) |  |  |  |  |
| E05 | **SHOP DRAWINGS SUBMISSION & APPROVAL** |  | 2013-08-27 → 2013-10-03 (+37d) |  |  |  |  |
| DUKHENGP1ADWARAP4110 | Gypsum False Ceiling Drawings-App |  | 2013-04-30 A |  | 86% → 100% | 71d → none |  |
| DUKHENGP1ADWARAP4120 | Aluminum False Ceiling Drawings-App |  | 2013-04-30 A |  | 86% → 100% | 86d → none |  |
| DUKHENGP1ADWARAP4130 | Doors & Window Drawings-App |  | 2013-05-16 A |  | 40% → 100% | 56d → none |  |
| DUKHENGP1ADWARAP4140 | Carpentry & Joinery Drawings-App | 2013-04-27 A | 2013-05-27 A |  | 0% → 100% | 84d → none |  |
| H20 | **ELECTRICAL DRAWINGS** |  | 2013-06-06 → 2013-05-31 (-6d) |  |  |  |  |
| DUKHENGP1ADWELSM4200 | Telephone & TV System Drawings-Sub |  | 2013-05-02 A |  | 60% → 100% | 79d → none |  |
| G20 | **APPROVAL OF DRAWINGS** |  | 2013-06-06 → 2013-05-31 (-6d) |  |  |  |  |
| DUKHENGP1ADWELAP4180 | Central Alarm Monitoring System Drawings-App |  | 2013-05-02 A |  | 80% → 100% | 103d → none |  |
| DUKHENGP1ADWELAP4190 | Audio Video Intercom System Drawings-App |  | 2013-05-20 A |  | 30% → 100% | 94d → none |  |
| DUKHENGP1ADWELAP4200 | Telephone & TV System Drawings-App | 2013-05-04 A | 2013-06-06 → 2013-05-31 A (-6d) |  | 0% → 100% | 79d → none |  |
| DUKHENGP1ADWMEAP4230 | Fire Fighting Layout & Details Drawings-App |  | 2013-04-27 A |  |  | 150d → none |  |
| DUKHENGP1ADWMEAP4240 | AC Layout & Details Drawings-App | 2013-04-27 A | 2013-05-30 A |  | 0% → 100% | 54d → none |  |
| H40 | **INFRA DRAWINGS** |  | 2013-08-27 → 2013-10-03 (+37d) |  |  |  |  |
| G10 | **SUBMISSION OF DRAWINGS** |  | 2013-07-02 → 2013-08-29 (+58d) |  |  |  |  |
| DUKHENGI1ADWELSM4280 | Electrical Line Layout & Details-Sub |  | 2013-05-02 A |  | 60% → 100% | 63d → none |  |
| DUKHENGI1ADWSTSM4290 | Street Lighting Layout & details -Sub |  | 2013-05-02 A |  | 60% → 100% | 63d → none |  |
| DUKHENGI1ADWTCSM4300 | Telecommunication Line Layout & Details-Sub |  | 2013-05-02 A |  | 60% → 100% | 63d → none |  |
| DUKHENGI1ADWBWSM4330 | Boundary Wall Layout & Details-Sub | 2013-05-04 A | 2013-05-20 A |  | 0% → 100% | 63d → none | resources DRAFTMAN SK [30 h] → SURVEYOR SK [48 h]; DRAFTMAN SK [12 h] |
| DUKHENGI1ADWIRSM4310 | Irrigation Layout & Details-Sub | 2013-05-04 A | 2013-05-20 A |  | 0% → 100% | 63d → none | resources DRAFTMAN SK [30 h] → SURVEYOR SK [48 h]; DRAFTMAN SK [12 h] |
| DUKHENGI1ADWSLSM4320 | Soft & HardLandscaping Layout & Detail-Sub | 2013-05-04 A | 2013-05-20 A |  | 0% → 100% | 63d → none | resources DRAFTMAN SK [30 h] → SURVEYOR SK [48 h]; DRAFTMAN SK [12 h] |
| DUKHENGI1ADWIWSM4360 | Irrigation Water Tank & Pump Room Details- Sub | 2013-05-12 → 2013-06-01 A (+20d) | 2013-05-28 → 2013-06-17 A (+20d) |  | 0% → 100% | 63d → none | resources DRAFTMAN SK [30 h] → SURVEYOR SK [48 h]; DRAFTMAN SK [12 h] |
| DUKHENGI1ADWPSSM4340 | Parking Shed Layout & Details Drawings-Sub | 2013-05-12 → 2013-06-01 A (+20d) | 2013-05-28 → 2013-06-17 A (+20d) |  | 0% → 100% | 63d → none | resources DRAFTMAN SK [30 h] → SURVEYOR SK [48 h]; DRAFTMAN SK [12 h] |
| DUKHENGI1ADWRWSM4350 | Road Layout & Details-Sub | 2013-05-12 → 2013-06-01 A (+20d) | 2013-05-28 → 2013-06-17 A (+20d) |  | 0% → 100% | 63d → none | resources DRAFTMAN SK [30 h] → SURVEYOR SK [48 h]; DRAFTMAN SK [12 h] |
| DUKHENGI1ADWTRSM4370 | Telephone Room Details-Sub | 2013-05-29 → 2013-06-29 A (+31d) | 2013-06-15 → 2013-07-04 A (+19d) | 15d → 6d | 0% → 100% | 74d → none | resources DRAFTMAN SK [30 h] → SURVEYOR SK [48 h]; DRAFTMAN SK [12 h] |
| DUKHENGI1ADWGHSM4390 | Guard House Plan & Details-Sub | 2013-06-16 → 2013-07-27 A (+41d) | 2013-07-02 → 2013-08-29 A (+58d) | 15d → 27d | 0% → 100% | 301d → none |  |
| DUKHENGI1ADWGZSM4380 | Gazebo Plan & Details-Sub | 2013-06-16 → 2013-07-27 A (+41d) | 2013-07-02 → 2013-08-29 A (+58d) | 15d → 27d | 0% → 100% | 89d → none |  |
| G20 | **APPROVAL OF DRAWINGS** |  | 2013-08-27 → 2013-10-03 (+37d) |  |  |  |  |
| DUKHENGI1ADWDRAP4250 | Drainage Line Layout & Details-App | 2013-04-27 A | 2013-05-20 A |  | 0% → 100% | 98d → none |  |

| ID | Task | Start | Finish | Complete | Total float | Predecessors | Other |
| --- | --- | --- | --- | --- | --- | --- | --- |
| DUKHENGI1ADWFFAP4260 | Fire Fighting Line Layout & Details-App | 2013-04-27 A | 2013-05-20 A | 0% → 100% | 59d → none |  |  |
| DUKHENGI1ADWWSAP4270 | Water Supply Line Layout & Details-App | 2013-04-27 A | 2013-05-20 A | 0% → 100% | 100d → none |  |  |
| DUKHENGI1ADWELAP4280 | Electrical Line Layout & Details-App | 2013-05-04 A | 2013-06-06 A | 0% → 100% | 74d → none |  |  |
| DUKHENGI1ADWBWAP4330 | Boundary Wall Layout & Details-App | 2013-05-21 → 2013-06-01 A (+11d) | 2013-06-24 → 2013-07-04 A (+10d) | 0% → 100% | 99d → none |  |  |
| DUKHENGI1ADWIRAP4310 | Irrigation Layout & Details-App | 2013-05-21 → 2013-06-01 A (+11d) | 2013-06-24 → 2013-07-04 A (+10d) | 0% → 100% | 105d → none |  |  |
| DUKHENGI1ADWSLAP4320 | Soft & HardLandscaping Layout & Detail-App | 2013-05-21 → 2013-06-01 A (+11d) | 2013-06-24 → 2013-07-04 A (+10d) | 0% → 100% | 81d → none |  |  |
| DUKHENGI1ADWSTAP4290 | Street Lighting Layout & details -App | 2013-06-08 A | 2013-07-11 A | 0% → 100% | 74d → none |  |  |
| DUKHENGI1ADWIWAP4360 | Irrigation Water Tank & Pump Room Details-App | 2013-05-29 → 2013-06-18 A (+20d) | 2013-07-02 → 2013-07-22 A (+20d) | 0% → 100% | 63d → none |  |  |
| DUKHENGI1ADWPSAP4340 | Parking Shed Layout & Details Drawings-App | 2013-05-29 → 2013-06-18 A (+20d) | 2013-07-02 → 2013-07-22 A (+20d) | 0% → 100% | 164d → none |  |  |
| DUKHENGI1ADWRWAP4350 | Road Layout & Details-App | 2013-05-29 → 2013-06-18 A (+20d) | 2013-07-02 → 2013-07-22 A (+20d) | 0% → 100% | 163d → none |  |  |
| DUKHENGI1ADWTRAP4370 | Telephone Room Details-App | 2013-06-16 → 2013-07-06 A (+20d) | 2013-07-20 → 2013-08-08 A (+19d) | 0% → 100% | 74d → none |  |  |
| DUKHENGI1ADWTCAP4300 | Telecommunication Line Layout & Details-App | 2013-07-13 A | 2013-08-19 A | 0% → 100% | 74d → none |  |  |
| DUKHENGI1ADWGHAP4390 | Guard House Plan & Details-App | 2013-07-21 → 2013-08-31 A (+41d) | 2013-08-27 → 2013-10-03 A (+37d) | 0% → 100% | 286d → none | DUKHENGI1ADWGHSM4390, DUKHENGI1ADWTRAP4370 → DUKHENGI1ADWGHSM4390 FF, DUKHENGI1ADWTRAP4370 |  |
| DUKHENGI1ADWGZAP4380 | Gazebo Plan & Details-App | 2013-07-21 → 2013-08-31 A (+41d) | 2013-08-27 → 2013-10-03 A (+37d) | 0% → 100% | 74d → none | DUKHENGI1ADWGZSM4380, DUKHENGI1ADWTRAP4370 → DUKHENGI1ADWGZSM4380 FF, DUKHENGI1ADWTRAP4370 |  |
| L30 | **PACKAGE-1B** |  | 2013-08-26 → 2013-10-03 (+38d) |  |  |  |  |
| E05 | **SHOP DRAWINGS SUBMISSION & APPROVAL** |  | 2013-08-26 → 2013-10-03 (+38d) |  |  |  |  |
| DUKHENGP1BDWARAP4480 | Gypsum False Ceiling Drawings-App |  | 2013-04-30 A | 86% → 100% | 71d → none |  |  |
| DUKHENGP1BDWARAP4490 | Aluminum False Ceiling Drawings-App |  | 2013-04-30 A | 86% → 100% | 86d → none |  |  |
| DUKHENGP1BDWARAP4500 | Ceramic Flooring & Wall Drawings-App |  | 2013-04-29 A | 89% → 100% | 42d → none |  |  |
| DUKHENGP1BDWARAP4510 | Porcelain Floor Drawings-App |  | 2013-04-29 A | 89% → 100% | 51d → none |  |  |
| DUKHENGP1BDWARAP4520 | Cobble & Slate Flooring Drawings-App |  | 2013-04-29 A | 89% → 100% | 82d → none |  |  |
| DUKHENGP1BDWARAP4530 | Doors & Window Drawings-App |  | 2013-05-25 A | 17% → 100% | 49d → none |  |  |
| DUKHENGP1BDWARAP4540 | Carpentry & Joinery Drawings-App | 2013-04-27 A | 2013-05-27 A | 0% → 100% | 84d → none |  |  |
| DUKHENGP1BDWELAP4570 | Power Layout Drawings-App |  | 2013-04-27 A | 97% → 100% | 104d → none |  |  |
| DUKHENGP1BDWELAP4590 | Audio Video Intercom System Drawings-App |  | 2013-05-13 A | 50% → 100% | 100d → none |  |  |
| DUKHENGP1BDWELAP4600 | Telephone & TV System Drawings-App | 2013-04-27 A | 2013-05-30 A | 0% → 100% | 85d → none |  |  |
| DUKHENGP1BDWMEAP4640 | AC Layout & Details Drawings-App |  | 2013-05-09 A | 60% → 100% | 72d → none |  |  |
| H40 | **INFRA DRAWINGS** |  | 2013-08-26 → 2013-10-03 (+38d) |  |  |  |  |
| G10 | **SUBMISSION OF DRAWINGS** |  | 2013-06-22 → 2013-07-13 (+21d) |  |  |  |  |
| DUKHENGI1BDWELSM4680 | Electrical Line Layout & Details-Sub |  | 2013-05-09 A | 20% → 100% | 57d → none |  |  |
| DUKHENGI1BDWSTSM4690 | Street Lighting Layout & details -Sub |  | 2013-05-09 A | 20% → 100% | 57d → none |  |  |
| DUKHENGI1BDWTCSM4700 | Telecommunication Line Layout & Details-Sub |  | 2013-05-09 A | 20% → 100% | 57d → none |  |  |
| DUKHENGI1BDWBWSM4730 | Boundary Wall Layout & Details-Sub | 2013-05-11 → 2013-06-01 A (+21d) | 2013-05-27 → 2013-06-17 A (+21d) | 0% → 100% | 57d → none |  | resources DRAFTMAN SK [30 h] → DRAFTMAN SK [80 h] |
| DUKHENGI1BDWIRSM4710 | Irrigation Layout & Details-Sub | 2013-05-11 → 2013-06-01 A (+21d) | 2013-05-27 → 2013-06-17 A (+21d) | 0% → 100% | 57d → none |  |  |
| DUKHENGI1BDWSLSM4720 | Soft & HardLandscaping Layout & Detail-Sub | 2013-05-11 → 2013-06-01 A (+21d) | 2013-05-27 → 2013-06-17 A (+21d) | 0% → 100% | 57d → none |  |  |
| DUKHENGI1BDWIWSM4760 | Irrigation Water Tank & Pump Room Details- Sub | 2013-05-19 → 2013-06-09 A (+21d) | 2013-06-04 → 2013-06-25 A (+21d) | 0% → 100% | 57d → none |  |  |
| DUKHENGI1BDWPSSM4740 | Parking Shed Layout & Details Drawings-Sub | 2013-05-19 → 2013-06-09 A (+21d) | 2013-06-04 → 2013-06-25 A (+21d) | 0% → 100% | 57d → none |  |  |
| DUKHENGI1BDWRWSM4750 | Road Layout & Details-Sub | 2013-05-19 → 2013-06-09 A (+21d) | 2013-06-04 → 2013-06-25 A (+21d) | 0% → 100% | 57d → none |  |  |
| DUKHENGI1BDWTRSM4770 | Telephone Room Details-Sub | 2013-05-19 → 2013-06-09 A (+21d) | 2013-06-04 → 2013-06-25 A (+21d) | 0% → 100% | 83d → none |  |  |
| DUKHENGI1BDWGHSM4790 | Guard House Plan & Details-Sub | 2013-06-05 → 2013-06-26 A (+21d) | 2013-06-22 → 2013-07-13 A (+21d) | 0% → 100% | 310d → none |  |  |
| DUKHENGI1BDWGZSM4780 | Gazebo Plan & Details-Sub | 2013-06-05 → 2013-06-26 A (+21d) | 2013-06-22 → 2013-07-13 A (+21d) | 0% → 100% | 98d → none |  |  |
| G20 | **APPROVAL OF DRAWINGS** |  | 2013-08-26 → 2013-10-03 (+38d) |  |  |  |  |
| DUKHENGI1BDWDRAP4650 | Drainage Line Layout & Details-App | 2013-04-27 A | 2013-05-27 A | 0% → 100% | 94d → none |  |  |
| DUKHENGI1BDWFFAP4660 | Fire Fighting Line Layout & Details-App | 2013-04-27 A | 2013-05-27 A | 0% → 100% | 53d → none |  |  |
| DUKHENGI1BDWWSAP4670 | Water Supply Line Layout & Details-App | 2013-04-27 A | 2013-05-27 A | 0% → 100% | 94d → none |  |  |
| DUKHENGI1BDWELAP4680 | Electrical Line Layout & Details-App | 2013-05-11 → 2013-06-01 A (+21d) | 2013-06-13 → 2013-07-04 A (+21d) | 0% → 100% | 68d → none |  |  |
| DUKHENGI1BDWBWAP4730 | Boundary Wall Layout & Details-App | 2013-05-28 → 2013-06-18 A (+21d) | 2013-07-01 → 2013-07-22 A (+21d) | 0% → 100% | 93d → none |  |  |
| DUKHENGI1BDWIRAP4710 | Irrigation Layout & Details-App | 2013-05-28 → 2013-06-18 A (+21d) | 2013-07-01 → 2013-07-22 A (+21d) | 0% → 100% | 99d → none |  |  |
| DUKHENGI1BDWSLAP4720 | Soft & HardLandscaping Layout & Detail-App | 2013-05-28 → 2013-06-18 A (+21d) | 2013-07-01 → 2013-07-22 A (+21d) | 0% → 100% | 75d → none |  |  |
| DUKHENGI1BDWIWAP4760 | Irrigation Water Tank & Pump Room Details-App | 2013-06-05 → 2013-06-26 A (+21d) | 2013-07-09 → 2013-07-30 A (+21d) | 0% → 100% | 57d → none |  |  |
| DUKHENGI1BDWPSAP4740 | Parking Shed Layout & Details Drawings-App | 2013-06-05 → 2013-06-26 A (+21d) | 2013-07-09 → 2013-07-30 A (+21d) | 0% → 100% | 158d → none |  |  |
| DUKHENGI1BDWRWAP4750 | Road Layout & Details-App | 2013-06-05 → 2013-06-26 A (+21d) | 2013-07-09 → 2013-07-30 A (+21d) | 0% → 100% | 157d → none |  |  |
| DUKHENGI1BDWTRAP4770 | Telephone Room Details-App | 2013-06-05 → 2013-06-26 A (+21d) | 2013-07-09 → 2013-07-30 A (+21d) | 0% → 100% | 83d → none |  |  |
| DUKHENGI1BDWSTAP4690 | Street Lighting Layout & details -App | 2013-06-15 → 2013-07-06 A (+21d) | 2013-07-18 → 2013-08-08 A (+21d) | 0% → 100% | 68d → none |  |  |
| DUKHENGI1BDWTCAP4700 | Telecommunication Line Layout & Details-App | 2013-07-20 → 2013-08-13 A (+24d) | 2013-08-26 → 2013-08-31 A (+5d) | 0% → 100% | 68d → none |  |  |
| DUKHENGI1BDWGHAP4790 | Guard House Plan & Details-App | 2013-07-10 → 2013-08-31 A (+52d) | 2013-08-17 → 2013-10-03 A (+47d) | 0% → 100% | 295d → none |  |  |
| DUKHENGI1BDWGZAP4780 | Gazebo Plan & Details-App | 2013-07-10 → 2013-08-31 A (+52d) | 2013-08-17 → 2013-10-03 A (+47d) | 0% → 100% | 83d → none |  |  |
| DUKHENGP2ADWARAP4910 | Gypsum False Ceiling Drawings-App |  | 2013-04-30 A | 87% → 100% | 71d → none |  |  |
| DUKHENGP2ADWARAP4930 | Doors & Window Drawings-App |  | 2013-05-11 A | 57% → 100% | 61d → none |  |  |
| DUKHENGP2ADWARAP4940 | Carpentry & Joinery Drawings-App |  | 2013-05-27 A | 10% → 100% | 84d → none |  |  |
| DUKHENGP2ADWELSM5000 | Telephone & TV System Drawings-Sub |  | 2013-04-30 A | 73% → 100% | 81d → none |  |  |
| DUKHENGP2ADWELAP4980 | Central Alarm Monitoring System Drawings-App |  | 2013-04-30 A | 86% → 100% | 105d → none |  |  |
| DUKHENGP2ADWELAP4990 | Audio Video Intercom System Drawings-App |  | 2013-05-18 A | 37% → 100% | 96d → none |  |  |
| DUKHENGP2ADWELAP5000 | Telephone & TV System Drawings-App | 2013-05-01 A | 2013-06-04 A | 0% → 100% | 81d → none |  |  |
| DUKHENGP2ADWMEAP5040 | AC Layout & Details Drawings-App |  | 2013-05-09 A | 60% → 100% | 72d → none |  |  |
| DUKHENGI2ADWELSM5080 | Electrical Line Layout & Details-Sub |  | 2013-05-09 A | 20% → 100% | 57d → none |  |  |
| DUKHENGI2ADWSTSM5090 | Street Lighting Layout & details -Sub |  | 2013-05-09 A | 20% → 100% | 57d → none |  |  |
| DUKHENGI2ADWTCSM5100 | Telecommunication Line Layout & Details-Sub |  | 2013-05-09 A | 20% → 100% | 57d → none |  |  |
| DUKHENGI2ADWBWSM5130 | Boundary Wall Layout & Details-Sub | 2013-05-11 A | 2013-05-27 A | 0% → 100% | 57d → none |  |  |
| DUKHENGI2ADWIRSM5110 | Irrigation Layout & Details-Sub | 2013-05-11 A | 2013-05-27 A | 0% → 100% | 57d → none |  |  |

| ID | Task | Start | Finish | Duration | Complete | Total float | Predecessors |
| --- | --- | --- | --- | --- | --- | --- | --- |
| DUKHENGI2ADWSLSM5120 | Soft & HardLandscaping Layout & Detail-Sub | 2013-05-11 A | 2013-05-27 A |  | 0% → 100% | 57d → none |  |
| DUKHENGI2ADWIWSM5160 | Irrigation Water Tank & Pump Room Details- Sub | 2013-05-19 A | 2013-06-04 A |  | 0% → 100% | 57d → none |  |
| DUKHENGI2ADWPSSM5140 | Parking Shed Layout & Details Drawings-Sub | 2013-05-19 A | 2013-06-04 A |  | 0% → 100% | 57d → none |  |
| DUKHENGI2ADWRWSM5150 | Road Layout & Details-Sub | 2013-05-19 A | 2013-06-04 A |  | 0% → 100% | 57d → none |  |
| DUKHENGI2ADWGZSM5170 | Gazebo Plan & Details-Sub | 2013-06-05 A | 2013-06-22 A |  | 0% → 100% | 98d → none |  |
| DUKHENGI2ADWDRAP5050 | Drainage Line Layout & Details-App | 2013-04-27 A | 2013-05-27 A |  | 0% → 100% | 76d → none |  |
| DUKHENGI2ADWFFAP5060 | Fire Fighting Line Layout & Details-App | 2013-04-27 A | 2013-05-27 A |  | 0% → 100% | 53d → none |  |
| DUKHENGI2ADWWSAP5070 | Water Supply Line Layout & Details-App | 2013-04-27 A | 2013-05-27 A |  | 0% → 100% | 94d → none |  |
| DUKHENGI2ADWBWAP5130 | Boundary Wall Layout & Details-App | 2013-05-28 → 2013-06-01 A (+4d) | 2013-07-01 A | 30d → 27d | 0% → 100% | 93d → none |  |
| DUKHENGI2ADWELAP5080 | Electrical Line Layout & Details-App | 2013-05-11 → 2013-06-01 A (+21d) | 2013-06-13 A | 30d → 12d | 0% → 100% | 128d → none |  |
| DUKHENGI2ADWIRAP5110 | Irrigation Layout & Details-App | 2013-05-28 → 2013-06-01 A (+4d) | 2013-07-01 A | 30d → 27d | 0% → 100% | 99d → none |  |
| DUKHENGI2ADWSLAP5120 | Soft & HardLandscaping Layout & Detail-App | 2013-05-28 → 2013-06-01 A (+4d) | 2013-07-01 A | 30d → 27d | 0% → 100% | 75d → none |  |
| DUKHENGI2ADWSTAP5090 | Street Lighting Layout & details -App | 2013-05-11 → 2013-06-01 A (+21d) | 2013-06-13 A | 30d → 12d | 0% → 100% | 128d → none |  |
| DUKHENGI2ADWTCAP5100 | Telecommunication Line Layout & Details-App | 2013-05-11 → 2013-06-01 A (+21d) | 2013-06-13 A | 30d → 12d | 0% → 100% | 128d → none |  |
| DUKHENGI2ADWIWAP5160 | Irrigation Water Tank & Pump Room Details-App | 2013-06-05 A | 2013-07-09 A |  | 0% → 100% | 57d → none |  |
| DUKHENGI2ADWPSAP5140 | Parking Shed Layout & Details Drawings-App | 2013-06-05 A | 2013-07-09 A |  | 0% → 100% | 158d → none |  |
| DUKHENGI2ADWRWAP5150 | Road Layout & Details-App | 2013-06-05 A | 2013-07-09 A |  | 0% → 100% | 157d → none |  |
| DUKHENGI2ADWGZAP5170 | Gazebo Plan & Details-App | 2013-06-23 A | 2013-07-27 A |  | 0% → 100% | 98d → none |  |
| DUKHENGP2BDWARAP5290 | Gypsum False Ceiling Drawings-App |  | 2013-04-30 A |  | 87% → 100% | 71d → none |  |
| DUKHENGP2BDWARAP5310 | Doors & Window Drawings-App |  | 2013-05-11 A |  | 57% → 100% | 61d → none |  |
| DUKHENGP2BDWARAP5320 | Carpentry & Joinery Drawings-App |  | 2013-05-27 A |  | 10% → 100% | 84d → none |  |
| H20 | **ELECTRICAL DRAWINGS** |  | 2013-06-06 → 2013-06-01 (-5d) |  |  |  |  |
| DUKHENGP2BDWELSM5380 | Telephone & TV System Drawings-Sub |  | 2013-05-02 A |  | 60% → 100% | 79d → none |  |
| G20 | **APPROVAL OF DRAWINGS** |  | 2013-06-06 → 2013-06-01 (-5d) |  |  |  |  |
| DUKHENGP2BDWELAP5360 | Central Alarm Monitoring System Drawings-App |  | 2013-05-02 A |  | 80% → 100% | 103d → none |  |
| DUKHENGP2BDWELAP5370 | Audio Video Intercom System Drawings-App |  | 2013-05-20 A |  | 30% → 100% | 94d → none |  |
| DUKHENGP2BDWELAP5380 | Telephone & TV System Drawings-App | 2013-05-04 A | 2013-06-06 → 2013-06-01 A (-5d) |  | 0% → 100% | 79d → none |  |
| DUKHENGP2BDWMEAP5420 | AC Layout & Details Drawings-App |  | 2013-05-09 A |  | 60% → 100% | 72d → none |  |
| DUKHENGI2BDWELSM5460 | Electrical Line Layout & Details-Sub |  | 2013-05-09 A |  | 20% → 100% | 57d → none |  |
| DUKHENGI2BDWSTSM5470 | Street Lighting Layout & details -Sub |  | 2013-05-09 A |  | 20% → 100% | 57d → none |  |
| DUKHENGI2BDWTCSM5480 | Telecommunication Line Layout & Details-Sub |  | 2013-05-09 A |  | 20% → 100% | 57d → none |  |
| DUKHENGI2BDWBWSM5510 | Boundary Wall Layout & Details-Sub | 2013-05-11 A | 2013-05-27 A |  | 0% → 100% | 57d → none |  |
| DUKHENGI2BDWIRSM5490 | Irrigation Layout & Details-Sub | 2013-05-11 A | 2013-05-27 A |  | 0% → 100% | 57d → none |  |
| DUKHENGI2BDWSLSM5500 | Soft & HardLandscaping Layout & Detail-Sub | 2013-05-11 A | 2013-05-27 A |  | 0% → 100% | 57d → none |  |
| DUKHENGI2BDWIWSM5540 | Irrigation Water Tank & Pump Room Details- Sub | 2013-05-19 A | 2013-06-04 A |  | 0% → 100% | 57d → none |  |
| DUKHENGI2BDWPSSM5520 | Parking Shed Layout & Details Drawings-Sub | 2013-05-19 A | 2013-06-04 A |  | 0% → 100% | 57d → none | DUKHENGI2BDWBWSM5510 SS+7d → DUKHENGI2BDWBWSM5510 SS |
| DUKHENGI2BDWRWSM5530 | Road Layout & Details-Sub | 2013-05-19 A | 2013-06-04 A |  | 0% → 100% | 57d → none |  |
| DUKHENGI2BDWGZSM5550 | Gazebo Plan & Details-Sub | 2013-06-05 A | 2013-06-22 A |  | 0% → 100% | 98d → none |  |
| DUKHENGI2BDWDRAP5430 | Drainage Line Layout & Details-App | 2013-04-27 A | 2013-05-27 A |  | 0% → 100% | 72d → none |  |
| DUKHENGI2BDWFFAP5440 | Fire Fighting Line Layout & Details-App | 2013-04-27 A | 2013-05-27 A |  | 0% → 100% | 53d → none |  |
| DUKHENGI2BDWWSAP5450 | Water Supply Line Layout & Details-App | 2013-04-27 A | 2013-05-27 A |  | 0% → 100% | 94d → none |  |
| DUKHENGI2BDWELAP5460 | Electrical Line Layout & Details-App | 2013-05-11 A | 2013-06-13 A |  | 0% → 100% | 128d → none |  |
| DUKHENGI2BDWSTAP5470 | Street Lighting Layout & details -App | 2013-05-11 A | 2013-06-13 A |  | 0% → 100% | 128d → none |  |
| DUKHENGI2BDWTCAP5480 | Telecommunication Line Layout & Details-App | 2013-05-11 A | 2013-06-13 A |  | 0% → 100% | 128d → none |  |
| DUKHENGI2BDWBWAP5510 | Boundary Wall Layout & Details-App | 2013-05-28 → 2013-06-01 A (+4d) | 2013-07-01 → 2013-07-04 A (+3d) | 30d → 27d | 0% → 100% | 93d → none |  |
| DUKHENGI2BDWIRAP5490 | Irrigation Layout & Details-App | 2013-05-28 → 2013-06-01 A (+4d) | 2013-07-01 → 2013-07-04 A (+3d) | 30d → 27d | 0% → 100% | 99d → none |  |
| DUKHENGI2BDWSLAP5500 | Soft & HardLandscaping Layout & Detail-App | 2013-05-28 → 2013-06-01 A (+4d) | 2013-07-01 → 2013-07-04 A (+3d) | 30d → 27d | 0% → 100% | 75d → none |  |
| DUKHENGI2BDWIWAP5540 | Irrigation Water Tank & Pump Room Details-App | 2013-06-05 A | 2013-07-09 A |  | 0% → 100% | 57d → none |  |
| DUKHENGI2BDWPSAP5520 | Parking Shed Layout & Details Drawings-App | 2013-06-05 A | 2013-07-09 A |  | 0% → 100% | 158d → none |  |
| DUKHENGI2BDWRWAP5530 | Road Layout & Details-App | 2013-06-05 A | 2013-07-09 A |  | 0% → 100% | 157d → none |  |
| DUKHENGI2BDWGZAP5550 | Gazebo Plan & Details-App | 2013-06-23 A | 2013-07-27 A |  | 0% → 100% | 98d → none |  |
| L60 | **PACKAGE-3** |  | 2013-09-07 → 2013-10-03 (+26d) |  |  |  |  |
| E05 | **SHOP DRAWINGS SUBMISSION & APPROVAL** |  | 2013-09-07 → 2013-10-03 (+26d) |  |  |  |  |
| DUKHENGP03DWARAP5670 | Gypsum False Ceiling Drawings-App |  | 2013-04-30 A |  | 87% → 100% | 71d → none |  |
| DUKHENGP03DWARAP5680 | Aluminum False Ceiling Drawings-App |  | 2013-04-30 A |  | 87% → 100% | 86d → none |  |
| DUKHENGP03DWARAP5690 | Doors & Window Drawings-App |  | 2013-05-19 A |  | 33% → 100% | 54d → none |  |
| DUKHENGP03DWARAP5700 | Carpentry & Joinery Drawings-App |  | 2013-05-27 A |  | 10% → 100% | 84d → none |  |
| DUKHENGP03DWELAP5720 | Lighting Layout Drawings-App |  | 2013-04-30 A |  | 87% → 100% | 50d → none |  |
| DUKHENGP03DWELAP5730 | Power Layout Drawings-App |  | 2013-04-30 A |  | 87% → 100% | 101d → none |  |
| DUKHENGP03DWELAP5740 | Central Alarm Monitoring System Drawings-App |  | 2013-05-02 A |  | 80% → 100% | 103d → none |  |
| DUKHENGP03DWELAP5750 | Audio Video Intercom System Drawings-App |  | 2013-05-20 A |  | 30% → 100% | 94d → none |  |
| DUKHENGP03DWELAP5760 | Telephone & TV System Drawings-App | 2013-04-27 A | 2013-05-30 A |  | 0% → 100% | 85d → none |  |
| DUKHENGP03DWMEAP5800 | AC Layout & Details Drawings-App |  | 2013-05-14 A |  | 47% → 100% | 68d → none |  |
| H40 | **INFRA DRAWINGS** |  | 2013-09-07 → 2013-10-03 (+26d) |  |  |  |  |
| DUKHENGI03DWELSM5840 | Electrical Line Layout & Details-Sub | 2013-04-27 A | 2013-05-13 A |  | 0% → 100% | 54d → none |  |
| DUKHENGI03DWSTSM5850 | Street Lighting Layout & details -Sub | 2013-04-27 A | 2013-05-13 A |  | 0% → 100% | 54d → none |  |
| DUKHENGI03DWTCSM5860 | Telecommunication Line Layout & Details-Sub | 2013-04-27 A | 2013-05-13 A |  | 0% → 100% | 54d → none |  |
| DUKHENGI03DWBWSM5890 | Boundary Wall Layout & Details-Sub | 2013-05-14 A | 2013-05-30 A |  | 0% → 100% | 54d → none |  |
| DUKHENGI03DWIRSM5870 | Irrigation Layout & Details-Sub | 2013-05-14 A | 2013-05-30 A |  | 0% → 100% | 54d → none |  |
| DUKHENGI03DWSLSM5880 | Soft & HardLandscaping Layout & Detail-Sub | 2013-05-14 A | 2013-05-30 A |  | 0% → 100% | 54d → none |  |

| ID | Task | Start | Finish | Duration | Complete | Total float | Other |
| --- | --- | --- | --- | --- | --- | --- | --- |
| DUKHENGI03DWIWSM5920 | Irrigation Water Tank & Pump Room Details- Sub | 2013-05-22 A | 2013-06-08 A |  | 0% → 100% | 54d → none |  |
| DUKHENGI03DWPSSM5900 | Parking Shed Layout & Details Drawings-Sub | 2013-05-22 A | 2013-06-08 A |  | 0% → 100% | 54d → none |  |
| DUKHENGI03DWRWSM5910 | Road Layout & Details-Sub | 2013-05-22 A | 2013-06-08 A |  | 0% → 100% | 54d → none |  |
| DUKHENGI03DWTRSM5930 | Telephone Room Details-Sub | 2013-06-09 A | 2013-06-25 A |  | 0% → 100% | 65d → none |  |
| DUKHENGI03DWGHSM5950 | Guard House Plan & Details-Sub | 2013-06-26 A | 2013-07-13 A |  | 0% → 100% | 190d → none |  |
| DUKHENGI03DWGZSM5940 | Gazebo Plan & Details-Sub | 2013-06-26 A | 2013-07-13 A |  | 0% → 100% | 80d → none |  |
| G20 | **APPROVAL OF DRAWINGS** |  | 2013-09-07 → 2013-10-03 (+26d) |  |  |  |  |
| DUKHENGI03DWDRAP5810 | Drainage Line Layout & Details-App | 2013-04-27 A | 2013-05-30 A |  | 0% → 100% | 68d → none |  |
| DUKHENGI03DWFFAP5820 | Fire Fighting Line Layout & Details-App | 2013-04-27 A | 2013-05-30 A |  | 0% → 100% | 50d → none |  |
| DUKHENGI03DWWSAP5830 | Water Supply Line Layout & Details-App | 2013-04-27 A | 2013-05-30 A |  | 0% → 100% | 91d → none |  |
| DUKHENGI03DWELAP5840 | Electrical Line Layout & Details-App | 2013-05-14 A | 2013-06-17 A |  | 0% → 100% | 65d → none |  |
| DUKHENGI03DWBWAP5890 | Boundary Wall Layout & Details-App | 2013-06-01 A | 2013-07-04 A |  | 0% → 100% | 90d → none |  |
| DUKHENGI03DWIRAP5870 | Irrigation Layout & Details-App | 2013-06-01 A | 2013-07-04 A |  | 0% → 100% | 96d → none |  |
| DUKHENGI03DWSLAP5880 | Soft & HardLandscaping Layout & Detail-App | 2013-06-01 A | 2013-07-04 A |  | 0% → 100% | 72d → none |  |
| DUKHENGI03DWIWAP5920 | Irrigation Water Tank & Pump Room Details-App | 2013-06-09 A | 2013-07-13 A |  | 0% → 100% | 54d → none |  |
| DUKHENGI03DWPSAP5900 | Parking Shed Layout & Details Drawings-App | 2013-06-09 A | 2013-07-13 A |  | 0% → 100% | 155d → none |  |
| DUKHENGI03DWRWAP5910 | Road Layout & Details-App | 2013-06-09 A | 2013-07-13 A |  | 0% → 100% | 154d → none |  |
| DUKHENGI03DWSTAP5850 | Street Lighting Layout & details -App | 2013-06-18 A | 2013-07-22 A |  | 0% → 100% | 65d → none |  |
| DUKHENGI03DWTRAP5930 | Telephone Room Details-App | 2013-06-26 A | 2013-07-30 A |  | 0% → 100% | 65d → none |  |
| DUKHENGI03DWTCAP5860 | Telecommunication Line Layout & Details-App | 2013-07-23 → 2013-07-27 A (+4d) | 2013-08-29 A | 30d → 27d | 0% → 100% | 65d → none |  |
| DUKHENGI03DWGHAP5950 | Guard House Plan & Details-App | 2013-07-31 → 2013-08-31 A (+31d) | 2013-09-07 → 2013-10-03 A (+26d) |  | 0% → 100% | 175d → none |  |
| DUKHENGI03DWGZAP5940 | Gazebo Plan & Details-App | 2013-07-31 → 2013-08-31 A (+31d) | 2013-09-07 → 2013-10-03 A (+26d) |  | 0% → 100% | 65d → none |  |
| K25 | **PROCUREMENT** |  | 2014-02-14 → 2014-01-31 (-14d) |  |  |  |  |
| DUKHPROGEN00PQAP2180 | Road Works _Prequa. 2nd App. |  | 2013-05-02 A |  | 80% → 100% | 26d → none |  |
| L20 | **MATERIAL SUBMITTAL AND APPROVAL** |  | 2013-11-16 → 2013-12-05 (+19d) |  |  |  |  |
| 10 | **1ST SUBMISSION OF MATERIAL** |  | 2013-08-24 → 2013-08-22 (-2d) |  |  |  |  |
| DUKHPROGEN00MTSM1630 | Steel Ladder_1st_Sub |  | 2013-05-01 A |  | 67% → 100% | 36d → none |  |
| DUKHPROGEN00MTSM1660 | Interlock works_1st_Sub |  | 2013-05-07 A |  | 33% → 100% | 40d → none |  |
| DUKHPROGEN00MTSM1670 | Irrigation Pipes_1st_Sub |  | 2013-05-07 A |  | 33% → 100% | 37d → none |  |
| DUKHPROGEN00MTSM1640 | Water meter_1st_Sub | 2013-04-27 A | 2013-05-13 A |  | 0% → 100% | 14d → none |  |
| DUKHPROGEN00MTSM1650 | Isolating Values_1st_Sub | 2013-04-27 A | 2013-05-13 A |  | 0% → 100% | 9d → none |  |
| DUKHPROGEN00MTSM1700 | Road Works Materials _1st_Sub | 2013-05-04 A | 2013-05-20 A |  | 0% → 100% | 26d → none |  |
| DUKHPROGEN00MTSM1710 | External signage _1st_Sub | 2013-05-04 A | 2013-05-20 A |  | 0% → 100% | 176d → none |  |
| DUKHPROGEN00MTSM1720 | Road Marking_1st_Sub | 2013-05-04 A | 2013-05-20 A |  | 0% → 100% | 176d → none |  |
| DUKHPROGEN00MTSM1740 | Stone Boulders_1st_Sub | 2013-05-04 A | 2013-05-20 A |  | 0% → 100% | 26d → none |  |
| DUKHPROGEN00MTSM1750 | Speed Humps _1st_Sub | 2013-05-04 A | 2013-05-20 A |  | 0% → 100% | 26d → none |  |
| DUKHPROGEN00MTSM1760 | Sprinklers_1st_Sub | 2013-05-08 A | 2013-05-25 A |  | 0% → 100% | 37d → none |  |
| DUKHPROGEN00MTSM1680 | Water Tank_1st_Sub | 2013-05-14 A | 2013-05-30 A |  | 0% → 100% | 14d → none |  |
| DUKHPROGEN00MTSM1690 | Fire Hydrant_1st_Sub | 2013-05-14 A | 2013-05-30 A |  | 0% → 100% | 20d → none |  |
| DUKHPROGEN00MTSM1780 | Gazebo Structure_1st_Sub | 2013-05-21 A | 2013-06-06 A |  | 0% → 100% | 71d → none | resources MATERIAL ENGG [30 h] → MATERIAL ENGG [100 h] |
| DUKHPROGEN00MTSM1790 | Plantation(Grass,Trees)_1st_Sub | 2013-05-21 A | 2013-06-06 A |  | 0% → 100% | 26d → none | resources MATERIAL ENGG [30 h] → MATERIAL ENGG [100 h] |
| DUKHPROGEN00MTSM1800 | Steel Gate & Barrier gates_1st_Sub | 2013-05-26 A | 2013-06-11 → 2013-07-15 A (+34d) |  | 0% → 100% | 40d → none | resources MATERIAL ENGG [30 h] → MATERIAL ENGG [100 h] |
| DUKHPROGEN00MTSM1810 | Nozzle Jet_1st_Sub | 2013-05-26 A | 2013-06-11 A |  | 0% → 100% | 37d → none | resources MATERIAL ENGG [30 h] → MATERIAL ENGG [100 h] |
| DUKHPROGEN00MTSM1820 | Pre-cast Boundary Wall _1st_Sub | 2013-05-26 A | 2013-06-11 → 2013-07-15 A (+34d) |  | 0% → 100% | 40d → none | resources MATERIAL ENGG [30 h] → MATERIAL ENGG [100 h] |
| DUKHPROGEN00MTSM1730 | Car Parking Shed_1st_Sub | 2013-05-08 → 2013-06-01 A (+24d) | 2013-05-25 → 2013-06-17 A (+23d) |  | 0% → 100% | 40d → none |  |
| DUKHPROGEN00MTSM1770 | Kitchen Water Filter_1st_Sub | 2013-06-01 A | 2013-06-17 A |  | 0% → 100% | 14d → none |  |
| DUKHPROGEN00MTSM1830 | Solenoid Values_1st_Sub | 2013-06-12 A | 2013-06-29 A |  | 0% → 100% | 37d → none |  |
| DUKHPROGEN00MTSM1840 | Gate Values_1st_Sub | 2013-06-30 → 2013-06-29 A (-1d) | 2013-07-16 → 2013-07-15 A (-1d) |  | 0% → 100% | 37d → none |  |
| DUKHPROGEN00MTSM1850 | Fences_1st_Sub | 2013-06-12 → 2013-07-27 A (+45d) | 2013-06-29 → 2013-08-01 A (+33d) | 15d → 6d | 0% → 100% | 126d → none |  |
| DUKHPROGEN00MTSM1860 | Remote Control Value_1st_Sub | 2013-07-17 → 2013-07-27 A (+10d) | 2013-08-03 → 2013-08-01 A (-2d) | 15d → 6d | 0% → 100% | 37d → none |  |
| DUKHPROGEN00MTSM1870 | Irrigation Controller_1st_Sub | 2013-08-04 → 2013-08-03 A (-1d) | 2013-08-24 → 2013-08-22 A (-2d) |  | 0% → 100% | 37d → none |  |
| 15 | **1ST APPROVAL OF MATERIAL** |  | 2013-09-28 → 2013-09-26 (-2d) |  |  |  |  |
| DUKHPROGEN00MTAP1520 | Lift Pump_1st_App | 2013-04-27 A | 2013-05-30 A |  | 0% → 100% | 25d → none |  |
| DUKHPROGEN00MTAP1530 | Exhaust Fan_1st_App | 2013-04-27 A | 2013-05-30 A |  | 0% → 100% | 66d → none |  |
| DUKHPROGEN00MTAP1540 | Ductile Iron Pipes_1st_App | 2013-04-27 A | 2013-05-30 A |  | 0% → 100% | 10d → none |  |
| DUKHPROGEN00MTAP1630 | Steel Ladder_1st_App | 2013-05-02 A | 2013-06-05 A |  | 0% → 100% | 36d → none |  |
| DUKHPROGEN00MTAP1660 | Interlock works_1st_App | 2013-05-08 A | 2013-06-11 A |  | 0% → 100% | 85d → none |  |
| DUKHPROGEN00MTAP1670 | Irrigation Pipes_1st_App | 2013-05-08 A | 2013-06-11 A |  | 0% → 100% | 76d → none |  |
| DUKHPROGEN00MTAP1640 | Water meter_1st_App | 2013-05-14 A | 2013-06-17 A |  | 0% → 100% | 61d → none |  |
| DUKHPROGEN00MTAP1150 | Sanitary Fittings_1st_App | 2013-04-27 → 2013-06-01 A (+35d) | 2013-06-27 A | 54d → 24d | 0% → 100% | -13d → none |  |
| DUKHPROGEN00MTAP1160 | Copper Pipes_1st_App | 2013-04-27 → 2013-06-01 A (+35d) | 2013-06-27 A | 54d → 24d | 0% → 100% | -10d → none |  |
| DUKHPROGEN00MTAP1170 | SMDB_1st_App | 2013-04-27 → 2013-06-01 A (+35d) | 2013-06-27 A | 54d → 24d | 0% → 100% | 11d → none |  |
| DUKHPROGEN00MTAP1180 | Cables & Wires_1st_App | 2013-04-27 → 2013-06-01 A (+35d) | 2013-06-27 A | 54d → 24d | 0% → 100% | 0d → none |  |
| DUKHPROGEN00MTAP1190 | Lights & Fixtures_1st_App | 2013-04-27 → 2013-06-01 A (+35d) | 2013-06-27 A | 54d → 24d | 0% → 100% | 23d → none |  |
| DUKHPROGEN00MTAP1200 | Isolators_1st_App | 2013-04-27 → 2013-06-01 A (+35d) | 2013-06-27 A | 54d → 24d | 0% → 100% | 44d → none |  |
| DUKHPROGEN00MTAP1210 | Fire Resistant Cables_1st_App | 2013-04-27 → 2013-06-01 A (+35d) | 2013-06-27 A | 54d → 24d | 0% → 100% | 41d → none |  |
| DUKHPROGEN00MTAP1220 | Water Chiller_1st_App | 2013-04-27 → 2013-06-01 A (+35d) | 2013-06-27 A | 54d → 24d | 0% → 100% | 1d → none |  |
| DUKHPROGEN00MTAP1230 | Water Heater_1st_App | 2013-04-27 → 2013-06-01 A (+35d) | 2013-06-27 A | 54d → 24d | 0% → 100% | 10d → none |  |
| DUKHPROGEN00MTAP1240 | Split AC_1st_App | 2013-04-27 → 2013-06-01 A (+35d) | 2013-06-27 A | 54d → 24d | 0% → 100% | 35d → none |  |
| DUKHPROGEN00MTAP1250 | Street Light Post Set_1st_App | 2013-04-27 → 2013-06-01 A (+35d) | 2013-06-27 A | 54d → 24d | 0% → 100% | 76d → none |  |

| ID | Task | Start | Finish | Duration | Complete | Total float | Other |
| --- | --- | --- | --- | --- | --- | --- | --- |
| DUKHPROGEN00MTAP1260 | Smoke Detector_1st_App | 2013-04-27 → 2013-06-01 A (+35d) | 2013-06-27 A | 54d → 24d | 0% → 100% | 41d → none |  |
| DUKHPROGEN00MTAP1270 | Video Com System_1st_App | 2013-04-27 → 2013-06-01 A (+35d) | 2013-06-27 A | 54d → 24d | 0% → 100% | 21d → none |  |
| DUKHPROGEN00MTAP1280 | Telephone Fittings & Accessories_1st_App | 2013-04-27 → 2013-06-01 A (+35d) | 2013-06-27 A | 54d → 24d | 0% → 100% | 21d → none |  |
| DUKHPROGEN00MTAP1290 | Television devices,Fittings & Access._1st_App | 2013-04-27 → 2013-06-01 A (+35d) | 2013-06-27 A | 54d → 24d | 0% → 100% | 50d → none |  |
| DUKHPROGEN00MTAP1300 | Gypsum Board false ceiling_1st_App | 2013-04-27 → 2013-06-01 A (+35d) | 2013-06-27 A | 54d → 24d | 0% → 100% | -19d → none |  |
| DUKHPROGEN00MTAP1310 | Aluminum Tile false ceiling_1st_App | 2013-04-27 → 2013-06-01 A (+35d) | 2013-06-27 A | 54d → 24d | 0% → 100% | -4d → none |  |
| DUKHPROGEN00MTAP1320 | Paints_1st_App | 2013-04-27 → 2013-06-01 A (+35d) | 2013-06-27 A | 54d → 24d | 0% → 100% | -31d → none |  |
| DUKHPROGEN00MTAP1330 | Booster Pump_1st_App | 2013-04-27 → 2013-06-01 A (+35d) | 2013-06-27 A | 54d → 24d | 0% → 100% | 1d → none |  |
| DUKHPROGEN00MTAP1340 | Exhaust Air louver_1st_App | 2013-04-27 → 2013-06-01 A (+35d) | 2013-06-27 A | 54d → 24d | 0% → 100% | 42d → none |  |
| DUKHPROGEN00MTAP1350 | Bollard Lamp_1st_App | 2013-04-27 → 2013-06-01 A (+35d) | 2013-06-27 A | 54d → 24d | 0% → 100% | 76d → none |  |
| DUKHPROGEN00MTAP1360 | Digital Alarm Communicator Panel_1st_App | 2013-04-27 → 2013-06-01 A (+35d) | 2013-06-27 A | 54d → 24d | 0% → 100% | 15d → none |  |
| DUKHPROGEN00MTAP1370 | Fire Blanket_1st_App | 2013-04-27 → 2013-06-01 A (+35d) | 2013-06-27 A | 54d → 24d | 0% → 100% | 64d → none |  |
| DUKHPROGEN00MTAP1380 | Fire Extinguisher_1st_App | 2013-04-27 → 2013-06-01 A (+35d) | 2013-06-27 A | 54d → 24d | 0% → 100% | 56d → none |  |
| DUKHPROGEN00MTAP1390 | GRC Panels_1st_App | 2013-04-27 → 2013-06-01 A (+35d) | 2013-06-27 A | 54d → 24d | 0% → 100% | 23d → none |  |
| DUKHPROGEN00MTAP1400 | Access Ladder_1st_App | 2013-04-27 → 2013-06-01 A (+35d) | 2013-06-27 A | 54d → 24d | 0% → 100% | 40d → none |  |
| DUKHPROGEN00MTAP1410 | Aluminum Slat Screen_1st_App | 2013-04-27 → 2013-06-01 A (+35d) | 2013-06-27 A | 54d → 24d | 0% → 100% | 30d → none |  |
| DUKHPROGEN00MTAP1420 | Epoxy_1st_App | 2013-04-27 → 2013-06-01 A (+35d) | 2013-06-27 A | 54d → 24d | 0% → 100% | 108d → none |  |
| DUKHPROGEN00MTAP1430 | Roller Shutter_1st_App | 2013-04-27 → 2013-06-01 A (+35d) | 2013-06-27 A | 54d → 24d | 0% → 100% | 169d → none |  |
| DUKHPROGEN00MTAP1440 | PVC Doors_1st_App | 2013-04-27 → 2013-06-01 A (+35d) | 2013-06-27 A | 54d → 24d | 0% → 100% | 46d → none |  |
| DUKHPROGEN00MTAP1450 | Ironmongeries_1st_App | 2013-04-27 → 2013-06-01 A (+35d) | 2013-06-27 A | 54d → 24d | 0% → 100% | -20d → none |  |
| DUKHPROGEN00MTAP1460 | Aluminum Doors_1st_App | 2013-04-27 → 2013-06-01 A (+35d) | 2013-06-27 A | 54d → 24d | 0% → 100% | 19d → none |  |
| DUKHPROGEN00MTAP1470 | Aluminum Windows_1st_App | 2013-04-27 → 2013-06-01 A (+35d) | 2013-06-27 A | 54d → 24d | 0% → 100% | 25d → none |  |
| DUKHPROGEN00MTAP1480 | Granite_1st_App | 2013-04-27 → 2013-06-01 A (+35d) | 2013-06-27 A | 54d → 24d | 0% → 100% | 0d → none |  |
| DUKHPROGEN00MTAP1490 | Wooden Doors_1st_App | 2013-04-27 → 2013-06-01 A (+35d) | 2013-06-27 A | 54d → 24d | 0% → 100% | -20d → none |  |
| DUKHPROGEN00MTAP1500 | Steel Door_1st_App | 2013-04-27 → 2013-06-01 A (+35d) | 2013-06-27 A | 54d → 24d | 0% → 100% | -10d → none |  |
| DUKHPROGEN00MTAP1510 | Stainless Steel Cover_1st_App | 2013-04-27 → 2013-06-01 A (+35d) | 2013-06-27 A | 54d → 24d | 0% → 100% | -10d → none |  |
| DUKHPROGEN00MTAP1550 | Closets /wardrobe& Pelmets_1st_App | 2013-04-27 → 2013-06-01 A (+35d) | 2013-06-27 A | 54d → 24d | 0% → 100% | 17d → none |  |
| DUKHPROGEN00MTAP1560 | Counters, Cabinets & Shelves_1st_App | 2013-04-27 → 2013-06-01 A (+35d) | 2013-06-27 A | 54d → 24d | 0% → 100% | 17d → none |  |
| DUKHPROGEN00MTAP1570 | Wooden Hand Rails _1st_App | 2013-04-27 → 2013-06-01 A (+35d) | 2013-06-27 A | 54d → 24d | 0% → 100% | 35d → none |  |
| DUKHPROGEN00MTAP1580 | Stainless Steel Handrail_1st_App | 2013-04-27 → 2013-06-01 A (+35d) | 2013-06-27 A | 54d → 24d | 0% → 100% | 35d → none |  |
| DUKHPROGEN00MTAP1590 | Manhole Covers and Frames_1st_App | 2013-04-27 → 2013-06-01 A (+35d) | 2013-06-27 A | 54d → 24d | 0% → 100% | 27d → none |  |
| DUKHPROGEN00MTAP1600 | kerb works_1st_App | 2013-04-27 → 2013-06-01 A (+35d) | 2013-06-27 A | 54d → 24d | 0% → 100% | 49d → none |  |
| DUKHPROGEN00MTAP1610 | PVC Tent_1st_App | 2013-04-27 → 2013-06-01 A (+35d) | 2013-06-27 A | 54d → 24d | 0% → 100% | -4d → none |  |
| DUKHPROGEN00MTAP1620 | Structural Steel_1st_App | 2013-04-27 → 2013-06-01 A (+35d) | 2013-06-27 A | 54d → 24d | 0% → 100% | -6d → none |  |
| DUKHPROGEN00MTAP1650 | Isolating Values_1st_App | 2013-05-14 → 2013-06-01 A (+18d) | 2013-06-17 A | 30d → 15d | 0% → 100% | 9d → none |  |
| DUKHPROGEN00MTAP1680 | Water Tank_1st_App | 2013-06-01 A | 2013-07-04 A |  | 0% → 100% | 46d → none |  |
| DUKHPROGEN00MTAP1690 | Fire Hydrant_1st_App | 2013-06-01 A | 2013-07-04 A |  | 0% → 100% | 20d → none |  |
| DUKHPROGEN00MTAP1700 | Road Works Materials _1st_App | 2013-05-21 → 2013-06-01 A (+11d) | 2013-06-24 A | 30d → 21d | 0% → 100% | 193d → none |  |
| DUKHPROGEN00MTAP1710 | External signage _1st_App | 2013-05-21 → 2013-06-01 A (+11d) | 2013-06-24 A | 30d → 21d | 0% → 100% | 176d → none |  |
| DUKHPROGEN00MTAP1720 | Road Marking_1st_App | 2013-05-21 → 2013-06-01 A (+11d) | 2013-06-24 A | 30d → 21d | 0% → 100% | 176d → none |  |
| DUKHPROGEN00MTAP1740 | Stone Boulders_1st_App | 2013-05-21 → 2013-06-01 A (+11d) | 2013-06-24 A | 30d → 21d | 0% → 100% | 131d → none |  |
| DUKHPROGEN00MTAP1750 | Speed Humps _1st_App | 2013-05-21 → 2013-06-01 A (+11d) | 2013-06-24 A | 30d → 21d | 0% → 100% | 130d → none |  |
| DUKHPROGEN00MTAP1760 | Sprinklers_1st_App | 2013-05-26 → 2013-06-01 A (+6d) | 2013-06-29 A | 30d → 25d | 0% → 100% | 138d → none |  |
| DUKHPROGEN00MTAP1780 | Gazebo Structure_1st_App | 2013-06-08 A | 2013-07-11 A |  | 0% → 100% | 71d → none |  |
| DUKHPROGEN00MTAP1790 | Plantation(Grass,Trees)_1st_App | 2013-06-08 A | 2013-07-11 A |  | 0% → 100% | 26d → none |  |
| DUKHPROGEN00MTAP1810 | Nozzle Jet_1st_App | 2013-06-12 A | 2013-07-16 A |  | 0% → 100% | 97d → none |  |
| DUKHPROGEN00MTAP1730 | Car Parking Shed_1st_App | 2013-05-26 → 2013-06-18 A (+23d) | 2013-06-29 A | 30d → 10d | 0% → 100% | 127d → none |  |
| DUKHPROGEN00MTAP1770 | Kitchen Water Filter_1st_App | 2013-06-18 A | 2013-07-22 A |  | 0% → 100% | 14d → none |  |
| DUKHPROGEN00MTAP1800 | Steel Gate & Barrier gates_1st_App | 2013-06-12 → 2013-07-16 A (+34d) | 2013-07-16 → 2013-08-22 A (+37d) |  | 0% → 100% | 63d → none |  |
| DUKHPROGEN00MTAP1820 | Pre-cast Boundary Wall _1st_App | 2013-06-12 → 2013-07-16 A (+34d) | 2013-07-16 → 2013-08-22 A (+37d) |  | 0% → 100% | 40d → none |  |
| DUKHPROGEN00MTAP1840 | Gate Values_1st_App | 2013-07-17 → 2013-07-16 A (-1d) | 2013-08-24 → 2013-08-22 A (-2d) |  | 0% → 100% | 67d → none |  |
| DUKHPROGEN00MTAP1830 | Solenoid Values_1st_App | 2013-06-30 → 2013-07-27 A (+27d) | 2013-08-03 → 2013-08-01 A (-2d) | 30d → 6d | 0% → 100% | 82d → none |  |
| DUKHPROGEN00MTAP1850 | Fences_1st_App | 2013-06-30 → 2013-08-03 A (+34d) | 2013-08-03 → 2013-09-09 A (+37d) |  | 0% → 100% | 126d → none |  |
| DUKHPROGEN00MTAP1860 | Remote Control Value_1st_App | 2013-08-04 → 2013-08-03 A (-1d) | 2013-09-10 → 2013-09-09 A (-1d) |  | 0% → 100% | 52d → none |  |
| DUKHPROGEN00MTAP1870 | Irrigation Controller_1st_App | 2013-08-25 → 2013-08-24 A (-1d) | 2013-09-28 → 2013-09-26 A (-2d) |  | 0% → 100% | 37d → none |  |
| 20 | **2ND SUBMISSION OF MATERIAL** |  | 2013-10-09 → 2013-10-08 (-1d) |  |  |  |  |
| DUKHPROGEN00MTSM2520 | Lift Pump_2nd_Sub | 2013-06-01 A | 2013-06-11 A |  | 0% → 100% | 25d → none |  |
| DUKHPROGEN00MTSM2530 | Exhaust Fan_2nd_Sub | 2013-06-01 A | 2013-06-11 A |  | 0% → 100% | 66d → none |  |
| DUKHPROGEN00MTSM2540 | Ductile Iron Pipes_2nd_Sub | 2013-06-01 A | 2013-06-11 A |  | 0% → 100% | 10d → none |  |
| DUKHPROGEN00MTSM2630 | Steel Ladder_2nd_Sub | 2013-06-06 A | 2013-06-17 A |  | 0% → 100% | 36d → none |  |
| DUKHPROGEN00MTSM2660 | Interlock works_2nd_Sub | 2013-06-12 A | 2013-06-23 A |  | 0% → 100% | 85d → none |  |
| DUKHPROGEN00MTSM2670 | Irrigation Pipes_2nd_Sub | 2013-06-12 A | 2013-06-23 A |  | 0% → 100% | 76d → none |  |
| DUKHPROGEN00MTSM2640 | Water meter_2nd_Sub | 2013-06-18 A | 2013-06-29 A |  | 0% → 100% | 61d → none |  |
| DUKHPROGEN00MTSM2650 | Isolating Values_2nd_Sub | 2013-06-18 A | 2013-06-29 A |  | 0% → 100% | 9d → none |  |
| DUKHPROGEN00MTSM2700 | Road Works Materials _2nd_Sub | 2013-06-25 A | 2013-07-06 A |  | 0% → 100% | 193d → none |  |
| DUKHPROGEN00MTSM2710 | External signage _2nd_Sub | 2013-06-25 A | 2013-07-06 A |  | 0% → 100% | 176d → none |  |
| DUKHPROGEN00MTSM2720 | Road Marking_2nd_Sub | 2013-06-25 A | 2013-07-06 A |  | 0% → 100% | 176d → none |  |
| DUKHPROGEN00MTSM2740 | Stone Boulders_2nd_Sub | 2013-06-25 A | 2013-07-06 A |  | 0% → 100% | 131d → none |  |
| DUKHPROGEN00MTSM2750 | Speed Humps _2nd_Sub | 2013-06-25 A | 2013-07-06 A |  | 0% → 100% | 130d → none |  |
| DUKHPROGEN00MTSM2150 | Sanitary Fittings_2nd_Sub | 2013-06-29 A | 2013-07-09 A |  | 0% → 100% | -13d → none | resources MATERIAL ENGG [15 h] → MATERIAL ENGG [40 h] |

| ID | Task | Start | Finish | Duration | Complete | Total float | Other |
| --- | --- | --- | --- | --- | --- | --- | --- |
| DUKHPROGEN00MTSM2160 | Copper Pipes_2nd_Sub | 2013-06-29 A | 2013-07-09 A |  | 0% → 100% | -10d → none | resources MATERIAL ENGG [15 h] → MATERIAL ENGG [40 h] |
| DUKHPROGEN00MTSM2170 | SMDB_2nd_Sub | 2013-06-29 A | 2013-07-09 A |  | 0% → 100% | 11d → none | resources MATERIAL ENGG [15 h] → MATERIAL ENGG [40 h] |
| DUKHPROGEN00MTSM2190 | Lights & Fixtures_2nd_Sub | 2013-06-29 A | 2013-07-09 A |  | 0% → 100% | 23d → none | resources MATERIAL ENGG [15 h] → MATERIAL ENGG [40 h] |
| DUKHPROGEN00MTSM2200 | Isolators_2nd_Sub | 2013-06-29 A | 2013-07-09 A |  | 0% → 100% | 44d → none | resources MATERIAL ENGG [15 h] → MATERIAL ENGG [40 h] |
| DUKHPROGEN00MTSM2210 | Fire Resistant Cables_2nd_Sub | 2013-06-29 A | 2013-07-09 A |  | 0% → 100% | 41d → none | resources MATERIAL ENGG [15 h] → MATERIAL ENGG [40 h] |
| DUKHPROGEN00MTSM2220 | Water Chiller_2nd_Sub | 2013-06-29 A | 2013-07-09 A |  | 0% → 100% | 1d → none | resources MATERIAL ENGG [15 h] → MATERIAL ENGG [40 h] |
| DUKHPROGEN00MTSM2230 | Water Heater_2nd_Sub | 2013-06-29 A | 2013-07-09 A |  | 0% → 100% | 10d → none | resources MATERIAL ENGG [15 h] → MATERIAL ENGG [40 h] |
| DUKHPROGEN00MTSM2240 | Split AC_2nd_Sub | 2013-06-29 A | 2013-07-09 A |  | 0% → 100% | 35d → none | resources MATERIAL ENGG [15 h] → MATERIAL ENGG [40 h] |
| DUKHPROGEN00MTSM2250 | Street Light Post Set_2nd_Sub | 2013-06-29 A | 2013-07-09 A |  | 0% → 100% | 76d → none | resources MATERIAL ENGG [15 h] → MATERIAL ENGG [40 h] |
| DUKHPROGEN00MTSM2260 | Smoke Detector_2nd_Sub | 2013-06-29 A | 2013-07-09 A |  | 0% → 100% | 41d → none | resources MATERIAL ENGG [15 h] → MATERIAL ENGG [40 h] |
| DUKHPROGEN00MTSM2270 | Video Com System_2nd_Sub | 2013-06-29 A | 2013-07-09 A |  | 0% → 100% | 21d → none | resources MATERIAL ENGG [15 h] → MATERIAL ENGG [40 h] |
| DUKHPROGEN00MTSM2280 | Telephone Fittings & Accessories_2nd_Sub | 2013-06-29 A | 2013-07-09 A |  | 0% → 100% | 21d → none | resources MATERIAL ENGG [15 h] → MATERIAL ENGG [40 h] |
| DUKHPROGEN00MTSM2290 | Television devices,Fittings & Access._2nd_Sub | 2013-06-29 A | 2013-07-09 A |  | 0% → 100% | 50d → none | resources MATERIAL ENGG [15 h] → MATERIAL ENGG [40 h] |
| DUKHPROGEN00MTSM2300 | Gypsum Board false ceiling_2nd_Sub | 2013-06-29 A | 2013-07-09 A |  | 0% → 100% | -19d → none | resources MATERIAL ENGG [15 h] → MATERIAL ENGG [40 h] |
| DUKHPROGEN00MTSM2310 | Aluminum Tile false ceiling_2nd_Sub | 2013-06-29 A | 2013-07-09 A |  | 0% → 100% | -4d → none | resources MATERIAL ENGG [15 h] → MATERIAL ENGG [40 h] |
| DUKHPROGEN00MTSM2320 | Paints_2nd_Sub | 2013-06-29 A | 2013-07-09 A |  | 0% → 100% | -31d → none | resources MATERIAL ENGG [15 h] → MATERIAL ENGG [40 h] |
| DUKHPROGEN00MTSM2330 | Booster Pump_2nd_Sub | 2013-06-29 A | 2013-07-09 A |  | 0% → 100% | 1d → none | resources MATERIAL ENGG [15 h] → MATERIAL ENGG [40 h] |
| DUKHPROGEN00MTSM2340 | Exhaust Air louver_2nd_Sub | 2013-06-29 A | 2013-07-09 A |  | 0% → 100% | 42d → none | resources MATERIAL ENGG [15 h] → MATERIAL ENGG [40 h] |
| DUKHPROGEN00MTSM2350 | Bollard Lamp_2nd_Sub | 2013-06-29 A | 2013-07-09 A |  | 0% → 100% | 76d → none | resources MATERIAL ENGG [15 h] → MATERIAL ENGG [40 h] |
| DUKHPROGEN00MTSM2360 | Digital Alarm Communicator Panel_2nd_Sub | 2013-06-29 A | 2013-07-09 A |  | 0% → 100% | 15d → none | resources MATERIAL ENGG [15 h] → MATERIAL ENGG [40 h] |
| DUKHPROGEN00MTSM2370 | Fire Blanket_2nd_Sub | 2013-06-29 A | 2013-07-09 A |  | 0% → 100% | 64d → none | resources MATERIAL ENGG [15 h] → MATERIAL ENGG [40 h] |
| DUKHPROGEN00MTSM2380 | Fire Extinguisher_2nd_Sub | 2013-06-29 A | 2013-07-09 A |  | 0% → 100% | 56d → none | resources MATERIAL ENGG [15 h] → MATERIAL ENGG [40 h] |
| DUKHPROGEN00MTSM2390 | GRC Panels_2nd_Sub | 2013-06-29 A | 2013-07-09 A |  | 0% → 100% | 23d → none | resources MATERIAL ENGG [15 h] → MATERIAL ENGG [40 h] |
| DUKHPROGEN00MTSM2400 | Access Ladder_2nd_Sub | 2013-06-29 A | 2013-07-09 A |  | 0% → 100% | 40d → none | resources MATERIAL ENGG [15 h] → MATERIAL ENGG [40 h] |
| DUKHPROGEN00MTSM2410 | Aluminum Slat Screen_2nd_Sub | 2013-06-29 A | 2013-07-09 A |  | 0% → 100% | 30d → none | resources MATERIAL ENGG [15 h] → MATERIAL ENGG [40 h] |
| DUKHPROGEN00MTSM2420 | Epoxy_2nd_Sub | 2013-06-29 A | 2013-07-09 A |  | 0% → 100% | 108d → none | resources MATERIAL ENGG [15 h] → MATERIAL ENGG [40 h] |
| DUKHPROGEN00MTSM2430 | Roller Shutter_2nd_Sub | 2013-06-29 A | 2013-07-09 A |  | 0% → 100% | 169d → none | resources MATERIAL ENGG [15 h] → MATERIAL ENGG [40 h] |
| DUKHPROGEN00MTSM2440 | PVC Doors_2nd_Sub | 2013-06-29 A | 2013-07-09 A |  | 0% → 100% | 46d → none | resources MATERIAL ENGG [15 h] → MATERIAL ENGG [40 h] |
| DUKHPROGEN00MTSM2450 | Ironmongeries_2nd_Sub | 2013-06-29 A | 2013-07-09 A |  | 0% → 100% | -20d → none | resources MATERIAL ENGG [15 h] → MATERIAL ENGG [40 h] |
| DUKHPROGEN00MTSM2460 | Aluminum Doors_2nd_Sub | 2013-06-29 A | 2013-07-09 A |  | 0% → 100% | 19d → none | resources MATERIAL ENGG [15 h] → MATERIAL ENGG [40 h] |
| DUKHPROGEN00MTSM2470 | Aluminum Windows_2nd_Sub | 2013-06-29 A | 2013-07-09 A |  | 0% → 100% | 25d → none | resources MATERIAL ENGG [15 h] → MATERIAL ENGG [40 h] |
| DUKHPROGEN00MTSM2480 | Granite_2nd_Sub | 2013-06-29 A | 2013-07-09 A |  | 0% → 100% | 0d → none | resources MATERIAL ENGG [15 h] → MATERIAL ENGG [40 h] |
| DUKHPROGEN00MTSM2490 | Wooden Doors_2nd_Sub | 2013-06-29 A | 2013-07-09 A |  | 0% → 100% | -20d → none | resources MATERIAL ENGG [15 h] → MATERIAL ENGG [40 h] |
| DUKHPROGEN00MTSM2500 | Steel Door_2nd_Sub | 2013-06-29 A | 2013-07-09 A |  | 0% → 100% | -10d → none | resources MATERIAL ENGG [15 h] → MATERIAL ENGG [40 h] |
| DUKHPROGEN00MTSM2510 | Stainless Steel Cover_2nd_Sub | 2013-06-29 A | 2013-07-09 A |  | 0% → 100% | -10d → none | resources MATERIAL ENGG [15 h] → MATERIAL ENGG [40 h] |
| DUKHPROGEN00MTSM2550 | Closets /wardrobe& Pelmets_2nd_Sub | 2013-06-29 A | 2013-07-09 A |  | 0% → 100% | 17d → none | resources MATERIAL ENGG [15 h] → MATERIAL ENGG [40 h] |
| DUKHPROGEN00MTSM2560 | Counters, Cabinets & Shelves_2nd_Sub | 2013-06-29 A | 2013-07-09 A |  | 0% → 100% | 17d → none | resources MATERIAL ENGG [15 h] → MATERIAL ENGG [40 h] |
| DUKHPROGEN00MTSM2570 | Wooden Hand Rails _2nd_Sub | 2013-06-29 A | 2013-07-09 A |  | 0% → 100% | 35d → none | resources MATERIAL ENGG [15 h] → MATERIAL ENGG [40 h] |
| DUKHPROGEN00MTSM2580 | Stainless Steel Handrail_2nd_Sub | 2013-06-29 A | 2013-07-09 A |  | 0% → 100% | 35d → none | resources MATERIAL ENGG [15 h] → MATERIAL ENGG [40 h] |
| DUKHPROGEN00MTSM2590 | Manhole Covers and Frames_2nd_Sub | 2013-06-29 A | 2013-07-09 A |  | 0% → 100% | 27d → none | resources MATERIAL ENGG [15 h] → MATERIAL ENGG [40 h] |
| DUKHPROGEN00MTSM2600 | kerb works_2nd_Sub | 2013-06-29 A | 2013-07-09 A |  | 0% → 100% | 49d → none | resources MATERIAL ENGG [15 h] → MATERIAL ENGG [40 h] |
| DUKHPROGEN00MTSM2610 | PVC Tent_2nd_Sub | 2013-06-29 A | 2013-07-09 A |  | 0% → 100% | -4d → none | resources MATERIAL ENGG [15 h] → MATERIAL ENGG [40 h] |
| DUKHPROGEN00MTSM2620 | Structural Steel_2nd_Sub | 2013-06-29 A | 2013-07-09 A |  | 0% → 100% | -6d → none | resources MATERIAL ENGG [15 h] → MATERIAL ENGG [40 h] |
| DUKHPROGEN00MTSM2730 | Car Parking Shed_2nd_Sub | 2013-06-30 → 2013-06-29 A (-1d) | 2013-07-10 → 2013-07-09 A (-1d) |  | 0% → 100% | 127d → none | resources MATERIAL ENGG [15 h] → MATERIAL ENGG [40 h] |
| DUKHPROGEN00MTSM2760 | Sprinklers_2nd_Sub | 2013-06-30 → 2013-06-29 A (-1d) | 2013-07-10 → 2013-07-09 A (-1d) |  | 0% → 100% | 138d → none | resources MATERIAL ENGG [15 h] → MATERIAL ENGG [40 h] |
| DUKHPROGEN00MTSM2680 | Water Tank_2nd_Sub | 2013-07-06 → 2013-07-27 A (+21d) | 2013-07-16 → 2013-07-31 A (+15d) | 10d → 5d | 0% → 100% | 46d → none | resources MATERIAL ENGG [15 h] → MATERIAL ENGG [30 h] |
| DUKHPROGEN00MTSM2690 | Fire Hydrant_2nd_Sub | 2013-07-06 → 2013-07-27 A (+21d) | 2013-07-16 → 2013-07-31 A (+15d) | 10d → 5d | 0% → 100% | 20d → none | resources MATERIAL ENGG [15 h] → MATERIAL ENGG [30 h] |
| DUKHPROGEN00MTSM2770 | Kitchen Water Filter_2nd_Sub | 2013-07-23 → 2013-07-27 A (+4d) | 2013-08-03 → 2013-07-31 A (-3d) | 10d → 5d | 0% → 100% | 14d → none | resources MATERIAL ENGG [15 h] → MATERIAL ENGG [30 h] |
| DUKHPROGEN00MTSM2780 | Gazebo Structure_2nd_Sub | 2013-07-13 → 2013-07-27 A (+14d) | 2013-07-23 → 2013-08-30 A (+38d) | 10d → 5d | 0% → 100% | 71d → none | resources MATERIAL ENGG [15 h] → MATERIAL ENGG [30 h] |
| DUKHPROGEN00MTSM2790 | Plantation(Grass,Trees)_2nd_Sub | 2013-07-13 → 2013-07-27 A (+14d) | 2013-07-23 → 2013-07-31 A (+8d) | 10d → 5d | 0% → 100% | 26d → none | resources MATERIAL ENGG [15 h] → MATERIAL ENGG [30 h] |
| DUKHPROGEN00MTSM2810 | Nozzle Jet_2nd_Sub | 2013-07-17 → 2013-07-27 A (+10d) | 2013-07-28 → 2013-07-31 A (+3d) | 10d → 5d | 0% → 100% | 97d → none | resources MATERIAL ENGG [15 h] → MATERIAL ENGG [30 h] |
| DUKHPROGEN00MTSM2830 | Solenoid Values_2nd_Sub | 2013-08-04 → 2013-08-03 A (-1d) | 2013-08-18 → 2013-08-17 A (-1d) |  | 0% → 100% | 82d → none |  |
| DUKHPROGEN00MTSM2800 | Steel Gate & Barrier gates_2nd_Sub | 2013-07-17 → 2013-08-24 A (+38d) | 2013-07-28 → 2013-08-31 A (+34d) |  | 0% → 100% | 63d → none |  |
| DUKHPROGEN00MTSM2820 | Pre-cast Boundary Wall _2nd_Sub | 2013-07-17 → 2013-08-24 A (+38d) | 2013-07-28 → 2013-08-31 A (+34d) |  | 0% → 100% | 40d → none |  |
| DUKHPROGEN00MTSM2840 | Gate Values_2nd_Sub | 2013-08-25 → 2013-08-24 A (-1d) | 2013-09-04 → 2013-08-31 A (-4d) |  | 0% → 100% | 67d → none |  |
| DUKHPROGEN00MTSM2850 | Fences_2nd_Sub | 2013-08-04 → 2013-09-10 A (+37d) | 2013-08-18 → 2013-09-21 A (+34d) |  | 0% → 100% | 126d → none |  |
| DUKHPROGEN00MTSM2860 | Remote Control Value_2nd_Sub | 2013-09-11 → 2013-09-10 A (-1d) | 2013-09-22 → 2013-09-21 A (-1d) |  | 0% → 100% | 52d → none |  |
| DUKHPROGEN00MTSM2870 | Irrigation Controller_2nd_Sub | 2013-09-29 → 2013-09-28 A (-1d) | 2013-10-09 → 2013-10-08 A (-1d) |  | 0% → 100% | 37d → none |  |
| 25 | **2ND APPROVAL OF MATERIAL** |  | 2013-11-16 → 2013-12-05 (+19d) |  |  |  |  |
| DUKHPROGEN00MTAP2140 | Pitch roofing_2nd_App |  | 2013-05-13 A |  | 50% → 100% | 75d → none |  |
| DUKHPROGEN00MTAP2520 | Lift Pump_2nd_App | 2013-06-12 A | 2013-07-16 A |  | 0% → 100% | 25d → none |  |
| DUKHPROGEN00MTAP2530 | Exhaust Fan_2nd_App | 2013-06-12 A | 2013-07-16 A |  | 0% → 100% | 66d → none |  |
| DUKHPROGEN00MTAP2540 | Ductile Iron Pipes_2nd_App | 2013-06-12 A | 2013-07-16 A |  | 0% → 100% | 10d → none |  |
| DUKHPROGEN00MTAP2630 | Steel Ladder_2nd_App | 2013-06-18 A | 2013-07-22 A |  | 0% → 100% | 36d → none |  |
| DUKHPROGEN00MTAP2660 | Interlock works_2nd_App | 2013-06-24 A | 2013-07-28 A |  | 0% → 100% | 85d → none |  |
| DUKHPROGEN00MTAP2670 | Irrigation Pipes_2nd_App | 2013-06-24 A | 2013-07-28 A |  | 0% → 100% | 76d → none |  |
| DUKHPROGEN00MTAP2650 | Isolating Values_2nd_App | 2013-06-30 → 2013-06-29 A (-1d) | 2013-08-03 → 2013-08-01 A (-2d) |  | 0% → 100% | 9d → none |  |
| DUKHPROGEN00MTAP2150 | Sanitary Fittings_2nd_App | 2013-07-10 → 2013-07-27 A (+17d) | 2013-08-17 → 2013-08-31 A (+14d) | 30d → 28d | 0% → 100% | -13d → none |  |
| DUKHPROGEN00MTAP2160 | Copper Pipes_2nd_App | 2013-07-10 → 2013-07-27 A (+17d) | 2013-08-17 → 2013-08-31 A (+14d) | 30d → 28d | 0% → 100% | -10d → none |  |
| DUKHPROGEN00MTAP2170 | SMDB_2nd_App | 2013-07-10 → 2013-07-27 A (+17d) | 2013-08-17 → 2013-08-31 A (+14d) | 30d → 28d | 0% → 100% | 11d → none |  |

| ID | Task | Start | Finish | Duration | Complete | Total float |
| --- | --- | --- | --- | --- | --- | --- |
| DUKHPROGEN00MTAP2190 | Lights & Fixtures_2nd_App | 2013-07-10 → 2013-07-27 A (+17d) | 2013-08-17 → 2013-08-31 A (+14d) | 30d → 28d | 0% → 100% | 23d → none |
| DUKHPROGEN00MTAP2200 | Isolators_2nd_App | 2013-07-10 → 2013-07-27 A (+17d) | 2013-08-17 → 2013-08-31 A (+14d) | 30d → 28d | 0% → 100% | 44d → none |
| DUKHPROGEN00MTAP2210 | Fire Resistant Cables_2nd_App | 2013-07-10 → 2013-07-27 A (+17d) | 2013-08-17 → 2013-08-31 A (+14d) | 30d → 28d | 0% → 100% | 41d → none |
| DUKHPROGEN00MTAP2220 | Water Chiller_2nd_App | 2013-07-10 → 2013-07-27 A (+17d) | 2013-08-17 → 2013-08-31 A (+14d) | 30d → 28d | 0% → 100% | 1d → none |
| DUKHPROGEN00MTAP2230 | Water Heater_2nd_App | 2013-07-10 → 2013-07-27 A (+17d) | 2013-08-17 → 2013-08-31 A (+14d) | 30d → 28d | 0% → 100% | 10d → none |
| DUKHPROGEN00MTAP2240 | Split AC_2nd_App | 2013-07-10 → 2013-07-27 A (+17d) | 2013-08-17 → 2013-08-31 A (+14d) | 30d → 28d | 0% → 100% | 35d → none |
| DUKHPROGEN00MTAP2250 | Street Light Post Set_2nd_App | 2013-07-10 → 2013-07-27 A (+17d) | 2013-08-17 → 2013-08-31 A (+14d) | 30d → 28d | 0% → 100% | 76d → none |
| DUKHPROGEN00MTAP2260 | Smoke Detector_2nd_App | 2013-07-10 → 2013-07-27 A (+17d) | 2013-08-17 → 2013-08-31 A (+14d) | 30d → 28d | 0% → 100% | 41d → none |
| DUKHPROGEN00MTAP2270 | Video Com System_2nd_App | 2013-07-10 → 2013-07-27 A (+17d) | 2013-08-17 → 2013-08-31 A (+14d) | 30d → 28d | 0% → 100% | 21d → none |
| DUKHPROGEN00MTAP2280 | Telephone Fittings & Accessories_2nd_App | 2013-07-10 → 2013-07-27 A (+17d) | 2013-08-17 → 2013-08-31 A (+14d) | 30d → 28d | 0% → 100% | 21d → none |
| DUKHPROGEN00MTAP2290 | Television devices,Fittings & Access._2nd_App | 2013-07-10 → 2013-07-27 A (+17d) | 2013-08-17 → 2013-08-31 A (+14d) | 30d → 28d | 0% → 100% | 50d → none |
| DUKHPROGEN00MTAP2300 | Gypsum Board false ceiling_2nd_App | 2013-07-10 → 2013-07-27 A (+17d) | 2013-08-17 → 2013-08-31 A (+14d) | 30d → 28d | 0% → 100% | -19d → none |
| DUKHPROGEN00MTAP2310 | Aluminum Tile false ceiling_2nd_App | 2013-07-10 → 2013-07-27 A (+17d) | 2013-08-17 → 2013-08-31 A (+14d) | 30d → 28d | 0% → 100% | -4d → none |
| DUKHPROGEN00MTAP2320 | Paints_2nd_App | 2013-07-10 → 2013-07-27 A (+17d) | 2013-08-17 → 2013-08-31 A (+14d) | 30d → 28d | 0% → 100% | -31d → none |
| DUKHPROGEN00MTAP2330 | Booster Pump_2nd_App | 2013-07-10 → 2013-07-27 A (+17d) | 2013-08-17 → 2013-08-31 A (+14d) | 30d → 28d | 0% → 100% | 1d → none |
| DUKHPROGEN00MTAP2340 | Exhaust Air louver_2nd_App | 2013-07-10 → 2013-07-27 A (+17d) | 2013-08-17 → 2013-08-31 A (+14d) | 30d → 28d | 0% → 100% | 42d → none |
| DUKHPROGEN00MTAP2350 | Bollard Lamp_2nd_App | 2013-07-10 → 2013-07-27 A (+17d) | 2013-08-17 → 2013-08-31 A (+14d) | 30d → 28d | 0% → 100% | 76d → none |
| DUKHPROGEN00MTAP2360 | Digital Alarm Communicator Panel_2nd_App | 2013-07-10 → 2013-07-27 A (+17d) | 2013-08-17 → 2013-08-31 A (+14d) | 30d → 28d | 0% → 100% | 15d → none |
| DUKHPROGEN00MTAP2370 | Fire Blanket_2nd_App | 2013-07-10 → 2013-07-27 A (+17d) | 2013-08-17 → 2013-08-31 A (+14d) | 30d → 28d | 0% → 100% | 64d → none |
| DUKHPROGEN00MTAP2380 | Fire Extinguisher_2nd_App | 2013-07-10 → 2013-07-27 A (+17d) | 2013-08-17 → 2013-08-31 A (+14d) | 30d → 28d | 0% → 100% | 56d → none |
| DUKHPROGEN00MTAP2390 | GRC Panels_2nd_App | 2013-07-10 → 2013-07-27 A (+17d) | 2013-08-17 → 2013-08-31 A (+14d) | 30d → 28d | 0% → 100% | 23d → none |
| DUKHPROGEN00MTAP2400 | Access Ladder_2nd_App | 2013-07-10 → 2013-07-27 A (+17d) | 2013-08-17 → 2013-08-31 A (+14d) | 30d → 28d | 0% → 100% | 40d → none |
| DUKHPROGEN00MTAP2410 | Aluminum Slat Screen_2nd_App | 2013-07-10 → 2013-07-27 A (+17d) | 2013-08-17 → 2013-08-31 A (+14d) | 30d → 28d | 0% → 100% | 30d → none |
| DUKHPROGEN00MTAP2420 | Epoxy_2nd_App | 2013-07-10 → 2013-07-27 A (+17d) | 2013-08-17 → 2013-08-31 A (+14d) | 30d → 28d | 0% → 100% | 108d → none |
| DUKHPROGEN00MTAP2430 | Roller Shutter_2nd_App | 2013-07-10 → 2013-07-27 A (+17d) | 2013-08-17 → 2013-08-31 A (+14d) | 30d → 28d | 0% → 100% | 169d → none |
| DUKHPROGEN00MTAP2440 | PVC Doors_2nd_App | 2013-07-10 → 2013-07-27 A (+17d) | 2013-08-17 → 2013-08-31 A (+14d) | 30d → 28d | 0% → 100% | 46d → none |
| DUKHPROGEN00MTAP2450 | Ironmongeries_2nd_App | 2013-07-10 → 2013-07-27 A (+17d) | 2013-08-17 → 2013-08-31 A (+14d) | 30d → 28d | 0% → 100% | -20d → none |
| DUKHPROGEN00MTAP2460 | Aluminum Doors_2nd_App | 2013-07-10 → 2013-07-27 A (+17d) | 2013-08-17 → 2013-08-31 A (+14d) | 30d → 28d | 0% → 100% | 19d → none |
| DUKHPROGEN00MTAP2470 | Aluminum Windows_2nd_App | 2013-07-10 → 2013-07-27 A (+17d) | 2013-08-17 → 2013-08-31 A (+14d) | 30d → 28d | 0% → 100% | 25d → none |
| DUKHPROGEN00MTAP2480 | Granite_2nd_App | 2013-07-10 → 2013-07-27 A (+17d) | 2013-08-17 → 2013-08-31 A (+14d) | 30d → 28d | 0% → 100% | 0d → none |
| DUKHPROGEN00MTAP2490 | Wooden Doors_2nd_App | 2013-07-10 → 2013-07-27 A (+17d) | 2013-08-17 → 2013-08-31 A (+14d) | 30d → 28d | 0% → 100% | -20d → none |
| DUKHPROGEN00MTAP2500 | Steel Door_2nd_App | 2013-07-10 → 2013-07-27 A (+17d) | 2013-08-17 → 2013-08-31 A (+14d) | 30d → 28d | 0% → 100% | -10d → none |
| DUKHPROGEN00MTAP2510 | Stainless Steel Cover_2nd_App | 2013-07-10 → 2013-07-27 A (+17d) | 2013-08-17 → 2013-08-31 A (+14d) | 30d → 28d | 0% → 100% | -10d → none |
| DUKHPROGEN00MTAP2550 | Closets /wardrobe& Pelmets_2nd_App | 2013-07-10 → 2013-07-27 A (+17d) | 2013-08-17 → 2013-08-31 A (+14d) | 30d → 28d | 0% → 100% | 17d → none |
| DUKHPROGEN00MTAP2560 | Counters, Cabinets & Shelves_2nd_App | 2013-07-10 → 2013-07-27 A (+17d) | 2013-08-17 → 2013-08-31 A (+14d) | 30d → 28d | 0% → 100% | 17d → none |
| DUKHPROGEN00MTAP2570 | Wooden Hand Rails _2nd_App | 2013-07-10 → 2013-07-27 A (+17d) | 2013-08-17 → 2013-08-31 A (+14d) | 30d → 28d | 0% → 100% | 35d → none |
| DUKHPROGEN00MTAP2580 | Stainless Steel Handrail_2nd_App | 2013-07-10 → 2013-07-27 A (+17d) | 2013-08-17 → 2013-08-31 A (+14d) | 30d → 28d | 0% → 100% | 35d → none |
| DUKHPROGEN00MTAP2590 | Manhole Covers and Frames_2nd_App | 2013-07-10 → 2013-07-27 A (+17d) | 2013-08-17 → 2013-08-31 A (+14d) | 30d → 28d | 0% → 100% | 27d → none |
| DUKHPROGEN00MTAP2600 | kerb works_2nd_App | 2013-07-10 → 2013-07-27 A (+17d) | 2013-08-17 → 2013-08-31 A (+14d) | 30d → 28d | 0% → 100% | 49d → none |
| DUKHPROGEN00MTAP2610 | PVC Tent_2nd_App | 2013-07-10 → 2013-07-27 A (+17d) | 2013-08-17 → 2013-08-31 A (+14d) | 30d → 28d | 0% → 100% | -4d → none |
| DUKHPROGEN00MTAP2620 | Structural Steel_2nd_App | 2013-07-10 → 2013-07-27 A (+17d) | 2013-08-17 → 2013-08-31 A (+14d) | 30d → 28d | 0% → 100% | -6d → none |
| DUKHPROGEN00MTAP2640 | Water meter_2nd_App | 2013-06-30 → 2013-07-27 A (+27d) | 2013-08-03 → 2013-08-31 A (+28d) | 30d → 28d | 0% → 100% | 61d → none |
| DUKHPROGEN00MTAP2700 | Road Works Materials_2nd_App | 2013-07-07 → 2013-07-27 A (+20d) | 2013-08-13 → 2013-08-31 A (+18d) | 30d → 28d | 0% → 100% | 193d → none |
| DUKHPROGEN00MTAP2710 | External signage _2nd_App | 2013-07-07 → 2013-07-27 A (+20d) | 2013-08-13 → 2013-08-31 A (+18d) | 30d → 28d | 0% → 100% | 176d → none |
| DUKHPROGEN00MTAP2720 | Road Marking_2nd_App | 2013-07-07 → 2013-07-27 A (+20d) | 2013-08-13 → 2013-08-31 A (+18d) | 30d → 28d | 0% → 100% | 176d → none |
| DUKHPROGEN00MTAP2730 | Car Parking Shed_2nd_App | 2013-07-11 → 2013-07-27 A (+16d) | 2013-08-18 → 2013-08-31 A (+13d) | 30d → 28d | 0% → 100% | 127d → none |
| DUKHPROGEN00MTAP2740 | Stone Boulders_2nd_App | 2013-07-07 → 2013-07-27 A (+20d) | 2013-08-13 → 2013-08-31 A (+18d) | 30d → 28d | 0% → 100% | 131d → none |
| DUKHPROGEN00MTAP2750 | Speed Humps _2nd_App | 2013-07-07 → 2013-07-27 A (+20d) | 2013-08-13 → 2013-08-31 A (+18d) | 30d → 28d | 0% → 100% | 130d → none |
| DUKHPROGEN00MTAP2760 | Sprinklers_2nd_App | 2013-07-11 → 2013-07-27 A (+16d) | 2013-08-18 → 2013-08-31 A (+13d) | 30d → 28d | 0% → 100% | 138d → none |
| DUKHPROGEN00MTAP2680 | Water Tank_2nd_App | 2013-07-17 → 2013-08-01 A (+15d) | 2013-08-24 → 2013-08-31 A (+7d) | 30d → 23d | 0% → 100% | 46d → none |
| DUKHPROGEN00MTAP2690 | Fire Hydrant_2nd_App | 2013-07-17 → 2013-08-01 A (+15d) | 2013-08-24 → 2013-08-31 A (+7d) | 30d → 23d | 0% → 100% | 20d → none |
| DUKHPROGEN00MTAP2770 | Kitchen Water Filter_2nd_App | 2013-08-04 → 2013-08-01 A (-3d) | 2013-09-10 → 2013-09-08 A (-2d) |  | 0% → 100% | 14d → none |
| DUKHPROGEN00MTAP2780 | Gazebo Structure_2nd_App | 2013-07-24 → 2013-08-01 A (+8d) | 2013-08-31 A | 30d → 23d | 0% → 100% | 71d → none |
| DUKHPROGEN00MTAP2790 | Plantation(Grass,Trees)_2nd_App | 2013-07-24 → 2013-08-01 A (+8d) | 2013-08-31 A | 30d → 23d | 0% → 100% | 26d → none |
| DUKHPROGEN00MTAP2810 | Nozzle Jet_2nd_App | 2013-07-29 → 2013-08-01 A (+3d) | 2013-09-04 → 2013-09-08 A (+4d) |  | 0% → 100% | 97d → none |
| DUKHPROGEN00MTAP2830 | Solenoid Values_2nd_App | 2013-08-19 → 2013-08-18 A (-1d) | 2013-09-22 → 2013-09-21 A (-1d) |  | 0% → 100% | 82d → none |
| DUKHPROGEN00MTAP2800 | Steel Gate & Barrier gates_2nd_App | 2013-07-29 → 2013-08-31 A (+33d) | 2013-09-04 → 2013-10-03 A (+29d) |  | 0% → 100% | 63d → none |
| DUKHPROGEN00MTAP2820 | Pre-cast Boundary Wall _2nd_App | 2013-07-29 → 2013-08-31 A (+33d) | 2013-09-04 → 2013-10-03 A (+29d) |  | 0% → 100% | 40d → none |
| DUKHPROGEN00MTAP2840 | Gate Values_2nd_App | 2013-09-05 → 2013-08-31 A (-5d) | 2013-10-09 → 2013-10-03 A (-6d) |  | 0% → 100% | 67d → none |
| DUKHPROGEN00MTAP2850 | Fences_2nd_App | 2013-08-19 → 2013-09-28 A (+40d) | 2013-09-22 → 2013-10-28 A (+36d) | 30d → 25d | 0% → 100% | 126d → none |
| DUKHPROGEN00MTAP2860 | Remote Control Value_2nd_App | 2013-09-23 → 2013-09-28 A (+5d) | 2013-10-29 → 2013-10-28 A (-1d) | 30d → 25d | 0% → 100% | 52d → none |
| DUKHPROGEN00MTAP2870 | Irrigation Controller_2nd_App | 2013-10-10 → 2013-11-02 (+23d) | 2013-11-16 → 2013-12-05 (+19d) |  |  | 37d → 96d |
| L25 | **MANUFACTURING, PROCUREMENT & DELIVERY** |  | 2014-02-14 → 2014-01-31 (-14d) |  |  |  |
| DUKHPROGEN00PRDV3140 | Proc & Del Pitch roofing | 2013-05-14 A | 2013-06-22 A |  | 0% → 100% | 91d → none |
| DUKHPROGEN00PRDV3040 | Proc & Del Plastering & Accessories | 2013-04-27 → 2013-06-01 A (+35d) | 2013-06-24 A | 59d → 24d | 0% → 100% | 84d → none |
| DUKHPROGEN00PRDV3050 | Proc & Del Thermal Insulation | 2013-04-27 → 2013-06-01 A (+35d) | 2013-06-24 A | 59d → 24d | 0% → 100% | 125d → none |
| DUKHPROGEN00PRDV3080 | Proc & Del Polyethylene Pipes | 2013-04-27 → 2013-06-01 A (+35d) | 2013-07-08 → 2013-07-27 A (+19d) | 73d → 38d | 0% → 100% | 67d → none |
| DUKHPROGEN00PRDV3090 | Proc & Del Cobble stone finish | 2013-04-30 → 2013-06-01 A (+32d) | 2013-08-27 A | 120d → 88d | 0% → 100% | 96d → none |
| DUKHPROGEN00PRDV3100 | Proc & Del Slate Tile | 2013-04-30 → 2013-06-01 A (+32d) | 2013-08-27 A | 120d → 88d | 0% → 100% | 102d → none |
| DUKHPROGEN00PRDV3110 | Proc & Del Stone Cladding | 2013-04-27 → 2013-06-01 A (+35d) | 2013-08-01 A | 97d → 62d | 0% → 100% | 139d → none |

| ID | Task | Start | Finish | Duration | Complete | Total float | Predecessors |
| --- | --- | --- | --- | --- | --- | --- | --- |
| DUKHPROGEN00PRDV3120 | Proc & Del Ceramic Tile | 2013-04-30 → 2013-06-01 A (+32d) | 2013-08-27 A | 120d → 88d | 0% → 100% | 49d → none |  |
| DUKHPROGEN00PRDV3130 | Proc & Del Porcelain Tile | 2013-04-30 → 2013-06-01 A (+32d) | 2013-08-27 A | 120d → 88d | 0% → 100% | 59d → none |  |
| DUKHPROGEN00PRDV3180 | Proc & Del Cables & Wires | 2013-06-28 A | 2013-10-25 A |  | 0% → 100% | 1d → none |  |
| DUKHPROGEN00PRDV3150 | Proc & Del Sanitary Fittings | 2013-08-18 → 2013-08-31 A (+13d) | 2013-12-15 → 2013-10-31 A (-45d) | 120d → 62d | 0% → 100% | -19d → none | DUKHENGP1ADWMEAP4220, DUKHENGP1ADWMEAP4210, DUKHENGP2BDWMEAP5390, DUKHENGP2ADWMEAP5020, DUKHENGP1BDWMEAP4620, DUKHENGP03DWMEAP5780, DUKHENGP2ADWMEAP5010, DUKHPROGEN00MTAP2150, DUKHENGP1BDWMEAP4610, DUKHENGP03DWMEAP5770, DUKHENGP2BDWMEAP5400 → DUKHENGP1ADWMEAP4220, DUKHENGP1ADWMEAP4210, DUKHENGP2BDWMEAP5390, DUKHENGP2ADWMEAP5020, DUKHENGP1BDWMEAP4620, DUKHENGP03DWMEAP5780, DUKHENGP2ADWMEAP5010, DUKHPROGEN00MTAP2150 FF, DUKHENGP1BDWMEAP4610, DUKHENGP03DWMEAP5770, DUKHENGP2BDWMEAP5400 |
| DUKHPROGEN00PRDV3160 | Proc & Del Copper Pipes | 2013-08-18 → 2013-08-31 A (+13d) | 2013-11-15 → 2013-10-31 A (-15d) | 90d → 62d | 0% → 100% | -16d → none | DUKHPROGEN00MTAP2160, DUKHENGP2ADWMEAP5040, DUKHENGP1BDWMEAP4640, DUKHENGP03DWMEAP5800, DUKHENGP1ADWMEAP4240, DUKHENGP2BDWMEAP5420 → DUKHPROGEN00MTAP2160 FF, DUKHENGP2ADWMEAP5040, DUKHENGP1BDWMEAP4640, DUKHENGP03DWMEAP5800, DUKHENGP1ADWMEAP4240, DUKHENGP2BDWMEAP5420 |
| DUKHPROGEN00PRDV3170 | Proc & Del SMDB | 2013-08-18 → 2013-08-31 A (+13d) | 2013-12-15 → 2013-10-31 A (-45d) | 120d → 62d | 0% → 100% | 13d → none | DUKHENGP2ADWELAP4970, DUKHENGP03DWELAP5730, DUKHENGP1ADWELAP4170, DUKHENGP1BDWELAP4570, DUKHENGP1ADWELAP4150, DUKHENGP2BDWELAP5350, DUKHENGP1BDWELAP4550, DUKHENGP2BDWELAP5330, DUKHPROGEN00MTAP2170, DUKHENGP03DWELAP5710, DUKHENGP2ADWELAP4950 → DUKHENGP2ADWELAP4970, DUKHENGP03DWELAP5730, DUKHENGP1ADWELAP4170, DUKHENGP1BDWELAP4570, DUKHENGP1ADWELAP4150, DUKHENGP2BDWELAP5350, DUKHENGP1BDWELAP4550, DUKHENGP2BDWELAP5330, DUKHPROGEN00MTAP2170 FF, DUKHENGP03DWELAP5710, DUKHENGP2ADWELAP4950 |
| DUKHPROGEN00PRDV3190 | Proc & Del Lights & Fixtures | 2013-08-18 → 2013-08-31 A (+13d) | 2013-12-15 → 2013-10-31 A (-45d) | 120d → 62d | 0% → 100% | 26d → none | DUKHENGP1BDWELAP4560 FF, DUKHENGP1ADWELAP4160, DUKHENGP2BDWELAP5340, DUKHPROGEN00MTAP2190, DUKHENGP03DWELAP5720, DUKHENGP2ADWELAP4960 → DUKHENGP1BDWELAP4560 FF, DUKHENGP1ADWELAP4160, DUKHENGP2BDWELAP5340, DUKHPROGEN00MTAP2190 FF, DUKHENGP03DWELAP5720, DUKHENGP2ADWELAP4960 |
| DUKHPROGEN00PRDV3200 | Proc & Del Isolators | 2013-08-18 → 2013-08-31 A (+13d) | 2013-12-15 → 2013-10-31 A (-45d) | 120d → 62d | 0% → 100% | 51d → none | DUKHENGP2ADWELAP4970, DUKHENGP1BDWELAP4570, DUKHENGP2BDWELAP5350, DUKHENGP03DWELAP5730, DUKHPROGEN00MTAP2200, DUKHENGP1ADWELAP4170 → DUKHENGP2ADWELAP4970, DUKHENGP1BDWELAP4570, DUKHENGP2BDWELAP5350, DUKHENGP03DWELAP5730, DUKHPROGEN00MTAP2200 FF, DUKHENGP1ADWELAP4170 |
| DUKHPROGEN00PRDV3210 | Proc & Del Fire Resistant Cables | 2013-08-18 → 2013-08-31 A (+13d) | 2013-11-15 → 2013-10-31 A (-15d) | 90d → 62d | 0% → 100% | 47d → none | DUKHENGP03DWELAP5740, DUKHPROGEN00MTAP2210, DUKHENGP2ADWELAP4980, DUKHENGP1BDWELAP4580 FF, DUKHENGP2BDWELAP5360, DUKHENGP1ADWELAP4180 → DUKHENGP03DWELAP5740, DUKHPROGEN00MTAP2210 FF, DUKHENGP2ADWELAP4980, DUKHENGP1BDWELAP4580 FF, DUKHENGP2BDWELAP5360, DUKHENGP1ADWELAP4180 |
| DUKHPROGEN00PRDV3220 | Proc & Del Water Chiller | 2013-08-18 → 2013-08-31 A (+13d) | 2013-12-15 → 2013-10-31 A (-45d) | 120d → 62d | 0% → 100% | 1d → none | DUKHENGP1ADWMEAP4210, DUKHENGP1BDWMEAP4620, DUKHENGP2ADWMEAP5010, DUKHENGP1ADWMEAP4220, DUKHENGP2BDWMEAP5390, DUKHENGP2BDWMEAP5400, DUKHENGP03DWMEAP5770, DUKHENGP03DWMEAP5780, DUKHPROGEN00MTAP2220, DUKHENGP2ADWMEAP5020, DUKHENGP1BDWMEAP4610 → DUKHENGP1ADWMEAP4210, DUKHENGP1BDWMEAP4620, DUKHENGP2ADWMEAP5010, DUKHENGP1ADWMEAP4220, DUKHENGP2BDWMEAP5390, DUKHENGP2BDWMEAP5400, DUKHENGP03DWMEAP5770, DUKHENGP03DWMEAP5780, DUKHPROGEN00MTAP2220 FF, DUKHENGP2ADWMEAP5020, DUKHENGP1BDWMEAP4610 |
| DUKHPROGEN00PRDV3230 | Proc & Del Water Heater | 2013-08-18 → 2013-08-31 A (+13d) | 2013-11-15 → 2013-10-31 A (-15d) | 90d → 62d | 0% → 100% | 11d → none | DUKHENGP1ADWMEAP4220, DUKHENGP03DWMEAP5780, DUKHENGP1BDWMEAP4610, DUKHENGP1BDWMEAP4620, DUKHENGP2ADWMEAP5020, DUKHENGP2BDWMEAP5390, DUKHENGP2BDWMEAP5400, DUKHENGP03DWMEAP5770, DUKHENGP1ADWMEAP4210, DUKHPROGEN00MTAP2230, DUKHENGP2ADWMEAP5010 → DUKHENGP1ADWMEAP4220, DUKHENGP03DWMEAP5780, DUKHENGP1BDWMEAP4610, DUKHENGP1BDWMEAP4620, DUKHENGP2ADWMEAP5020, DUKHENGP2BDWMEAP5390, DUKHENGP2BDWMEAP5400, DUKHENGP03DWMEAP5770, DUKHENGP1ADWMEAP4210, DUKHPROGEN00MTAP2230 FF, DUKHENGP2ADWMEAP5010 |
| DUKHPROGEN00PRDV3240 | Proc & Del Split AC | 2013-08-18 → 2013-08-31 A (+13d) | 2013-12-15 → 2013-10-31 A (-45d) | 120d → 62d | 0% → 100% | 40d → none | DUKHENGP2ADWMEAP5040, DUKHENGP1ADWMEAP4240, DUKHPROGEN00MTAP2240, DUKHENGP1BDWMEAP4640, DUKHENGP2BDWMEAP5420, DUKHENGP03DWMEAP5800 → DUKHENGP2ADWMEAP5040, DUKHENGP1ADWMEAP4240, DUKHPROGEN00MTAP2240 FF, DUKHENGP1BDWMEAP4640, DUKHENGP2BDWMEAP5420, DUKHENGP03DWMEAP5800 |
| DUKHPROGEN00PRDV3250 | Proc & Del Street Light Post Set | 2013-08-30 → 2013-08-31 A (+1d) | 2013-12-27 → 2013-12-28 (+1d) |  | 0% → 52% | 79d → 78d | DUKHENGI2ADWTCAP5100, DUKHENGI03DWELAP5840, DUKHPROGEN00MTAP2250, DUKHENGI2ADWSTAP5090, DUKHENGI1ADWELAP4280, DUKHENGI2BDWTCAP5480, DUKHENGI03DWTCAP5860, DUKHENGI1BDWELAP4680, DUKHENGI1BDWTCAP4700, DUKHENGI03DWSTAP5850, DUKHENGI2ADWELAP5080, DUKHENGI1ADWTCAP4300, DUKHENGI2BDWELAP5460, DUKHENGI2BDWSTAP5470, DUKHENGI1ADWSTAP4290, DUKHENGI1BDWSTAP4690 → DUKHENGI2ADWTCAP5100, DUKHENGI03DWELAP5840, DUKHPROGEN00MTAP2250 FF, DUKHENGI2ADWSTAP5090, DUKHENGI1ADWELAP4280, DUKHENGI2BDWTCAP5480, DUKHENGI03DWTCAP5860, DUKHENGI1BDWELAP4680, DUKHENGI1BDWTCAP4700, DUKHENGI03DWSTAP5850, DUKHENGI2ADWELAP5080, DUKHENGI1ADWTCAP4300, DUKHENGI2BDWELAP5460, DUKHENGI2BDWSTAP5470, DUKHENGI1ADWSTAP4290, DUKHENGI1BDWSTAP4690 |
| DUKHPROGEN00PRDV3260 | Proc & Del Smoke Detector | 2013-08-18 → 2013-08-31 A (+13d) | 2013-11-15 → 2013-10-31 A (-15d) | 90d → 62d | 0% → 100% | 47d → none | DUKHENGP1ADWELAP4180, DUKHENGP2BDWELAP5360, DUKHPROGEN00MTAP2260, DUKHENGP2ADWELAP4980, DUKHENGP03DWELAP5740, DUKHENGP1BDWELAP4580 FF → DUKHENGP1ADWELAP4180, DUKHENGP2BDWELAP5360, DUKHPROGEN00MTAP2260 FF, DUKHENGP2ADWELAP4980, DUKHENGP03DWELAP5740, DUKHENGP1BDWELAP4580 FF |
| DUKHPROGEN00PRDV3270 | Proc & Del Video Com System | 2013-08-18 → 2013-08-31 A (+13d) | 2013-12-15 → 2013-10-31 A (-45d) | 120d → 62d | 0% → 100% | 24d → none | DUKHENGP2BDWELAP5370, DUKHENGP1BDWELAP4590, DUKHENGP2ADWELAP4990, DUKHPROGEN00MTAP2270, DUKHENGP1ADWELAP4190, DUKHENGP03DWELAP5750 → DUKHENGP2BDWELAP5370, DUKHENGP1BDWELAP4590, DUKHENGP2ADWELAP4990, DUKHPROGEN00MTAP2270 FF, DUKHENGP1ADWELAP4190, DUKHENGP03DWELAP5750 |
| DUKHPROGEN00PRDV3280 | Proc & Del Telephone Fittings & Accessories | 2013-08-18 → 2013-08-31 A (+13d) | 2013-12-15 → 2013-10-31 A (-45d) | 120d → 62d | 0% → 100% | 24d → none | DUKHENGP2BDWELAP5380, DUKHENGP03DWELAP5760, DUKHENGP1BDWELAP4600, DUKHPROGEN00MTAP2280, DUKHENGP2ADWELAP5000, DUKHENGP1ADWELAP4200 → DUKHENGP2BDWELAP5380, DUKHENGP03DWELAP5760, DUKHENGP1BDWELAP4600, DUKHPROGEN00MTAP2280 FF, DUKHENGP2ADWELAP5000, DUKHENGP1ADWELAP4200 |
| DUKHPROGEN00PRDV3290 | Proc & Del Television devices,Fit. & Access. | 2013-08-18 → 2013-08-31 A (+13d) | 2013-12-15 → 2013-10-31 A (-45d) | 120d → 62d | 0% → 100% | 58d → none | DUKHPROGEN00MTAP2290, DUKHENGP2BDWELAP5380, DUKHENGP2ADWELAP5000, DUKHENGP1ADWELAP4200, DUKHENGP1BDWELAP4600, DUKHENGP03DWELAP5760 → DUKHPROGEN00MTAP2290 FF, DUKHENGP2BDWELAP5380, DUKHENGP2ADWELAP5000, DUKHENGP1ADWELAP4200, DUKHENGP1BDWELAP4600, DUKHENGP03DWELAP5760 |
| DUKHPROGEN00PRDV3300 | Proc & Del Gypsum Board false ceiling | 2013-08-18 → 2013-08-31 A (+13d) | 2013-12-05 → 2013-10-31 A (-35d) | 110d → 62d | 0% → 100% | -26d → none | DUKHENGP2BDWARAP5290, DUKHENGP2ADWARAP4910, DUKHENGP03DWARAP5670, DUKHPROGEN00MTAP2300, DUKHENGP1BDWARAP4480, DUKHENGP1ADWARAP4110 → DUKHENGP2BDWARAP5290, DUKHENGP2ADWARAP4910, DUKHENGP03DWARAP5670, DUKHPROGEN00MTAP2300 FF, DUKHENGP1BDWARAP4480, DUKHENGP1ADWARAP4110 |
| DUKHPROGEN00PRDV3310 | Proc & Del Aluminum Tile false ceiling | 2013-08-18 → 2013-08-31 A (+13d) | 2013-12-15 → 2013-10-31 A (-45d) | 120d → 62d | 0% → 100% | -5d → none | DUKHENGP03DWARAP5680, DUKHPROGEN00MTAP2310, DUKHENGP1ADWARAP4120, DUKHENGP1BDWARAP4490 → DUKHENGP03DWARAP5680, DUKHPROGEN00MTAP2310 FF, DUKHENGP1ADWARAP4120, DUKHENGP1BDWARAP4490 |
| DUKHPROGEN00PRDV3320 | Proc & Del Paints | 2013-08-18 → 2013-08-31 A (+13d) | 2013-11-15 → 2013-10-31 A (-15d) | 90d → 62d | 0% → 100% | -40d → none | DUKHPROGEN00MTAP2320, DUKHENGP2ADWARAP4850, DUKHENGP1BDWARAP4450, DUKHENGP2BDWARAP5230, DUKHENGP03DWARAP5610, DUKHENGP1ADWARAP4050 → DUKHPROGEN00MTAP2320 FF, DUKHENGP2ADWARAP4850, DUKHENGP1BDWARAP4450, DUKHENGP2BDWARAP5230, DUKHENGP03DWARAP5610, DUKHENGP1ADWARAP4050 |
| DUKHPROGEN00PRDV3330 | Proc & Del Booster Pump | 2013-08-18 → 2013-08-31 A (+13d) | 2013-12-15 → 2013-10-31 A (-45d) | 120d → 62d | 0% → 100% | 1d → none | DUKHENGP1BDWMEAP4620, DUKHENGP2BDWMEAP5400, DUKHENGP2ADWMEAP5010, DUKHENGP2BDWMEAP5390, DUKHPROGEN00MTAP2330, DUKHENGP1BDWMEAP4610, DUKHENGP2ADWMEAP5020, DUKHENGP1ADWMEAP4210, DUKHENGP1ADWMEAP4220, DUKHENGP03DWMEAP5770, DUKHENGP03DWMEAP5780 → DUKHENGP1BDWMEAP4620, DUKHENGP2BDWMEAP5400, DUKHENGP2ADWMEAP5010, DUKHENGP2BDWMEAP5390, DUKHPROGEN00MTAP2330 FF, DUKHENGP1BDWMEAP4610, DUKHENGP2ADWMEAP5020, DUKHENGP1ADWMEAP4210, DUKHENGP1ADWMEAP4220, DUKHENGP03DWMEAP5770, DUKHENGP03DWMEAP5780 |
| DUKHPROGEN00PRDV3340 | Proc & Del Exhaust Air louver | 2013-08-18 → 2013-08-31 A (+13d) | 2013-11-15 → 2013-10-31 A (-15d) | 90d → 62d | 0% → 100% | 49d → none | DUKHPROGEN00MTAP2340, DUKHENGP1ADWMEAP4240, DUKHENGP03DWMEAP5800, DUKHENGP2BDWMEAP5420, DUKHENGP2ADWMEAP5040, DUKHENGP1BDWMEAP4640 → DUKHPROGEN00MTAP2340 FF, DUKHENGP1ADWMEAP4240, DUKHENGP03DWMEAP5800, DUKHENGP2BDWMEAP5420, DUKHENGP2ADWMEAP5040, DUKHENGP1BDWMEAP4640 |
| DUKHPROGEN00PRDV3350 | Proc & Del Bollard Lamp | 2013-08-18 → 2013-08-31 A (+13d) | 2013-12-15 → 2013-10-31 A (-45d) | 120d → 62d | 0% → 100% | 91d → none | DUKHENGI03DWELAP5840, DUKHENGI03DWSTAP5850, DUKHENGI2ADWSTAP5090, DUKHENGI1BDWELAP4680, DUKHENGI1ADWELAP4280, DUKHENGI1BDWSTAP4690, DUKHENGI2BDWSTAP5470, DUKHENGI2ADWELAP5080, DUKHPROGEN00MTAP2350, DUKHENGI1ADWSTAP4290, DUKHENGI2BDWELAP5460 → DUKHENGI03DWELAP5840, DUKHENGI03DWSTAP5850, DUKHENGI2ADWSTAP5090, DUKHENGI1BDWELAP4680, DUKHENGI1ADWELAP4280, DUKHENGI1BDWSTAP4690, DUKHENGI2BDWSTAP5470, DUKHENGI2ADWELAP5080, DUKHPROGEN00MTAP2350 FF, DUKHENGI1ADWSTAP4290, DUKHENGI2BDWELAP5460 |
| DUKHPROGEN00PRDV3360 | Proc & Del Digital Alarm Communicator Panel | 2013-08-18 → 2013-08-31 A (+13d) | 2013-12-15 → 2013-10-31 A (-45d) | 120d → 62d | 0% → 100% | 17d → none | DUKHENGP1ADWELAP4180, DUKHENGP03DWELAP5740, DUKHPROGEN00MTAP2360, DUKHENGP2BDWELAP5360, DUKHENGP2ADWELAP4980, DUKHENGP1BDWELAP4580 FF → DUKHENGP1ADWELAP4180, DUKHENGP03DWELAP5740, DUKHPROGEN00MTAP2360 FF, DUKHENGP2BDWELAP5360, DUKHENGP2ADWELAP4980, DUKHENGP1BDWELAP4580 FF |
| DUKHPROGEN00PRDV3370 | Proc & Del Fire Blanket | 2013-08-18 → 2013-08-31 A (+13d) | 2013-10-16 → 2013-10-31 A (+15d) | 60d → 62d | 0% → 100% | 77d → none | DUKHENGP1BDWMEAP4630, DUKHENGP1ADWMEAP4230, DUKHPROGEN00MTAP2370, DUKHENGP2ADWMEAP5030, DUKHENGP2BDWMEAP5410, DUKHENGP03DWMEAP5790 → DUKHENGP1BDWMEAP4630, DUKHENGP1ADWMEAP4230, DUKHPROGEN00MTAP2370 FF, DUKHENGP2ADWMEAP5030, DUKHENGP2BDWMEAP5410, DUKHENGP03DWMEAP5790 |
| DUKHPROGEN00PRDV3380 | Proc & Del Fire Extinguisher | 2013-08-18 → 2013-08-31 A (+13d) | 2013-10-26 → 2013-10-31 A (+5d) | 70d → 62d | 0% → 100% | 67d → none | DUKHENGP1BDWMEAP4630, DUKHENGP2ADWMEAP5030, DUKHENGP03DWMEAP5790, DUKHPROGEN00MTAP2380, DUKHENGP1ADWMEAP4230, DUKHENGP2BDWMEAP5410 → DUKHENGP1BDWMEAP4630, DUKHENGP2ADWMEAP5030, DUKHENGP03DWMEAP5790, DUKHPROGEN00MTAP2380 FF, DUKHENGP1ADWMEAP4230, DUKHENGP2BDWMEAP5410 |
| DUKHPROGEN00PRDV3390 | Proc & Del GRC Panels | 2013-08-18 → 2013-08-31 A (+13d) | 2013-11-15 → 2013-10-31 A (-15d) | 90d → 62d | 0% → 100% | 26d → none | DUKHPROGEN00MTAP2390 → DUKHPROGEN00MTAP2390 FF |
| DUKHPROGEN00PRDV3400 | Proc & Del Access Ladder | 2013-08-18 → 2013-08-31 A (+13d) | 2013-11-15 → 2013-10-31 A (-15d) | 90d → 62d | 0% → 100% | 46d → none | DUKHPROGEN00MTAP2400 → DUKHPROGEN00MTAP2400 FF |
| DUKHPROGEN00PRDV3410 | Proc & Del Aluminium Slat Screen | 2013-08-18 → 2013-08-31 A (+13d) | 2013-12-15 → 2013-10-31 A (-45d) | 120d → 62d | 0% → 100% | 35d → none | DUKHPROGEN00MTAP2410 → DUKHPROGEN00MTAP2410 FF |
| DUKHPROGEN00PRDV3420 | Proc & Del Epoxy | 2013-08-18 → 2013-08-31 A (+13d) | 2013-09-26 → 2013-10-31 A (+35d) | 40d → 62d | 0% → 100% | 129d → none | DUKHENGP1BDWARAP4450, DUKHENGP03DWARAP5610, DUKHPROGEN00MTAP2420, DUKHENGP2ADWARAP4850, DUKHENGP1ADWARAP4050, DUKHENGP2BDWARAP5230 → DUKHENGP1BDWARAP4450, DUKHENGP03DWARAP5610, DUKHPROGEN00MTAP2420 FF, DUKHENGP2ADWARAP4850, DUKHENGP1ADWARAP4050, DUKHENGP2BDWARAP5230 |
| DUKHPROGEN00PRDV3430 | Proc & Del Roller Shutter | 2013-08-18 → 2013-08-31 A (+13d) | 2013-12-15 → 2013-10-31 A (-45d) | 120d → 62d | 0% → 100% | 201d → none | DUKHPROGEN00MTAP2430 → DUKHPROGEN00MTAP2430 FF |
| DUKHPROGEN00PRDV3440 | Proc & Del PVC Doors | 2013-08-18 → 2013-08-31 A (+13d) | 2013-11-15 → 2013-10-31 A (-15d) | 90d → 62d | 0% → 100% | 53d → none | DUKHENGP2ADWARAP4930, DUKHPROGEN00MTAP2440, DUKHENGP1ADWARAP4130, DUKHENGP1BDWARAP4530, DUKHENGP2BDWARAP5310, DUKHENGP03DWARAP5690 → DUKHENGP2ADWARAP4930, DUKHPROGEN00MTAP2440 FF, DUKHENGP1ADWARAP4130, DUKHENGP1BDWARAP4530, DUKHENGP2BDWARAP5310, DUKHENGP03DWARAP5690 |
| DUKHPROGEN00PRDV3450 | Proc & Del Ironmogeries | 2013-08-18 → 2013-08-31 A (+13d) | 2013-12-15 → 2013-10-31 A (-45d) | 120d → 62d | 0% → 100% | -27d → none | DUKHENGP1ADWARAP4130, DUKHENGP2ADWARAP4930, DUKHPROGEN00MTAP2450, DUKHENGP2BDWARAP5310, DUKHENGP03DWARAP5690, DUKHENGP1BDWARAP4530 → DUKHENGP1ADWARAP4130, DUKHENGP2ADWARAP4930, DUKHPROGEN00MTAP2450 FF, DUKHENGP2BDWARAP5310, DUKHENGP03DWARAP5690, DUKHENGP1BDWARAP4530 |
| DUKHPROGEN00PRDV3460 | Proc & Del Aluminum Doors | 2013-08-18 → 2013-08-31 A (+13d) | 2013-12-15 → 2013-10-31 A (-45d) | 120d → 62d | 0% → 100% | 22d → none | DUKHENGP2ADWARAP4930, DUKHENGP2BDWARAP5310, DUKHENGP1ADWARAP4130, DUKHENGP1BDWARAP4530, DUKHPROGEN00MTAP2460, DUKHENGP03DWARAP5690 → DUKHENGP2ADWARAP4930, DUKHENGP2BDWARAP5310, DUKHENGP1ADWARAP4130, DUKHENGP1BDWARAP4530, DUKHPROGEN00MTAP2460 FF, DUKHENGP03DWARAP5690 |
| DUKHPROGEN00PRDV3470 | Proc & Del Aluminum Windows | 2013-08-18 → 2013-08-31 A (+13d) | 2013-12-15 → 2013-10-31 A (-45d) | 120d → 62d | 0% → 100% | 29d → none | DUKHPROGEN00MTAP2470, DUKHENGP1BDWARAP4530, DUKHENGP03DWARAP5690, DUKHENGP1ADWARAP4130, DUKHENGP2BDWARAP5310, DUKHENGP2ADWARAP4930 → DUKHPROGEN00MTAP2470 FF, DUKHENGP1BDWARAP4530, DUKHENGP03DWARAP5690, DUKHENGP1ADWARAP4130, DUKHENGP2BDWARAP5310, DUKHENGP2ADWARAP4930 |
| DUKHPROGEN00PRDV3480 | Proc & Del Granite | 2013-08-18 → 2013-08-31 A (+13d) | 2013-12-15 → 2013-10-31 A (-45d) | 120d → 62d | 0% → 100% | 0d → none | DUKHENGP2ADWARAP4850, DUKHENGP1ADWARAP4050, DUKHENGP1BDWARAP4450, DUKHPROGEN00MTAP2480, DUKHENGP2BDWARAP5230, DUKHENGP03DWARAP5610 → DUKHENGP2ADWARAP4850, DUKHENGP1ADWARAP4050, DUKHENGP1BDWARAP4450, DUKHPROGEN00MTAP2480 FF, DUKHENGP2BDWARAP5230, DUKHENGP03DWARAP5610 |
| DUKHPROGEN00PRDV3490 | Proc & Del Wooden Doors | 2013-08-18 → 2013-08-31 A (+13d) | 2013-12-15 → 2013-10-31 A (-45d) | 120d → 62d | 0% → 100% | -27d → none | DUKHENGP2ADWARAP4930, DUKHENGP1BDWARAP4530, DUKHENGP1ADWARAP4130, DUKHENGP2BDWARAP5310, DUKHPROGEN00MTAP2490, DUKHENGP03DWARAP5690 → DUKHENGP2ADWARAP4930, DUKHENGP1BDWARAP4530, DUKHENGP1ADWARAP4130, DUKHENGP2BDWARAP5310, DUKHPROGEN00MTAP2490 FF, DUKHENGP03DWARAP5690 |
| DUKHPROGEN00PRDV3500 | Proc & Del Steel Door | 2013-08-18 → 2013-08-31 A (+13d) | 2013-12-15 → 2013-10-31 A (-45d) | 120d → 62d | 0% → 100% | -16d → none | DUKHPROGEN00MTAP2500 → DUKHPROGEN00MTAP2500 FF |
| DUKHPROGEN00PRDV3510 | Proc & Del Stainless Steel Cover | 2013-08-18 → 2013-08-31 A (+13d) | 2013-12-15 → 2013-10-31 A (-45d) | 120d → 62d | 0% → 100% | -16d → none | DUKHPROGEN00MTAP2510 → DUKHPROGEN00MTAP2510 FF |
| DUKHPROGEN00PRDV3520 | Proc & Del Lift Pump | 2013-07-17 → 2013-08-31 A (+45d) | 2013-11-13 → 2013-10-31 A (-13d) | 120d → 62d | 0% → 100% | 33d → none |  |
| DUKHPROGEN00PRDV3530 | Proc & Del Exhaust Fan | 2013-07-17 → 2013-08-31 A (+45d) | 2013-10-14 → 2013-10-31 A (+17d) | 90d → 62d | 0% → 100% | 81d → none |  |
| DUKHPROGEN00PRDV3540 | Proc & Del Ductile Iron Pipes | 2013-07-17 → 2013-08-31 A (+45d) | 2013-11-03 → 2013-10-31 A (-3d) | 110d → 62d | 0% → 100% | 12d → none |  |
| DUKHPROGEN00PRDV3550 | Proc & Del Closets /wardrobe& Pelmets | 2013-08-18 → 2013-08-31 A (+13d) | 2013-12-15 → 2013-10-31 A (-45d) | 120d → 62d | 0% → 100% | 20d → none | DUKHPROGEN00MTAP2550, DUKHENGP2ADWARAP4940, DUKHENGP03DWARAP5700, DUKHENGP2BDWARAP5320, DUKHENGP1ADWARAP4140, DUKHENGP1BDWARAP4540 → DUKHPROGEN00MTAP2550 FF, DUKHENGP2ADWARAP4940, DUKHENGP03DWARAP5700, DUKHENGP2BDWARAP5320, DUKHENGP1ADWARAP4140, DUKHENGP1BDWARAP4540 |
| DUKHPROGEN00PRDV3560 | Proc & Del Counters, Cabinets & Shelves | 2013-08-18 → 2013-08-31 A (+13d) | 2013-12-15 → 2013-10-31 A (-45d) | 120d → 62d | 0% → 100% | 20d → none | DUKHENGP03DWARAP5700, DUKHENGP1ADWARAP4140, DUKHENGP2ADWARAP4940, DUKHENGP1BDWARAP4540, DUKHENGP2BDWARAP5320, DUKHPROGEN00MTAP2560 → DUKHENGP03DWARAP5700, DUKHENGP1ADWARAP4140, DUKHENGP2ADWARAP4940, DUKHENGP1BDWARAP4540, DUKHENGP2BDWARAP5320, DUKHPROGEN00MTAP2560 FF |
| DUKHPROGEN00PRDV3570 | Proc & Del Wooden Hand Rails | 2013-08-18 → 2013-08-31 A (+13d) | 2013-11-25 → 2013-10-31 A (-25d) | 100d → 62d | 0% → 100% | 40d → none | DUKHPROGEN00MTAP2570, DUKHENGP2BDWARAP5320, DUKHENGP1BDWARAP4540, DUKHENGP03DWARAP5700, DUKHENGP1ADWARAP4140, DUKHENGP2ADWARAP4940 → DUKHPROGEN00MTAP2570 FF, DUKHENGP2BDWARAP5320, DUKHENGP1BDWARAP4540, DUKHENGP03DWARAP5700, DUKHENGP1ADWARAP4140, DUKHENGP2ADWARAP4940 |
| DUKHPROGEN00PRDV3580 | Proc & Del Stainless Steel Handrail | 2013-08-18 → 2013-08-31 A (+13d) | 2013-12-15 → 2013-10-31 A (-45d) | 120d → 62d | 0% → 100% | 41d → none | DUKHPROGEN00MTAP2580 → DUKHPROGEN00MTAP2580 FF |
| DUKHPROGEN00PRDV3590 | Proc & Del Manhole Covers and Frames | 2013-08-18 → 2013-08-31 A (+13d) | 2013-11-15 → 2013-10-31 A (-15d) | 90d → 62d | 0% → 100% | 31d → none | DUKHENGI2ADWWSAP5070, DUKHENGI2ADWIWAP5160, DUKHENGI1ADWIWAP4360, DUKHENGI1BDWDRAP4650, DUKHENGI1BDWIWAP4760, DUKHENGI2BDWWSAP5450, DUKHENGI1ADWWSAP4270, DUKHENGI03DWWSAP5830, DUKHENGI1ADWDRAP4250, DUKHENGI03DWDRAP5810, DUKHENGI2BDWDRAP5430, DUKHPROGEN00MTAP2590, DUKHENGI03DWIWAP5920, DUKHENGI2ADWDRAP5050, DUKHENGI1BDWWSAP4670, DUKHENGI2BDWIWAP5540 → DUKHENGI2ADWWSAP5070, DUKHENGI2ADWIWAP5160, DUKHENGI1ADWIWAP4360, DUKHENGI1BDWDRAP4650, DUKHENGI1BDWIWAP4760, DUKHENGI2BDWWSAP5450, DUKHENGI1ADWWSAP4270, DUKHENGI03DWWSAP5830, DUKHENGI1ADWDRAP4250, DUKHENGI03DWDRAP5810, DUKHENGI2BDWDRAP5430, DUKHPROGEN00MTAP2590 FF, DUKHENGI03DWIWAP5920, DUKHENGI2ADWDRAP5050, DUKHENGI1BDWWSAP4670, DUKHENGI2BDWIWAP5540 |
| DUKHPROGEN00PRDV3600 | Proc & Del kerb works | 2013-08-18 → 2013-08-31 A (+13d) | 2013-09-26 → 2013-10-31 A (+35d) | 40d → 62d | 0% → 100% | 57d → none | DUKHPROGEN00MTAP2600 → DUKHPROGEN00MTAP2600 FF |
| DUKHPROGEN00PRDV3610 | Proc & Del PVC Tent | 2013-08-18 → 2013-08-31 A (+13d) | 2013-12-05 → 2013-10-31 A (-35d) | 110d → 62d | 0% → 100% | -6d → none | DUKHPROGEN00MTAP2610 → DUKHPROGEN00MTAP2610 FF |
| DUKHPROGEN00PRDV3620 | Proc & Del Strutural Steel | 2013-08-18 → 2013-08-31 A (+13d) | 2013-12-15 → 2013-10-31 A (-45d) | 120d → 62d | 0% → 100% | -11d → none | DUKHPROGEN00MTAP2620 → DUKHPROGEN00MTAP2620 FF |
| DUKHPROGEN00PRDV3630 | Proc & Del Steel Ladder | 2013-07-23 → 2013-08-31 A (+39d) | 2013-10-20 → 2013-10-31 A (+11d) | 90d → 62d | 0% → 100% | 45d → none |  |
| DUKHPROGEN00PRDV3640 | Proc & Del Water meter | 2013-08-04 → 2013-08-31 A (+27d) | 2013-10-02 → 2013-10-31 A (+29d) | 60d → 62d | 0% → 100% | 75d → none | DUKHENGP1ADWMEAP4220, DUKHENGP1BDWMEAP4610, DUKHENGP03DWMEAP5780, DUKHENGP1BDWMEAP4620, DUKHENGP2ADWMEAP5010, DUKHENGP2BDWMEAP5390, DUKHENGP1ADWMEAP4210, DUKHENGP2BDWMEAP5400, DUKHENGP03DWMEAP5770, DUKHPROGEN00MTAP2640, DUKHENGP2ADWMEAP5020 → DUKHENGP1ADWMEAP4220, DUKHENGP1BDWMEAP4610, DUKHENGP03DWMEAP5780, DUKHENGP1BDWMEAP4620, DUKHENGP2ADWMEAP5010, DUKHENGP2BDWMEAP5390, DUKHENGP1ADWMEAP4210, DUKHENGP2BDWMEAP5400, DUKHENGP03DWMEAP5770, DUKHPROGEN00MTAP2640 FF, DUKHENGP2ADWMEAP5020 |
| DUKHPROGEN00PRDV3650 | Proc & Del Isolating Values | 2013-08-04 → 2013-08-31 A (+27d) | 2013-11-01 → 2013-10-31 A (-1d) | 90d → 62d | 0% → 100% | 14d → none |  |
| DUKHPROGEN00PRDV3660 | Proc & Del Interlock works | 2013-07-29 → 2013-08-31 A (+33d) | 2013-09-06 → 2013-10-31 A (+55d) | 40d → 62d | 0% → 100% | 105d → none |  |
| DUKHPROGEN00PRDV3670 | Proc & Del Irrigation Pipes | 2013-07-29 → 2013-08-31 A (+33d) | 2013-09-26 → 2013-10-31 A (+35d) | 60d → 62d | 0% → 100% | 94d → none |  |
| DUKHPROGEN00PRDV3680 | Proc & Del Water Tank | 2013-08-25 → 2013-08-31 A (+6d) | 2013-10-23 → 2013-10-31 A (+8d) | 60d → 62d | 0% → 100% | 54d → none | DUKHENGP2ADWMEAP5020, DUKHENGP2ADWMEAP5010, DUKHENGP1ADWMEAP4220, DUKHENGP2BDWMEAP5390, DUKHENGP03DWMEAP5780, DUKHENGP2BDWMEAP5400, DUKHENGP03DWMEAP5770, DUKHENGP1ADWMEAP4210, DUKHPROGEN00MTAP2680, DUKHENGP1BDWMEAP4620, DUKHENGP1BDWMEAP4610 → DUKHENGP2ADWMEAP5020, DUKHENGP2ADWMEAP5010, DUKHENGP1ADWMEAP4220, DUKHENGP2BDWMEAP5390, DUKHENGP03DWMEAP5780, DUKHENGP2BDWMEAP5400, DUKHENGP03DWMEAP5770, DUKHENGP1ADWMEAP4210, DUKHPROGEN00MTAP2680 FF, DUKHENGP1BDWMEAP4620, DUKHENGP1BDWMEAP4610 |
| DUKHPROGEN00PRDV3690 | Proc & Del Fire Hydrant | 2013-08-25 → 2013-08-31 A (+6d) | 2013-12-02 → 2013-10-31 A (-32d) | 100d → 62d | 0% → 100% | 23d → none | DUKHENGI2BDWFFAP5440, DUKHENGI1ADWFFAP4260, DUKHENGI03DWFFAP5820, DUKHENGI2ADWFFAP5060, DUKHPROGEN00MTAP2690, DUKHENGI1BDWFFAP4660 → DUKHENGI2BDWFFAP5440, DUKHENGI1ADWFFAP4260, DUKHENGI03DWFFAP5820, DUKHENGI2ADWFFAP5060, DUKHPROGEN00MTAP2690 FF, DUKHENGI1BDWFFAP4660 |
| DUKHPROGEN00PRDV3700 | Proc & Del Road Works Materials | 2013-08-14 → 2013-08-31 A (+17d) | 2013-09-22 → 2013-10-31 A (+39d) | 40d → 62d | 0% → 100% | 230d → none | DUKHENGI1BDWRWAP4750, DUKHENGI2ADWRWAP5150, DUKHPROGEN00MTAP2700, DUKHENGI03DWRWAP5910, DUKHENGI2BDWRWAP5530, DUKHENGI1ADWRWAP4350 → DUKHENGI1BDWRWAP4750, DUKHENGI2ADWRWAP5150, DUKHPROGEN00MTAP2700 FF, DUKHENGI03DWRWAP5910, DUKHENGI2BDWRWAP5530, DUKHENGI1ADWRWAP4350 |
| DUKHPROGEN00PRDV3710 | Proc & Del External signage | 2013-08-14 → 2013-08-31 A (+17d) | 2013-10-12 → 2013-10-31 A (+19d) | 60d → 62d | 0% → 100% | 210d → none | DUKHPROGEN00MTAP2710 → DUKHPROGEN00MTAP2710 FF |
| DUKHPROGEN00PRDV3720 | Proc & Del Road Marking | 2013-08-14 → 2013-08-31 A (+17d) | 2013-10-12 → 2013-10-31 A (+19d) | 60d → 62d | 0% → 100% | 210d → none | DUKHENGI2BDWRWAP5530, DUKHPROGEN00MTAP2720, DUKHENGI1ADWRWAP4350, DUKHENGI2ADWRWAP5150, DUKHENGI03DWRWAP5910, DUKHENGI1BDWRWAP4750 → DUKHENGI2BDWRWAP5530, DUKHPROGEN00MTAP2720 FF, DUKHENGI1ADWRWAP4350, DUKHENGI2ADWRWAP5150, DUKHENGI03DWRWAP5910, DUKHENGI1BDWRWAP4750 |
| DUKHPROGEN00PRDV3730 | Proc & Del Car Parking Shed | 2013-08-19 → 2013-08-31 A (+12d) | 2013-11-16 → 2013-10-31 A (-16d) | 90d → 62d | 0% → 100% | 151d → none | DUKHPROGEN00MTAP2730, DUKHENGI2ADWPSAP5140, DUKHENGI1ADWPSAP4340, DUKHENGI1BDWPSAP4740, DUKHENGI03DWPSAP5900, DUKHENGI2BDWPSAP5520 → DUKHPROGEN00MTAP2730 FF, DUKHENGI2ADWPSAP5140, DUKHENGI1ADWPSAP4340, DUKHENGI1BDWPSAP4740, DUKHENGI03DWPSAP5900, DUKHENGI2BDWPSAP5520 |
| DUKHPROGEN00PRDV3740 | Proc & Del Stone Boulders | 2013-08-14 → 2013-08-31 A (+17d) | 2013-10-12 → 2013-10-31 A (+19d) | 60d → 62d | 0% → 100% | 157d → none | DUKHPROGEN00MTAP2740 → DUKHPROGEN00MTAP2740 FF |
| DUKHPROGEN00PRDV3750 | Proc & Del Speed Humps | 2013-08-14 → 2013-08-31 A (+17d) | 2013-10-12 → 2013-10-31 A (+19d) | 60d → 62d | 0% → 100% | 155d → none | DUKHENGI2BDWRWAP5530, DUKHENGI2ADWRWAP5150, DUKHPROGEN00MTAP2750, DUKHENGI1ADWRWAP4350, DUKHENGI1BDWRWAP4750, DUKHENGI03DWRWAP5910 → DUKHENGI2BDWRWAP5530, DUKHENGI2ADWRWAP5150, DUKHPROGEN00MTAP2750 FF, DUKHENGI1ADWRWAP4350, DUKHENGI1BDWRWAP4750, DUKHENGI03DWRWAP5910 |
| DUKHPROGEN00PRDV3760 | Proc & Del Sprinklers | 2013-08-19 → 2013-08-31 A (+12d) | 2013-10-17 → 2013-10-31 A (+14d) | 60d → 62d | 0% → 100% | 164d → none | DUKHPROGEN00MTAP2760, DUKHENGI2ADWIRAP5110, DUKHENGI03DWIRAP5870, DUKHENGI2BDWIRAP5490, DUKHENGI1ADWIRAP4310, DUKHENGI1BDWIRAP4710 → DUKHPROGEN00MTAP2760 FF, DUKHENGI2ADWIRAP5110, DUKHENGI03DWIRAP5870, DUKHENGI2BDWIRAP5490, DUKHENGI1ADWIRAP4310, DUKHENGI1BDWIRAP4710 |
| DUKHPROGEN00PRDV3790 | Proc & Del Plantation(Grass,Trees) | 2013-09-01 → 2013-08-31 A (-1d) | 2013-11-29 → 2013-10-31 A (-29d) | 90d → 62d | 0% → 100% | 30d → none | DUKHPROGEN00MTAP2790, DUKHENGI1BDWSLAP4720, DUKHENGI2BDWSLAP5500, DUKHENGI03DWSLAP5880, DUKHENGI1ADWSLAP4320, DUKHENGI2ADWSLAP5120 → DUKHPROGEN00MTAP2790 FF, DUKHENGI1BDWSLAP4720, DUKHENGI2BDWSLAP5500, DUKHENGI03DWSLAP5880, DUKHENGI1ADWSLAP4320, DUKHENGI2ADWSLAP5120 |
| DUKHPROGEN00PRDV3770 | Proc & Del Kitchen Water Filter | 2013-09-11 → 2013-09-09 A (-2d) | 2013-11-09 → 2013-11-07 (-2d) |  | 0% → 90% | 17d → 19d |  |
| DUKHPROGEN00PRDV3810 | Proc & Del Nozzle Jet | 2013-09-05 → 2013-09-09 A (+4d) | 2013-12-03 → 2013-12-07 (+4d) |  | 0% → 60% | 117d → 113d |  |
| DUKHPROGEN00PRDV3830 | Proc & Del Solenoid Values | 2013-09-23 → 2013-09-22 A (-1d) | 2013-12-21 → 2013-12-20 (-1d) |  | 0% → 46% | 99d → 100d |  |
| DUKHPROGEN00PRDV3780 | Proc & Del Gazebo Structure | 2013-09-08 → 2013-10-04 A (+26d) | 2014-01-05 → 2014-01-31 (+26d) |  | 0% → 24% | 78d → 52d | DUKHENGI1ADWGZAP4380, DUKHENGI2ADWGZAP5170, DUKHPROGEN00MTAP2780, DUKHENGI1BDWGZAP4780, DUKHENGI03DWGZAP5940, DUKHENGI2BDWGZAP5550 → DUKHENGI1ADWGZAP4380, DUKHENGI2ADWGZAP5170, DUKHPROGEN00MTAP2780 FF, DUKHENGI1BDWGZAP4780, DUKHENGI03DWGZAP5940, DUKHENGI2BDWGZAP5550 |
| DUKHPROGEN00PRDV3800 | Proc & Del Steel Gate & Barrier gates | 2013-09-05 → 2013-10-04 A (+29d) | 2013-12-03 → 2014-01-01 (+29d) |  | 0% → 32% | 76d → 47d |  |

| ID | Task | Start | Finish | Complete | Total float | Predecessors |
| --- | --- | --- | --- | --- | --- | --- |
| DUKHPROGEN00PRDV3820 | Proc & Del Pre-cast Boundry Wall | 2013-09-05 → 2013-10-04 A (+29d) | 2013-12-13 → 2014-01-11 (+29d) | 0% → 29% | 49d → 20d |  |
| DUKHPROGEN00PRDV3840 | Proc & Del Gate Values | 2013-10-10 → 2013-10-04 A (-6d) | 2014-01-07 → 2014-01-01 (-6d) | 0% → 32% | 82d → 88d |  |
| DUKHPROGEN00PRDV3850 | Proc & Del Fences | 2013-09-23 → 2013-10-29 A (+36d) | 2013-12-21 → 2014-01-26 (+36d) | 0% → 4% | 151d → 115d |  |
| DUKHPROGEN00PRDV3860 | Proc & Del Remote Control Value | 2013-10-30 → 2013-10-29 A (-1d) | 2014-01-27 → 2014-01-26 (-1d) | 0% → 4% | 62d → 63d |  |
| DUKHPROGEN00PRDV3870 | Proc & Del Irrigation Controller | 2013-11-17 → 2013-11-02 (-15d) | 2014-02-14 → 2014-01-30 (-15d) |  | 44d → 59d | DUKHENGI03DWIRAP5870, DUKHENGI2ADWIRAP5110, DUKHENGI1ADWIRAP4310, DUKHENGI1BDWIRAP4710, DUKHENGI2BDWIRAP5490, DUKHPROGEN00MTAP2870 → DUKHENGI03DWIRAP5870, DUKHENGI2ADWIRAP5110, DUKHENGI1ADWIRAP4310, DUKHENGI1BDWIRAP4710, DUKHENGI2BDWIRAP5490, DUKHPROGEN00MTAP2870 FF |
| K30 | **CONSTRUCTION** |  | 2015-01-19 → 2015-03-21 (+61d) |  |  |  |
| L15 | **PACKAGE-1A** |  | 2015-01-12 → 2015-03-15 (+62d) |  |  |  |
| 05 | **MOCK UP VILLA** | 2013-10-01 → 2013-12-11 (+71d) | 2014-03-09 → 2014-05-08 (+60d) |  |  |  |
| 15 | **FINISHING WORKS** | 2013-10-01 → 2013-12-11 (+71d) | 2014-02-19 → 2014-04-21 (+61d) |  |  |  |
| 10 | **INTERNAL FINISHES** | 2013-10-01 → 2013-12-11 (+71d) | 2014-02-19 → 2014-04-21 (+61d) |  |  |  |
| 10 | **GROUND FLOOR** | 2013-10-01 → 2013-12-11 (+71d) | 2014-02-02 → 2014-03-18 (+44d) |  |  |  |
| DUKHCONP1AMKARGF3000 | Block work | 2013-10-01 → 2013-12-11 (+71d) | 2013-10-07 → 2013-12-17 (+71d) |  | -6d → -65d |  |
| DUKHCONP1AMKARGF3005 | Plastering work | 2013-10-14 → 2013-12-25 (+72d) | 2013-10-23 → 2014-01-01 (+70d) |  | 1d → -58d |  |
| DUKHCONP1AMKARGF3010 | Flooring screed | 2013-10-20 → 2013-12-29 (+70d) | 2013-10-27 → 2014-01-05 (+70d) |  | 10d → -49d |  |
| DUKHCONP1AMKARGF3015 | Wet area waterproofing & Protection Screed | 2013-10-23 → 2014-01-01 (+70d) | 2013-10-28 → 2014-01-06 (+70d) |  | 10d → -49d |  |
| DUKHCONP1AMKARGF3020 | Ceramic Wall Tiling | 2013-10-29 → 2014-01-07 (+70d) | 2013-11-04 → 2014-01-13 (+70d) |  | 10d → -49d |  |
| DUKHCONP1AMKARGF3030 | Paint First coat | 2013-11-16 → 2014-01-11 (+56d) | 2013-11-20 → 2014-01-15 (+56d) |  | 5d → -42d |  |
| DUKHCONP1AMKARGF3025 | Porcelain Tile flooring | 2013-11-05 → 2014-01-14 (+70d) | 2013-11-11 → 2014-01-20 (+70d) |  | 10d → -49d |  |
| DUKHCONP1AMKARGF3040 | Cobble Tile flooring | 2013-11-12 → 2014-01-21 (+70d) | 2013-11-17 → 2014-01-26 (+70d) |  | 22d → -37d |  |
| DUKHCONP1AMKARGF3045 | Fixing of Suspension systems | 2013-11-21 → 2014-01-21 (+61d) | 2013-11-28 → 2014-01-28 (+61d) |  | 10d → -41d |  |
| DUKHCONP1AMKARGF3035 | Slate Tile Flooring & Skirting | 2013-11-18 → 2014-01-27 (+70d) | 2013-11-23 → 2014-02-01 (+70d) |  | 22d → -37d |  |
| DUKHCONP1AMKARGF3050 | Granite - Stair case flooring & Skirting | 2013-12-16 → 2014-01-27 (+42d) | 2013-12-24 → 2014-02-03 (+41d) |  | 7d → -28d |  |
| DUKHCONP1AMKARGF3055 | Aluminum tile false ceiling | 2013-12-16 → 2014-01-29 (+44d) | 2013-12-24 → 2014-02-05 (+43d) |  | -1d → -38d |  |
| DUKHCONP1AMKARGF3060 | Gypsum board false ceiling | 2013-12-07 → 2014-01-29 (+53d) | 2013-12-14 → 2014-02-05 (+53d) |  | 7d → -38d |  |
| DUKHCONP1AMKARGF3065 | Wooden door & PVC Door | 2013-12-25 → 2014-02-06 (+43d) | 2013-12-30 → 2014-02-12 (+44d) |  | 9d → -28d |  |
| DUKHCONP1AMKARGF3070 | Aluminum doors | 2013-12-31 → 2014-02-13 (+44d) | 2014-01-05 → 2014-02-18 (+44d) |  | 9d → -28d |  |
| DUKHCONP1AMKARGF3075 | Carpentry & Joinery Works | 2014-01-06 → 2014-02-19 (+44d) | 2014-01-16 → 2014-03-02 (+45d) |  | 9d → -28d |  |
| DUKHCONP1AMKARGF3080 | Aluminum windows | 2014-01-06 → 2014-02-19 (+44d) | 2014-01-11 → 2014-02-24 (+44d) |  | 25d → -12d |  |
| DUKHCONP1AMKARGF3085 | S.S.Handrails & Balustrade | 2014-01-18 → 2014-03-03 (+44d) | 2014-01-25 → 2014-03-10 (+44d) |  | 14d → -23d |  |
| DUKHCONP1AMKARGF3090 | Installation of Granite Counter Top | 2014-01-18 → 2014-03-03 (+44d) | 2014-01-25 → 2014-03-10 (+44d) |  | 13d → -24d |  |
| DUKHCONP1AMKARGF3095 | Final Painting | 2014-01-26 → 2014-03-11 (+44d) | 2014-02-02 → 2014-03-18 (+44d) |  | 14d → -23d |  |
| 15 | **FIRST FLOORS** | 2013-11-14 → 2014-01-15 (+62d) | 2014-02-19 → 2014-04-21 (+61d) |  |  |  |
| DUKHCONP1AMKARFF3300 | Block work | 2013-11-14 → 2014-01-15 (+62d) | 2013-11-20 → 2014-01-21 (+62d) |  | -24d → -76d |  |
| DUKHCONP1AMKARFF3305 | Plastering work | 2013-11-27 → 2014-01-28 (+62d) | 2013-12-04 → 2014-02-04 (+62d) |  | -16d → -68d |  |
| DUKHCONP1AMKARFF3310 | Flooring screed | 2013-12-01 → 2014-02-01 (+62d) | 2013-12-08 → 2014-02-08 (+62d) |  | -3d → -55d |  |
| DUKHCONP1AMKARFF3315 | Wet area waterproofing & Protection Screed | 2013-12-04 → 2014-02-04 (+62d) | 2013-12-09 → 2014-02-09 (+62d) |  | -3d → -55d |  |
| DUKHCONP1AMKARFF3320 | Ceramic Wall Tiling | 2013-12-10 → 2014-02-10 (+62d) | 2013-12-16 → 2014-02-17 (+63d) |  | -3d → -55d |  |
| DUKHCONP1AMKARFF3330 | Paint First coat | 2013-12-14 → 2014-02-15 (+63d) | 2013-12-19 → 2014-02-19 (+62d) |  | 0d → -52d |  |
| DUKHCONP1AMKARFF3325 | Porcelain Tile flooring | 2013-12-17 → 2014-02-18 (+63d) | 2013-12-24 → 2014-02-24 (+62d) |  | -3d → -55d |  |
| DUKHCONP1AMKARFF3335 | Slate Tile Flooring & Skirting | 2013-12-25 → 2014-02-25 (+62d) | 2013-12-30 → 2014-03-02 (+62d) |  | 15d → -37d |  |
| DUKHCONP1AMKARFF3345 | Fixing of Suspension systems | 2013-12-25 → 2014-02-25 (+62d) | 2014-01-01 → 2014-03-04 (+62d) |  | -2d → -54d |  |
| DUKHCONP1AMKARFF3350 | Granite - Stair case flooring & Skirting | 2013-12-25 → 2014-02-25 (+62d) | 2014-01-01 → 2014-03-04 (+62d) |  | 5d → -47d |  |
| DUKHCONP1AMKARFF3360 | Gypsum board false ceiling | 2014-01-02 → 2014-03-05 (+62d) | 2014-01-09 → 2014-03-12 (+62d) |  | -2d → -54d |  |
| DUKHCONP1AMKARFF3365 | Wooden door | 2014-01-11 → 2014-03-13 (+61d) | 2014-01-15 → 2014-03-18 (+62d) |  | -2d → -54d |  |
| DUKHCONP1AMKARFF3370 | Aluminum doors | 2014-01-16 → 2014-03-19 (+62d) | 2014-01-21 → 2014-03-24 (+62d) |  | -2d → -54d |  |
| DUKHCONP1AMKARFF3375 | Carpentry & Joinery Works | 2014-01-22 → 2014-03-25 (+62d) | 2014-02-02 → 2014-04-05 (+62d) |  | -2d → -54d |  |
| DUKHCONP1AMKARFF3380 | Aluminum windows | 2014-01-22 → 2014-03-25 (+62d) | 2014-01-27 → 2014-03-30 (+62d) |  | 9d → -43d |  |
| DUKHCONP1AMKARFF3385 | S.S.Handrails & Balustrade | 2014-02-03 → 2014-04-06 (+62d) | 2014-02-10 → 2014-04-13 (+62d) |  | 0d → -52d |  |
| DUKHCONP1AMKARFF3390 | Installation of Granite Counter Top | 2014-02-03 → 2014-04-06 (+62d) | 2014-02-10 → 2014-04-13 (+62d) |  | 0d → -52d |  |
| DUKHCONP1AMKARFF3395 | Final Painting | 2014-02-12 → 2014-04-14 (+61d) | 2014-02-19 → 2014-04-21 (+61d) |  | 0d → -52d |  |
| 20 | **ROOF** | 2013-10-21 → 2013-12-30 (+70d) | 2013-11-21 → 2014-01-30 (+70d) |  |  |  |
| DUKHCONP1AMKARRF3600 | Block work | 2013-10-21 → 2013-12-30 (+70d) | 2013-10-27 → 2014-01-05 (+70d) |  | 12d → -47d |  |
| DUKHCONP1AMKARRF3605 | Plastering work | 2013-10-24 → 2014-01-02 (+70d) | 2013-10-30 → 2014-01-08 (+70d) |  | 12d → -47d |  |
| DUKHCONP1AMKARRF3610 | Flooring screed | 2013-10-31 → 2014-01-09 (+70d) | 2013-11-06 → 2014-01-15 (+70d) |  | 68d → 9d |  |
| DUKHCONP1AMKARRF3695 | Painting -Storage area | 2013-11-09 → 2014-01-18 (+70d) | 2013-11-14 → 2014-01-23 (+70d) |  | 67d → 8d |  |
| DUKHCONP1AMKARRF3620 | Epoxy Painting -Storage area | 2013-11-16 → 2014-01-25 (+70d) | 2013-11-21 → 2014-01-30 (+70d) |  | 67d → 8d |  |
| 15 | **EXTERNAL FINISHES** | 2013-12-02 → 2014-02-02 (+62d) | 2014-01-13 → 2014-03-16 (+62d) |  |  |  |
| 10 | **ROOF** | 2013-12-02 → 2014-02-02 (+62d) | 2014-01-04 → 2014-03-06 (+61d) |  |  |  |
| DUKHCONP1AMKARRF3630 | Leveling Screed for Waterproofing | 2013-12-02 → 2014-02-02 (+62d) | 2013-12-03 → 2014-02-03 (+62d) |  | -15d → -67d |  |
| DUKHCONP1AMKARRF3635 | Laying of Waterproofing Membrane | 2013-12-04 → 2014-02-04 (+62d) | 2013-12-08 → 2014-02-08 (+62d) |  | -15d → -67d |  |
| DUKHCONP1AMKARRF3640 | Installation of Insulation & Protection | 2013-12-09 → 2014-02-09 (+62d) | 2013-12-12 → 2014-02-13 (+63d) |  | -15d → -67d |  |
| DUKHCONP1AMKARRF3645 | Lime Stone Chips & Paving slab Installation | 2013-12-14 → 2014-02-15 (+63d) | 2013-12-15 → 2014-02-16 (+63d) |  | -15d → -67d |  |
| DUKHCONP1AMKARRF3650 | Install. of Gal. Frame & Aluminum Slat Screen | 2013-12-16 → 2014-02-17 (+63d) | 2013-12-22 → 2014-02-22 (+62d) |  | 31d → -21d |  |
| DUKHCONP1AMKARRF3655 | Installation of Pumps Protection cabinets | 2013-12-23 → 2014-02-23 (+62d) | 2013-12-28 → 2014-02-27 (+61d) |  | 31d → -21d |  |
| DUKHCONP1AMKARRF3660 | Installation of Access Ladder | 2013-12-29 → 2014-03-01 (+62d) | 2014-01-04 → 2014-03-06 (+61d) |  | 49d → -3d |  |
| 15 | **ELEVATION** | 2013-12-16 → 2014-02-17 (+63d) | 2014-01-13 → 2014-03-16 (+62d) |  |  |  |
| DUKHCONP1AMKAREL3665 | External Plastering | 2013-12-16 → 2014-02-17 (+63d) | 2013-12-28 → 2014-02-27 (+61d) |  | -8d → -60d |  |
| DUKHCONP1AMKAREL3670 | External stone cladding works | 2013-12-29 → 2014-03-01 (+62d) | 2014-01-05 → 2014-03-08 (+62d) |  | -8d → -60d |  |
| DUKHCONP1AMKAREL3680 | External Painting | 2014-01-06 → 2014-03-09 (+62d) | 2014-01-13 → 2014-03-16 (+62d) |  | 36d → -16d |  |
| 20 | **MEP WORKS** | 2013-10-08 → 2013-12-19 (+72d) | 2014-02-06 → 2014-04-09 (+62d) |  |  |  |

| ID | Task | Start | Finish | Total float |
| --- | --- | --- | --- | --- |
| 10 | **ELECTRICAL WORKS** | 2013-10-08 → 2013-12-19 (+72d) | 2014-02-04 → 2014-04-07 (+62d) |  |
| 10 | **GROUND FLOOR** | 2013-10-08 → 2013-12-19 (+72d) | 2014-01-05 → 2014-02-18 (+44d) |  |
| DUKHCONP1AMKELGF4000 | Fixing of wall conduits & switch socket boxes | 2013-10-08 → 2013-12-19 (+72d) | 2013-10-13 → 2013-12-24 (+72d) | 1d → -58d |
| DUKHCONP1AMKELGF4005 | Cable tray & trunking installation | 2013-10-24 → 2014-01-02 (+70d) | 2013-10-29 → 2014-01-07 (+70d) | 19d → -40d |
| DUKHCONP1AMKELGF4010 | Installation of wiring & Main Cabling | 2013-10-30 → 2014-01-08 (+70d) | 2013-11-04 → 2014-01-13 (+70d) | 21d → -38d |
| DUKHCONP1AMKELGF4015 | Install. of CAMS & Fire Fighting Accessories | 2013-12-25 → 2014-02-06 (+43d) | 2014-01-01 → 2014-02-15 (+45d) | 9d → -28d |
| DUKHCONP1AMKELGF4020 | Installation of DBS,MCCB Accessories. | 2013-12-25 → 2014-02-06 (+43d) | 2013-12-30 → 2014-02-12 (+44d) | 6d → -31d |
| DUKHCONP1AMKELGF4025 | Installation of Lighting fixtures & Accessories | 2013-12-31 → 2014-02-13 (+44d) | 2014-01-05 → 2014-02-18 (+44d) | 18d → -19d |
| DUKHCONP1AMKELGF4030 | Installation of Telephone System | 2013-12-31 → 2014-02-13 (+44d) | 2014-01-05 → 2014-02-18 (+44d) | 11d → -26d |
| 15 | **FIRST FLOORS** | 2013-11-21 → 2014-01-22 (+62d) | 2014-01-21 → 2014-03-24 (+62d) |  |
| DUKHCONP1AMKELFF4035 | Fixing of wall conduits & switch socket boxes | 2013-11-21 → 2014-01-22 (+62d) | 2013-11-26 → 2014-01-27 (+62d) | -16d → -68d |
| DUKHCONP1AMKELFF4040 | Cable tray & trunking installation | 2013-12-05 → 2014-02-05 (+62d) | 2013-12-10 → 2014-02-10 (+62d) | 2d → -50d |
| DUKHCONP1AMKELFF4045 | Installation of wiring & Main Cabling | 2013-12-11 → 2014-02-12 (+63d) | 2013-12-16 → 2014-02-17 (+63d) | 4d → -48d |
| DUKHCONP1AMKELFF4055 | Install. of CAMS & Fire Fighting Accessories | 2014-01-11 → 2014-03-13 (+61d) | 2014-01-18 → 2014-03-20 (+61d) | 2d → -50d |
| DUKHCONP1AMKELFF4060 | Installation of DBS,MCCB Accessories. | 2014-01-11 → 2014-03-13 (+61d) | 2014-01-15 → 2014-03-18 (+62d) | 7d → -45d |
| DUKHCONP1AMKELFF4050 | Installation of Telephone System | 2014-01-16 → 2014-03-19 (+62d) | 2014-01-21 → 2014-03-24 (+62d) | 7d → -45d |
| DUKHCONP1AMKELFF4065 | Installation of Lighting fixtures & Accessories | 2014-01-16 → 2014-03-19 (+62d) | 2014-01-21 → 2014-03-24 (+62d) | 9d → -43d |
| 20 | **ROOF** | 2014-01-22 → 2014-03-25 (+62d) | 2014-02-04 → 2014-04-07 (+62d) |  |
| DUKHCONP1AMKELRF4070 | Installation of Isolator | 2014-01-22 → 2014-03-25 (+62d) | 2014-01-27 → 2014-03-30 (+62d) | 14d → -38d |
| DUKHCONP1AMKELRF4075 | Installation of TV Dish Antenna | 2014-01-28 → 2014-03-31 (+62d) | 2014-02-04 → 2014-04-07 (+62d) | 14d → -38d |
| 15 | **PLUMBING, DRAINAGE & FIRE FIGHTING WORKS** | 2013-10-08 → 2013-12-19 (+72d) | 2014-02-06 → 2014-04-09 (+62d) |  |
| 10 | **GROUND FLOOR** | 2013-10-08 → 2013-12-19 (+72d) | 2014-01-13 → 2014-02-26 (+44d) |  |
| DUKHCONP1AMKPLGF4305 | Installation of Plumbing pipes & testing | 2013-10-08 → 2013-12-19 (+72d) | 2013-10-13 → 2013-12-24 (+72d) | 3d → -56d |
| DUKHCONP1AMKPLGF4310 | Installation of Drainage pipes &testing | 2013-10-08 → 2013-12-19 (+72d) | 2013-10-13 → 2013-12-24 (+72d) | 21d → -38d |
| DUKHCONP1AMKPLGF4315 | Sanitary Fittings & Accessories | 2013-12-31 → 2014-02-13 (+44d) | 2014-01-07 → 2014-02-20 (+44d) | 10d → -27d |
| DUKHCONP1AMKPLGF4320 | Installation of Water Heater | 2014-01-08 → 2014-02-22 (+45d) | 2014-01-13 → 2014-02-26 (+44d) | 41d → 4d |
| 15 | **FIRST FLOORS** | 2013-11-21 → 2014-01-22 (+62d) | 2014-01-29 → 2014-04-01 (+62d) |  |
| DUKHCONP1AMKPLFF4325 | Installation of Plumbing pipes & testing | 2013-11-21 → 2014-01-22 (+62d) | 2013-11-26 → 2014-01-27 (+62d) | -15d → -67d |
| DUKHCONP1AMKPLFF4330 | Installation of Drainage pipes & testing | 2013-11-21 → 2014-01-22 (+62d) | 2013-11-26 → 2014-01-27 (+62d) | 6d → -46d |
| DUKHCONP1AMKPLFF4335 | Sanitary Fittings & Accessories | 2014-01-16 → 2014-03-19 (+62d) | 2014-01-23 → 2014-03-26 (+62d) | 3d → -49d |
| DUKHCONP1AMKPLFF4340 | Installation of Water Heater | 2014-01-25 → 2014-03-27 (+61d) | 2014-01-29 → 2014-04-01 (+62d) | 3d → -49d |
| 20 | **ROOF** | 2013-12-16 → 2014-02-17 (+63d) | 2014-02-06 → 2014-04-09 (+62d) |  |
| DUKHCONP1AMKPLRF4345 | Installation of Plumbing pipes & fittings | 2013-12-16 → 2014-02-17 (+63d) | 2013-12-22 → 2014-02-22 (+62d) | -15d → -67d |
| DUKHCONP1AMKPLRF4350 | Installation of Rain water Pipes | 2013-12-23 → 2014-02-23 (+62d) | 2013-12-28 → 2014-02-27 (+61d) | 31d → -21d |
| DUKHCONP1AMKPLRF4355 | Roof Water Tank Installation & Connections | 2014-01-30 → 2014-04-02 (+62d) | 2014-02-06 → 2014-04-09 (+62d) | 3d → -49d |
| 20 | **AC WORKS** | 2013-11-16 → 2014-01-02 (+47d) | 2014-01-27 → 2014-03-30 (+62d) |  |
| 10 | **GROUND FLOOR** | 2013-11-16 → 2014-01-02 (+47d) | 2014-01-05 → 2014-02-18 (+44d) |  |
| DUKHCONP1AMKACGF4600 | Installation AC Pipes | 2013-11-16 → 2014-01-02 (+47d) | 2013-11-20 → 2014-01-07 (+48d) | 20d → -20d |
| DUKHCONP1AMKACGF4605 | Fixing of Ventilation Equipments | 2013-12-25 → 2014-02-06 (+43d) | 2013-12-30 → 2014-02-12 (+44d) | 14d → -23d |
| DUKHCONP1AMKACGF4610 | Fixing of Split AC | 2013-12-31 → 2014-02-13 (+44d) | 2014-01-05 → 2014-02-18 (+44d) | 27d → -10d |
| 15 | **FIRST FLOORS** | 2013-12-05 → 2014-02-05 (+62d) | 2014-01-21 → 2014-03-24 (+62d) |  |
| DUKHCONP1AMKACFF4615 | Installation AC Pipes | 2013-12-05 → 2014-02-05 (+62d) | 2013-12-10 → 2014-02-10 (+62d) | 16d → -36d |
| DUKHCONP1AMKACFF4620 | Fixing of Ventilation Equipments | 2014-01-11 → 2014-03-13 (+61d) | 2014-01-15 → 2014-03-18 (+62d) | 5d → -47d |
| DUKHCONP1AMKACFF4625 | Fixing of Split AC | 2014-01-16 → 2014-03-19 (+62d) | 2014-01-21 → 2014-03-24 (+62d) | 18d → -34d |
| 20 | **ROOF** | 2013-12-16 → 2014-02-17 (+63d) | 2014-01-27 → 2014-03-30 (+62d) |  |
| DUKHCONP1AMKACRF4630 | Installation of Refrigerant Pipes | 2013-12-16 → 2014-02-17 (+63d) | 2013-12-22 → 2014-02-22 (+62d) | 45d → -7d |
| DUKHCONP1AMKACRF4635 | Installation of Condensing Unit | 2014-01-22 → 2014-03-25 (+62d) | 2014-01-27 → 2014-03-30 (+62d) | 19d → -33d |
| 25 | **EXTERNAL WORKS** | 2013-12-23 → 2014-02-23 (+62d) | 2014-03-09 → 2014-05-08 (+60d) |  |
| 10 | **MISCELLANEOUS** | 2013-12-23 → 2014-02-23 (+62d) | 2014-01-19 → 2014-03-22 (+62d) |  |
| DUKHCONP1AMKMSEX5000 | Construction of Manholes | 2013-12-23 → 2014-02-23 (+62d) | 2013-12-30 → 2014-03-02 (+62d) | -15d → -67d |
| DUKHCONP1AMKMSEX5005 | Construction of Soak pit, Chambers | 2013-12-31 → 2014-03-03 (+62d) | 2014-01-07 → 2014-03-10 (+62d) | -15d → -67d |
| DUKHCONP1AMKMSEX5020 | Construction Entrance Ramp | 2014-01-06 → 2014-03-09 (+62d) | 2014-01-13 → 2014-03-16 (+62d) | -8d → -60d |
| DUKHCONP1AMKMSEX5015 | Construction of grease Trap | 2014-01-08 → 2014-03-11 (+62d) | 2014-01-15 → 2014-03-18 (+62d) | -15d → -67d |
| DUKHCONP1AMKMSEX5025 | SS.Handrails and Balustrades | 2014-01-14 → 2014-03-17 (+62d) | 2014-01-19 → 2014-03-22 (+62d) | -6d → -58d |
| 15 | **WATER TANK ENCLOSURE** | 2014-01-16 → 2014-03-19 (+62d) | 2014-03-09 → 2014-05-08 (+60d) |  |
| DUKHCONP1AMKWEEX5030 | Excavation | 2014-01-16 → 2014-03-19 (+62d) | 2014-01-20 → 2014-03-23 (+62d) | -15d → -67d |
| DUKHCONP1AMKWEEX5035 | Construction of Raft | 2014-01-21 → 2014-03-24 (+62d) | 2014-01-28 → 2014-03-31 (+62d) | -15d → -67d |
| DUKHCONP1AMKWEEX5040 | Block works & Plastering | 2014-01-29 → 2014-04-01 (+62d) | 2014-02-05 → 2014-04-08 (+62d) | -15d → -67d |
| DUKHCONP1AMKWEEX5045 | Flooring & Painting | 2014-02-06 → 2014-04-09 (+62d) | 2014-02-15 → 2014-04-16 (+60d) | -15d → -67d |
| DUKHCONP1AMKWEEX5050 | Installation of Steel Gate | 2014-02-16 → 2014-04-17 (+60d) | 2014-02-20 → 2014-04-22 (+61d) | -15d → -67d |
| DUKHCONP1AMKWEEX5060 | Structural steel & SS Shed cover installation | 2014-02-22 → 2014-04-23 (+60d) | 2014-03-01 → 2014-04-30 (+60d) | -15d → -67d |
| DUKHCONP1AMKWEEX5065 | Install. of Water Tank,Chiller,Pump & Meter | 2014-03-02 → 2014-05-01 (+60d) | 2014-03-09 → 2014-05-08 (+60d) | -15d → -67d |
| 20 | **HARD LANDSCAPING** | 2014-01-20 → 2014-03-23 (+62d) | 2014-02-05 → 2014-04-08 (+62d) |  |
| DUKHCONP1AMKHDEX5090 | kerb works | 2014-01-20 → 2014-03-23 (+62d) | 2014-01-25 → 2014-03-27 (+61d) | -6d → -58d |
| DUKHCONP1AMKHDEX5095 | Cobble Stone Works | 2014-01-26 → 2014-03-29 (+62d) | 2014-01-30 → 2014-04-02 (+62d) | -3d → -55d |
| DUKHCONP1AMKHDEX5100 | Interlock works | 2014-02-01 → 2014-04-03 (+61d) | 2014-02-05 → 2014-04-08 (+62d) | -3d → -55d |
| 25 | **SOFT LANDSCAPING** | 2014-02-06 → 2014-04-09 (+62d) | 2014-02-23 → 2014-04-24 (+60d) |  |
| DUKHCONP1AMKSLEX5105 | Laying of Grass/ green area | 2014-02-06 → 2014-04-09 (+62d) | 2014-02-15 → 2014-04-16 (+60d) | -3d → -55d |
| DUKHCONP1AMKSLEX5110 | Laying of Palm tree | 2014-02-16 → 2014-04-17 (+60d) | 2014-02-23 → 2014-04-24 (+60d) | -3d → -55d |
| 10 | **ZONE - 1 (4 Twin Villas)** |  | 2014-05-17 → 2014-07-16 (+60d) |  |

| ID | Task | Start | Finish | Duration | Complete | Total float | Predecessors | Other |
| --- | --- | --- | --- | --- | --- | --- | --- | --- |
| 10 | **STRUCTURAL WORKS** |  | 2013-12-23 → 2014-02-23 (+62d) |  |  |  |  |  |
| 10 | **SUB STRUCTURE** |  | 2013-08-07 → 2013-09-22 (+46d) |  |  |  |  |  |
| 10 | **UPTO GRADE SLAB** |  | 2013-08-07 → 2013-09-22 (+46d) |  |  |  |  |  |
| DUKHCONP1AZ1STUG1020 | Construction of foundations |  | 2013-05-12 A |  | 30% → 100% | -24d → none |  |  |
| DUKHCONP1AZ1STUG1025 | Construction of neck of columns | 2013-04-29 A | 2013-05-27 A |  | 0% → 100% | -24d → none |  |  |
| DUKHCONP1AZ1STUG1030 | Waterproofing Footing & Neck Column | 2013-05-08 A | 2013-06-05 A |  | 0% → 100% | -24d → none |  |  |
| DUKHCONP1AZ1STUG1035 | Backfilling Upto Grade Beam Bottom | 2013-05-22 → 2013-06-01 A (+10d) | 2013-06-19 → 2013-06-29 A (+10d) |  | 0% → 100% | -24d → none |  | resources LABOR- SUBCONTRACTOR [216 h]; BACKFILLING QTY [880 Cum]; BOBCAT [375 h]; PLATE COMPACTOR [375 h]; TRUCK [75 h]; EQUIP OPERATORS [825 h] → LABOR- SUBCONTRACTOR [269.74 h]; BACKFILLING QTY [880 Cum]; BOBCAT [375 h]; PLATE COMPACTOR [375 h]; TRUCK [75 h]; EQUIP OPERATORS [1030.26 h] |
| DUKHCONP1AZ1STUG1040 | Construction of Grade Beams | 2013-06-08 → 2013-06-17 A (+9d) | 2013-07-07 → 2013-07-16 A (+9d) |  | 0% → 100% | -24d → none |  |  |
| DUKHCONP1AZ1STUG1045 | Construction of slab on grade | 2013-07-10 → 2013-08-31 A (+52d) | 2013-08-07 → 2013-09-22 A (+46d) | 25d → 20d | 0% → 100% | -24d → none |  | resources SCREED QTY [1062 Sqm]; CONCRETE QTY [200 Cum]; WELDED WIRE MESH [2008 Sqm]; BLINDING MASON SK [923 h]; SCREED MASON SK [850 h]; STEEL FIXERS SK [536 h]; CONCRETE MASON SK [400 h]; LABOR- SUBCONTRACTOR [1713 h]; BLINDING QTY [1153 Sqm] → SCREED QTY [1062 Sqm]; CONCRETE QTY [200 Cum]; WELDED WIRE MESH [2008 Sqm]; CONCRETE MASON SK [923 h]; SCREED MASON SK [850 h]; STEEL FIXERS SK [536 h]; CONCRETE MASON SK [400 h]; LABOR- SUBCONTRACTOR [1713 h]; BLINDING QTY [1153 Sqm] |
| 15 | **SUPERSTRUCTURE** | 2013-07-27 → 2013-09-16 (+51d) | 2013-12-23 → 2014-02-23 (+62d) |  |  |  |  |  |
| 10 | **GROUND FLOOR** | 2013-07-27 → 2013-09-16 (+51d) | 2013-09-23 → 2013-12-03 (+71d) |  |  |  |  |  |
| DUKHCONP1AZ1STGF2000 | Column-Rebar & Formwork | 2013-07-27 → 2013-09-16 A (+51d) | 2013-08-27 → 2013-10-14 A (+48d) |  | 0% → 100% | -24d → none |  |  |
| DUKHCONP1AZ1STGF2005 | Column-Concrete | 2013-08-04 → 2013-09-24 A (+51d) | 2013-09-03 → 2013-10-23 A (+50d) |  | 0% → 100% | -24d → none |  |  |
| DUKHCONP1AZ1STGF2010 | Beam, Stairs ,Slab-Rebar & Formwork | 2013-08-22 → 2013-11-02 (+72d) | 2013-09-19 → 2013-11-30 (+72d) |  |  | -24d → -76d |  | resources STEEL FIXERS SK [4091 h]; CARPENTERS SK [5690 h]; LABOR- SUBCONTRACTOR [7335.75 h]; REINFORCEMENT BARS QTY [51136 kg]; FORMWORK QTY [2845 Sqm] → STEEL FIXERS SK [4091 h]; CARPENTERS SK [3690 h]; LABOR- SUBCONTRACTOR [7335.75 h]; REINFORCEMENT BARS QTY [51136 kg]; FORMWORK QTY [2845 Sqm]; MECHANICALS SK [2000 h] |
| DUKHCONP1AZ1STGF2015 | Beam, Stairs ,Slab-Concrete | 2013-09-07 → 2013-11-17 (+71d) | 2013-09-23 → 2013-12-03 (+71d) |  |  | -24d → -76d | DUKHCONP1AZ1STGF2010 SS+10d, DUKHCONP1AZ1STGF2010 FF+3d → DUKHCONP1AZ1STGF2010 FF+3d |  |
| 15 | **FIRST FLOORS** | 2013-09-09 → 2013-11-11 (+63d) | 2013-11-06 → 2014-01-07 (+62d) |  |  |  |  |  |
| DUKHCONP1AZ1STFF2020 | Column-Rebar & Formwork | 2013-09-09 → 2013-11-11 (+63d) | 2013-10-07 → 2013-12-09 (+63d) |  |  | -24d → -76d | DUKHCONP1AZ1STGF2015 SS+2d, DUKHCONP1AZ1STGF2015 FF+5d, DUKHENGP1ADWSTAP4040 → DUKHCONP1AZ1STGF2015 FF+5d, DUKHENGP1ADWSTAP4040 |  |
| DUKHCONP1AZ1STFF2025 | Column-Concrete | 2013-09-18 → 2013-11-20 (+63d) | 2013-10-15 → 2013-12-17 (+63d) |  |  | -24d → -76d |  |  |
| DUKHCONP1AZ1STFF2030 | Beam, Stairs ,Slab-Rebar & Formwork | 2013-10-03 → 2013-12-05 (+63d) | 2013-11-03 → 2014-01-04 (+62d) |  |  | -24d → -76d |  |  |
| DUKHCONP1AZ1STFF2035 | Beam, Stairs ,Slab-Concrete | 2013-10-21 → 2013-12-22 (+62d) | 2013-11-06 → 2014-01-07 (+62d) |  |  | -24d → -76d |  |  |
| 20 | **ROOF** | 2013-10-24 → 2013-12-25 (+62d) | 2013-12-23 → 2014-02-23 (+62d) |  |  |  |  |  |
| DUKHCONP1AZ1STRF2040 | Column-Rebar & Formwork | 2013-10-24 → 2013-12-25 (+62d) | 2013-11-13 → 2014-01-14 (+62d) |  |  | -15d → -67d |  |  |
| DUKHCONP1AZ1STRF2045 | Column-Concrete | 2013-10-29 → 2013-12-30 (+62d) | 2013-11-17 → 2014-01-18 (+62d) |  |  | -15d → -67d |  |  |
| DUKHCONP1AZ1STRF2050 | Slab-Rebar & Formwork - Head Room | 2013-11-02 → 2014-01-02 (+61d) | 2013-11-24 → 2014-01-25 (+62d) |  |  | -15d → -67d |  |  |
| DUKHCONP1AZ1STRF2055 | Slab-Concrete-Head room | 2013-11-16 → 2014-01-16 (+61d) | 2013-11-26 → 2014-01-27 (+62d) |  |  | -15d → -67d |  |  |
| DUKHCONP1AZ1STRF2060 | Construction of Parapets | 2013-11-18 → 2014-01-19 (+62d) | 2013-12-16 → 2014-02-17 (+63d) |  |  | -15d → -67d |  |  |
| DUKHCONP1AZ1STRF2065 | Construction of up stands/Plinth | 2013-11-24 → 2014-01-25 (+62d) | 2013-12-23 → 2014-02-23 (+62d) |  |  | -15d → -67d |  |  |
| 15 | **FINISHING WORKS** | 2013-10-08 → 2013-12-19 (+72d) | 2014-04-17 → 2014-06-17 (+61d) |  |  |  |  |  |
| 10 | **INTERNAL FINISHES** | 2013-10-08 → 2013-12-19 (+72d) | 2014-04-17 → 2014-06-17 (+61d) |  |  |  |  |  |
| 10 | **GROUND FLOOR** | 2013-10-08 → 2013-12-19 (+72d) | 2014-03-24 → 2014-06-01 (+69d) |  |  |  |  |  |
| DUKHCONP1AZ1ARGF3000 | Block work | 2013-10-08 → 2013-12-19 (+72d) | 2013-11-07 → 2014-01-16 (+70d) |  |  | -6d → -65d |  |  |
| DUKHCONP1AZ1ARGF3005 | Plastering work | 2013-11-02 → 2014-01-11 (+70d) | 2013-11-30 → 2014-02-08 (+70d) |  |  | -6d → -65d |  |  |
| DUKHCONP1AZ1ARGF3010 | Flooring screed | 2013-11-10 → 2014-01-19 (+70d) | 2013-12-03 → 2014-02-12 (+71d) |  |  | 2d → -57d |  |  |
| DUKHCONP1AZ1ARGF3030 | Paint First coat | 2013-11-21 → 2014-01-27 (+67d) | 2013-12-21 → 2014-02-25 (+66d) |  |  | 5d → -51d |  |  |
| DUKHCONP1AZ1ARGF3015 | Wet area waterproofing & Protection Screed | 2013-11-19 → 2014-01-28 (+70d) | 2013-12-05 → 2014-02-15 (+72d) |  |  | -6d → -65d |  |  |
| DUKHCONP1AZ1ARGF3020 | Ceramic Wall Tiling | 2013-11-25 → 2014-02-03 (+70d) | 2013-12-24 → 2014-03-04 (+70d) |  |  | -6d → -65d |  |  |
| DUKHCONP1AZ1ARGF3025 | Porcelain Tile flooring | 2013-12-01 → 2014-02-09 (+70d) | 2013-12-30 → 2014-03-10 (+70d) |  |  | -6d → -65d |  |  |
| DUKHCONP1AZ1ARGF3045 | Fixing of Suspension systems | 2013-12-19 → 2014-02-27 (+70d) | 2014-01-11 → 2014-03-22 (+70d) |  |  | -6d → -65d |  |  |
| DUKHCONP1AZ1ARGF3035 | Slate Tile Flooring & Skirting | 2013-12-22 → 2014-03-02 (+70d) | 2014-01-07 → 2014-03-18 (+70d) |  |  | -1d → -60d |  |  |
| DUKHCONP1AZ1ARGF3055 | Aluminum tile false ceiling | 2013-12-28 → 2014-03-08 (+70d) | 2014-01-25 → 2014-04-05 (+70d) |  |  | -3d → -62d |  |  |
| DUKHCONP1AZ1ARGF3040 | Cobble Tile flooring | 2013-12-29 → 2014-03-09 (+70d) | 2014-01-14 → 2014-03-25 (+70d) |  |  | -3d → -62d |  |  |
| DUKHCONP1AZ1ARGF3060 | Gypsum board false ceiling | 2013-12-31 → 2014-03-11 (+70d) | 2014-01-28 → 2014-04-08 (+70d) |  |  | -6d → -65d |  |  |
| DUKHCONP1AZ1ARGF3050 | Granite - Stair case flooring & Skirting | 2014-01-06 → 2014-03-17 (+70d) | 2014-01-28 → 2014-04-08 (+70d) |  |  | -3d → -62d |  |  |
| DUKHCONP1AZ1ARGF3065 | Wooden door & PVC Door | 2014-01-20 → 2014-03-31 (+70d) | 2014-02-05 → 2014-04-16 (+70d) |  |  | -3d → -62d |  |  |
| DUKHCONP1AZ1ARGF3070 | Aluminum doors | 2014-01-26 → 2014-04-06 (+70d) | 2014-02-12 → 2014-04-22 (+69d) |  |  | -3d → -62d |  |  |
| DUKHCONP1AZ1ARGF3075 | Carpentry & Joinery Works | 2014-02-01 → 2014-04-12 (+70d) | 2014-02-24 → 2014-05-04 (+69d) |  |  | -3d → -62d |  |  |
| DUKHCONP1AZ1ARGF3080 | Aluminum windows | 2014-02-02 → 2014-04-13 (+70d) | 2014-02-25 → 2014-05-05 (+69d) |  |  | 7d → -52d |  |  |
| DUKHCONP1AZ1ARGF3085 | S.S.Balustrade | 2014-02-09 → 2014-04-20 (+70d) | 2014-03-04 → 2014-05-12 (+69d) |  |  | 2d → -57d |  |  |
| DUKHCONP1AZ1ARGF3090 | Installation of Granite Counter Top | 2014-02-15 → 2014-04-24 (+68d) | 2014-03-03 → 2014-05-11 (+69d) |  |  | -3d → -62d |  |  |
| DUKHCONP1AZ1ARGF3095 | Final Painting | 2014-02-24 → 2014-05-04 (+69d) | 2014-03-24 → 2014-06-01 (+69d) |  |  | -3d → -62d |  |  |
| 15 | **FIRST FLOORS** | 2013-11-21 → 2014-01-22 (+62d) | 2014-04-17 → 2014-06-17 (+61d) |  |  |  |  |  |
| DUKHCONP1AZ1ARFF3300 | Block work | 2013-11-21 → 2014-01-22 (+62d) | 2013-12-21 → 2014-02-20 (+61d) |  |  | -24d → -76d |  |  |
| DUKHCONP1AZ1ARFF3305 | Plastering work | 2013-12-15 → 2014-02-16 (+63d) | 2014-01-13 → 2014-03-16 (+62d) |  |  | -24d → -76d |  |  |
| DUKHCONP1AZ1ARFF3310 | Flooring screed | 2013-12-24 → 2014-02-24 (+62d) | 2014-01-16 → 2014-03-19 (+62d) |  |  | -12d → -64d |  |  |
| DUKHCONP1AZ1ARFF3330 | Paint First coat | 2014-01-01 → 2014-03-04 (+62d) | 2014-01-29 → 2014-04-01 (+62d) |  |  | -10d → -62d |  |  |
| DUKHCONP1AZ1ARFF3315 | Wet area waterproofing | 2014-01-05 → 2014-03-08 (+62d) | 2014-01-21 → 2014-03-24 (+62d) |  |  | -24d → -76d |  |  |
| DUKHCONP1AZ1ARFF3320 | Ceramic Wall Tiling | 2014-01-12 → 2014-03-15 (+62d) | 2014-02-09 → 2014-04-12 (+62d) |  |  | -24d → -76d |  |  |
| DUKHCONP1AZ1ARFF3325 | Porcelain Tile flooring | 2014-01-19 → 2014-03-22 (+62d) | 2014-02-17 → 2014-04-19 (+61d) |  |  | -24d → -76d |  |  |
| DUKHCONP1AZ1ARFF3345 | Fixing of Suspension systems | 2014-02-01 → 2014-04-03 (+61d) | 2014-02-24 → 2014-04-26 (+61d) |  |  | -24d → -76d |  |  |
| DUKHCONP1AZ1ARFF3335 | Slate Tile Flooring & Skirting | 2014-02-05 → 2014-04-08 (+62d) | 2014-02-23 → 2014-04-24 (+60d) |  |  | -16d → -68d |  |  |
| DUKHCONP1AZ1ARFF3360 | Gypsum board false ceiling | 2014-02-08 → 2014-04-10 (+61d) | 2014-03-09 → 2014-05-08 (+60d) |  |  | -24d → -76d |  |  |
| DUKHCONP1AZ1ARFF3350 | Granite - Stair case flooring & Skirting | 2014-02-09 → 2014-04-12 (+62d) | 2014-03-04 → 2014-05-04 (+61d) |  |  | -22d → -74d |  |  |
| DUKHCONP1AZ1ARFF3365 | Wooden door | 2014-02-24 → 2014-04-26 (+61d) | 2014-03-12 → 2014-05-12 (+61d) |  |  | -24d → -76d |  |  |
| DUKHCONP1AZ1ARFF3370 | Aluminum Door | 2014-02-24 → 2014-04-26 (+61d) | 2014-03-18 → 2014-05-18 (+61d) |  |  | -24d → -76d |  |  |
| DUKHCONP1AZ1ARFF3375 | Carpentry & Joinery Works | 2014-03-02 → 2014-05-01 (+60d) | 2014-03-30 → 2014-05-29 (+60d) |  |  | -24d → -76d |  |  |
| DUKHCONP1AZ1ARFF3380 | Aluminum windows | 2014-03-03 → 2014-05-03 (+61d) | 2014-03-25 → 2014-05-25 (+61d) |  |  | -19d → -71d |  |  |
| DUKHCONP1AZ1ARFF3385 | Handrail & S.S.Balustrade | 2014-03-15 → 2014-05-14 (+60d) | 2014-04-06 → 2014-06-05 (+60d) |  |  | -24d → -76d |  |  |
| DUKHCONP1AZ1ARFF3390 | Installation of Granite Counter Top | 2014-03-15 → 2014-05-14 (+60d) | 2014-04-06 → 2014-06-05 (+60d) |  |  | -23d → -75d |  |  |
| DUKHCONP1AZ1ARFF3395 | Final Painting | 2014-03-20 → 2014-05-20 (+61d) | 2014-04-17 → 2014-06-17 (+61d) |  |  | -24d → -76d |  |  |
| 20 | **ROOF** | 2013-12-10 → 2014-02-10 (+62d) | 2014-02-15 → 2014-04-16 (+60d) |  |  |  |  |  |

| ID | Task | Start | Finish | Complete | Total float |
| --- | --- | --- | --- | --- | --- |
| DUKHCONP1AZ1ARRF3600 | Block work | 2013-12-10 → 2014-02-10 (+62d) | 2014-01-02 → 2014-03-05 (+62d) |  | -3d → -55d |
| DUKHCONP1AZ1ARRF3605 | Plastering work | 2013-12-19 → 2014-02-19 (+62d) | 2014-01-11 → 2014-03-13 (+61d) |  | -3d → -55d |
| DUKHCONP1AZ1ARRF3610 | Flooring screed | 2014-01-02 → 2014-03-05 (+62d) | 2014-01-19 → 2014-03-22 (+62d) |  | 21d → -31d |
| DUKHCONP1AZ1ARRF3695 | Painting -Storage area | 2014-01-11 → 2014-03-13 (+61d) | 2014-02-02 → 2014-04-05 (+62d) |  | 21d → -31d |
| DUKHCONP1AZ1ARRF3620 | Epoxy Painting -Storage area | 2014-01-28 → 2014-03-31 (+62d) | 2014-02-15 → 2014-04-16 (+60d) |  | 21d → -31d |
| 15 | **EXTERNAL FINISHES** | 2013-12-29 → 2014-03-01 (+62d) | 2014-03-18 → 2014-05-18 (+61d) |  |  |
| 10 | **ROOF** | 2014-01-12 → 2014-03-15 (+62d) | 2014-03-18 → 2014-05-18 (+61d) |  |  |
| DUKHCONP1AZ1ARRF3630 | Leveling Screed for Waterproofing | 2014-01-12 → 2014-03-15 (+62d) | 2014-02-09 → 2014-04-12 (+62d) |  | -3d → -55d |
| DUKHCONP1AZ1ARRF3635 | Laying of Waterproofing Membrane | 2014-01-15 → 2014-03-18 (+62d) | 2014-02-13 → 2014-04-15 (+61d) |  | -3d → -55d |
| DUKHCONP1AZ1ARRF3640 | Installation of Insulation & Protection | 2014-01-20 → 2014-03-23 (+62d) | 2014-02-18 → 2014-04-20 (+61d) |  | -3d → -55d |
| DUKHCONP1AZ1ARRF3645 | Lime Stone Chips & Paving slab Installation | 2014-01-25 → 2014-03-27 (+61d) | 2014-02-23 → 2014-04-24 (+60d) |  | -3d → -55d |
| DUKHCONP1AZ1ARRF3650 | Install. of Gal. Frame & Aluminum Slat Screen | 2014-02-02 → 2014-04-05 (+62d) | 2014-03-03 → 2014-05-03 (+61d) |  | -3d → -55d |
| DUKHCONP1AZ1ARRF3655 | Installation of Pumps Protection cabinets | 2014-02-18 → 2014-04-20 (+61d) | 2014-03-12 → 2014-05-12 (+61d) |  | -3d → -55d |
| DUKHCONP1AZ1ARRF3660 | Installation of Access Ladder | 2014-03-02 → 2014-05-01 (+60d) | 2014-03-18 → 2014-05-18 (+61d) |  | 2d → -50d |
| 15 | **ELEVATION** | 2013-12-29 → 2014-03-01 (+62d) | 2014-02-19 → 2014-04-21 (+61d) |  |  |
| DUKHCONP1AZ1AREL3665 | External Plastering | 2013-12-29 → 2014-03-01 (+62d) | 2014-01-26 → 2014-03-29 (+62d) |  | 23d → -29d |
| DUKHCONP1AZ1AREL3670 | External stone cladding works | 2014-01-15 → 2014-03-18 (+62d) | 2014-02-06 → 2014-04-09 (+62d) |  | 25d → -27d |
| DUKHCONP1AZ1AREL3680 | External Painting | 2014-01-27 → 2014-03-30 (+62d) | 2014-02-19 → 2014-04-21 (+61d) |  | 25d → -27d |
| 20 | **MEP WORKS** | 2013-07-01 → 2013-07-10 (+9d) | 2014-04-16 → 2014-06-16 (+61d) |  |  |
| 10 | **ELECTRICAL WORKS** | 2013-10-14 → 2013-12-25 (+72d) | 2014-04-16 → 2014-06-16 (+61d) |  |  |
| 10 | **GROUND FLOOR** | 2013-10-14 → 2013-12-25 (+72d) | 2014-02-24 → 2014-05-04 (+69d) |  |  |
| DUKHCONP1AZ1ELGF4000 | Fixing of wall conduits & switch socket boxes | 2013-10-14 → 2013-12-25 (+72d) | 2013-11-13 → 2014-01-22 (+70d) |  | 3d → -56d |
| DUKHCONP1AZ1ELGF4005 | Cable tray & trunking installation | 2013-10-30 → 2014-01-08 (+70d) | 2013-11-21 → 2014-01-30 (+70d) |  | 19d → -40d |
| DUKHCONP1AZ1ELGF4010 | Installation of wiring & Main Cabling | 2013-11-07 → 2014-01-16 (+70d) | 2013-12-05 → 2014-02-15 (+72d) |  | 19d → -40d |
| DUKHCONP1AZ1ELGF4015 | Install. of CAMS & Fire Fighting Accessories | 2014-01-08 → 2014-03-19 (+70d) | 2014-02-05 → 2014-04-16 (+70d) |  | 6d → -53d |
| DUKHCONP1AZ1ELGF4020 | Installation of DBS,MCCB Accessories. | 2014-01-14 → 2014-03-25 (+70d) | 2014-02-05 → 2014-04-16 (+70d) |  | -6d → -65d |
| DUKHCONP1AZ1ELGF4025 | Installation of Lighting fixtures & Accessories | 2014-01-26 → 2014-04-06 (+70d) | 2014-02-24 → 2014-05-04 (+69d) |  | 1d → -58d |
| DUKHCONP1AZ1ELGF4030 | Installation of Telephone System | 2014-01-26 → 2014-04-06 (+70d) | 2014-02-18 → 2014-04-28 (+69d) |  | -6d → -65d |
| 15 | **FIRST FLOORS** | 2013-11-27 → 2014-01-28 (+62d) | 2014-03-30 → 2014-05-29 (+60d) |  |  |
| DUKHCONP1AZ1ELFF4035 | Fixing of wall conduits & switch socket boxes | 2013-11-27 → 2014-01-28 (+62d) | 2013-12-26 → 2014-02-26 (+62d) |  | -14d → -66d |
| DUKHCONP1AZ1ELFF4040 | Cable tray & trunking installation | 2013-12-11 → 2014-02-12 (+63d) | 2014-01-04 → 2014-03-06 (+61d) |  | 2d → -50d |
| DUKHCONP1AZ1ELFF4045 | Installation of wiring & Main Cabling | 2013-12-21 → 2014-02-20 (+61d) | 2014-01-18 → 2014-03-20 (+61d) |  | 2d → -50d |
| DUKHCONP1AZ1ELFF4050 | Installation of Telephone System | 2014-02-15 → 2014-04-17 (+61d) | 2014-03-15 → 2014-05-15 (+61d) |  | -12d → -65d |
| DUKHCONP1AZ1ELFF4055 | Install. of CAMS & Fire Fighting Accessories | 2014-02-17 → 2014-04-19 (+61d) | 2014-03-17 → 2014-05-17 (+61d) |  | -22d → -74d |
| DUKHCONP1AZ1ELFF4060 | Installation of DBS,MCCB Accessories. | 2014-02-24 → 2014-04-26 (+61d) | 2014-03-18 → 2014-05-18 (+61d) |  | -23d → -75d |
| DUKHCONP1AZ1ELFF4065 | Installation of Lighting fixtures & Accessories | 2014-03-02 → 2014-05-01 (+60d) | 2014-03-30 → 2014-05-29 (+60d) |  | -23d → -75d |
| 20 | **ROOF** | 2014-03-16 → 2014-05-15 (+60d) | 2014-04-16 → 2014-06-16 (+61d) |  |  |
| DUKHCONP1AZ1ELRF4070 | Installation of Isolator | 2014-03-16 → 2014-05-15 (+60d) | 2014-04-05 → 2014-06-04 (+60d) |  | -23d → -75d |
| DUKHCONP1AZ1ELRF4075 | Installation of TV Dish Antenna | 2014-03-22 → 2014-05-21 (+60d) | 2014-04-16 → 2014-06-16 (+61d) |  | -23d → -75d |
| 15 | **PLUMBING, DRAINAGE & FIRE FIGHTING WORKS** | 2013-07-01 → 2013-07-10 (+9d) | 2014-04-16 → 2014-06-16 (+61d) |  |  |
| 10 | **GROUND FLOOR** | 2013-07-01 → 2013-07-10 (+9d) | 2014-02-24 → 2014-05-04 (+69d) |  |  |
| DUKHCONP1AZ1PLUG4300 | Drainage / Storm Pipes in Grade Slab | 2013-07-01 → 2013-07-10 A (+9d) | 2013-07-18 → 2013-08-31 A (+44d) | 0% → 100% | -24d → none |
| DUKHCONP1AZ1PLGF4305 | Installation of Plumbing pipes & testing | 2013-10-27 → 2014-01-05 (+70d) | 2013-11-16 → 2014-01-25 (+70d) |  | -6d → -65d |
| DUKHCONP1AZ1PLGF4310 | Installation of Drainage pipes &testing | 2013-10-27 → 2014-01-05 (+70d) | 2013-11-16 → 2014-01-25 (+70d) |  | 15d → -44d |
| DUKHCONP1AZ1PLGF4315 | Sanitary Fittings & Accessories | 2014-01-26 → 2014-04-06 (+70d) | 2014-02-18 → 2014-04-28 (+69d) |  | 21d → -38d |
| DUKHCONP1AZ1PLGF4320 | Installation of Water Heater | 2014-02-06 → 2014-04-17 (+70d) | 2014-02-24 → 2014-05-04 (+69d) |  | 21d → -38d |
| 15 | **FIRST FLOORS** | 2013-12-08 → 2014-02-08 (+62d) | 2014-03-30 → 2014-05-29 (+60d) |  |  |
| DUKHCONP1AZ1PLFF4325 | Installation of Plumbing pipes & testing | 2013-12-08 → 2014-02-08 (+62d) | 2013-12-29 → 2014-03-01 (+62d) |  | -24d → -76d |
| DUKHCONP1AZ1PLFF4330 | Installation of Drainage pipes & testing | 2013-12-08 → 2014-02-08 (+62d) | 2013-12-29 → 2014-03-01 (+62d) |  | -2d → -54d |
| DUKHCONP1AZ1PLFF4335 | Sanitary Fittings & Accessories | 2014-03-02 → 2014-05-01 (+60d) | 2014-03-24 → 2014-05-24 (+61d) |  | -23d → -75d |
| DUKHCONP1AZ1PLFF4340 | Installation of Water Heater | 2014-03-13 → 2014-05-13 (+61d) | 2014-03-30 → 2014-05-29 (+60d) |  | -23d → -75d |
| 20 | **ROOF** | 2014-01-02 → 2014-03-05 (+62d) | 2014-04-16 → 2014-06-16 (+61d) |  |  |
| DUKHCONP1AZ1PLRF4345 | Installation of Plumbing pipes & fittings | 2014-01-02 → 2014-03-05 (+62d) | 2014-01-19 → 2014-03-22 (+62d) |  | 28d → -24d |
| DUKHCONP1AZ1PLRF4350 | Installation of Rain water Pipes | 2014-02-12 → 2014-04-14 (+61d) | 2014-03-01 → 2014-04-30 (+60d) |  | 2d → -50d |
| DUKHCONP1AZ1PLRF4355 | Roof Water Tank Installation & Connections | 2014-03-19 → 2014-05-19 (+61d) | 2014-04-16 → 2014-06-16 (+61d) |  | -23d → -75d |
| 20 | **AC WORKS** | 2013-11-21 → 2014-01-25 (+65d) | 2014-04-13 → 2014-06-12 (+60d) |  |  |
| 10 | **GROUND FLOOR** | 2013-11-21 → 2014-01-25 (+65d) | 2014-02-22 → 2014-05-01 (+68d) |  |  |
| DUKHCONP1AZ1ACGF4600 | Installation AC Pipes | 2013-11-21 → 2014-01-25 (+65d) | 2013-12-14 → 2014-02-17 (+65d) |  | 20d → -34d |
| DUKHCONP1AZ1ACGF4605 | Fixing of Ventilation Equipments | 2014-01-08 → 2014-03-19 (+70d) | 2014-02-05 → 2014-04-16 (+70d) |  | 8d → -51d |
| DUKHCONP1AZ1ACGF4610 | Fixing of Split AC | 2014-01-29 → 2014-04-09 (+70d) | 2014-02-22 → 2014-05-01 (+68d) |  | 8d → -51d |
| 15 | **FIRST FLOORS** | 2013-12-30 → 2014-03-02 (+62d) | 2014-04-01 → 2014-06-01 (+61d) |  |  |
| DUKHCONP1AZ1ACFF4615 | Installation AC Pipes | 2013-12-30 → 2014-03-02 (+62d) | 2014-01-21 → 2014-03-24 (+62d) |  | 3d → -49d |
| DUKHCONP1AZ1ACFF4620 | Fixing of Ventilation Equipments | 2014-02-17 → 2014-04-19 (+61d) | 2014-03-17 → 2014-05-17 (+61d) |  | -21d → -73d |
| DUKHCONP1AZ1ACFF4625 | Fixing of Split AC | 2014-03-10 → 2014-05-10 (+61d) | 2014-04-01 → 2014-06-01 (+61d) |  | -21d → -73d |
| 20 | **ROOF** | 2014-02-02 → 2014-04-05 (+62d) | 2014-04-13 → 2014-06-12 (+60d) |  |  |
| DUKHCONP1AZ1ACRF4630 | Installation of Refrigerant Pipes | 2014-02-02 → 2014-04-05 (+62d) | 2014-03-03 → 2014-05-03 (+61d) |  | 10d → -42d |
| DUKHCONP1AZ1ACRF4635 | Installation of Condensing Unit | 2014-03-16 → 2014-05-15 (+60d) | 2014-04-13 → 2014-06-12 (+60d) |  | -20d → -72d |
| 25 | **EXTERNAL WORKS** | 2013-12-31 → 2014-03-03 (+62d) | 2014-05-01 → 2014-06-18 (+48d) |  |  |
| 10 | **MISCELLANEOUS** | 2013-12-31 → 2014-03-03 (+62d) | 2014-05-01 → 2014-06-18 (+48d) |  |  |
| DUKHCONP1AZ1MSEX5000 | Construction of Manholes | 2013-12-31 → 2014-03-03 (+62d) | 2014-01-28 → 2014-03-31 (+62d) |  | -11d → -63d |

| ID | Task | Start | Finish | Duration | Complete | Total float | Other |
| --- | --- | --- | --- | --- | --- | --- | --- |
| DUKHCONP1AZ1MSEX5005 | Construction of Soak pit, Chambers | 2014-01-14 → 2014-03-17 (+62d) | 2014-02-12 → 2014-04-14 (+61d) |  |  | -11d → -63d |  |
| DUKHCONP1AZ1MSEX5020 | Construction Entrance Ramp | 2014-01-14 → 2014-03-17 (+62d) | 2014-02-12 → 2014-04-14 (+61d) |  |  | -8d → -60d |  |
| DUKHCONP1AZ1MSEX5015 | Construction of grease Trap | 2014-02-03 → 2014-04-06 (+62d) | 2014-02-26 → 2014-04-28 (+61d) |  |  | 9d → -43d |  |
| DUKHCONP1AZ1MSEX5025 | SS.Handrails and Balustrades | 2014-02-03 → 2014-04-06 (+62d) | 2014-02-26 → 2014-04-28 (+61d) |  |  | -2d → -54d |  |
| DUKHCONP1AZ1MSEX5010 | Telephone cable laying | 2014-02-13 → 2014-04-15 (+61d) | 2014-03-13 → 2014-05-13 (+61d) |  |  | -11d → -63d |  |
| DUKHCONP1AZ1MSEX5335 | Aluminum Roll-up Shutter with 2m Wall | 2014-04-03 → 2014-05-21 (+48d) | 2014-05-01 → 2014-06-18 (+48d) |  |  | 79d → 38d |  |
| 15 | **WATER TANK ENCLOSURE** | 2014-01-21 → 2014-03-24 (+62d) | 2014-04-07 → 2014-06-07 (+61d) |  |  |  |  |
| DUKHCONP1AZ1WEEX5030 | Excavation | 2014-01-21 → 2014-03-24 (+62d) | 2014-02-13 → 2014-04-15 (+61d) |  |  | -11d → -63d |  |
| DUKHCONP1AZ1WEEX5035 | Construction of Raft | 2014-01-29 → 2014-04-01 (+62d) | 2014-02-27 → 2014-04-29 (+61d) |  |  | -13d → -65d |  |
| DUKHCONP1AZ1WEEX5040 | Block works & Plastering | 2014-02-08 → 2014-04-10 (+61d) | 2014-03-09 → 2014-05-08 (+60d) |  |  | -13d → -65d |  |
| DUKHCONP1AZ1WEEX5045 | Flooring & Painting | 2014-02-16 → 2014-04-17 (+60d) | 2014-03-16 → 2014-05-15 (+60d) |  |  | -13d → -65d |  |
| DUKHCONP1AZ1WEEX5050 | Installation of Steel Gate | 2014-03-01 → 2014-04-30 (+60d) | 2014-03-23 → 2014-05-22 (+60d) |  |  | -13d → -65d |  |
| DUKHCONP1AZ1WEEX5060 | Structural steel & SS Shed cover installation | 2014-03-02 → 2014-05-01 (+60d) | 2014-03-30 → 2014-05-29 (+60d) |  |  | -14d → -66d |  |
| DUKHCONP1AZ1WEEX5065 | Install. of Water Tank,Chiller,Pump & Meter | 2014-03-10 → 2014-05-10 (+61d) | 2014-04-07 → 2014-06-07 (+61d) |  |  | -15d → -67d |  |
| 20 | **HARD LANDSCAPING** | 2014-01-28 → 2014-03-31 (+62d) | 2014-03-11 → 2014-05-11 (+61d) |  |  |  |  |
| DUKHCONP1AZ1HDEX5090 | kerb works | 2014-01-28 → 2014-03-31 (+62d) | 2014-02-20 → 2014-04-22 (+61d) |  |  | -8d → -60d |  |
| DUKHCONP1AZ1HDEX5095 | Cobble Stone Works | 2014-02-09 → 2014-04-12 (+62d) | 2014-03-04 → 2014-05-04 (+61d) |  |  | -8d → -60d |  |
| DUKHCONP1AZ1HDEX5100 | Interlock works | 2014-02-17 → 2014-04-19 (+61d) | 2014-03-11 → 2014-05-11 (+61d) |  |  | -8d → -60d |  |
| 25 | **SOFT LANDSCAPING** | 2014-02-23 → 2014-04-24 (+60d) | 2014-03-30 → 2014-05-29 (+60d) |  |  |  |  |
| DUKHCONP1AZ1SLEX5105 | Laying of Grass/ green area | 2014-02-23 → 2014-04-24 (+60d) | 2014-03-23 → 2014-05-22 (+60d) |  |  | -8d → -60d |  |
| DUKHCONP1AZ1SLEX5110 | Laying of Palm tree | 2014-03-02 → 2014-05-01 (+60d) | 2014-03-30 → 2014-05-29 (+60d) |  |  | -8d → -60d |  |
| 30 | **TESTING AND COMMISSIONING** | 2014-04-19 → 2014-06-18 (+60d) | 2014-05-17 → 2014-07-16 (+60d) |  |  |  |  |
| DUKHCONP1AZ1ACTC8000 | Pre-Commissioning & Testing of AC Works | 2014-04-19 → 2014-06-18 (+60d) | 2014-05-17 → 2014-07-16 (+60d) |  |  | -24d → -76d |  |
| DUKHCONP1AZ1ELTC8010 | Pre-Commissioning & Testing of Electrical Works | 2014-04-19 → 2014-06-18 (+60d) | 2014-05-17 → 2014-07-16 (+60d) |  |  | -24d → -76d |  |
| DUKHCONP1AZ1PLTC8005 | Pre-Commissioning & Testing of Plumbing Works | 2014-04-19 → 2014-06-18 (+60d) | 2014-05-17 → 2014-07-16 (+60d) |  |  | -24d → -76d |  |
| 15 | **ZONE - 2 (4 Twin Villas)** |  | 2014-06-15 → 2014-08-18 (+64d) |  |  |  |  |
| 10 | **STRUCTURAL WORKS** |  | 2014-01-21 → 2014-03-24 (+62d) |  |  |  |  |
| 10 | **SUB STRUCTURE** |  | 2013-09-09 → 2013-10-23 (+44d) |  |  |  |  |
| 10 | **UPTO GRADE SLAB** |  | 2013-09-09 → 2013-10-23 (+44d) |  |  |  |  |
| DUKHCONP1AZ2STUG1005 | Footing Antitermite |  | 2013-05-06 A |  | 61% → 100% | -12d → none |  |
| DUKHCONP1AZ2STUG1010 | Footing Blinding |  | 2013-05-09 A |  | 48% → 100% | -12d → none |  |
| DUKHCONP1AZ2STUG1015 | Footing Waterproofing & Screed |  | 2013-05-18 A |  | 24% → 100% | -12d → none |  |
| DUKHCONP1AZ2STUG1020 | Construction of foundations | 2013-05-05 A | 2013-05-27 A |  | 0% → 100% | -12d → none |  |
| DUKHCONP1AZ2STUG1025 | Construction of neck of columns | 2013-05-28 → 2013-06-01 A (+4d) | 2013-06-25 → 2013-06-29 A (+4d) |  | 0% → 100% | -24d → none | resources STEEL FIXERS SK [214 h]; CARPENTERS SK [656 h]; CONCRETE MASON SK [48 h]; LABOR- SUBCONTRACTOR [688.5 h]; REINFORCEMENT BARS QTY [2669 kg]; FORMWORK QTY [328 Sqm]; CONCRETE QTY [24 Cum] → STEEL FIXERS SK [146.53 h]; CARPENTERS SK [449.18 h]; CONCRETE MASON SK [32.87 h]; LABOR- SUBCONTRACTOR [471.43 h]; REINFORCEMENT BARS QTY [2669 kg]; FORMWORK QTY [328 Sqm]; CONCRETE QTY [24 Cum] |
| DUKHCONP1AZ2STUG1030 | Waterproofing Footing & Neck Column | 2013-06-06 → 2013-06-10 A (+4d) | 2013-07-04 → 2013-07-08 A (+4d) |  | 0% → 100% | -24d → none |  |
| DUKHCONP1AZ2STUG1035 | Backfilling Upto Grade Beam Bottom | 2013-06-20 → 2013-06-29 A (+9d) | 2013-07-18 → 2013-07-27 A (+9d) |  | 0% → 100% | -24d → none |  |
| DUKHCONP1AZ2STUG1040 | Construction of Grade Beams | 2013-07-07 → 2013-07-15 A (+8d) | 2013-08-04 → 2013-08-31 A (+27d) |  | 0% → 100% | -24d → none | resources SCREED QTY [280 Sqm]; REINFORCEMENT BARS QTY [18709 kg]; FORMWORK QTY [1076 Sqm]; CONCRETE QTY [128 Cum]; BLINDING MASON SK [244 h]; SCREED MASON SK [224 h]; STEEL FIXERS SK [1497 h]; CARPENTERS SK [2152 h]; CONCRETE MASON SK [256 h]; LABOR- SUBCONTRACTOR [3195.75 h]; BLINDING QTY [304 Sqm] → SCREED QTY [280 Sqm]; REINFORCEMENT BARS QTY [18709 kg]; FORMWORK QTY [1076 Sqm]; CONCRETE QTY [128 Cum]; CONCRETE MASON SK [244 h]; SCREED MASON SK [224 h]; STEEL FIXERS SK [1497 h]; CARPENTERS SK [2152 h]; CONCRETE MASON SK [256 h]; LABOR- SUBCONTRACTOR [3195.75 h]; BLINDING QTY [304 Sqm] |
| DUKHCONP1AZ2STUG1045 | Construction of slab on grade | 2013-08-08 → 2013-09-28 A (+51d) | 2013-09-09 → 2013-10-23 A (+44d) | 25d → 21d | 0% → 100% | -24d → none | resources BLINDING MASON SK [923 h]; SCREED MASON SK [850 h]; STEEL FIXERS SK [536 h]; CONCRETE MASON SK [400 h]; LABOR- SUBCONTRACTOR [1713 h]; BLINDING QTY [1153 Sqm]; SCREED QTY [1062 Sqm]; CONCRETE QTY [200 Cum]; WELDED WIRE MESH [2008 Sqm] → CONCRETE MASON SK [923 h]; SCREED MASON SK [850 h]; STEEL FIXERS SK [536 h]; CONCRETE MASON SK [400 h]; LABOR- SUBCONTRACTOR [1713 h]; BLINDING QTY [1153 Sqm]; SCREED QTY [1062 Sqm]; CONCRETE QTY [200 Cum]; WELDED WIRE MESH [2008 Sqm] |
| 15 | **SUPERSTRUCTURE** | 2013-08-28 → 2013-10-15 (+48d) | 2014-01-21 → 2014-03-24 (+62d) |  |  |  |  |
| 10 | **GROUND FLOOR** | 2013-08-28 → 2013-10-15 (+48d) | 2013-10-24 → 2013-12-21 (+58d) |  |  |  |  |
| DUKHCONP1AZ2STGF2000 | Column-Rebar & Formwork | 2013-08-28 → 2013-10-15 A (+48d) | 2013-09-25 → 2013-11-14 (+50d) |  | 0% → 52% | -24d → -65d |  |
| DUKHCONP1AZ2STGF2005 | Column-Concrete | 2013-09-05 → 2013-10-26 A (+51d) | 2013-10-02 → 2013-11-21 (+50d) |  | 0% → 25% | -22d → -63d |  |
| DUKHCONP1AZ2STGF2010 | Beam, Stairs ,Slab-Rebar & Formwork | 2013-09-21 → 2013-11-10 (+50d) | 2013-10-21 → 2013-12-08 (+48d) |  |  | -22d → -63d |  |
| DUKHCONP1AZ2STGF2015 | Beam, Stairs ,Slab-Concrete | 2013-10-07 → 2013-12-04 (+58d) | 2013-10-24 → 2013-12-21 (+58d) |  |  | -22d → -70d |  |
| 15 | **FIRST FLOORS** | 2013-10-09 → 2013-12-10 (+62d) | 2013-12-07 → 2014-02-05 (+60d) |  |  |  |  |
| DUKHCONP1AZ2STFF2020 | Column-Rebar & Formwork | 2013-10-09 → 2013-12-10 (+62d) | 2013-11-09 → 2014-01-08 (+60d) |  |  | -22d → -73d |  |
| DUKHCONP1AZ2STFF2025 | Column-Concrete | 2013-10-21 → 2013-12-21 (+61d) | 2013-11-17 → 2014-01-16 (+60d) |  |  | -20d → -71d |  |
| DUKHCONP1AZ2STFF2030 | Beam, Stairs ,Slab-Rebar & Formwork | 2013-11-05 → 2014-01-05 (+61d) | 2013-12-03 → 2014-02-02 (+61d) |  |  | -20d → -71d |  |
| DUKHCONP1AZ2STFF2035 | Beam, Stairs ,Slab-Concrete | 2013-11-21 → 2014-01-21 (+61d) | 2013-12-07 → 2014-02-05 (+60d) |  |  | -20d → -71d |  |
| 20 | **ROOF** | 2013-11-24 → 2014-01-23 (+60d) | 2014-01-21 → 2014-03-24 (+62d) |  |  |  |  |
| DUKHCONP1AZ2STRF2040 | Column-Rebar & Formwork | 2013-11-24 → 2014-01-23 (+60d) | 2013-12-14 → 2014-02-13 (+61d) |  |  | -2d → -53d |  |
| DUKHCONP1AZ2STRF2045 | Column-Concrete | 2013-11-27 → 2014-01-27 (+61d) | 2013-12-16 → 2014-02-16 (+62d) |  |  | 8d → -43d |  |
| DUKHCONP1AZ2STRF2050 | Slab-Rebar & Formwork - Head Room | 2013-11-30 → 2014-01-29 (+60d) | 2013-12-23 → 2014-02-22 (+61d) |  |  | 8d → -43d |  |
| DUKHCONP1AZ2STRF2055 | Slab-Concrete-Head room | 2013-12-10 → 2014-02-09 (+61d) | 2013-12-25 → 2014-02-24 (+61d) |  |  | 8d → -43d |  |
| DUKHCONP1AZ2STRF2060 | Construction of Parapets | 2013-12-12 → 2014-02-12 (+62d) | 2014-01-11 → 2014-03-12 (+60d) |  |  | 32d → -19d |  |
| DUKHCONP1AZ2STRF2065 | Construction of up stands/Plinth | 2013-12-24 → 2014-02-24 (+62d) | 2014-01-21 → 2014-03-24 (+62d) |  |  | 28d → -24d |  |
| 15 | **FINISHING WORKS** | 2013-11-09 → 2014-01-18 (+70d) | 2014-05-17 → 2014-07-16 (+60d) |  |  |  |  |
| 10 | **INTERNAL FINISHES** | 2013-11-09 → 2014-01-18 (+70d) | 2014-05-17 → 2014-07-16 (+60d) |  |  |  |  |
| 10 | **GROUND FLOOR** | 2013-11-09 → 2014-01-18 (+70d) | 2014-04-22 → 2014-06-30 (+69d) |  |  |  |  |
| DUKHCONP1AZ2ARGF3000 | Block work | 2013-11-09 → 2014-01-18 (+70d) | 2013-12-07 → 2014-02-16 (+71d) |  |  | -6d → -65d |  |
| DUKHCONP1AZ2ARGF3005 | Plastering work | 2013-12-01 → 2014-02-09 (+70d) | 2013-12-30 → 2014-03-10 (+70d) |  |  | -6d → -65d |  |
| DUKHCONP1AZ2ARGF3010 | Flooring screed | 2013-12-09 → 2014-02-18 (+71d) | 2014-01-02 → 2014-03-13 (+70d) |  |  | 2d → -57d |  |
| DUKHCONP1AZ2ARGF3030 | Paint First coat | 2013-12-22 → 2014-02-26 (+66d) | 2014-01-19 → 2014-03-26 (+66d) |  |  | 5d → -51d |  |
| DUKHCONP1AZ2ARGF3015 | Wet area waterproofing & Protection Screed | 2013-12-19 → 2014-02-27 (+70d) | 2014-01-05 → 2014-03-16 (+70d) |  |  | -6d → -65d |  |
| DUKHCONP1AZ2ARGF3020 | Ceramic Wall Tiling | 2013-12-25 → 2014-03-05 (+70d) | 2014-01-22 → 2014-04-02 (+70d) |  |  | -6d → -65d |  |
| DUKHCONP1AZ2ARGF3025 | Porcelain Tile flooring | 2013-12-31 → 2014-03-11 (+70d) | 2014-01-28 → 2014-04-08 (+70d) |  |  | -6d → -65d |  |
| DUKHCONP1AZ2ARGF3045 | Fixing of Suspension systems | 2014-01-18 → 2014-03-29 (+70d) | 2014-02-09 → 2014-04-20 (+70d) |  |  | -6d → -65d |  |
| DUKHCONP1AZ2ARGF3035 | Slate Tile Flooring & Skirting | 2014-01-20 → 2014-03-31 (+70d) | 2014-02-05 → 2014-04-16 (+70d) |  |  | -1d → -60d |  |
| DUKHCONP1AZ2ARGF3055 | Aluminum tile false ceiling | 2014-01-26 → 2014-04-06 (+70d) | 2014-02-24 → 2014-05-04 (+69d) |  |  | -3d → -62d |  |
| DUKHCONP1AZ2ARGF3040 | Cobble Tile flooring | 2014-01-27 → 2014-04-07 (+70d) | 2014-02-13 → 2014-04-23 (+69d) |  |  | -3d → -62d |  |

| ID | Task | Start | Finish | Total float |
| --- | --- | --- | --- | --- |
| DUKHCONP1AZ2ARGF3060 | Gypsum board false ceiling | 2014-01-29 → 2014-04-09 (+70d) | 2014-02-27 → 2014-05-07 (+69d) | -6d → -65d |
| DUKHCONP1AZ2ARGF3050 | Granite - Stair case flooring & Skirting | 2014-02-04 → 2014-04-15 (+70d) | 2014-02-27 → 2014-05-07 (+69d) | -3d → -62d |
| DUKHCONP1AZ2ARGF3065 | Wooden door & PVC Door | 2014-02-19 → 2014-04-29 (+69d) | 2014-03-08 → 2014-05-15 (+68d) | -3d → -62d |
| DUKHCONP1AZ2ARGF3070 | Aluminum doors | 2014-02-25 → 2014-05-05 (+69d) | 2014-03-13 → 2014-05-21 (+69d) | -3d → -62d |
| DUKHCONP1AZ2ARGF3075 | Carpentry & Joinery Works | 2014-03-03 → 2014-05-11 (+69d) | 2014-03-25 → 2014-06-02 (+69d) | -3d → -62d |
| DUKHCONP1AZ2ARGF3080 | Aluminum windows | 2014-03-04 → 2014-05-12 (+69d) | 2014-03-26 → 2014-06-03 (+69d) | 7d → -52d |
| DUKHCONP1AZ2ARGF3085 | S.S.Balustrade | 2014-03-11 → 2014-05-19 (+69d) | 2014-04-02 → 2014-06-10 (+69d) | 2d → -57d |
| DUKHCONP1AZ2ARGF3090 | Installation of Granite Counter Top | 2014-03-16 → 2014-05-24 (+69d) | 2014-04-01 → 2014-06-09 (+69d) | -3d → -62d |
| DUKHCONP1AZ2ARGF3095 | Final Painting | 2014-03-25 → 2014-06-02 (+69d) | 2014-04-22 → 2014-06-30 (+69d) | -3d → -62d |
| 15 | **FIRST FLOORS** | 2013-12-22 → 2014-02-22 (+62d) | 2014-05-17 → 2014-07-16 (+60d) |  |
| DUKHCONP1AZ2ARFF3300 | Block work | 2013-12-22 → 2014-02-22 (+62d) | 2014-01-19 → 2014-03-22 (+62d) | -24d → -76d |
| DUKHCONP1AZ2ARFF3305 | Plastering work | 2014-01-15 → 2014-03-18 (+62d) | 2014-02-13 → 2014-04-15 (+61d) | -24d → -76d |
| DUKHCONP1AZ2ARFF3310 | Flooring screed | 2014-01-23 → 2014-03-26 (+62d) | 2014-02-17 → 2014-04-19 (+61d) | -12d → -64d |
| DUKHCONP1AZ2ARFF3330 | Paint First coat | 2014-02-01 → 2014-04-03 (+61d) | 2014-03-02 → 2014-05-01 (+60d) | -10d → -62d |
| DUKHCONP1AZ2ARFF3315 | Wet area waterproofing | 2014-02-04 → 2014-04-07 (+62d) | 2014-02-22 → 2014-04-23 (+60d) | -24d → -76d |
| DUKHCONP1AZ2ARFF3320 | Ceramic Wall Tiling | 2014-02-12 → 2014-04-14 (+61d) | 2014-03-12 → 2014-05-12 (+61d) | -24d → -76d |
| DUKHCONP1AZ2ARFF3325 | Porcelain Tile flooring | 2014-02-19 → 2014-04-21 (+61d) | 2014-03-19 → 2014-05-19 (+61d) | -24d → -76d |
| DUKHCONP1AZ2ARFF3345 | Fixing of Suspension systems | 2014-03-04 → 2014-05-04 (+61d) | 2014-03-26 → 2014-05-26 (+61d) | -24d → -76d |
| DUKHCONP1AZ2ARFF3335 | Slate Tile Flooring & Skirting | 2014-03-09 → 2014-05-08 (+60d) | 2014-03-25 → 2014-05-25 (+61d) | -16d → -68d |
| DUKHCONP1AZ2ARFF3360 | Gypsum board false ceiling | 2014-03-11 → 2014-05-11 (+61d) | 2014-04-08 → 2014-06-08 (+61d) | -24d → -76d |
| DUKHCONP1AZ2ARFF3350 | Granite - Stair case flooring & Skirting | 2014-03-12 → 2014-05-12 (+61d) | 2014-04-03 → 2014-06-03 (+61d) | -22d → -74d |
| DUKHCONP1AZ2ARFF3365 | Wooden door | 2014-03-26 → 2014-05-26 (+61d) | 2014-04-12 → 2014-06-11 (+60d) | -24d → -76d |
| DUKHCONP1AZ2ARFF3370 | Aluminum Door | 2014-03-26 → 2014-05-26 (+61d) | 2014-04-17 → 2014-06-17 (+61d) | -24d → -76d |
| DUKHCONP1AZ2ARFF3375 | Carpentry & Joinery Works | 2014-04-01 → 2014-06-01 (+61d) | 2014-04-29 → 2014-06-29 (+61d) | -24d → -76d |
| DUKHCONP1AZ2ARFF3380 | Aluminum windows | 2014-04-02 → 2014-06-02 (+61d) | 2014-04-24 → 2014-06-24 (+61d) | -20d → -72d |
| DUKHCONP1AZ2ARFF3385 | Handrail & Balustrade | 2014-04-13 → 2014-06-12 (+60d) | 2014-05-05 → 2014-07-05 (+61d) | -24d → -76d |
| DUKHCONP1AZ2ARFF3390 | Installation of Granite Counter Top | 2014-04-13 → 2014-06-12 (+60d) | 2014-05-05 → 2014-07-05 (+61d) | -23d → -75d |
| DUKHCONP1AZ2ARFF3395 | Final Painting | 2014-04-19 → 2014-06-18 (+60d) | 2014-05-17 → 2014-07-16 (+60d) | -24d → -76d |
| 20 | **ROOF** | 2014-01-05 → 2014-03-06 (+60d) | 2014-03-11 → 2014-05-10 (+60d) |  |
| DUKHCONP1AZ2ARRF3600 | Block work | 2014-01-05 → 2014-03-06 (+60d) | 2014-01-27 → 2014-03-29 (+61d) | 28d → -23d |
| DUKHCONP1AZ2ARRF3605 | Plastering work | 2014-01-13 → 2014-03-15 (+61d) | 2014-02-04 → 2014-04-06 (+61d) | 28d → -23d |
| DUKHCONP1AZ2ARRF3610 | Flooring screed | 2014-01-27 → 2014-03-29 (+61d) | 2014-02-13 → 2014-04-14 (+60d) | 33d → -18d |
| DUKHCONP1AZ2ARRF3695 | Painting -Storage area | 2014-02-04 → 2014-04-06 (+61d) | 2014-02-27 → 2014-04-28 (+60d) | 33d → -18d |
| DUKHCONP1AZ2ARRF3620 | Epoxy Painting -Storage area | 2014-02-23 → 2014-04-23 (+59d) | 2014-03-11 → 2014-05-10 (+60d) | 33d → -18d |
| 15 | **EXTERNAL FINISHES** | 2014-01-27 → 2014-03-30 (+62d) | 2014-04-16 → 2014-06-16 (+61d) |  |
| 10 | **ROOF** | 2014-02-10 → 2014-04-13 (+62d) | 2014-04-16 → 2014-06-16 (+61d) |  |
| DUKHCONP1AZ2ARRF3630 | Leveling Screed for Waterproofing | 2014-02-10 → 2014-04-13 (+62d) | 2014-03-11 → 2014-05-11 (+61d) | -3d → -55d |
| DUKHCONP1AZ2ARRF3635 | Laying of Waterproofing Membrane | 2014-02-15 → 2014-04-16 (+60d) | 2014-03-15 → 2014-05-14 (+60d) | -3d → -55d |
| DUKHCONP1AZ2ARRF3640 | Installation of Insulation & Protection | 2014-02-19 → 2014-04-21 (+61d) | 2014-03-19 → 2014-05-19 (+61d) | -3d → -55d |
| DUKHCONP1AZ2ARRF3645 | Lime Stone Chips & Paving slab Installation | 2014-02-24 → 2014-04-26 (+61d) | 2014-03-24 → 2014-05-24 (+61d) | -3d → -55d |
| DUKHCONP1AZ2ARRF3650 | Install. of Gal. Frame & Aluminum Slat Screen | 2014-03-04 → 2014-05-04 (+61d) | 2014-04-01 → 2014-06-01 (+61d) | -3d → -55d |
| DUKHCONP1AZ2ARRF3655 | Installation of Pumps Protection cabinets | 2014-03-19 → 2014-05-19 (+61d) | 2014-04-10 → 2014-06-10 (+61d) | -3d → -55d |
| DUKHCONP1AZ2ARRF3660 | Installation of Access Ladder | 2014-03-31 → 2014-05-31 (+61d) | 2014-04-16 → 2014-06-16 (+61d) | 2d → -50d |
| 15 | **ELEVATION** | 2014-01-27 → 2014-03-30 (+62d) | 2014-03-20 → 2014-05-20 (+61d) |  |
| DUKHCONP1AZ2AREL3665 | External Plastering | 2014-01-27 → 2014-03-30 (+62d) | 2014-02-25 → 2014-04-27 (+61d) | 23d → -29d |
| DUKHCONP1AZ2AREL3670 | External stone cladding works | 2014-02-15 → 2014-04-16 (+60d) | 2014-03-09 → 2014-05-08 (+60d) | 25d → -27d |
| DUKHCONP1AZ2AREL3680 | External Painting | 2014-02-26 → 2014-04-28 (+61d) | 2014-03-20 → 2014-05-20 (+61d) | 25d → -27d |
| 20 | **MEP WORKS** | 2013-07-30 → 2013-08-31 (+32d) | 2014-05-15 → 2014-07-15 (+61d) |  |
| 10 | **ELECTRICAL WORKS** | 2013-11-14 → 2014-01-23 (+70d) | 2014-05-15 → 2014-07-15 (+61d) |  |
| 10 | **GROUND FLOOR** | 2013-11-14 → 2014-01-23 (+70d) | 2014-03-25 → 2014-06-02 (+69d) |  |
| DUKHCONP1AZ2ELGF4000 | Fixing of wall conduits & switch socket boxes | 2013-11-14 → 2014-01-23 (+70d) | 2013-12-12 → 2014-02-22 (+72d) | 3d → -56d |
| DUKHCONP1AZ2ELGF4005 | Cable tray & trunking installation | 2013-11-26 → 2014-02-04 (+70d) | 2013-12-19 → 2014-02-27 (+70d) | 21d → -38d |
| DUKHCONP1AZ2ELGF4010 | Installation of wiring & Main Cabling | 2013-12-04 → 2014-02-13 (+71d) | 2014-01-02 → 2014-03-13 (+70d) | 21d → -38d |
| DUKHCONP1AZ2ELGF4015 | Install. of CAMS & Fire Fighting Accessories | 2014-02-06 → 2014-04-17 (+70d) | 2014-03-08 → 2014-05-15 (+68d) | 6d → -53d |
| DUKHCONP1AZ2ELGF4020 | Installation of DBS,MCCB Accessories. | 2014-02-13 → 2014-04-23 (+69d) | 2014-03-08 → 2014-05-15 (+68d) | -6d → -65d |
| DUKHCONP1AZ2ELGF4025 | Installation of Lighting fixtures & Accessories | 2014-02-25 → 2014-05-05 (+69d) | 2014-03-25 → 2014-06-02 (+69d) | 1d → -58d |
| DUKHCONP1AZ2ELGF4030 | Installation of Telephone System | 2014-02-25 → 2014-05-05 (+69d) | 2014-03-19 → 2014-05-27 (+69d) | -6d → -65d |
| 15 | **FIRST FLOORS** | 2013-12-28 → 2014-02-27 (+61d) | 2014-04-28 → 2014-06-28 (+61d) |  |
| DUKHCONP1AZ2ELFF4035 | Fixing of wall conduits & switch socket boxes | 2013-12-28 → 2014-02-27 (+61d) | 2014-01-25 → 2014-03-27 (+61d) | -13d → -65d |
| DUKHCONP1AZ2ELFF4040 | Cable tray & trunking installation | 2014-01-08 → 2014-03-11 (+62d) | 2014-01-30 → 2014-04-02 (+62d) | 5d → -47d |
| DUKHCONP1AZ2ELFF4045 | Installation of wiring & Main Cabling | 2014-01-19 → 2014-03-22 (+62d) | 2014-02-17 → 2014-04-19 (+61d) | 3d → -49d |
| DUKHCONP1AZ2ELFF4050 | Installation of Telephone System | 2014-03-17 → 2014-05-17 (+61d) | 2014-04-14 → 2014-06-14 (+61d) | -13d → -65d |
| DUKHCONP1AZ2ELFF4055 | Install. of CAMS & Fire Fighting Accessories | 2014-03-19 → 2014-05-19 (+61d) | 2014-04-16 → 2014-06-16 (+61d) | -23d → -75d |
| DUKHCONP1AZ2ELFF4060 | Installation of DBS,MCCB Accessories. | 2014-03-23 → 2014-05-22 (+60d) | 2014-04-14 → 2014-06-14 (+61d) | -21d → -73d |
| DUKHCONP1AZ2ELFF4065 | Installation of Lighting fixtures & Accessories | 2014-03-31 → 2014-05-31 (+61d) | 2014-04-28 → 2014-06-28 (+61d) | -23d → -75d |
| 20 | **ROOF** | 2014-04-14 → 2014-06-14 (+61d) | 2014-05-15 → 2014-07-15 (+61d) |  |
| DUKHCONP1AZ2ELRF4070 | Installation of Isolator | 2014-04-14 → 2014-06-14 (+61d) | 2014-05-04 → 2014-07-03 (+60d) | -23d → -75d |
| DUKHCONP1AZ2ELRF4075 | Installation of TV Dish Antenna | 2014-04-20 → 2014-06-19 (+60d) | 2014-05-15 → 2014-07-15 (+61d) | -23d → -75d |
| 15 | **PLUMBING, DRAINAGE & FIRE FIGHTING WORKS** | 2013-07-30 → 2013-08-31 (+32d) | 2014-05-15 → 2014-07-15 (+61d) |  |
| 10 | **GROUND FLOOR** | 2013-07-30 → 2013-08-31 (+32d) | 2014-03-25 → 2014-06-02 (+69d) |  |

| ID | Task | Start | Finish | Complete | Total float | Other |
| --- | --- | --- | --- | --- | --- | --- |
| DUKHCONP1AZ2PLUG4300 | Drainage / Storm Pipes in Grade Slab | 2013-07-30 → 2013-08-31 A (+32d) | 2013-08-20 → 2013-09-17 A (+28d) | 0% → 100% | -24d → none |  |
| DUKHCONP1AZ2PLGF4305 | Installation of Plumbing pipes & testing | 2013-11-25 → 2014-02-03 (+70d) | 2013-12-15 → 2014-02-24 (+71d) |  | -6d → -65d |  |
| DUKHCONP1AZ2PLGF4310 | Installation of Drainage pipes &testing | 2013-11-25 → 2014-02-03 (+70d) | 2013-12-15 → 2014-02-24 (+71d) |  | 15d → -44d |  |
| DUKHCONP1AZ2PLGF4315 | Sanitary Fittings & Accessories | 2014-02-25 → 2014-05-05 (+69d) | 2014-03-19 → 2014-05-27 (+69d) |  | 21d → -38d |  |
| DUKHCONP1AZ2PLGF4320 | Installation of Water Heater | 2014-03-09 → 2014-05-17 (+69d) | 2014-03-25 → 2014-06-02 (+69d) |  | 21d → -38d |  |
| 15 | **FIRST FLOORS** | 2014-01-08 → 2014-03-11 (+62d) | 2014-04-23 → 2014-06-23 (+61d) |  |  |  |
| DUKHCONP1AZ2PLFF4325 | Installation of Plumbing pipes & testing | 2014-01-08 → 2014-03-11 (+62d) | 2014-01-28 → 2014-03-31 (+62d) |  | -24d → -76d |  |
| DUKHCONP1AZ2PLFF4330 | Installation of Drainage pipes & testing | 2014-01-08 → 2014-03-11 (+62d) | 2014-01-28 → 2014-03-31 (+62d) |  | -2d → -54d |  |
| DUKHCONP1AZ2PLFF4335 | Sanitary Fittings & Accessories | 2014-03-26 → 2014-05-26 (+61d) | 2014-04-17 → 2014-06-17 (+61d) |  | -19d → -71d |  |
| DUKHCONP1AZ2PLFF4340 | Installation of Water Heater | 2014-04-07 → 2014-06-07 (+61d) | 2014-04-23 → 2014-06-23 (+61d) |  | -19d → -71d |  |
| 20 | **ROOF** | 2014-01-27 → 2014-03-29 (+61d) | 2014-05-15 → 2014-07-15 (+61d) |  |  |  |
| DUKHCONP1AZ2PLRF4345 | Installation of Plumbing pipes & fittings | 2014-01-27 → 2014-03-29 (+61d) | 2014-02-13 → 2014-04-14 (+60d) |  | 32d → -19d |  |
| DUKHCONP1AZ2PLRF4350 | Installation of Rain water Pipes | 2014-03-13 → 2014-05-13 (+61d) | 2014-03-30 → 2014-05-29 (+60d) |  | 2d → -50d |  |
| DUKHCONP1AZ2PLRF4355 | Roof Water Tank Installation & Connections | 2014-04-17 → 2014-06-17 (+61d) | 2014-05-15 → 2014-07-15 (+61d) |  | -23d → -75d |  |
| 20 | **AC WORKS** | 2013-12-15 → 2014-02-24 (+71d) | 2014-05-13 → 2014-07-13 (+61d) |  |  |  |
| 10 | **GROUND FLOOR** | 2013-12-15 → 2014-02-24 (+71d) | 2014-03-23 → 2014-05-31 (+69d) |  |  |  |
| DUKHCONP1AZ2ACGF4600 | Installation AC Pipes | 2013-12-15 → 2014-02-24 (+71d) | 2014-01-07 → 2014-03-18 (+70d) |  | 25d → -34d |  |
| DUKHCONP1AZ2ACGF4605 | Fixing of Ventilation Equipments | 2014-02-06 → 2014-04-17 (+70d) | 2014-03-08 → 2014-05-15 (+68d) |  | 8d → -51d |  |
| DUKHCONP1AZ2ACGF4610 | Fixing of Split AC | 2014-03-01 → 2014-05-08 (+68d) | 2014-03-23 → 2014-05-31 (+69d) |  | 8d → -51d |  |
| 15 | **FIRST FLOORS** | 2014-01-29 → 2014-04-01 (+62d) | 2014-05-01 → 2014-07-01 (+61d) |  |  |  |
| DUKHCONP1AZ2ACFF4615 | Installation AC Pipes | 2014-01-29 → 2014-04-01 (+62d) | 2014-02-22 → 2014-04-23 (+60d) |  | 3d → -49d |  |
| DUKHCONP1AZ2ACFF4620 | Fixing of Ventilation Equipments | 2014-03-19 → 2014-05-19 (+61d) | 2014-04-16 → 2014-06-16 (+61d) |  | -22d → -74d |  |
| DUKHCONP1AZ2ACFF4625 | Fixing of Split AC | 2014-04-09 → 2014-06-09 (+61d) | 2014-05-01 → 2014-07-01 (+61d) |  | -22d → -74d |  |
| 20 | **ROOF** | 2014-03-04 → 2014-05-04 (+61d) | 2014-05-13 → 2014-07-13 (+61d) |  |  |  |
| DUKHCONP1AZ2ACRF4630 | Installation of Refrigerant Pipes | 2014-03-04 → 2014-05-04 (+61d) | 2014-04-01 → 2014-06-01 (+61d) |  | 10d → -42d |  |
| DUKHCONP1AZ2ACRF4635 | Installation of Condensing Unit | 2014-04-15 → 2014-06-15 (+61d) | 2014-05-13 → 2014-07-13 (+61d) |  | -21d → -73d |  |
| 25 | **EXTERNAL WORKS** | 2013-12-23 → 2014-02-22 (+61d) | 2014-05-31 → 2014-07-17 (+47d) |  |  |  |
| 10 | **MISCELLANEOUS** | 2013-12-23 → 2014-02-22 (+61d) | 2014-05-31 → 2014-07-17 (+47d) |  |  |  |
| DUKHCONP1AZ2MSEX5000 | Construction of Manholes | 2013-12-23 → 2014-02-22 (+61d) | 2014-01-20 → 2014-03-22 (+61d) |  | 9d → -42d |  |
| DUKHCONP1AZ2MSEX5005 | Construction of Soak pit, Chambers | 2014-01-06 → 2014-03-08 (+61d) | 2014-02-03 → 2014-04-05 (+61d) |  | 9d → -42d |  |
| DUKHCONP1AZ2MSEX5015 | Construction of grease Trap | 2014-01-26 → 2014-03-27 (+60d) | 2014-02-18 → 2014-04-19 (+60d) |  | 9d → -42d |  |
| DUKHCONP1AZ2MSEX5020 | Construction Entrance Ramp | 2014-02-13 → 2014-04-15 (+61d) | 2014-03-13 → 2014-05-13 (+61d) |  | -8d → -60d |  |
| DUKHCONP1AZ2MSEX5010 | Telephone cable laying | 2014-02-19 → 2014-04-20 (+60d) | 2014-03-19 → 2014-05-18 (+60d) |  | 9d → -42d |  |
| DUKHCONP1AZ2MSEX5025 | SS.Handrails and Balustrades | 2014-03-03 → 2014-05-03 (+61d) | 2014-03-25 → 2014-05-25 (+61d) |  | -5d → -57d |  |
| DUKHCONP1AZ2MSEX5335 | Aluminum Roll-up Shutter with 2m Wall | 2014-05-03 → 2014-06-19 (+47d) | 2014-05-31 → 2014-07-17 (+47d) |  | 79d → 38d |  |
| 15 | **WATER TANK ENCLOSURE** | 2014-02-15 → 2014-04-16 (+60d) | 2014-05-06 → 2014-07-06 (+61d) |  |  |  |
| DUKHCONP1AZ2WEEX5030 | Excavation | 2014-02-15 → 2014-04-16 (+60d) | 2014-03-09 → 2014-05-08 (+60d) |  | -11d → -63d |  |
| DUKHCONP1AZ2WEEX5035 | Construction of Raft | 2014-02-20 → 2014-04-22 (+61d) | 2014-03-20 → 2014-05-20 (+61d) |  | -11d → -63d |  |
| DUKHCONP1AZ2WEEX5040 | Block works & Plastering | 2014-03-02 → 2014-05-01 (+60d) | 2014-03-30 → 2014-05-29 (+60d) |  | -11d → -63d |  |
| DUKHCONP1AZ2WEEX5045 | Flooring & Painting | 2014-03-09 → 2014-05-08 (+60d) | 2014-04-06 → 2014-06-05 (+60d) |  | -11d → -63d |  |
| DUKHCONP1AZ2WEEX5050 | Installation of Steel Gate | 2014-03-22 → 2014-05-21 (+60d) | 2014-04-13 → 2014-06-12 (+60d) |  | -11d → -63d |  |
| DUKHCONP1AZ2WEEX5060 | Structural steel & SS Shed cover installation | 2014-03-31 → 2014-05-31 (+61d) | 2014-04-28 → 2014-06-28 (+61d) |  | -14d → -66d |  |
| DUKHCONP1AZ2WEEX5065 | Install. of Water Tank,Chiller,Pump & Meter | 2014-04-08 → 2014-06-08 (+61d) | 2014-05-06 → 2014-07-06 (+61d) |  | -15d → -67d |  |
| 20 | **HARD LANDSCAPING** | 2014-02-27 → 2014-04-29 (+61d) | 2014-04-09 → 2014-06-09 (+61d) |  |  |  |
| DUKHCONP1AZ2HDEX5090 | kerb works | 2014-02-27 → 2014-04-29 (+61d) | 2014-03-22 → 2014-05-21 (+60d) |  | -8d → -60d |  |
| DUKHCONP1AZ2HDEX5095 | Cobble Stone Works | 2014-03-11 → 2014-05-11 (+61d) | 2014-04-02 → 2014-06-02 (+61d) |  | -8d → -60d |  |
| DUKHCONP1AZ2HDEX5100 | Interlock works | 2014-03-18 → 2014-05-18 (+61d) | 2014-04-09 → 2014-06-09 (+61d) |  | -8d → -60d |  |
| 25 | **SOFT LANDSCAPING** | 2014-03-24 → 2014-05-24 (+61d) | 2014-04-28 → 2014-06-28 (+61d) |  |  |  |
| DUKHCONP1AZ2SLEX5105 | Laying of Grass/ green area | 2014-03-24 → 2014-05-24 (+61d) | 2014-04-21 → 2014-06-21 (+61d) |  | -8d → -60d |  |
| DUKHCONP1AZ2SLEX5110 | Laying of Palm tree | 2014-03-31 → 2014-05-31 (+61d) | 2014-04-28 → 2014-06-28 (+61d) |  | -8d → -60d |  |
| 30 | **TESTING AND COMMISSIONING** | 2014-05-18 → 2014-07-17 (+60d) | 2014-06-15 → 2014-08-18 (+64d) |  |  |  |
| DUKHCONP1AZ2ACTC8000 | Pre-Commissioning & Testing of AC Works | 2014-05-18 → 2014-07-17 (+60d) | 2014-06-15 → 2014-08-18 (+64d) |  | -24d → -76d |  |
| DUKHCONP1AZ2ELTC8010 | Pre-Commissioning & Testing of Electrical Works | 2014-05-18 → 2014-07-17 (+60d) | 2014-06-15 → 2014-08-18 (+64d) |  | -24d → -76d |  |
| DUKHCONP1AZ2PLTC8005 | Pre-Commissioning & Testing of Plumbing Works | 2014-05-18 → 2014-07-17 (+60d) | 2014-06-15 → 2014-08-18 (+64d) |  | -24d → -76d |  |
| 20 | **ZONE - 3 (4 Twin Villas)** |  | 2014-07-14 → 2014-09-16 (+64d) |  |  |  |
| 10 | **STRUCTURAL WORKS** |  | 2014-02-20 → 2014-04-22 (+61d) |  |  |  |
| 10 | **SUB STRUCTURE** |  | 2013-10-08 → 2013-11-30 (+53d) |  |  |  |
| 10 | **UPTO GRADE SLAB** |  | 2013-10-08 → 2013-11-30 (+53d) |  |  |  |
| DUKHCONP1AZ3STUG1000 | Footing Excavation | 2013-04-27 A | 2013-05-25 A | 0% → 100% | -11d → none |  |
| DUKHCONP1AZ3STUG1005 | Footing Antitermite | 2013-05-08 A | 2013-06-03 A | 0% → 100% | -11d → none |  |
| DUKHCONP1AZ3STUG1010 | Footing Blinding | 2013-05-12 A | 2013-06-06 A | 0% → 100% | -11d → none |  |
| DUKHCONP1AZ3STUG1015 | Footing Waterproofing & Screed | 2013-05-18 A | 2013-06-15 A | 0% → 100% | -11d → none |  |
| DUKHCONP1AZ3STUG1020 | Construction of foundations | 2013-06-02 A | 2013-06-24 A | 0% → 100% | -11d → none |  |
| DUKHCONP1AZ3STUG1025 | Construction of neck of columns | 2013-06-26 → 2013-06-29 A (+3d) | 2013-07-24 → 2013-07-27 A (+3d) | 0% → 100% | -24d → none |  |
| DUKHCONP1AZ3STUG1030 | Waterproofing Footing & Neck Column | 2013-07-06 → 2013-07-08 A (+2d) | 2013-08-03 → 2013-08-05 A (+2d) | 0% → 100% | -24d → none |  |
| DUKHCONP1AZ3STUG1035 | Backfilling Upto Grade Beam Bottom | 2013-07-20 → 2013-07-27 A (+7d) | 2013-08-20 → 2013-08-27 A (+7d) | 0% → 100% | -24d → none |  |
| DUKHCONP1AZ3STUG1040 | Construction of Grade Beams | 2013-08-05 → 2013-08-15 A (+10d) | 2013-09-05 → 2013-09-12 A (+7d) | 0% → 100% | -24d → none | resources BLINDING MASON SK [244 h]; SCREED MASON SK [224 h]; STEEL FIXERS SK [1497 h]; CARPENTERS SK [2152 h]; CONCRETE MASON SK [256 h]; LABOR- SUBCONTRACTOR [3195.75 h]; BLINDING QTY [304 Sqm]; SCREED QTY [280 Sqm]; REINFORCEMENT BARS QTY [18709 kg]; FORMWORK QTY [1076 Sqm]; CONCRETE QTY [128 Cum] → CONCRETE MASON SK [244 h]; SCREED MASON SK [224 h]; STEEL FIXERS SK [1497 h]; CARPENTERS SK [2152 h]; CONCRETE MASON SK [256 h]; LABOR- SUBCONTRACTOR [3195.75 h]; BLINDING QTY [304 Sqm]; SCREED QTY [280 Sqm]; REINFORCEMENT BARS QTY [18709 kg]; FORMWORK QTY [1076 Sqm]; CONCRETE QTY [128 Cum] |
| DUKHCONP1AZ3STUG1045 | Construction of slab on grade | 2013-09-10 → 2013-11-02 (+53d) | 2013-10-08 → 2013-11-30 (+53d) |  | -24d → -67d | resources BLINDING MASON SK [923 h]; SCREED MASON SK [850 h]; STEEL FIXERS SK [536 h]; CONCRETE MASON SK [400 h]; LABOR- SUBCONTRACTOR [1713 h]; BLINDING QTY [1153 Sqm]; SCREED QTY [1062 Sqm]; CONCRETE QTY [200 Cum]; WELDED WIRE MESH [2008 Sqm] → CONCRETE MASON SK [923 h]; SCREED MASON SK [850 h]; STEEL FIXERS SK [536 h]; CONCRETE MASON SK [400 h]; LABOR- SUBCONTRACTOR [1713 h]; BLINDING QTY [1153 Sqm]; SCREED QTY [1062 Sqm]; CONCRETE QTY [200 Cum]; WELDED WIRE MESH [2008 Sqm] |
| 15 | **SUPERSTRUCTURE** | 2013-09-26 → 2013-11-18 (+53d) | 2014-02-20 → 2014-04-22 (+61d) |  |  |  |
| 10 | **GROUND FLOOR** | 2013-09-26 → 2013-11-18 (+53d) | 2013-11-23 → 2014-01-13 (+51d) |  |  |  |

| ID | Task | Start | Finish | Total float |
| --- | --- | --- | --- | --- |
| DUKHCONP1AZ3STGF2000 | Column-Rebar & Formwork | 2013-09-26 → 2013-11-18 (+53d) | 2013-10-27 → 2013-12-16 (+50d) | -24d → -67d |
| DUKHCONP1AZ3STGF2005 | Column-Concrete | 2013-10-05 → 2013-11-26 (+52d) | 2013-11-03 → 2013-12-24 (+51d) | -22d → -65d |
| DUKHCONP1AZ3STGF2010 | Beam, Stairs ,Slab-Rebar & Formwork | 2013-10-22 → 2013-12-11 (+50d) | 2013-11-19 → 2014-01-09 (+51d) | -22d → -65d |
| DUKHCONP1AZ3STGF2015 | Beam, Stairs ,Slab-Concrete | 2013-11-07 → 2013-12-29 (+52d) | 2013-11-23 → 2014-01-13 (+51d) | -22d → -65d |
| 15 | **FIRST FLOORS** | 2013-11-10 → 2014-01-09 (+60d) | 2014-01-06 → 2014-03-08 (+61d) |  |
| DUKHCONP1AZ3STFF2020 | Column-Rebar & Formwork | 2013-11-10 → 2014-01-09 (+60d) | 2013-12-08 → 2014-02-06 (+60d) | -22d → -73d |
| DUKHCONP1AZ3STFF2025 | Column-Concrete | 2013-11-19 → 2014-01-19 (+61d) | 2013-12-16 → 2014-02-16 (+62d) | -20d → -71d |
| DUKHCONP1AZ3STFF2030 | Beam, Stairs ,Slab-Rebar & Formwork | 2013-12-04 → 2014-02-03 (+61d) | 2014-01-02 → 2014-03-04 (+61d) | -20d → -71d |
| DUKHCONP1AZ3STFF2035 | Beam, Stairs ,Slab-Concrete | 2013-12-22 → 2014-02-20 (+60d) | 2014-01-06 → 2014-03-08 (+61d) | -20d → -71d |
| 20 | **ROOF** | 2013-12-24 → 2014-02-23 (+61d) | 2014-02-20 → 2014-04-22 (+61d) |  |
| DUKHCONP1AZ3STRF2040 | Column-Rebar & Formwork | 2013-12-24 → 2014-02-23 (+61d) | 2014-01-13 → 2014-03-15 (+61d) | -9d → -60d |
| DUKHCONP1AZ3STRF2045 | Column-Concrete | 2013-12-28 → 2014-02-26 (+60d) | 2014-01-15 → 2014-03-17 (+61d) | -4d → -55d |
| DUKHCONP1AZ3STRF2050 | Slab-Rebar & Formwork - Head Room | 2013-12-30 → 2014-03-01 (+61d) | 2014-01-21 → 2014-03-23 (+61d) | -4d → -55d |
| DUKHCONP1AZ3STRF2055 | Slab-Concrete-Head room | 2014-01-09 → 2014-03-11 (+61d) | 2014-01-23 → 2014-03-25 (+61d) | -4d → -55d |
| DUKHCONP1AZ3STRF2060 | Construction of Parapets | 2014-01-12 → 2014-03-13 (+60d) | 2014-02-09 → 2014-04-10 (+60d) | 32d → -19d |
| DUKHCONP1AZ3STRF2065 | Construction of up stands/Plinth | 2014-01-22 → 2014-03-25 (+62d) | 2014-02-20 → 2014-04-22 (+61d) | 28d → -24d |
| 15 | **FINISHING WORKS** | 2013-12-08 → 2014-02-17 (+71d) | 2014-06-15 → 2014-08-18 (+64d) |  |
| 10 | **INTERNAL FINISHES** | 2013-12-08 → 2014-02-17 (+71d) | 2014-06-15 → 2014-08-18 (+64d) |  |
| 10 | **GROUND FLOOR** | 2013-12-08 → 2014-02-17 (+71d) | 2014-05-21 → 2014-07-29 (+69d) |  |
| DUKHCONP1AZ3ARGF3000 | Block work | 2013-12-08 → 2014-02-17 (+71d) | 2014-01-06 → 2014-03-17 (+70d) | -6d → -65d |
| DUKHCONP1AZ3ARGF3005 | Plastering work | 2013-12-31 → 2014-03-11 (+70d) | 2014-01-28 → 2014-04-08 (+70d) | -6d → -65d |
| DUKHCONP1AZ3ARGF3010 | Flooring screed | 2014-01-08 → 2014-03-19 (+70d) | 2014-02-01 → 2014-04-12 (+70d) | 2d → -57d |
| DUKHCONP1AZ3ARGF3030 | Paint First coat | 2014-01-20 → 2014-03-27 (+66d) | 2014-02-18 → 2014-04-24 (+65d) | 5d → -51d |
| DUKHCONP1AZ3ARGF3015 | Wet area waterproofing & Protection Screed | 2014-01-18 → 2014-03-29 (+70d) | 2014-02-03 → 2014-04-14 (+70d) | -6d → -65d |
| DUKHCONP1AZ3ARGF3020 | Ceramic Wall Tiling | 2014-01-23 → 2014-04-03 (+70d) | 2014-02-22 → 2014-05-01 (+68d) | -6d → -65d |
| DUKHCONP1AZ3ARGF3025 | Porcelain Tile flooring | 2014-01-29 → 2014-04-09 (+70d) | 2014-02-27 → 2014-05-07 (+69d) | -6d → -65d |
| DUKHCONP1AZ3ARGF3045 | Fixing of Suspension systems | 2014-02-17 → 2014-04-27 (+69d) | 2014-03-11 → 2014-05-19 (+69d) | -6d → -65d |
| DUKHCONP1AZ3ARGF3035 | Slate Tile Flooring & Skirting | 2014-02-19 → 2014-04-29 (+69d) | 2014-03-08 → 2014-05-15 (+68d) | -1d → -60d |
| DUKHCONP1AZ3ARGF3055 | Aluminum tile false ceiling | 2014-02-25 → 2014-05-05 (+69d) | 2014-03-25 → 2014-06-02 (+69d) | -3d → -62d |
| DUKHCONP1AZ3ARGF3040 | Cobble Tile flooring | 2014-02-26 → 2014-05-06 (+69d) | 2014-03-15 → 2014-05-22 (+68d) | -3d → -62d |
| DUKHCONP1AZ3ARGF3060 | Gypsum board false ceiling | 2014-03-01 → 2014-05-08 (+68d) | 2014-03-29 → 2014-06-05 (+68d) | -6d → -65d |
| DUKHCONP1AZ3ARGF3050 | Granite - Stair case flooring & Skirting | 2014-03-06 → 2014-05-14 (+69d) | 2014-03-29 → 2014-06-05 (+68d) | -3d → -62d |
| DUKHCONP1AZ3ARGF3065 | Wooden door & PVC Door | 2014-03-20 → 2014-05-28 (+69d) | 2014-04-06 → 2014-06-14 (+69d) | -3d → -62d |
| DUKHCONP1AZ3ARGF3070 | Aluminum doors | 2014-03-26 → 2014-06-03 (+69d) | 2014-04-12 → 2014-06-19 (+68d) | -3d → -62d |
| DUKHCONP1AZ3ARGF3075 | Carpentry & Joinery Works | 2014-04-01 → 2014-06-09 (+69d) | 2014-04-23 → 2014-07-01 (+69d) | -3d → -62d |
| DUKHCONP1AZ3ARGF3080 | Aluminum windows | 2014-04-02 → 2014-06-10 (+69d) | 2014-04-24 → 2014-07-02 (+69d) | 7d → -52d |
| DUKHCONP1AZ3ARGF3085 | S.S.Balustrade | 2014-04-09 → 2014-06-17 (+69d) | 2014-05-01 → 2014-07-09 (+69d) | 2d → -57d |
| DUKHCONP1AZ3ARGF3090 | Installation of Granite Counter Top | 2014-04-14 → 2014-06-22 (+69d) | 2014-04-30 → 2014-07-08 (+69d) | -3d → -62d |
| DUKHCONP1AZ3ARGF3095 | Final Painting | 2014-04-23 → 2014-07-01 (+69d) | 2014-05-21 → 2014-07-29 (+69d) | -3d → -62d |
| 15 | **FIRST FLOORS** | 2014-01-20 → 2014-03-23 (+62d) | 2014-06-15 → 2014-08-18 (+64d) |  |
| DUKHCONP1AZ3ARFF3300 | Block work | 2014-01-20 → 2014-03-23 (+62d) | 2014-02-18 → 2014-04-20 (+61d) | -24d → -76d |
| DUKHCONP1AZ3ARFF3305 | Plastering work | 2014-02-15 → 2014-04-16 (+60d) | 2014-03-15 → 2014-05-14 (+60d) | -24d → -76d |
| DUKHCONP1AZ3ARFF3310 | Flooring screed | 2014-02-23 → 2014-04-24 (+60d) | 2014-03-18 → 2014-05-18 (+61d) | -12d → -64d |
| DUKHCONP1AZ3ARFF3330 | Paint First coat | 2014-03-03 → 2014-05-03 (+61d) | 2014-03-31 → 2014-05-31 (+61d) | -10d → -62d |
| DUKHCONP1AZ3ARFF3315 | Wet area waterproofing | 2014-03-06 → 2014-05-06 (+61d) | 2014-03-23 → 2014-05-22 (+60d) | -24d → -76d |
| DUKHCONP1AZ3ARFF3320 | Ceramic Wall Tiling | 2014-03-13 → 2014-05-13 (+61d) | 2014-04-10 → 2014-06-10 (+61d) | -24d → -76d |
| DUKHCONP1AZ3ARFF3325 | Porcelain Tile flooring | 2014-03-20 → 2014-05-20 (+61d) | 2014-04-17 → 2014-06-17 (+61d) | -24d → -76d |
| DUKHCONP1AZ3ARFF3345 | Fixing of Suspension systems | 2014-04-02 → 2014-06-02 (+61d) | 2014-04-24 → 2014-06-24 (+61d) | -24d → -76d |
| DUKHCONP1AZ3ARFF3335 | Slate Tile Flooring & Skirting | 2014-04-07 → 2014-06-07 (+61d) | 2014-04-23 → 2014-06-23 (+61d) | -16d → -68d |
| DUKHCONP1AZ3ARFF3360 | Gypsum board false ceiling | 2014-04-09 → 2014-06-09 (+61d) | 2014-05-07 → 2014-07-07 (+61d) | -24d → -76d |
| DUKHCONP1AZ3ARFF3350 | Granite - Stair case flooring & Skirting | 2014-04-10 → 2014-06-10 (+61d) | 2014-05-03 → 2014-07-02 (+60d) | -22d → -74d |
| DUKHCONP1AZ3ARFF3365 | Wooden door | 2014-04-24 → 2014-06-24 (+61d) | 2014-05-11 → 2014-07-10 (+60d) | -24d → -76d |
| DUKHCONP1AZ3ARFF3370 | Aluminum Door | 2014-04-24 → 2014-06-24 (+61d) | 2014-05-17 → 2014-07-16 (+60d) | -24d → -76d |
| DUKHCONP1AZ3ARFF3375 | Carpentry & Joinery Works | 2014-04-30 → 2014-06-30 (+61d) | 2014-05-28 → 2014-07-28 (+61d) | -24d → -76d |
| DUKHCONP1AZ3ARFF3380 | Aluminum windows | 2014-05-01 → 2014-07-01 (+61d) | 2014-05-24 → 2014-07-23 (+60d) | -20d → -72d |
| DUKHCONP1AZ3ARFF3385 | Handrail & Balustrade | 2014-05-12 → 2014-07-12 (+61d) | 2014-06-03 → 2014-08-06 (+64d) | -24d → -76d |
| DUKHCONP1AZ3ARFF3390 | Installation of Granite Counter Top | 2014-05-12 → 2014-07-12 (+61d) | 2014-06-03 → 2014-08-06 (+64d) | -23d → -75d |
| DUKHCONP1AZ3ARFF3395 | Final Painting | 2014-05-18 → 2014-07-17 (+60d) | 2014-06-15 → 2014-08-18 (+64d) | -24d → -76d |
| 20 | **ROOF** | 2014-02-03 → 2014-04-05 (+61d) | 2014-04-09 → 2014-06-08 (+60d) |  |
| DUKHCONP1AZ3ARRF3600 | Block work | 2014-02-03 → 2014-04-05 (+61d) | 2014-02-26 → 2014-04-27 (+60d) | 28d → -23d |
| DUKHCONP1AZ3ARRF3605 | Plastering work | 2014-02-12 → 2014-04-13 (+60d) | 2014-03-06 → 2014-05-05 (+60d) | 28d → -23d |
| DUKHCONP1AZ3ARRF3610 | Flooring screed | 2014-02-26 → 2014-04-27 (+60d) | 2014-03-15 → 2014-05-13 (+59d) | 33d → -18d |
| DUKHCONP1AZ3ARRF3695 | Painting -Storage area | 2014-03-06 → 2014-05-05 (+60d) | 2014-03-29 → 2014-05-27 (+59d) | 33d → -18d |
| DUKHCONP1AZ3ARRF3620 | Epoxy Painting -Storage area | 2014-03-24 → 2014-05-22 (+59d) | 2014-04-09 → 2014-06-08 (+60d) | 33d → -18d |
| 15 | **EXTERNAL FINISHES** | 2014-02-26 → 2014-04-28 (+61d) | 2014-05-15 → 2014-07-15 (+61d) |  |
| 10 | **ROOF** | 2014-03-12 → 2014-05-12 (+61d) | 2014-05-15 → 2014-07-15 (+61d) |  |
| DUKHCONP1AZ3ARRF3630 | Leveling Screed for Waterproofing | 2014-03-12 → 2014-05-12 (+61d) | 2014-04-09 → 2014-06-09 (+61d) | -3d → -55d |
| DUKHCONP1AZ3ARRF3635 | Laying of Waterproofing Membrane | 2014-03-16 → 2014-05-15 (+60d) | 2014-04-13 → 2014-06-12 (+60d) | -3d → -55d |
| DUKHCONP1AZ3ARRF3640 | Installation of Insulation & Protection | 2014-03-20 → 2014-05-20 (+61d) | 2014-04-17 → 2014-06-17 (+61d) | -3d → -55d |
| DUKHCONP1AZ3ARRF3645 | Lime Stone Chips & Paving slab Installation | 2014-03-25 → 2014-05-25 (+61d) | 2014-04-22 → 2014-06-22 (+61d) | -3d → -55d |

| ID | Task | Start | Finish | Complete | Total float |
| --- | --- | --- | --- | --- | --- |
| DUKHCONP1AZ3ARRF3650 | Install. of Gal. Frame & Aluminum Slat Screen | 2014-04-02 → 2014-06-02 (+61d) | 2014-04-30 → 2014-06-30 (+61d) |  | -3d → -55d |
| DUKHCONP1AZ3ARRF3655 | Installation of Pumps Protection cabinets | 2014-04-17 → 2014-06-17 (+61d) | 2014-05-10 → 2014-07-09 (+60d) |  | -3d → -55d |
| DUKHCONP1AZ3ARRF3660 | Installation of Access Ladder | 2014-04-29 → 2014-06-29 (+61d) | 2014-05-15 → 2014-07-15 (+61d) |  | 2d → -50d |
| 15 | **ELEVATION** | 2014-02-26 → 2014-04-28 (+61d) | 2014-04-19 → 2014-06-18 (+60d) |  |  |
| DUKHCONP1AZ3AREL3665 | External Plastering | 2014-02-26 → 2014-04-28 (+61d) | 2014-03-26 → 2014-05-26 (+61d) |  | 23d → -29d |
| DUKHCONP1AZ3AREL3670 | External stone cladding works | 2014-03-16 → 2014-05-15 (+60d) | 2014-04-07 → 2014-06-07 (+61d) |  | 25d → -27d |
| DUKHCONP1AZ3AREL3680 | External Painting | 2014-03-27 → 2014-05-27 (+61d) | 2014-04-19 → 2014-06-18 (+60d) |  | 25d → -27d |
| 20 | **MEP WORKS** | 2013-09-01 → 2013-09-08 (+7d) | 2014-06-14 → 2014-08-17 (+64d) |  |  |
| 10 | **ELECTRICAL WORKS** | 2013-12-14 → 2014-02-23 (+71d) | 2014-06-14 → 2014-08-17 (+64d) |  |  |
| 10 | **GROUND FLOOR** | 2013-12-14 → 2014-02-23 (+71d) | 2014-04-23 → 2014-07-01 (+69d) |  |  |
| DUKHCONP1AZ3ELGF4000 | Fixing of wall conduits & switch socket boxes | 2013-12-14 → 2014-02-23 (+71d) | 2014-01-12 → 2014-03-23 (+70d) |  | 3d → -56d |
| DUKHCONP1AZ3ELGF4005 | Cable tray & trunking installation | 2013-12-26 → 2014-03-06 (+70d) | 2014-01-18 → 2014-03-29 (+70d) |  | 21d → -38d |
| DUKHCONP1AZ3ELGF4010 | Installation of wiring & Main Cabling | 2014-01-04 → 2014-03-15 (+70d) | 2014-02-01 → 2014-04-12 (+70d) |  | 21d → -38d |
| DUKHCONP1AZ3ELGF4015 | Install. of CAMS & Fire Fighting Accessories | 2014-03-09 → 2014-05-17 (+69d) | 2014-04-06 → 2014-06-14 (+69d) |  | 6d → -53d |
| DUKHCONP1AZ3ELGF4020 | Installation of DBS,MCCB Accessories. | 2014-03-15 → 2014-05-22 (+68d) | 2014-04-06 → 2014-06-14 (+69d) |  | -6d → -65d |
| DUKHCONP1AZ3ELGF4025 | Installation of Lighting fixtures & Accessories | 2014-03-26 → 2014-06-03 (+69d) | 2014-04-23 → 2014-07-01 (+69d) |  | 1d → -58d |
| DUKHCONP1AZ3ELGF4030 | Installation of Telephone System | 2014-03-26 → 2014-06-03 (+69d) | 2014-04-17 → 2014-06-25 (+69d) |  | -6d → -65d |
| 15 | **FIRST FLOORS** | 2014-01-26 → 2014-03-29 (+62d) | 2014-05-27 → 2014-07-27 (+61d) |  |  |
| DUKHCONP1AZ3ELFF4035 | Fixing of wall conduits & switch socket boxes | 2014-01-26 → 2014-03-29 (+62d) | 2014-02-24 → 2014-04-26 (+61d) |  | -13d → -65d |
| DUKHCONP1AZ3ELFF4040 | Cable tray & trunking installation | 2014-02-06 → 2014-04-09 (+62d) | 2014-03-02 → 2014-05-01 (+60d) |  | 5d → -47d |
| DUKHCONP1AZ3ELFF4045 | Installation of wiring & Main Cabling | 2014-02-18 → 2014-04-20 (+61d) | 2014-03-18 → 2014-05-18 (+61d) |  | 3d → -49d |
| DUKHCONP1AZ3ELFF4050 | Installation of Telephone System | 2014-04-15 → 2014-06-15 (+61d) | 2014-05-13 → 2014-07-13 (+61d) |  | -13d → -65d |
| DUKHCONP1AZ3ELFF4055 | Install. of CAMS & Fire Fighting Accessories | 2014-04-17 → 2014-06-17 (+61d) | 2014-05-15 → 2014-07-15 (+61d) |  | -23d → -75d |
| DUKHCONP1AZ3ELFF4060 | Installation of DBS,MCCB Accessories. | 2014-04-21 → 2014-06-21 (+61d) | 2014-05-13 → 2014-07-13 (+61d) |  | -21d → -73d |
| DUKHCONP1AZ3ELFF4065 | Installation of Lighting fixtures & Accessories | 2014-04-29 → 2014-06-29 (+61d) | 2014-05-27 → 2014-07-27 (+61d) |  | -23d → -75d |
| 20 | **ROOF** | 2014-05-13 → 2014-07-13 (+61d) | 2014-06-14 → 2014-08-17 (+64d) |  |  |
| DUKHCONP1AZ3ELRF4070 | Installation of Isolator | 2014-05-13 → 2014-07-13 (+61d) | 2014-06-02 → 2014-08-05 (+64d) |  | -23d → -75d |
| DUKHCONP1AZ3ELRF4075 | Installation of TV Dish Antenna | 2014-05-19 → 2014-07-19 (+61d) | 2014-06-14 → 2014-08-17 (+64d) |  | -23d → -75d |
| 15 | **PLUMBING, DRAINAGE & FIRE FIGHTING WORKS** | 2013-09-01 → 2013-09-08 (+7d) | 2014-06-14 → 2014-08-17 (+64d) |  |  |
| 10 | **GROUND FLOOR** | 2013-09-01 → 2013-09-08 (+7d) | 2014-04-23 → 2014-07-01 (+69d) |  |  |
| DUKHCONP1AZ3PLUG4300 | Drainage / Storm Pipes in Grade Slab | 2013-09-01 → 2013-09-08 A (+7d) | 2013-09-18 → 2013-09-25 A (+7d) | 0% → 100% | -24d → none |
| DUKHCONP1AZ3PLGF4305 | Installation of Plumbing pipes & testing | 2013-12-25 → 2014-03-05 (+70d) | 2014-01-14 → 2014-03-25 (+70d) |  | -6d → -65d |
| DUKHCONP1AZ3PLGF4310 | Installation of Drainage pipes &testing | 2013-12-25 → 2014-03-05 (+70d) | 2014-01-14 → 2014-03-25 (+70d) |  | 15d → -44d |
| DUKHCONP1AZ3PLGF4315 | Sanitary Fittings & Accessories | 2014-03-26 → 2014-06-03 (+69d) | 2014-04-17 → 2014-06-25 (+69d) |  | 21d → -38d |
| DUKHCONP1AZ3PLGF4320 | Installation of Water Heater | 2014-04-07 → 2014-06-15 (+69d) | 2014-04-23 → 2014-07-01 (+69d) |  | 21d → -38d |
| 15 | **FIRST FLOORS** | 2014-02-06 → 2014-04-09 (+62d) | 2014-05-22 → 2014-07-22 (+61d) |  |  |
| DUKHCONP1AZ3PLFF4325 | Installation of Plumbing pipes & testing | 2014-02-06 → 2014-04-09 (+62d) | 2014-02-27 → 2014-04-29 (+61d) |  | -24d → -76d |
| DUKHCONP1AZ3PLFF4330 | Installation of Drainage pipes & testing | 2014-02-06 → 2014-04-09 (+62d) | 2014-02-27 → 2014-04-29 (+61d) |  | -2d → -54d |
| DUKHCONP1AZ3PLFF4335 | Sanitary Fittings & Accessories | 2014-04-24 → 2014-06-24 (+61d) | 2014-05-17 → 2014-07-16 (+60d) |  | -19d → -71d |
| DUKHCONP1AZ3PLFF4340 | Installation of Water Heater | 2014-05-06 → 2014-07-06 (+61d) | 2014-05-22 → 2014-07-22 (+61d) |  | -19d → -71d |
| 20 | **ROOF** | 2014-02-26 → 2014-04-27 (+60d) | 2014-06-14 → 2014-08-17 (+64d) |  |  |
| DUKHCONP1AZ3PLRF4345 | Installation of Plumbing pipes & fittings | 2014-02-26 → 2014-04-27 (+60d) | 2014-03-15 → 2014-05-13 (+59d) |  | 32d → -19d |
| DUKHCONP1AZ3PLRF4350 | Installation of Rain water Pipes | 2014-04-12 → 2014-06-11 (+60d) | 2014-04-28 → 2014-06-28 (+61d) |  | 2d → -50d |
| DUKHCONP1AZ3PLRF4355 | Roof Water Tank Installation & Connections | 2014-05-17 → 2014-07-16 (+60d) | 2014-06-14 → 2014-08-17 (+64d) |  | -23d → -75d |
| 20 | **AC WORKS** | 2014-01-14 → 2014-03-25 (+70d) | 2014-06-11 → 2014-08-14 (+64d) |  |  |
| 10 | **GROUND FLOOR** | 2014-01-14 → 2014-03-25 (+70d) | 2014-04-21 → 2014-06-29 (+69d) |  |  |
| DUKHCONP1AZ3ACGF4600 | Installation AC Pipes | 2014-01-14 → 2014-03-25 (+70d) | 2014-02-05 → 2014-04-16 (+70d) |  | 25d → -34d |
| DUKHCONP1AZ3ACGF4605 | Fixing of Ventilation Equipments | 2014-03-09 → 2014-05-17 (+69d) | 2014-04-06 → 2014-06-14 (+69d) |  | 8d → -51d |
| DUKHCONP1AZ3ACGF4610 | Fixing of Split AC | 2014-03-30 → 2014-06-07 (+69d) | 2014-04-21 → 2014-06-29 (+69d) |  | 8d → -51d |
| 15 | **FIRST FLOORS** | 2014-03-01 → 2014-04-30 (+60d) | 2014-05-31 → 2014-07-30 (+60d) |  |  |
| DUKHCONP1AZ3ACFF4615 | Installation AC Pipes | 2014-03-01 → 2014-04-30 (+60d) | 2014-03-23 → 2014-05-22 (+60d) |  | 3d → -49d |
| DUKHCONP1AZ3ACFF4620 | Fixing of Ventilation Equipments | 2014-04-17 → 2014-06-17 (+61d) | 2014-05-15 → 2014-07-15 (+61d) |  | -22d → -74d |
| DUKHCONP1AZ3ACFF4625 | Fixing of Split AC | 2014-05-08 → 2014-07-08 (+61d) | 2014-05-31 → 2014-07-30 (+60d) |  | -22d → -74d |
| 20 | **ROOF** | 2014-04-02 → 2014-06-02 (+61d) | 2014-06-11 → 2014-08-14 (+64d) |  |  |
| DUKHCONP1AZ3ACRF4630 | Installation of Refrigerant Pipes | 2014-04-02 → 2014-06-02 (+61d) | 2014-04-30 → 2014-06-30 (+61d) |  | 10d → -42d |
| DUKHCONP1AZ3ACRF4635 | Installation of Condensing Unit | 2014-05-14 → 2014-07-14 (+61d) | 2014-06-11 → 2014-08-14 (+64d) |  | -21d → -73d |
| 25 | **EXTERNAL WORKS** | 2014-01-21 → 2014-03-23 (+61d) | 2014-06-29 → 2014-08-31 (+63d) |  |  |
| 10 | **MISCELLANEOUS** | 2014-01-21 → 2014-03-23 (+61d) | 2014-06-29 → 2014-08-31 (+63d) |  |  |
| DUKHCONP1AZ3MSEX5000 | Construction of Manholes | 2014-01-21 → 2014-03-23 (+61d) | 2014-02-19 → 2014-04-20 (+60d) |  | 9d → -42d |
| DUKHCONP1AZ3MSEX5005 | Construction of Soak pit, Chambers | 2014-02-04 → 2014-04-06 (+61d) | 2014-03-05 → 2014-05-04 (+60d) |  | 9d → -42d |
| DUKHCONP1AZ3MSEX5015 | Construction of grease Trap | 2014-02-25 → 2014-04-26 (+60d) | 2014-03-19 → 2014-05-18 (+60d) |  | 9d → -42d |
| DUKHCONP1AZ3MSEX5020 | Construction Entrance Ramp | 2014-03-15 → 2014-05-14 (+60d) | 2014-04-12 → 2014-06-11 (+60d) |  | -8d → -60d |
| DUKHCONP1AZ3MSEX5010 | Telephone cable laying | 2014-03-20 → 2014-05-19 (+60d) | 2014-04-17 → 2014-06-16 (+60d) |  | 9d → -42d |
| DUKHCONP1AZ3MSEX5025 | SS.Handrails and Balustrades | 2014-04-01 → 2014-06-01 (+61d) | 2014-04-23 → 2014-06-23 (+61d) |  | -5d → -57d |
| DUKHCONP1AZ3MSEX5335 | Aluminum Roll-up Shutter with 2m Wall | 2014-06-01 → 2014-07-30 (+59d) | 2014-06-29 → 2014-08-31 (+63d) |  | 79d → 28d |
| 15 | **WATER TANK ENCLOSURE** | 2014-03-10 → 2014-05-10 (+61d) | 2014-06-04 → 2014-08-07 (+64d) |  |  |
| DUKHCONP1AZ3WEEX5030 | Excavation | 2014-03-10 → 2014-05-10 (+61d) | 2014-04-01 → 2014-06-01 (+61d) |  | -6d → -58d |
| DUKHCONP1AZ3WEEX5035 | Construction of Raft | 2014-03-16 → 2014-05-15 (+60d) | 2014-04-13 → 2014-06-12 (+60d) |  | -6d → -58d |
| DUKHCONP1AZ3WEEX5040 | Block works & Plastering | 2014-03-25 → 2014-05-25 (+61d) | 2014-04-22 → 2014-06-22 (+61d) |  | -6d → -58d |
| DUKHCONP1AZ3WEEX5045 | Flooring & Painting | 2014-04-01 → 2014-06-01 (+61d) | 2014-04-29 → 2014-06-29 (+61d) |  | -6d → -58d |

| ID | Task | Start | Finish | Complete | Total float | Other |
| --- | --- | --- | --- | --- | --- | --- |
| DUKHCONP1AZ3WEEX5050 | Installation of Steel Gate | 2014-04-14 → 2014-06-14 (+61d) | 2014-05-06 → 2014-07-06 (+61d) |  | -6d → -58d |  |
| DUKHCONP1AZ3WEEX5060 | Structural steel & SS Shed cover installation | 2014-04-29 → 2014-06-29 (+61d) | 2014-05-27 → 2014-07-27 (+61d) |  | -14d → -66d |  |
| DUKHCONP1AZ3WEEX5065 | Install. of Water Tank,Chiller,Pump & Meter | 2014-05-07 → 2014-07-07 (+61d) | 2014-06-04 → 2014-08-07 (+64d) |  | -15d → -67d |  |
| 20 | **HARD LANDSCAPING** | 2014-03-29 → 2014-05-28 (+60d) | 2014-05-08 → 2014-07-08 (+61d) |  |  |  |
| DUKHCONP1AZ3HDEX5090 | kerb works | 2014-03-29 → 2014-05-28 (+60d) | 2014-04-20 → 2014-06-19 (+60d) |  | -8d → -60d |  |
| DUKHCONP1AZ3HDEX5095 | Cobble Stone Works | 2014-04-09 → 2014-06-09 (+61d) | 2014-05-01 → 2014-07-01 (+61d) |  | -8d → -60d |  |
| DUKHCONP1AZ3HDEX5100 | Interlock works | 2014-04-16 → 2014-06-16 (+61d) | 2014-05-08 → 2014-07-08 (+61d) |  | -8d → -60d |  |
| 25 | **SOFT LANDSCAPING** | 2014-04-22 → 2014-06-22 (+61d) | 2014-05-27 → 2014-07-27 (+61d) |  |  |  |
| DUKHCONP1AZ3SLEX5105 | Laying of Grass/ green area | 2014-04-22 → 2014-06-22 (+61d) | 2014-05-20 → 2014-07-20 (+61d) |  | -8d → -60d |  |
| DUKHCONP1AZ3SLEX5110 | Laying of Palm tree | 2014-04-29 → 2014-06-29 (+61d) | 2014-05-27 → 2014-07-27 (+61d) |  | -8d → -60d |  |
| 30 | **TESTING AND COMMISSIONING** | 2014-06-16 → 2014-08-19 (+64d) | 2014-07-14 → 2014-09-16 (+64d) |  |  |  |
| DUKHCONP1AZ3ACTC8000 | Pre-Commissioning & Testing of AC Works | 2014-06-16 → 2014-08-19 (+64d) | 2014-07-14 → 2014-09-16 (+64d) |  | -24d → -76d |  |
| DUKHCONP1AZ3ELTC8010 | Pre-Commissioning & Testing of Electrical Works | 2014-06-16 → 2014-08-19 (+64d) | 2014-07-14 → 2014-09-16 (+64d) |  | -24d → -76d |  |
| DUKHCONP1AZ3PLTC8005 | Pre-Commissioning & Testing of Plumbing Works | 2014-06-16 → 2014-08-19 (+64d) | 2014-07-14 → 2014-09-16 (+64d) |  | -24d → -76d |  |
| 25 | **ZONE - 4 (4 Twin Villas)** |  | 2014-08-16 → 2014-10-18 (+63d) |  |  |  |
| 10 | **STRUCTURAL WORKS** |  | 2014-03-22 → 2014-05-21 (+60d) |  |  |  |
| 10 | **SUB STRUCTURE** |  | 2013-11-09 → 2013-12-30 (+51d) |  |  |  |
| 10 | **UPTO GRADE SLAB** |  | 2013-11-09 → 2013-12-30 (+51d) |  |  |  |
| DUKHCONP1AZ4STUG1000 | Footing Excavation | 2013-05-26 A | 2013-06-23 A | 0% → 100% | -11d → none | resources LABOR- SUBCONTRACTOR [590 h]; EXCAVATION QTY [984 Cum]; LOADER [131 h]; POCLAIN [262 h]; TRUCK [131 h]; EQUIP OPERATORS [524 h] → LABOR- SUBCONTRACTOR [423.7 h]; EXCAVATION QTY [984 Cum]; LOADER [131 h]; POCLAIN [262 h]; TRUCK [131 h]; EQUIP OPERATORS [376.3 h] |
| DUKHCONP1AZ4STUG1005 | Footing Antitermite | 2013-06-06 A | 2013-07-02 A | 0% → 100% | -11d → none |  |
| DUKHCONP1AZ4STUG1010 | Footing Blinding | 2013-06-10 A | 2013-07-06 A | 0% → 100% | -11d → none |  |
| DUKHCONP1AZ4STUG1015 | Footing Waterproofing & Screed | 2013-06-16 A | 2013-07-14 A | 0% → 100% | -11d → none |  |
| DUKHCONP1AZ4STUG1020 | Construction of foundations | 2013-07-01 A | 2013-07-23 A | 0% → 100% | -11d → none | resources STEEL FIXERS SK [2565 h]; CARPENTERS SK [1160 h]; CONCRETE MASON SK [720 h]; LABOR- SUBCONTRACTOR [3333.75 h]; REINFORCEMENT BARS QTY [32062 kg]; FORMWORK QTY [580 Sqm]; CONCRETE QTY [360 Cum] → STEEL FIXERS SK [2901.75 h]; CARPENTERS SK [1312.29 h]; CONCRETE MASON SK [814.53 h]; LABOR- SUBCONTRACTOR [3771.43 h]; REINFORCEMENT BARS QTY [32062 kg]; FORMWORK QTY [580 Sqm]; CONCRETE QTY [360 Cum] |
| DUKHCONP1AZ4STUG1025 | Construction of neck of columns | 2013-07-25 → 2013-07-27 A (+2d) | 2013-08-26 → 2013-08-27 A (+1d) | 0% → 100% | -24d → none |  |
| DUKHCONP1AZ4STUG1030 | Waterproofing Footing & Neck Column | 2013-08-04 → 2013-08-05 A (+1d) | 2013-09-04 → 2013-08-31 A (-4d) | 0% → 100% | -24d → none |  |
| DUKHCONP1AZ4STUG1035 | Backfilling Upto Grade Beam Bottom | 2013-08-21 → 2013-08-28 A (+7d) | 2013-09-18 → 2013-09-25 A (+7d) | 0% → 100% | -24d → none |  |
| DUKHCONP1AZ4STUG1040 | Construction of Grade Beams | 2013-09-07 → 2013-09-14 A (+7d) | 2013-10-05 → 2013-10-12 A (+7d) | 0% → 100% | -24d → none | resources BLINDING MASON SK [244 h]; SCREED MASON SK [224 h]; STEEL FIXERS SK [1497 h]; CARPENTERS SK [2152 h]; CONCRETE MASON SK [256 h]; LABOR- SUBCONTRACTOR [3195.75 h]; BLINDING QTY [304 Sqm]; SCREED QTY [280 Sqm]; REINFORCEMENT BARS QTY [18709 kg]; FORMWORK QTY [1076 Sqm]; CONCRETE QTY [128 Cum] → CONCRETE MASON SK [244 h]; SCREED MASON SK [224 h]; STEEL FIXERS SK [1497 h]; CARPENTERS SK [2152 h]; CONCRETE MASON SK [256 h]; LABOR- SUBCONTRACTOR [3195.75 h]; BLINDING QTY [304 Sqm]; SCREED QTY [280 Sqm]; REINFORCEMENT BARS QTY [18709 kg]; FORMWORK QTY [1076 Sqm]; CONCRETE QTY [128 Cum] |
| DUKHCONP1AZ4STUG1045 | Construction of slab on grade | 2013-10-09 → 2013-12-01 (+53d) | 2013-11-09 → 2013-12-30 (+51d) |  | -24d → -67d | resources BLINDING MASON SK [923 h]; SCREED MASON SK [850 h]; STEEL FIXERS SK [536 h]; CONCRETE MASON SK [400 h]; LABOR- SUBCONTRACTOR [1713 h]; BLINDING QTY [1153 Sqm]; SCREED QTY [1062 Sqm]; CONCRETE QTY [200 Cum]; WELDED WIRE MESH [2008 Sqm] → CONCRETE MASON SK [923 h]; SCREED MASON SK [850 h]; STEEL FIXERS SK [536 h]; CONCRETE MASON SK [400 h]; LABOR- SUBCONTRACTOR [1713 h]; BLINDING QTY [1153 Sqm]; SCREED QTY [1062 Sqm]; CONCRETE QTY [200 Cum]; WELDED WIRE MESH [2008 Sqm] |
| 15 | **SUPERSTRUCTURE** | 2013-10-28 → 2013-12-17 (+50d) | 2014-03-22 → 2014-05-21 (+60d) |  |  |  |
| 10 | **GROUND FLOOR** | 2013-10-28 → 2013-12-17 (+50d) | 2013-12-23 → 2014-02-12 (+51d) |  |  |  |
| DUKHCONP1AZ4STGF2000 | Column-Rebar & Formwork | 2013-10-28 → 2013-12-17 (+50d) | 2013-11-25 → 2014-01-15 (+51d) |  | -24d → -67d |  |
| DUKHCONP1AZ4STGF2005 | Column-Concrete | 2013-11-05 → 2013-12-26 (+51d) | 2013-12-02 → 2014-01-22 (+51d) |  | -22d → -65d |  |
| DUKHCONP1AZ4STGF2010 | Beam, Stairs ,Slab-Rebar & Formwork | 2013-11-20 → 2014-01-11 (+52d) | 2013-12-19 → 2014-02-08 (+51d) |  | -22d → -65d |  |
| DUKHCONP1AZ4STGF2015 | Beam, Stairs ,Slab-Concrete | 2013-12-07 → 2014-01-27 (+51d) | 2013-12-23 → 2014-02-12 (+51d) |  | -22d → -65d |  |
| 15 | **FIRST FLOORS** | 2013-12-09 → 2014-02-08 (+61d) | 2014-02-04 → 2014-04-06 (+61d) |  |  |  |
| DUKHCONP1AZ4STFF2020 | Column-Rebar & Formwork | 2013-12-09 → 2014-02-08 (+61d) | 2014-01-07 → 2014-03-09 (+61d) |  | -22d → -73d |  |
| DUKHCONP1AZ4STFF2025 | Column-Concrete | 2013-12-19 → 2014-02-18 (+61d) | 2014-01-15 → 2014-03-17 (+61d) |  | -20d → -71d |  |
| DUKHCONP1AZ4STFF2030 | Beam, Stairs ,Slab-Rebar & Formwork | 2014-01-04 → 2014-03-05 (+60d) | 2014-02-01 → 2014-04-02 (+60d) |  | -20d → -71d |  |
| DUKHCONP1AZ4STFF2035 | Beam, Stairs ,Slab-Concrete | 2014-01-20 → 2014-03-22 (+61d) | 2014-02-04 → 2014-04-06 (+61d) |  | -20d → -71d |  |
| 20 | **ROOF** | 2014-01-22 → 2014-03-24 (+61d) | 2014-03-22 → 2014-05-21 (+60d) |  |  |  |
| DUKHCONP1AZ4STRF2040 | Column-Rebar & Formwork | 2014-01-22 → 2014-03-24 (+61d) | 2014-02-12 → 2014-04-13 (+60d) |  | -16d → -67d |  |
| DUKHCONP1AZ4STRF2045 | Column-Concrete | 2014-01-26 → 2014-03-27 (+60d) | 2014-02-15 → 2014-04-15 (+59d) |  | -16d → -67d |  |
| DUKHCONP1AZ4STRF2050 | Slab-Rebar & Formwork - Head Room | 2014-01-28 → 2014-03-30 (+61d) | 2014-02-20 → 2014-04-21 (+60d) |  | -16d → -67d |  |
| DUKHCONP1AZ4STRF2055 | Slab-Concrete-Head room | 2014-02-08 → 2014-04-09 (+60d) | 2014-02-23 → 2014-04-23 (+59d) |  | -16d → -67d |  |
| DUKHCONP1AZ4STRF2060 | Construction of Parapets | 2014-02-10 → 2014-04-12 (+61d) | 2014-03-11 → 2014-05-10 (+60d) |  | 32d → -19d |  |
| DUKHCONP1AZ4STRF2065 | Construction of up stands/Plinth | 2014-02-22 → 2014-04-23 (+60d) | 2014-03-22 → 2014-05-21 (+60d) |  | 28d → -24d |  |
| 15 | **FINISHING WORKS** | 2014-01-07 → 2014-03-18 (+70d) | 2014-07-14 → 2014-09-16 (+64d) |  |  |  |
| 10 | **INTERNAL FINISHES** | 2014-01-07 → 2014-03-18 (+70d) | 2014-07-14 → 2014-09-16 (+64d) |  |  |  |
| 10 | **GROUND FLOOR** | 2014-01-07 → 2014-03-18 (+70d) | 2014-06-19 → 2014-08-31 (+73d) |  |  |  |
| DUKHCONP1AZ4ARGF3000 | Block work | 2014-01-07 → 2014-03-18 (+70d) | 2014-02-04 → 2014-04-15 (+70d) |  | -6d → -65d |  |
| DUKHCONP1AZ4ARGF3005 | Plastering work | 2014-01-29 → 2014-04-09 (+70d) | 2014-02-27 → 2014-05-07 (+69d) |  | -6d → -65d |  |
| DUKHCONP1AZ4ARGF3010 | Flooring screed | 2014-02-06 → 2014-04-17 (+70d) | 2014-03-03 → 2014-05-11 (+69d) |  | 2d → -57d |  |
| DUKHCONP1AZ4ARGF3030 | Paint First coat | 2014-02-19 → 2014-04-26 (+66d) | 2014-03-19 → 2014-05-24 (+66d) |  | 5d → -51d |  |
| DUKHCONP1AZ4ARGF3015 | Wet area waterproofing & Protection Screed | 2014-02-17 → 2014-04-27 (+69d) | 2014-03-05 → 2014-05-13 (+69d) |  | -6d → -65d |  |
| DUKHCONP1AZ4ARGF3020 | Ceramic Wall Tiling | 2014-02-23 → 2014-05-03 (+69d) | 2014-03-23 → 2014-05-31 (+69d) |  | -6d → -65d |  |
| DUKHCONP1AZ4ARGF3025 | Porcelain Tile flooring | 2014-03-01 → 2014-05-08 (+68d) | 2014-03-29 → 2014-06-05 (+68d) |  | -6d → -65d |  |
| DUKHCONP1AZ4ARGF3045 | Fixing of Suspension systems | 2014-03-18 → 2014-05-26 (+69d) | 2014-04-09 → 2014-06-17 (+69d) |  | -6d → -65d |  |
| DUKHCONP1AZ4ARGF3035 | Slate Tile Flooring & Skirting | 2014-03-20 → 2014-05-28 (+69d) | 2014-04-06 → 2014-06-14 (+69d) |  | -1d → -60d |  |
| DUKHCONP1AZ4ARGF3055 | Aluminum tile false ceiling | 2014-03-26 → 2014-06-03 (+69d) | 2014-04-23 → 2014-07-01 (+69d) |  | -3d → -62d |  |
| DUKHCONP1AZ4ARGF3040 | Cobble Tile flooring | 2014-03-27 → 2014-06-04 (+69d) | 2014-04-13 → 2014-06-21 (+69d) |  | -3d → -62d |  |
| DUKHCONP1AZ4ARGF3060 | Gypsum board false ceiling | 2014-03-30 → 2014-06-07 (+69d) | 2014-04-27 → 2014-07-05 (+69d) |  | -6d → -65d |  |
| DUKHCONP1AZ4ARGF3050 | Granite - Stair case flooring & Skirting | 2014-04-05 → 2014-06-12 (+68d) | 2014-04-27 → 2014-07-05 (+69d) |  | -3d → -62d |  |
| DUKHCONP1AZ4ARGF3065 | Wooden door & PVC Door | 2014-04-19 → 2014-06-26 (+68d) | 2014-05-05 → 2014-07-13 (+69d) |  | -3d → -62d |  |
| DUKHCONP1AZ4ARGF3070 | Aluminum doors | 2014-04-24 → 2014-07-02 (+69d) | 2014-05-11 → 2014-07-19 (+69d) |  | -3d → -62d |  |
| DUKHCONP1AZ4ARGF3075 | Carpentry & Joinery Works | 2014-04-30 → 2014-07-08 (+69d) | 2014-05-22 → 2014-07-30 (+69d) |  | -3d → -62d |  |
| DUKHCONP1AZ4ARGF3080 | Aluminum windows | 2014-05-01 → 2014-07-09 (+69d) | 2014-05-24 → 2014-07-31 (+68d) |  | 7d → -52d |  |
| DUKHCONP1AZ4ARGF3085 | S.S.Balustrade | 2014-05-08 → 2014-07-16 (+69d) | 2014-05-31 → 2014-08-11 (+72d) |  | 2d → -57d |  |
| DUKHCONP1AZ4ARGF3090 | Installation of Granite Counter Top | 2014-05-13 → 2014-07-21 (+69d) | 2014-05-29 → 2014-08-10 (+73d) |  | -3d → -62d |  |
| DUKHCONP1AZ4ARGF3095 | Final Painting | 2014-05-22 → 2014-07-30 (+69d) | 2014-06-19 → 2014-08-31 (+73d) |  | -3d → -62d |  |
| 15 | **FIRST FLOORS** | 2014-02-19 → 2014-04-21 (+61d) | 2014-07-14 → 2014-09-16 (+64d) |  |  |  |

| ID | Task | Start | Finish | Complete | Total float |
| --- | --- | --- | --- | --- | --- |
| DUKHCONP1AZ4ARFF3300 | Block work | 2014-02-19 → 2014-04-21 (+61d) | 2014-03-19 → 2014-05-19 (+61d) |  | -24d → -76d |
| DUKHCONP1AZ4ARFF3305 | Plastering work | 2014-03-16 → 2014-05-15 (+60d) | 2014-04-13 → 2014-06-12 (+60d) |  | -24d → -76d |
| DUKHCONP1AZ4ARFF3310 | Flooring screed | 2014-03-24 → 2014-05-24 (+61d) | 2014-04-16 → 2014-06-16 (+61d) |  | -12d → -64d |
| DUKHCONP1AZ4ARFF3330 | Paint First coat | 2014-04-01 → 2014-06-01 (+61d) | 2014-04-29 → 2014-06-29 (+61d) |  | -10d → -62d |
| DUKHCONP1AZ4ARFF3315 | Wet area waterproofing | 2014-04-05 → 2014-06-04 (+60d) | 2014-04-21 → 2014-06-21 (+61d) |  | -24d → -76d |
| DUKHCONP1AZ4ARFF3320 | Ceramic Wall Tiling | 2014-04-12 → 2014-06-11 (+60d) | 2014-05-10 → 2014-07-09 (+60d) |  | -24d → -76d |
| DUKHCONP1AZ4ARFF3325 | Porcelain Tile flooring | 2014-04-19 → 2014-06-18 (+60d) | 2014-05-17 → 2014-07-16 (+60d) |  | -24d → -76d |
| DUKHCONP1AZ4ARFF3345 | Fixing of Suspension systems | 2014-05-01 → 2014-07-01 (+61d) | 2014-05-24 → 2014-07-23 (+60d) |  | -24d → -76d |
| DUKHCONP1AZ4ARFF3335 | Slate Tile Flooring & Skirting | 2014-05-06 → 2014-07-06 (+61d) | 2014-05-22 → 2014-07-22 (+61d) |  | -16d → -68d |
| DUKHCONP1AZ4ARFF3360 | Gypsum board false ceiling | 2014-05-08 → 2014-07-08 (+61d) | 2014-06-05 → 2014-08-09 (+65d) |  | -24d → -76d |
| DUKHCONP1AZ4ARFF3350 | Granite - Stair case flooring & Skirting | 2014-05-10 → 2014-07-09 (+60d) | 2014-06-01 → 2014-07-31 (+60d) |  | -22d → -74d |
| DUKHCONP1AZ4ARFF3365 | Wooden door | 2014-05-24 → 2014-07-23 (+60d) | 2014-06-09 → 2014-08-12 (+64d) |  | -24d → -76d |
| DUKHCONP1AZ4ARFF3370 | Aluminum Door | 2014-05-24 → 2014-07-23 (+60d) | 2014-06-15 → 2014-08-18 (+64d) |  | -24d → -76d |
| DUKHCONP1AZ4ARFF3375 | Carpentry & Joinery Works | 2014-05-29 → 2014-07-29 (+61d) | 2014-06-26 → 2014-08-30 (+65d) |  | -24d → -76d |
| DUKHCONP1AZ4ARFF3380 | Aluminum windows | 2014-05-31 → 2014-07-30 (+60d) | 2014-06-22 → 2014-08-25 (+64d) |  | -20d → -72d |
| DUKHCONP1AZ4ARFF3385 | Handrail & Balustrade | 2014-06-10 → 2014-08-13 (+64d) | 2014-07-02 → 2014-09-04 (+64d) |  | -24d → -76d |
| DUKHCONP1AZ4ARFF3390 | Installation of Granite Counter Top | 2014-06-10 → 2014-08-13 (+64d) | 2014-07-02 → 2014-09-04 (+64d) |  | -23d → -75d |
| DUKHCONP1AZ4ARFF3395 | Final Painting | 2014-06-16 → 2014-08-19 (+64d) | 2014-07-14 → 2014-09-16 (+64d) |  | -24d → -76d |
| 20 | **ROOF** | 2014-03-05 → 2014-05-04 (+60d) | 2014-05-08 → 2014-07-07 (+60d) |  |  |
| DUKHCONP1AZ4ARRF3600 | Block work | 2014-03-05 → 2014-05-04 (+60d) | 2014-03-27 → 2014-05-26 (+60d) |  | 28d → -23d |
| DUKHCONP1AZ4ARRF3605 | Plastering work | 2014-03-13 → 2014-05-12 (+60d) | 2014-04-05 → 2014-06-03 (+59d) |  | 28d → -23d |
| DUKHCONP1AZ4ARRF3610 | Flooring screed | 2014-03-27 → 2014-05-26 (+60d) | 2014-04-13 → 2014-06-11 (+59d) |  | 33d → -18d |
| DUKHCONP1AZ4ARRF3695 | Painting -Storage area | 2014-04-05 → 2014-06-03 (+59d) | 2014-04-27 → 2014-06-25 (+59d) |  | 33d → -18d |
| DUKHCONP1AZ4ARRF3620 | Epoxy Painting -Storage area | 2014-04-22 → 2014-06-21 (+60d) | 2014-05-08 → 2014-07-07 (+60d) |  | 33d → -18d |
| 15 | **EXTERNAL FINISHES** | 2014-03-27 → 2014-05-27 (+61d) | 2014-06-14 → 2014-08-17 (+64d) |  |  |
| 10 | **ROOF** | 2014-04-10 → 2014-06-10 (+61d) | 2014-06-14 → 2014-08-17 (+64d) |  |  |
| DUKHCONP1AZ4ARRF3630 | Leveling Screed for Waterproofing | 2014-04-10 → 2014-06-10 (+61d) | 2014-05-08 → 2014-07-08 (+61d) |  | -3d → -55d |
| DUKHCONP1AZ4ARRF3635 | Laying of Waterproofing Membrane | 2014-04-14 → 2014-06-14 (+61d) | 2014-05-12 → 2014-07-12 (+61d) |  | -3d → -55d |
| DUKHCONP1AZ4ARRF3640 | Installation of Insulation & Protection | 2014-04-19 → 2014-06-18 (+60d) | 2014-05-17 → 2014-07-16 (+60d) |  | -3d → -55d |
| DUKHCONP1AZ4ARRF3645 | Lime Stone Chips & Paving slab Installation | 2014-04-23 → 2014-06-23 (+61d) | 2014-05-21 → 2014-07-21 (+61d) |  | -3d → -55d |
| DUKHCONP1AZ4ARRF3650 | Install. of Gal. Frame & Aluminum Slat Screen | 2014-05-01 → 2014-07-01 (+61d) | 2014-05-29 → 2014-07-29 (+61d) |  | -3d → -55d |
| DUKHCONP1AZ4ARRF3655 | Installation of Pumps Protection cabinets | 2014-05-17 → 2014-07-16 (+60d) | 2014-06-08 → 2014-08-11 (+64d) |  | -3d → -55d |
| DUKHCONP1AZ4ARRF3660 | Installation of Access Ladder | 2014-05-28 → 2014-07-28 (+61d) | 2014-06-14 → 2014-08-17 (+64d) |  | 2d → -50d |
| 15 | **ELEVATION** | 2014-03-27 → 2014-05-27 (+61d) | 2014-05-18 → 2014-07-17 (+60d) |  |  |
| DUKHCONP1AZ4AREL3665 | External Plastering | 2014-03-27 → 2014-05-27 (+61d) | 2014-04-24 → 2014-06-24 (+61d) |  | 23d → -29d |
| DUKHCONP1AZ4AREL3670 | External stone cladding works | 2014-04-14 → 2014-06-14 (+61d) | 2014-05-06 → 2014-07-06 (+61d) |  | 25d → -27d |
| DUKHCONP1AZ4AREL3680 | External Painting | 2014-04-26 → 2014-06-25 (+60d) | 2014-05-18 → 2014-07-17 (+60d) |  | 25d → -27d |
| 20 | **MEP WORKS** | 2013-09-30 → 2013-10-07 (+7d) | 2014-07-13 → 2014-09-15 (+64d) |  |  |
| 10 | **ELECTRICAL WORKS** | 2014-01-13 → 2014-03-24 (+70d) | 2014-07-13 → 2014-09-15 (+64d) |  |  |
| 10 | **GROUND FLOOR** | 2014-01-13 → 2014-03-24 (+70d) | 2014-05-22 → 2014-07-30 (+69d) |  |  |
| DUKHCONP1AZ4ELGF4000 | Fixing of wall conduits & switch socket boxes | 2014-01-13 → 2014-03-24 (+70d) | 2014-02-10 → 2014-04-21 (+70d) |  | 3d → -56d |
| DUKHCONP1AZ4ELGF4005 | Cable tray & trunking installation | 2014-01-25 → 2014-04-05 (+70d) | 2014-02-17 → 2014-04-27 (+69d) |  | 21d → -38d |
| DUKHCONP1AZ4ELGF4010 | Installation of wiring & Main Cabling | 2014-02-02 → 2014-04-13 (+70d) | 2014-03-03 → 2014-05-11 (+69d) |  | 21d → -38d |
| DUKHCONP1AZ4ELGF4015 | Install. of CAMS & Fire Fighting Accessories | 2014-04-07 → 2014-06-15 (+69d) | 2014-05-05 → 2014-07-13 (+69d) |  | 6d → -53d |
| DUKHCONP1AZ4ELGF4020 | Installation of DBS,MCCB Accessories. | 2014-04-13 → 2014-06-21 (+69d) | 2014-05-05 → 2014-07-13 (+69d) |  | -6d → -65d |
| DUKHCONP1AZ4ELGF4025 | Installation of Lighting fixtures & Accessories | 2014-04-24 → 2014-07-02 (+69d) | 2014-05-22 → 2014-07-30 (+69d) |  | 1d → -58d |
| DUKHCONP1AZ4ELGF4030 | Installation of Telephone System | 2014-04-24 → 2014-07-02 (+69d) | 2014-05-17 → 2014-07-24 (+68d) |  | -6d → -65d |
| 15 | **FIRST FLOORS** | 2014-02-25 → 2014-04-27 (+61d) | 2014-06-25 → 2014-08-28 (+64d) |  |  |
| DUKHCONP1AZ4ELFF4035 | Fixing of wall conduits & switch socket boxes | 2014-02-25 → 2014-04-27 (+61d) | 2014-03-25 → 2014-05-25 (+61d) |  | -13d → -65d |
| DUKHCONP1AZ4ELFF4040 | Cable tray & trunking installation | 2014-03-09 → 2014-05-08 (+60d) | 2014-03-31 → 2014-05-31 (+61d) |  | 5d → -47d |
| DUKHCONP1AZ4ELFF4045 | Installation of wiring & Main Cabling | 2014-03-19 → 2014-05-19 (+61d) | 2014-04-16 → 2014-06-16 (+61d) |  | 3d → -49d |
| DUKHCONP1AZ4ELFF4050 | Installation of Telephone System | 2014-05-18 → 2014-07-16 (+59d) | 2014-06-15 → 2014-08-17 (+63d) |  | -16d → -67d |
| DUKHCONP1AZ4ELFF4055 | Install. of CAMS & Fire Fighting Accessories | 2014-05-17 → 2014-07-16 (+60d) | 2014-06-14 → 2014-08-17 (+64d) |  | -23d → -75d |
| DUKHCONP1AZ4ELFF4060 | Installation of DBS,MCCB Accessories. | 2014-05-20 → 2014-07-20 (+61d) | 2014-06-11 → 2014-08-14 (+64d) |  | -21d → -73d |
| DUKHCONP1AZ4ELFF4065 | Installation of Lighting fixtures & Accessories | 2014-05-28 → 2014-07-28 (+61d) | 2014-06-25 → 2014-08-28 (+64d) |  | -23d → -75d |
| 20 | **ROOF** | 2014-06-11 → 2014-08-14 (+64d) | 2014-07-13 → 2014-09-15 (+64d) |  |  |
| DUKHCONP1AZ4ELRF4070 | Installation of Isolator | 2014-06-11 → 2014-08-14 (+64d) | 2014-07-01 → 2014-09-03 (+64d) |  | -23d → -75d |
| DUKHCONP1AZ4ELRF4075 | Installation of TV Dish Antenna | 2014-06-17 → 2014-08-20 (+64d) | 2014-07-13 → 2014-09-15 (+64d) |  | -23d → -75d |
| 15 | **PLUMBING, DRAINAGE & FIRE FIGHTING WORKS** | 2013-09-30 → 2013-10-07 (+7d) | 2014-07-13 → 2014-09-15 (+64d) |  |  |
| 10 | **GROUND FLOOR** | 2013-09-30 → 2013-10-07 (+7d) | 2014-05-22 → 2014-07-30 (+69d) |  |  |
| DUKHCONP1AZ4PLUG4300 | Drainage / Storm Pipes in Grade Slab | 2013-09-30 → 2013-10-07 A (+7d) | 2013-10-20 → 2013-10-27 A (+7d) | 0% → 100% | -24d → none |
| DUKHCONP1AZ4PLGF4305 | Installation of Plumbing pipes & testing | 2014-01-23 → 2014-04-03 (+70d) | 2014-02-13 → 2014-04-23 (+69d) |  | -6d → -65d |
| DUKHCONP1AZ4PLGF4310 | Installation of Drainage pipes &testing | 2014-01-23 → 2014-04-03 (+70d) | 2014-02-13 → 2014-04-23 (+69d) |  | -3d → -62d |
| DUKHCONP1AZ4PLGF4315 | Sanitary Fittings & Accessories | 2014-04-24 → 2014-07-02 (+69d) | 2014-05-17 → 2014-07-24 (+68d) |  | 21d → -38d |
| DUKHCONP1AZ4PLGF4320 | Installation of Water Heater | 2014-05-06 → 2014-07-14 (+69d) | 2014-05-22 → 2014-07-30 (+69d) |  | 21d → -38d |
| 15 | **FIRST FLOORS** | 2014-03-08 → 2014-05-07 (+60d) | 2014-06-21 → 2014-08-24 (+64d) |  |  |
| DUKHCONP1AZ4PLFF4325 | Installation of Plumbing pipes & testing | 2014-03-08 → 2014-05-07 (+60d) | 2014-03-27 → 2014-05-27 (+61d) |  | -23d → -75d |
| DUKHCONP1AZ4PLFF4330 | Installation of Drainage pipes & testing | 2014-03-08 → 2014-05-07 (+60d) | 2014-03-27 → 2014-05-27 (+61d) |  | -1d → -53d |
| DUKHCONP1AZ4PLFF4335 | Sanitary Fittings & Accessories | 2014-05-24 → 2014-07-23 (+60d) | 2014-06-15 → 2014-08-18 (+64d) |  | -19d → -71d |
| DUKHCONP1AZ4PLFF4340 | Installation of Water Heater | 2014-06-04 → 2014-08-07 (+64d) | 2014-06-21 → 2014-08-24 (+64d) |  | -19d → -71d |

| ID | Task | Start | Finish | Complete | Total float | Other |
| --- | --- | --- | --- | --- | --- | --- |
| 20 | **ROOF** | 2014-03-27 → 2014-05-26 (+60d) | 2014-07-13 → 2014-09-15 (+64d) |  |  |  |
| DUKHCONP1AZ4PLRF4345 | Installation of Plumbing pipes & fittings | 2014-03-27 → 2014-05-26 (+60d) | 2014-04-13 → 2014-06-11 (+59d) |  | 32d → -19d |  |
| DUKHCONP1AZ4PLRF4350 | Installation of Rain water Pipes | 2014-05-11 → 2014-07-10 (+60d) | 2014-05-27 → 2014-07-27 (+61d) |  | 2d → -50d |  |
| DUKHCONP1AZ4PLRF4355 | Roof Water Tank Installation & Connections | 2014-06-15 → 2014-08-18 (+64d) | 2014-07-13 → 2014-09-15 (+64d) |  | -23d → -75d |  |
| 20 | **AC WORKS** | 2014-02-13 → 2014-04-23 (+69d) | 2014-07-10 → 2014-09-13 (+65d) |  |  |  |
| 10 | **GROUND FLOOR** | 2014-02-13 → 2014-04-23 (+69d) | 2014-05-20 → 2014-07-28 (+69d) |  |  |  |
| DUKHCONP1AZ4ACGF4600 | Installation AC Pipes | 2014-02-13 → 2014-04-23 (+69d) | 2014-03-08 → 2014-05-15 (+68d) |  | 25d → -34d |  |
| DUKHCONP1AZ4ACGF4605 | Fixing of Ventilation Equipments | 2014-04-07 → 2014-06-15 (+69d) | 2014-05-05 → 2014-07-13 (+69d) |  | 8d → -51d |  |
| DUKHCONP1AZ4ACGF4610 | Fixing of Split AC | 2014-04-28 → 2014-07-06 (+69d) | 2014-05-20 → 2014-07-28 (+69d) |  | 8d → -51d |  |
| 15 | **FIRST FLOORS** | 2014-03-30 → 2014-05-29 (+60d) | 2014-06-29 → 2014-09-01 (+64d) |  |  |  |
| DUKHCONP1AZ4ACFF4615 | Installation AC Pipes | 2014-03-30 → 2014-05-29 (+60d) | 2014-04-21 → 2014-06-21 (+61d) |  | 3d → -49d |  |
| DUKHCONP1AZ4ACFF4620 | Fixing of Ventilation Equipments | 2014-05-17 → 2014-07-16 (+60d) | 2014-06-14 → 2014-08-17 (+64d) |  | -22d → -74d |  |
| DUKHCONP1AZ4ACFF4625 | Fixing of Split AC | 2014-06-07 → 2014-08-10 (+64d) | 2014-06-29 → 2014-09-01 (+64d) |  | -22d → -74d |  |
| 20 | **ROOF** | 2014-05-01 → 2014-07-01 (+61d) | 2014-07-10 → 2014-09-13 (+65d) |  |  |  |
| DUKHCONP1AZ4ACRF4630 | Installation of Refrigerant Pipes | 2014-05-01 → 2014-07-01 (+61d) | 2014-05-29 → 2014-07-29 (+61d) |  | 10d → -42d |  |
| DUKHCONP1AZ4ACRF4635 | Installation of Condensing Unit | 2014-06-12 → 2014-08-16 (+65d) | 2014-07-10 → 2014-09-13 (+65d) |  | -21d → -73d |  |
| 25 | **EXTERNAL WORKS** | 2014-02-20 → 2014-04-21 (+60d) | 2014-07-16 → 2014-09-17 (+63d) |  |  |  |
| 10 | **MISCELLANEOUS** | 2014-02-20 → 2014-04-21 (+60d) | 2014-07-16 → 2014-09-17 (+63d) |  |  |  |
| DUKHCONP1AZ4MSEX5000 | Construction of Manholes | 2014-02-20 → 2014-04-21 (+60d) | 2014-03-20 → 2014-05-19 (+60d) |  | -16d → -67d |  |
| DUKHCONP1AZ4MSEX5005 | Construction of Soak pit, Chambers | 2014-03-06 → 2014-05-05 (+60d) | 2014-04-03 → 2014-06-02 (+60d) |  | -16d → -67d |  |
| DUKHCONP1AZ4MSEX5015 | Construction of grease Trap | 2014-03-26 → 2014-05-25 (+60d) | 2014-04-17 → 2014-06-16 (+60d) |  | -16d → -67d |  |
| DUKHCONP1AZ4MSEX5020 | Construction Entrance Ramp | 2014-04-13 → 2014-06-12 (+60d) | 2014-05-11 → 2014-07-10 (+60d) |  | -8d → -60d |  |
| DUKHCONP1AZ4MSEX5010 | Telephone cable laying | 2014-04-19 → 2014-06-17 (+59d) | 2014-05-17 → 2014-07-15 (+59d) |  | -16d → -67d |  |
| DUKHCONP1AZ4MSEX5025 | SS.Handrails and Balustrades | 2014-04-30 → 2014-06-30 (+61d) | 2014-05-22 → 2014-07-22 (+61d) |  | -5d → -57d |  |
| DUKHCONP1AZ4MSEX5335 | Aluminum Roll-up Shutter with 2m Wall | 2014-06-18 → 2014-08-20 (+63d) | 2014-07-16 → 2014-09-17 (+63d) |  | 71d → 20d |  |
| 15 | **WATER TANK ENCLOSURE** | 2014-04-02 → 2014-06-02 (+61d) | 2014-07-03 → 2014-09-06 (+65d) |  |  |  |
| DUKHCONP1AZ4WEEX5030 | Excavation | 2014-04-02 → 2014-06-02 (+61d) | 2014-04-24 → 2014-06-24 (+61d) |  | -1d → -53d |  |
| DUKHCONP1AZ4WEEX5035 | Construction of Raft | 2014-04-08 → 2014-06-08 (+61d) | 2014-05-06 → 2014-07-06 (+61d) |  | -1d → -53d |  |
| DUKHCONP1AZ4WEEX5040 | Block works & Plastering | 2014-04-17 → 2014-06-17 (+61d) | 2014-05-15 → 2014-07-15 (+61d) |  | -1d → -53d |  |
| DUKHCONP1AZ4WEEX5045 | Flooring & Painting | 2014-04-24 → 2014-06-24 (+61d) | 2014-05-22 → 2014-07-22 (+61d) |  | -1d → -53d |  |
| DUKHCONP1AZ4WEEX5050 | Installation of Steel Gate | 2014-05-12 → 2014-07-12 (+61d) | 2014-06-03 → 2014-08-06 (+64d) |  | -5d → -57d |  |
| DUKHCONP1AZ4WEEX5060 | Structural steel & SS Shed cover installation | 2014-05-28 → 2014-07-28 (+61d) | 2014-06-25 → 2014-08-28 (+64d) |  | -14d → -66d |  |
| DUKHCONP1AZ4WEEX5065 | Install. of Water Tank,Chiller,Pump & Meter | 2014-06-05 → 2014-08-09 (+65d) | 2014-07-03 → 2014-09-06 (+65d) |  | -15d → -67d |  |
| 20 | **HARD LANDSCAPING** | 2014-04-27 → 2014-06-26 (+60d) | 2014-06-07 → 2014-08-10 (+64d) |  |  |  |
| DUKHCONP1AZ4HDEX5090 | kerb works | 2014-04-27 → 2014-06-26 (+60d) | 2014-05-19 → 2014-07-19 (+61d) |  | -8d → -60d |  |
| DUKHCONP1AZ4HDEX5095 | Cobble Stone Works | 2014-05-08 → 2014-07-08 (+61d) | 2014-05-31 → 2014-07-30 (+60d) |  | -8d → -60d |  |
| DUKHCONP1AZ4HDEX5100 | Interlock works | 2014-05-15 → 2014-07-15 (+61d) | 2014-06-07 → 2014-08-10 (+64d) |  | -8d → -60d |  |
| 25 | **SOFT LANDSCAPING** | 2014-05-21 → 2014-07-21 (+61d) | 2014-06-25 → 2014-08-28 (+64d) |  |  |  |
| DUKHCONP1AZ4SLEX5105 | Laying of Grass/ green area | 2014-05-21 → 2014-07-21 (+61d) | 2014-06-18 → 2014-08-21 (+64d) |  | -8d → -60d |  |
| DUKHCONP1AZ4SLEX5110 | Laying of Palm tree | 2014-05-28 → 2014-07-28 (+61d) | 2014-06-25 → 2014-08-28 (+64d) |  | -8d → -60d |  |
| 30 | **TESTING AND COMMISSIONING** | 2014-07-15 → 2014-09-17 (+64d) | 2014-08-16 → 2014-10-18 (+63d) |  |  |  |
| DUKHCONP1AZ4ACTC8000 | Pre-Commissioning & Testing of AC Works | 2014-07-15 → 2014-09-17 (+64d) | 2014-08-16 → 2014-10-18 (+63d) |  | -24d → -76d |  |
| DUKHCONP1AZ4ELTC8010 | Pre-Commissioning & Testing of Electrical Works | 2014-07-15 → 2014-09-17 (+64d) | 2014-08-16 → 2014-10-18 (+63d) |  | -24d → -76d |  |
| DUKHCONP1AZ4PLTC8005 | Pre-Commissioning & Testing of Plumbing Works | 2014-07-15 → 2014-09-17 (+64d) | 2014-08-16 → 2014-10-18 (+63d) |  | -24d → -76d |  |
| 30 | **ZONE - 5 (4 Twin Villas)** |  | 2014-09-14 → 2014-11-16 (+63d) |  |  |  |
| 10 | **STRUCTURAL WORKS** |  | 2014-04-20 → 2014-06-19 (+60d) |  |  |  |
| 10 | **SUB STRUCTURE** |  | 2013-12-08 → 2014-02-02 (+56d) |  |  |  |
| 10 | **UPTO GRADE SLAB** |  | 2013-12-08 → 2014-02-02 (+56d) |  |  |  |
| DUKHCONP1AZ5STUG1000 | Footing Excavation | 2013-06-24 A | 2013-07-22 A | 0% → 100% | -11d → none |  |
| DUKHCONP1AZ5STUG1005 | Footing Antitermite | 2013-07-06 A | 2013-07-31 A | 0% → 100% | -11d → none |  |
| DUKHCONP1AZ5STUG1010 | Footing Blinding | 2013-07-09 A | 2013-08-04 A | 0% → 100% | -11d → none |  |
| DUKHCONP1AZ5STUG1015 | Footing Waterproofing & Screed | 2013-07-15 A | 2013-08-15 A | 0% → 100% | -11d → none |  |
| DUKHCONP1AZ5STUG1020 | Construction of foundations | 2013-07-30 A | 2013-08-25 A | 0% → 100% | -11d → none |  |
| DUKHCONP1AZ5STUG1025 | Construction of neck of columns | 2013-08-27 → 2013-08-28 A (+1d) | 2013-09-24 → 2013-09-25 A (+1d) | 0% → 100% | -24d → none |  |
| DUKHCONP1AZ5STUG1030 | Waterproofing Footing & Neck Column | 2013-09-05 → 2013-09-07 A (+2d) | 2013-10-03 → 2013-10-05 A (+2d) | 0% → 100% | -24d → none |  |
| DUKHCONP1AZ5STUG1035 | Backfilling Upto Grade Beam Bottom | 2013-09-19 → 2013-09-26 A (+7d) | 2013-10-20 → 2013-10-27 A (+7d) | 0% → 100% | -24d → none |  |
| DUKHCONP1AZ5STUG1040 | Construction of Grade Beams | 2013-10-06 → 2013-10-13 A (+7d) | 2013-11-05 → 2013-12-31 (+56d) |  | -24d → -71d | resources BLINDING MASON SK [244 h]; SCREED MASON SK [224 h]; STEEL FIXERS SK [1497 h]; CARPENTERS SK [2152 h]; CONCRETE MASON SK [256 h]; LABOR- SUBCONTRACTOR [3195.75 h]; BLINDING QTY [304 Sqm]; SCREED QTY [280 Sqm]; REINFORCEMENT BARS QTY [18709 kg]; FORMWORK QTY [1076 Sqm]; CONCRETE QTY [128 Cum] → CONCRETE MASON SK [244 h]; SCREED MASON SK [224 h]; STEEL FIXERS SK [1497 h]; CARPENTERS SK [2152 h]; CONCRETE MASON SK [256 h]; LABOR- SUBCONTRACTOR [3195.75 h]; BLINDING QTY [304 Sqm]; SCREED QTY [280 Sqm]; REINFORCEMENT BARS QTY [18709 kg]; FORMWORK QTY [1076 Sqm]; CONCRETE QTY [128 Cum] |
| DUKHCONP1AZ5STUG1045 | Construction of slab on grade | 2013-11-10 → 2014-01-05 (+56d) | 2013-12-08 → 2014-02-02 (+56d) |  | -24d → -71d | resources BLINDING MASON SK [923 h]; SCREED MASON SK [850 h]; STEEL FIXERS SK [536 h]; CONCRETE MASON SK [400 h]; LABOR- SUBCONTRACTOR [1713 h]; BLINDING QTY [1153 Sqm]; SCREED QTY [1062 Sqm]; CONCRETE QTY [200 Cum]; WELDED WIRE MESH [2008 Sqm] → CONCRETE MASON SK [923 h]; SCREED MASON SK [850 h]; STEEL FIXERS SK [536 h]; CONCRETE MASON SK [400 h]; LABOR- SUBCONTRACTOR [1713 h]; BLINDING QTY [1153 Sqm]; SCREED QTY [1062 Sqm]; CONCRETE QTY [200 Cum]; WELDED WIRE MESH [2008 Sqm] |
| 15 | **SUPERSTRUCTURE** | 2013-11-26 → 2014-01-21 (+56d) | 2014-04-20 → 2014-06-19 (+60d) |  |  |  |
| 10 | **GROUND FLOOR** | 2013-11-26 → 2014-01-21 (+56d) | 2014-01-21 → 2014-03-18 (+56d) |  |  |  |
| DUKHCONP1AZ5STGF2000 | Column-Rebar & Formwork | 2013-11-26 → 2014-01-21 (+56d) | 2013-12-25 → 2014-02-19 (+56d) |  | -24d → -71d |  |
| DUKHCONP1AZ5STGF2005 | Column-Concrete | 2013-12-04 → 2014-01-29 (+56d) | 2014-01-01 → 2014-02-26 (+56d) |  | -22d → -69d |  |
| DUKHCONP1AZ5STGF2010 | Beam, Stairs ,Slab-Rebar & Formwork | 2013-12-21 → 2014-02-15 (+56d) | 2014-01-18 → 2014-03-15 (+56d) |  | -22d → -69d |  |
| DUKHCONP1AZ5STGF2015 | Beam, Stairs ,Slab-Concrete | 2014-01-06 → 2014-03-03 (+56d) | 2014-01-21 → 2014-03-18 (+56d) |  | -22d → -69d |  |
| 15 | **FIRST FLOORS** | 2014-01-08 → 2014-03-10 (+61d) | 2014-03-06 → 2014-05-05 (+60d) |  |  |  |
| DUKHCONP1AZ5STFF2020 | Column-Rebar & Formwork | 2014-01-08 → 2014-03-10 (+61d) | 2014-02-05 → 2014-04-07 (+61d) |  | -22d → -73d |  |
| DUKHCONP1AZ5STFF2025 | Column-Concrete | 2014-01-18 → 2014-03-19 (+60d) | 2014-02-15 → 2014-04-15 (+59d) |  | -20d → -71d |  |
| DUKHCONP1AZ5STFF2030 | Beam, Stairs ,Slab-Rebar & Formwork | 2014-02-02 → 2014-04-03 (+60d) | 2014-03-03 → 2014-05-01 (+59d) |  | -20d → -71d |  |
| DUKHCONP1AZ5STFF2035 | Beam, Stairs ,Slab-Concrete | 2014-02-19 → 2014-04-20 (+60d) | 2014-03-06 → 2014-05-05 (+60d) |  | -20d → -71d |  |
| 20 | **ROOF** | 2014-02-22 → 2014-04-22 (+59d) | 2014-04-20 → 2014-06-19 (+60d) |  |  |  |

| ID | Task | Start | Finish | Total float |
| --- | --- | --- | --- | --- |
| DUKHCONP1AZ5STRF2040 | Column-Rebar & Formwork | 2014-02-22 → 2014-04-22 (+59d) | 2014-03-13 → 2014-05-12 (+60d) | -16d → -67d |
| DUKHCONP1AZ5STRF2045 | Column-Concrete | 2014-02-25 → 2014-04-26 (+60d) | 2014-03-16 → 2014-05-14 (+59d) | -16d → -67d |
| DUKHCONP1AZ5STRF2050 | Slab-Rebar & Formwork - Head Room | 2014-02-27 → 2014-04-28 (+60d) | 2014-03-22 → 2014-05-20 (+59d) | -16d → -67d |
| DUKHCONP1AZ5STRF2055 | Slab-Concrete-Head room | 2014-03-10 → 2014-05-08 (+59d) | 2014-03-24 → 2014-05-22 (+59d) | -16d → -67d |
| DUKHCONP1AZ5STRF2060 | Construction of Parapets | 2014-03-12 → 2014-05-11 (+60d) | 2014-04-09 → 2014-06-08 (+60d) | 32d → -19d |
| DUKHCONP1AZ5STRF2065 | Construction of up stands/Plinth | 2014-03-23 → 2014-05-22 (+60d) | 2014-04-20 → 2014-06-19 (+60d) | 28d → -24d |
| 15 | **FINISHING WORKS** | 2014-02-05 → 2014-04-16 (+70d) | 2014-08-16 → 2014-10-18 (+63d) |  |
| 10 | **INTERNAL FINISHES** | 2014-02-05 → 2014-04-16 (+70d) | 2014-08-16 → 2014-10-18 (+63d) |  |
| 10 | **GROUND FLOOR** | 2014-02-05 → 2014-04-16 (+70d) | 2014-07-19 → 2014-09-29 (+72d) |  |
| DUKHCONP1AZ5ARGF3000 | Block work | 2014-02-05 → 2014-04-16 (+70d) | 2014-03-06 → 2014-05-14 (+69d) | -6d → -65d |
| DUKHCONP1AZ5ARGF3005 | Plastering work | 2014-03-01 → 2014-05-08 (+68d) | 2014-03-29 → 2014-06-05 (+68d) | -6d → -65d |
| DUKHCONP1AZ5ARGF3010 | Flooring screed | 2014-03-09 → 2014-05-17 (+69d) | 2014-04-01 → 2014-06-09 (+69d) | 2d → -57d |
| DUKHCONP1AZ5ARGF3030 | Paint First coat | 2014-03-20 → 2014-05-25 (+66d) | 2014-04-17 → 2014-06-22 (+66d) | 5d → -51d |
| DUKHCONP1AZ5ARGF3015 | Wet area waterproofing & Protection Screed | 2014-03-18 → 2014-05-26 (+69d) | 2014-04-03 → 2014-06-11 (+69d) | -6d → -65d |
| DUKHCONP1AZ5ARGF3020 | Ceramic Wall Tiling | 2014-03-24 → 2014-06-01 (+69d) | 2014-04-21 → 2014-06-29 (+69d) | -6d → -65d |
| DUKHCONP1AZ5ARGF3025 | Porcelain Tile flooring | 2014-03-30 → 2014-06-07 (+69d) | 2014-04-27 → 2014-07-05 (+69d) | -6d → -65d |
| DUKHCONP1AZ5ARGF3045 | Fixing of Suspension systems | 2014-04-16 → 2014-06-24 (+69d) | 2014-05-08 → 2014-07-16 (+69d) | -6d → -65d |
| DUKHCONP1AZ5ARGF3035 | Slate Tile Flooring & Skirting | 2014-04-19 → 2014-06-26 (+68d) | 2014-05-05 → 2014-07-13 (+69d) | -1d → -60d |
| DUKHCONP1AZ5ARGF3055 | Aluminum tile false ceiling | 2014-04-24 → 2014-07-02 (+69d) | 2014-05-22 → 2014-07-30 (+69d) | -3d → -62d |
| DUKHCONP1AZ5ARGF3040 | Cobble Tile flooring | 2014-04-26 → 2014-07-03 (+68d) | 2014-05-12 → 2014-07-20 (+69d) | -3d → -62d |
| DUKHCONP1AZ5ARGF3060 | Gypsum board false ceiling | 2014-04-28 → 2014-07-06 (+69d) | 2014-05-26 → 2014-08-06 (+72d) | -6d → -65d |
| DUKHCONP1AZ5ARGF3050 | Granite - Stair case flooring & Skirting | 2014-05-04 → 2014-07-12 (+69d) | 2014-05-26 → 2014-08-06 (+72d) | -3d → -62d |
| DUKHCONP1AZ5ARGF3065 | Wooden door & PVC Door | 2014-05-18 → 2014-07-26 (+69d) | 2014-06-03 → 2014-08-14 (+72d) | -3d → -62d |
| DUKHCONP1AZ5ARGF3070 | Aluminum doors | 2014-05-24 → 2014-07-31 (+68d) | 2014-06-09 → 2014-08-20 (+72d) | -3d → -62d |
| DUKHCONP1AZ5ARGF3075 | Carpentry & Joinery Works | 2014-05-29 → 2014-08-10 (+73d) | 2014-06-21 → 2014-09-01 (+72d) | -3d → -62d |
| DUKHCONP1AZ5ARGF3080 | Aluminum windows | 2014-05-31 → 2014-08-11 (+72d) | 2014-06-22 → 2014-09-02 (+72d) | 7d → -52d |
| DUKHCONP1AZ5ARGF3085 | S.S.Balustrade | 2014-06-07 → 2014-08-18 (+72d) | 2014-06-29 → 2014-09-09 (+72d) | 2d → -57d |
| DUKHCONP1AZ5ARGF3090 | Installation of Granite Counter Top | 2014-06-11 → 2014-08-23 (+73d) | 2014-06-28 → 2014-09-08 (+72d) | -3d → -62d |
| DUKHCONP1AZ5ARGF3095 | Final Painting | 2014-06-21 → 2014-09-01 (+72d) | 2014-07-19 → 2014-09-29 (+72d) | -3d → -62d |
| 15 | **FIRST FLOORS** | 2014-03-20 → 2014-05-20 (+61d) | 2014-08-16 → 2014-10-18 (+63d) |  |
| DUKHCONP1AZ5ARFF3300 | Block work | 2014-03-20 → 2014-05-20 (+61d) | 2014-04-17 → 2014-06-17 (+61d) | -24d → -76d |
| DUKHCONP1AZ5ARFF3305 | Plastering work | 2014-04-14 → 2014-06-14 (+61d) | 2014-05-12 → 2014-07-12 (+61d) | -24d → -76d |
| DUKHCONP1AZ5ARFF3310 | Flooring screed | 2014-04-22 → 2014-06-22 (+61d) | 2014-05-15 → 2014-07-15 (+61d) | -12d → -64d |
| DUKHCONP1AZ5ARFF3330 | Paint First coat | 2014-04-30 → 2014-06-30 (+61d) | 2014-05-28 → 2014-07-28 (+61d) | -10d → -62d |
| DUKHCONP1AZ5ARFF3315 | Wet area waterproofing | 2014-05-04 → 2014-07-03 (+60d) | 2014-05-20 → 2014-07-20 (+61d) | -24d → -76d |
| DUKHCONP1AZ5ARFF3320 | Ceramic Wall Tiling | 2014-05-11 → 2014-07-10 (+60d) | 2014-06-08 → 2014-08-11 (+64d) | -24d → -76d |
| DUKHCONP1AZ5ARFF3325 | Porcelain Tile flooring | 2014-05-18 → 2014-07-17 (+60d) | 2014-06-15 → 2014-08-18 (+64d) | -24d → -76d |
| DUKHCONP1AZ5ARFF3345 | Fixing of Suspension systems | 2014-05-31 → 2014-07-30 (+60d) | 2014-06-22 → 2014-08-25 (+64d) | -24d → -76d |
| DUKHCONP1AZ5ARFF3335 | Slate Tile Flooring & Skirting | 2014-06-04 → 2014-08-07 (+64d) | 2014-06-21 → 2014-08-24 (+64d) | -16d → -68d |
| DUKHCONP1AZ5ARFF3360 | Gypsum board false ceiling | 2014-06-07 → 2014-08-10 (+64d) | 2014-07-05 → 2014-09-07 (+64d) | -24d → -76d |
| DUKHCONP1AZ5ARFF3350 | Granite - Stair case flooring & Skirting | 2014-06-08 → 2014-08-11 (+64d) | 2014-06-30 → 2014-09-02 (+64d) | -22d → -74d |
| DUKHCONP1AZ5ARFF3365 | Wooden door | 2014-06-22 → 2014-08-25 (+64d) | 2014-07-08 → 2014-09-10 (+64d) | -24d → -76d |
| DUKHCONP1AZ5ARFF3370 | Aluminum Door | 2014-06-22 → 2014-08-25 (+64d) | 2014-07-14 → 2014-09-16 (+64d) | -24d → -76d |
| DUKHCONP1AZ5ARFF3375 | Carpentry & Joinery Works | 2014-06-28 → 2014-08-31 (+64d) | 2014-07-26 → 2014-09-28 (+64d) | -24d → -76d |
| DUKHCONP1AZ5ARFF3380 | Aluminum windows | 2014-06-29 → 2014-09-01 (+64d) | 2014-07-21 → 2014-09-23 (+64d) | -20d → -72d |
| DUKHCONP1AZ5ARFF3385 | Handrail & Balustrade | 2014-07-09 → 2014-09-11 (+64d) | 2014-07-31 → 2014-10-04 (+65d) | -24d → -76d |
| DUKHCONP1AZ5ARFF3390 | Installation of Granite Counter Top | 2014-07-09 → 2014-09-11 (+64d) | 2014-07-31 → 2014-10-04 (+65d) | -23d → -75d |
| DUKHCONP1AZ5ARFF3395 | Final Painting | 2014-07-15 → 2014-09-17 (+64d) | 2014-08-16 → 2014-10-18 (+63d) | -24d → -76d |
| 20 | **ROOF** | 2014-04-03 → 2014-06-02 (+60d) | 2014-06-07 → 2014-08-09 (+63d) |  |
| DUKHCONP1AZ5ARRF3600 | Block work | 2014-04-03 → 2014-06-02 (+60d) | 2014-04-26 → 2014-06-24 (+59d) | 28d → -23d |
| DUKHCONP1AZ5ARRF3605 | Plastering work | 2014-04-12 → 2014-06-10 (+59d) | 2014-05-04 → 2014-07-02 (+59d) | 28d → -23d |
| DUKHCONP1AZ5ARRF3610 | Flooring screed | 2014-04-26 → 2014-06-24 (+59d) | 2014-05-12 → 2014-07-10 (+59d) | 33d → -18d |
| DUKHCONP1AZ5ARRF3695 | Painting -Storage area | 2014-05-04 → 2014-07-02 (+59d) | 2014-05-26 → 2014-07-24 (+59d) | 33d → -18d |
| DUKHCONP1AZ5ARRF3620 | Epoxy Painting -Storage area | 2014-05-21 → 2014-07-20 (+60d) | 2014-06-07 → 2014-08-09 (+63d) | 33d → -18d |
| 15 | **EXTERNAL FINISHES** | 2014-04-26 → 2014-06-25 (+60d) | 2014-07-13 → 2014-09-15 (+64d) |  |
| 10 | **ROOF** | 2014-05-10 → 2014-07-09 (+60d) | 2014-07-13 → 2014-09-15 (+64d) |  |
| DUKHCONP1AZ5ARRF3630 | Leveling Screed for Waterproofing | 2014-05-10 → 2014-07-09 (+60d) | 2014-06-07 → 2014-08-10 (+64d) | -3d → -55d |
| DUKHCONP1AZ5ARRF3635 | Laying of Waterproofing Membrane | 2014-05-13 → 2014-07-13 (+61d) | 2014-06-10 → 2014-08-13 (+64d) | -3d → -55d |
| DUKHCONP1AZ5ARRF3640 | Installation of Insulation & Protection | 2014-05-18 → 2014-07-17 (+60d) | 2014-06-15 → 2014-08-18 (+64d) | -3d → -55d |
| DUKHCONP1AZ5ARRF3645 | Lime Stone Chips & Paving slab Installation | 2014-05-22 → 2014-07-22 (+61d) | 2014-06-19 → 2014-08-23 (+65d) | -3d → -55d |
| DUKHCONP1AZ5ARRF3650 | Install. of Gal. Frame & Aluminum Slat Screen | 2014-05-31 → 2014-07-30 (+60d) | 2014-06-28 → 2014-08-31 (+64d) | -3d → -55d |
| DUKHCONP1AZ5ARRF3655 | Installation of Pumps Protection cabinets | 2014-06-15 → 2014-08-18 (+64d) | 2014-07-07 → 2014-09-09 (+64d) | -3d → -55d |
| DUKHCONP1AZ5ARRF3660 | Installation of Access Ladder | 2014-06-26 → 2014-08-30 (+65d) | 2014-07-13 → 2014-09-15 (+64d) | 2d → -50d |
| 15 | **ELEVATION** | 2014-04-26 → 2014-06-25 (+60d) | 2014-06-16 → 2014-08-19 (+64d) |  |
| DUKHCONP1AZ5AREL3665 | External Plastering | 2014-04-26 → 2014-06-25 (+60d) | 2014-05-24 → 2014-07-23 (+60d) | 23d → -29d |
| DUKHCONP1AZ5AREL3670 | External stone cladding works | 2014-05-13 → 2014-07-13 (+61d) | 2014-06-04 → 2014-08-07 (+64d) | 25d → -27d |
| DUKHCONP1AZ5AREL3680 | External Painting | 2014-05-25 → 2014-07-24 (+60d) | 2014-06-16 → 2014-08-19 (+64d) | 25d → -27d |
| 20 | **MEP WORKS** | 2013-10-31 → 2013-12-26 (+56d) | 2014-08-14 → 2014-10-16 (+63d) |  |
| 10 | **ELECTRICAL WORKS** | 2014-02-12 → 2014-04-22 (+69d) | 2014-08-14 → 2014-10-16 (+63d) |  |
| 10 | **GROUND FLOOR** | 2014-02-12 → 2014-04-22 (+69d) | 2014-06-21 → 2014-09-01 (+72d) |  |

| ID | Task | Start | Finish | Total float |
| --- | --- | --- | --- | --- |
| DUKHCONP1AZ5ELGF4000 | Fixing of wall conduits & switch socket boxes | 2014-02-12 → 2014-04-22 (+69d) | 2014-03-12 → 2014-05-20 (+69d) | 3d → -56d |
| DUKHCONP1AZ5ELGF4005 | Cable tray & trunking installation | 2014-02-24 → 2014-05-04 (+69d) | 2014-03-18 → 2014-05-26 (+69d) | 21d → -38d |
| DUKHCONP1AZ5ELGF4010 | Installation of wiring & Main Cabling | 2014-03-04 → 2014-05-12 (+69d) | 2014-04-01 → 2014-06-09 (+69d) | 21d → -38d |
| DUKHCONP1AZ5ELGF4015 | Install. of CAMS & Fire Fighting Accessories | 2014-05-06 → 2014-07-14 (+69d) | 2014-06-03 → 2014-08-14 (+72d) | 6d → -53d |
| DUKHCONP1AZ5ELGF4020 | Installation of DBS,MCCB Accessories. | 2014-05-12 → 2014-07-20 (+69d) | 2014-06-03 → 2014-08-14 (+72d) | -6d → -65d |
| DUKHCONP1AZ5ELGF4025 | Installation of Lighting fixtures & Accessories | 2014-05-24 → 2014-07-31 (+68d) | 2014-06-21 → 2014-09-01 (+72d) | 1d → -58d |
| DUKHCONP1AZ5ELGF4030 | Installation of Telephone System | 2014-05-24 → 2014-07-31 (+68d) | 2014-06-15 → 2014-08-26 (+72d) | -6d → -65d |
| 15 | **FIRST FLOORS** | 2014-03-26 → 2014-05-26 (+61d) | 2014-07-24 → 2014-09-27 (+65d) |  |
| DUKHCONP1AZ5ELFF4035 | Fixing of wall conduits & switch socket boxes | 2014-03-26 → 2014-05-26 (+61d) | 2014-04-23 → 2014-06-23 (+61d) | -13d → -65d |
| DUKHCONP1AZ5ELFF4040 | Cable tray & trunking installation | 2014-04-07 → 2014-06-07 (+61d) | 2014-04-29 → 2014-06-29 (+61d) | 5d → -47d |
| DUKHCONP1AZ5ELFF4045 | Installation of wiring & Main Cabling | 2014-04-17 → 2014-06-17 (+61d) | 2014-05-15 → 2014-07-15 (+61d) | 3d → -49d |
| DUKHCONP1AZ5ELFF4050 | Installation of Telephone System | 2014-06-16 → 2014-08-18 (+63d) | 2014-07-14 → 2014-09-15 (+63d) | -16d → -67d |
| DUKHCONP1AZ5ELFF4055 | Install. of CAMS & Fire Fighting Accessories | 2014-06-15 → 2014-08-18 (+64d) | 2014-07-13 → 2014-09-15 (+64d) | -23d → -75d |
| DUKHCONP1AZ5ELFF4060 | Installation of DBS,MCCB Accessories. | 2014-06-18 → 2014-08-21 (+64d) | 2014-07-10 → 2014-09-13 (+65d) | -21d → -73d |
| DUKHCONP1AZ5ELFF4065 | Installation of Lighting fixtures & Accessories | 2014-06-26 → 2014-08-30 (+65d) | 2014-07-24 → 2014-09-27 (+65d) | -23d → -75d |
| 20 | **ROOF** | 2014-07-10 → 2014-09-13 (+65d) | 2014-08-14 → 2014-10-16 (+63d) |  |
| DUKHCONP1AZ5ELRF4070 | Installation of Isolator | 2014-07-10 → 2014-09-13 (+65d) | 2014-07-30 → 2014-10-02 (+64d) | -23d → -75d |
| DUKHCONP1AZ5ELRF4075 | Installation of TV Dish Antenna | 2014-07-16 → 2014-09-18 (+64d) | 2014-08-14 → 2014-10-16 (+63d) | -23d → -75d |
| 15 | **PLUMBING, DRAINAGE & FIRE FIGHTING WORKS** | 2013-10-31 → 2013-12-26 (+56d) | 2014-08-14 → 2014-10-16 (+63d) |  |
| 10 | **GROUND FLOOR** | 2013-10-31 → 2013-12-26 (+56d) | 2014-06-21 → 2014-09-01 (+72d) |  |
| DUKHCONP1AZ5PLUG4300 | Drainage / Storm Pipes in Grade Slab | 2013-10-31 → 2013-12-26 (+56d) | 2013-11-18 → 2014-01-13 (+56d) | -24d → -71d |
| DUKHCONP1AZ5PLGF4305 | Installation of Plumbing pipes & testing | 2014-02-23 → 2014-05-03 (+69d) | 2014-03-15 → 2014-05-22 (+68d) | -6d → -65d |
| DUKHCONP1AZ5PLGF4310 | Installation of Drainage pipes &testing | 2014-02-23 → 2014-05-03 (+69d) | 2014-03-15 → 2014-05-22 (+68d) | -3d → -62d |
| DUKHCONP1AZ5PLGF4315 | Sanitary Fittings & Accessories | 2014-05-24 → 2014-07-31 (+68d) | 2014-06-15 → 2014-08-26 (+72d) | 21d → -38d |
| DUKHCONP1AZ5PLGF4320 | Installation of Water Heater | 2014-06-04 → 2014-08-16 (+73d) | 2014-06-21 → 2014-09-01 (+72d) | 21d → -38d |
| 15 | **FIRST FLOORS** | 2014-04-07 → 2014-06-07 (+61d) | 2014-07-20 → 2014-09-22 (+64d) |  |
| DUKHCONP1AZ5PLFF4325 | Installation of Plumbing pipes & testing | 2014-04-07 → 2014-06-07 (+61d) | 2014-04-27 → 2014-06-26 (+60d) | -24d → -76d |
| DUKHCONP1AZ5PLFF4330 | Installation of Drainage pipes & testing | 2014-04-07 → 2014-06-07 (+61d) | 2014-04-27 → 2014-06-26 (+60d) | -2d → -54d |
| DUKHCONP1AZ5PLFF4335 | Sanitary Fittings & Accessories | 2014-06-22 → 2014-08-25 (+64d) | 2014-07-14 → 2014-09-16 (+64d) | -19d → -71d |
| DUKHCONP1AZ5PLFF4340 | Installation of Water Heater | 2014-07-03 → 2014-09-06 (+65d) | 2014-07-20 → 2014-09-22 (+64d) | -19d → -71d |
| 20 | **ROOF** | 2014-04-26 → 2014-06-24 (+59d) | 2014-08-14 → 2014-10-16 (+63d) |  |
| DUKHCONP1AZ5PLRF4345 | Installation of Plumbing pipes & fittings | 2014-04-26 → 2014-06-24 (+59d) | 2014-05-12 → 2014-07-10 (+59d) | 32d → -19d |
| DUKHCONP1AZ5PLRF4350 | Installation of Rain water Pipes | 2014-06-09 → 2014-08-12 (+64d) | 2014-06-25 → 2014-08-28 (+64d) | 2d → -50d |
| DUKHCONP1AZ5PLRF4355 | Roof Water Tank Installation & Connections | 2014-07-14 → 2014-09-16 (+64d) | 2014-08-14 → 2014-10-16 (+63d) | -23d → -75d |
| 20 | **AC WORKS** | 2014-03-15 → 2014-05-22 (+68d) | 2014-08-12 → 2014-10-14 (+63d) |  |
| 10 | **GROUND FLOOR** | 2014-03-15 → 2014-05-22 (+68d) | 2014-06-18 → 2014-08-30 (+73d) |  |
| DUKHCONP1AZ5ACGF4600 | Installation AC Pipes | 2014-03-15 → 2014-05-22 (+68d) | 2014-04-06 → 2014-06-14 (+69d) | 25d → -34d |
| DUKHCONP1AZ5ACGF4605 | Fixing of Ventilation Equipments | 2014-05-06 → 2014-07-14 (+69d) | 2014-06-03 → 2014-08-14 (+72d) | 8d → -51d |
| DUKHCONP1AZ5ACGF4610 | Fixing of Split AC | 2014-05-27 → 2014-08-07 (+72d) | 2014-06-18 → 2014-08-30 (+73d) | 8d → -51d |
| 15 | **FIRST FLOORS** | 2014-04-28 → 2014-06-28 (+61d) | 2014-07-28 → 2014-09-30 (+64d) |  |
| DUKHCONP1AZ5ACFF4615 | Installation AC Pipes | 2014-04-28 → 2014-06-28 (+61d) | 2014-05-20 → 2014-07-20 (+61d) | 3d → -49d |
| DUKHCONP1AZ5ACFF4620 | Fixing of Ventilation Equipments | 2014-06-15 → 2014-08-18 (+64d) | 2014-07-13 → 2014-09-15 (+64d) | -22d → -74d |
| DUKHCONP1AZ5ACFF4625 | Fixing of Split AC | 2014-07-06 → 2014-09-08 (+64d) | 2014-07-28 → 2014-09-30 (+64d) | -22d → -74d |
| 20 | **ROOF** | 2014-05-31 → 2014-07-30 (+60d) | 2014-08-12 → 2014-10-14 (+63d) |  |
| DUKHCONP1AZ5ACRF4630 | Installation of Refrigerant Pipes | 2014-05-31 → 2014-07-30 (+60d) | 2014-06-28 → 2014-08-31 (+64d) | 10d → -42d |
| DUKHCONP1AZ5ACRF4635 | Installation of Condensing Unit | 2014-07-12 → 2014-09-14 (+64d) | 2014-08-12 → 2014-10-14 (+63d) | -21d → -73d |
| 25 | **EXTERNAL WORKS** | 2014-03-22 → 2014-05-20 (+59d) | 2014-08-21 → 2014-10-22 (+62d) |  |
| 10 | **MISCELLANEOUS** | 2014-03-22 → 2014-05-20 (+59d) | 2014-08-21 → 2014-10-22 (+62d) |  |
| DUKHCONP1AZ5MSEX5000 | Construction of Manholes | 2014-03-22 → 2014-05-20 (+59d) | 2014-04-19 → 2014-06-17 (+59d) | -16d → -67d |
| DUKHCONP1AZ5MSEX5005 | Construction of Soak pit, Chambers | 2014-04-05 → 2014-06-03 (+59d) | 2014-05-03 → 2014-07-01 (+59d) | -16d → -67d |
| DUKHCONP1AZ5MSEX5015 | Construction of grease Trap | 2014-04-24 → 2014-06-23 (+60d) | 2014-05-17 → 2014-07-15 (+59d) | -16d → -67d |
| DUKHCONP1AZ5MSEX5020 | Construction Entrance Ramp | 2014-05-12 → 2014-07-12 (+61d) | 2014-06-09 → 2014-08-12 (+64d) | -8d → -60d |
| DUKHCONP1AZ5MSEX5010 | Telephone cable laying | 2014-05-18 → 2014-07-16 (+59d) | 2014-06-15 → 2014-08-17 (+63d) | -16d → -67d |
| DUKHCONP1AZ5MSEX5025 | SS.Handrails and Balustrades | 2014-05-29 → 2014-07-29 (+61d) | 2014-06-21 → 2014-08-24 (+64d) | -5d → -57d |
| DUKHCONP1AZ5MSEX5335 | Aluminum Roll-up Shutter with 2m Wall | 2014-07-21 → 2014-09-22 (+63d) | 2014-08-21 → 2014-10-22 (+62d) | 68d → 17d |
| 15 | **WATER TANK ENCLOSURE** | 2014-04-26 → 2014-06-25 (+60d) | 2014-08-05 → 2014-10-05 (+61d) |  |
| DUKHCONP1AZ5WEEX5030 | Excavation | 2014-04-26 → 2014-06-25 (+60d) | 2014-05-18 → 2014-07-17 (+60d) | 4d → -48d |
| DUKHCONP1AZ5WEEX5035 | Construction of Raft | 2014-05-01 → 2014-07-01 (+61d) | 2014-05-29 → 2014-07-29 (+61d) | 4d → -48d |
| DUKHCONP1AZ5WEEX5040 | Block works & Plastering | 2014-05-11 → 2014-07-10 (+60d) | 2014-06-08 → 2014-08-11 (+64d) | 4d → -48d |
| DUKHCONP1AZ5WEEX5045 | Flooring & Painting | 2014-05-18 → 2014-07-17 (+60d) | 2014-06-15 → 2014-08-18 (+64d) | 4d → -48d |
| DUKHCONP1AZ5WEEX5050 | Installation of Steel Gate | 2014-06-10 → 2014-08-13 (+64d) | 2014-07-02 → 2014-09-04 (+64d) | -5d → -57d |
| DUKHCONP1AZ5WEEX5060 | Structural steel & SS Shed cover installation | 2014-06-26 → 2014-08-30 (+65d) | 2014-07-24 → 2014-09-27 (+65d) | -14d → -66d |
| DUKHCONP1AZ5WEEX5065 | Install. of Water Tank,Chiller,Pump & Meter | 2014-07-05 → 2014-09-07 (+64d) | 2014-08-05 → 2014-10-05 (+61d) | -15d → -67d |
| 20 | **HARD LANDSCAPING** | 2014-05-26 → 2014-07-26 (+61d) | 2014-07-06 → 2014-09-08 (+64d) |  |
| DUKHCONP1AZ5HDEX5090 | kerb works | 2014-05-26 → 2014-07-26 (+61d) | 2014-06-17 → 2014-08-20 (+64d) | -8d → -60d |
| DUKHCONP1AZ5HDEX5095 | Cobble Stone Works | 2014-06-07 → 2014-08-10 (+64d) | 2014-06-29 → 2014-09-01 (+64d) | -8d → -60d |
| DUKHCONP1AZ5HDEX5100 | Interlock works | 2014-06-14 → 2014-08-17 (+64d) | 2014-07-06 → 2014-09-08 (+64d) | -8d → -60d |
| 25 | **SOFT LANDSCAPING** | 2014-06-19 → 2014-08-23 (+65d) | 2014-07-24 → 2014-09-27 (+65d) |  |
| DUKHCONP1AZ5SLEX5105 | Laying of Grass/ green area | 2014-06-19 → 2014-08-23 (+65d) | 2014-07-17 → 2014-09-20 (+65d) | -8d → -60d |
| DUKHCONP1AZ5SLEX5110 | Laying of Palm tree | 2014-06-26 → 2014-08-30 (+65d) | 2014-07-24 → 2014-09-27 (+65d) | -8d → -60d |

| ID | Task | Start | Finish | Complete | Total float | Other |
| --- | --- | --- | --- | --- | --- | --- |
| 30 | **TESTING AND COMMISSIONING** | 2014-08-17 → 2014-10-19 (+63d) | 2014-09-14 → 2014-11-16 (+63d) |  |  |  |
| DUKHCONP1AZ5ACTC8000 | Pre-Commissioning & Testing of AC Works | 2014-08-17 → 2014-10-19 (+63d) | 2014-09-14 → 2014-11-16 (+63d) |  | -24d → -76d |  |
| DUKHCONP1AZ5ELTC8010 | Pre-Commissioning & Testing of Electrical Works | 2014-08-17 → 2014-10-19 (+63d) | 2014-09-14 → 2014-11-16 (+63d) |  | -24d → -76d |  |
| DUKHCONP1AZ5PLTC8005 | Pre-Commissioning & Testing of Plumbing Works | 2014-08-17 → 2014-10-19 (+63d) | 2014-09-14 → 2014-11-16 (+63d) |  | -24d → -76d |  |
| 35 | **ZONE - 6 (4 Twin Villas)** |  | 2014-10-15 → 2014-12-15 (+61d) |  |  |  |
| 10 | **STRUCTURAL WORKS** |  | 2014-05-19 → 2014-07-19 (+61d) |  |  |  |
| 10 | **SUB STRUCTURE** |  | 2014-01-07 → 2014-03-04 (+56d) |  |  |  |
| 10 | **UPTO GRADE SLAB** |  | 2014-01-07 → 2014-03-04 (+56d) |  |  |  |
| DUKHCONP1AZ6STUG1000 | Footing Excavation | 2013-07-23 A | 2013-08-24 → 2013-08-08 A (-16d) | 0% → 100% | -11d → none |  |
| DUKHCONP1AZ6STUG1005 | Footing Antitermite | 2013-08-04 A | 2013-09-02 A | 0% → 100% | -11d → none |  |
| DUKHCONP1AZ6STUG1010 | Footing Blinding | 2013-08-07 A | 2013-09-05 A | 0% → 100% | -11d → none | resources BLINDING MASON SK [454 h]; LABOR- SUBCONTRACTOR [340.5 h]; BLINDING QTY [567 Sqm] → CONCRETE MASON SK [454 h]; LABOR- SUBCONTRACTOR [340.5 h]; BLINDING QTY [567 Sqm] |
| DUKHCONP1AZ6STUG1015 | Footing Waterproofing & Screed | 2013-08-17 A | 2013-09-14 A | 0% → 100% | -11d → none |  |
| DUKHCONP1AZ6STUG1020 | Construction of foundations | 2013-09-01 A | 2013-09-23 A | 0% → 100% | -11d → none |  |
| DUKHCONP1AZ6STUG1025 | Construction of neck of columns | 2013-09-25 → 2013-09-26 A (+1d) | 2013-10-26 → 2013-10-27 A (+1d) | 0% → 100% | -24d → none |  |
| DUKHCONP1AZ6STUG1030 | Waterproofing Footing & Neck Column | 2013-10-05 → 2013-10-06 A (+1d) | 2013-11-04 → 2013-11-01 A (-3d) | 0% → 100% | -24d → none |  |
| DUKHCONP1AZ6STUG1035 | Backfilling Upto Grade Beam Bottom | 2013-10-21 → 2013-10-28 A (+7d) | 2013-11-18 → 2013-11-25 (+7d) | 0% → 16% | -24d → -30d |  |
| DUKHCONP1AZ6STUG1040 | Construction of Grade Beams | 2013-11-06 → 2013-11-13 (+7d) | 2013-12-04 → 2013-12-11 (+7d) |  | -24d → -30d | resources BLINDING MASON SK [244 h]; SCREED MASON SK [224 h]; STEEL FIXERS SK [1497 h]; CARPENTERS SK [2152 h]; CONCRETE MASON SK [256 h]; LABOR- SUBCONTRACTOR [3195.75 h]; BLINDING QTY [304 Sqm]; SCREED QTY [280 Sqm]; REINFORCEMENT BARS QTY [18709 kg]; FORMWORK QTY [1076 Sqm]; CONCRETE QTY [128 Cum] → CONCRETE MASON SK [244 h]; SCREED MASON SK [224 h]; STEEL FIXERS SK [1497 h]; CARPENTERS SK [2152 h]; CONCRETE MASON SK [256 h]; LABOR- SUBCONTRACTOR [3195.75 h]; BLINDING QTY [304 Sqm]; SCREED QTY [280 Sqm]; REINFORCEMENT BARS QTY [18709 kg]; FORMWORK QTY [1076 Sqm]; CONCRETE QTY [128 Cum] |
| DUKHCONP1AZ6STUG1045 | Construction of slab on grade | 2013-12-09 → 2014-02-03 (+56d) | 2014-01-07 → 2014-03-04 (+56d) |  | -24d → -71d | resources BLINDING MASON SK [923 h]; SCREED MASON SK [850 h]; STEEL FIXERS SK [536 h]; CONCRETE MASON SK [400 h]; LABOR- SUBCONTRACTOR [1713 h]; BLINDING QTY [1153 Sqm]; SCREED QTY [1062 Sqm]; CONCRETE QTY [200 Cum]; WELDED WIRE MESH [2008 Sqm] → CONCRETE MASON SK [923 h]; SCREED MASON SK [850 h]; STEEL FIXERS SK [536 h]; CONCRETE MASON SK [400 h]; LABOR- SUBCONTRACTOR [1713 h]; BLINDING QTY [1153 Sqm]; SCREED QTY [1062 Sqm]; CONCRETE QTY [200 Cum]; WELDED WIRE MESH [2008 Sqm] |
| 15 | **SUPERSTRUCTURE** | 2013-12-26 → 2014-02-20 (+56d) | 2014-05-19 → 2014-07-19 (+61d) |  |  |  |
| 10 | **GROUND FLOOR** | 2013-12-26 → 2014-02-20 (+56d) | 2014-02-20 → 2014-04-16 (+55d) |  |  |  |
| DUKHCONP1AZ6STGF2000 | Column-Rebar & Formwork | 2013-12-26 → 2014-02-20 (+56d) | 2014-01-23 → 2014-03-20 (+56d) |  | -24d → -71d |  |
| DUKHCONP1AZ6STGF2005 | Column-Concrete | 2014-01-04 → 2014-03-01 (+56d) | 2014-01-30 → 2014-03-27 (+56d) |  | -22d → -69d |  |
| DUKHCONP1AZ6STGF2010 | Beam, Stairs ,Slab-Rebar & Formwork | 2014-01-19 → 2014-03-16 (+56d) | 2014-02-17 → 2014-04-13 (+55d) |  | -22d → -69d |  |
| DUKHCONP1AZ6STGF2015 | Beam, Stairs ,Slab-Concrete | 2014-02-04 → 2014-04-01 (+56d) | 2014-02-20 → 2014-04-16 (+55d) |  | -22d → -69d |  |
| 15 | **FIRST FLOORS** | 2014-02-06 → 2014-04-08 (+61d) | 2014-04-05 → 2014-06-03 (+59d) |  |  |  |
| DUKHCONP1AZ6STFF2020 | Column-Rebar & Formwork | 2014-02-06 → 2014-04-08 (+61d) | 2014-03-08 → 2014-05-06 (+59d) |  | -22d → -73d |  |
| DUKHCONP1AZ6STFF2025 | Column-Concrete | 2014-02-17 → 2014-04-17 (+59d) | 2014-03-16 → 2014-05-14 (+59d) |  | -20d → -71d |  |
| DUKHCONP1AZ6STFF2030 | Beam, Stairs ,Slab-Rebar & Formwork | 2014-03-04 → 2014-05-03 (+60d) | 2014-04-01 → 2014-05-31 (+60d) |  | -20d → -71d |  |
| DUKHCONP1AZ6STFF2035 | Beam, Stairs ,Slab-Concrete | 2014-03-20 → 2014-05-19 (+60d) | 2014-04-05 → 2014-06-03 (+59d) |  | -20d → -71d |  |
| 20 | **ROOF** | 2014-03-23 → 2014-05-21 (+59d) | 2014-05-19 → 2014-07-19 (+61d) |  |  |  |
| DUKHCONP1AZ6STRF2040 | Column-Rebar & Formwork | 2014-03-23 → 2014-05-21 (+59d) | 2014-04-12 → 2014-06-10 (+59d) |  | -16d → -67d |  |
| DUKHCONP1AZ6STRF2045 | Column-Concrete | 2014-03-26 → 2014-05-25 (+60d) | 2014-04-14 → 2014-06-12 (+59d) |  | -16d → -67d |  |
| DUKHCONP1AZ6STRF2050 | Slab-Rebar & Formwork - Head Room | 2014-03-29 → 2014-05-27 (+59d) | 2014-04-20 → 2014-06-18 (+59d) |  | -16d → -67d |  |
| DUKHCONP1AZ6STRF2055 | Slab-Concrete-Head room | 2014-04-08 → 2014-06-07 (+60d) | 2014-04-22 → 2014-06-21 (+60d) |  | -16d → -67d |  |
| DUKHCONP1AZ6STRF2060 | Construction of Parapets | 2014-04-10 → 2014-06-09 (+60d) | 2014-05-08 → 2014-07-07 (+60d) |  | 32d → -19d |  |
| DUKHCONP1AZ6STRF2065 | Construction of up stands/Plinth | 2014-04-21 → 2014-06-21 (+61d) | 2014-05-19 → 2014-07-19 (+61d) |  | 28d → -24d |  |
| 15 | **FINISHING WORKS** | 2014-03-08 → 2014-05-15 (+68d) | 2014-09-14 → 2014-11-16 (+63d) |  |  |  |
| 10 | **INTERNAL FINISHES** | 2014-03-08 → 2014-05-15 (+68d) | 2014-09-14 → 2014-11-16 (+63d) |  |  |  |
| 10 | **GROUND FLOOR** | 2014-03-08 → 2014-05-15 (+68d) | 2014-08-20 → 2014-10-30 (+71d) |  |  |  |
| DUKHCONP1AZ6ARGF3000 | Block work | 2014-03-08 → 2014-05-15 (+68d) | 2014-04-05 → 2014-06-12 (+68d) |  | -6d → -65d |  |
| DUKHCONP1AZ6ARGF3005 | Plastering work | 2014-03-30 → 2014-06-07 (+69d) | 2014-04-27 → 2014-07-05 (+69d) |  | -6d → -65d |  |
| DUKHCONP1AZ6ARGF3010 | Flooring screed | 2014-04-07 → 2014-06-15 (+69d) | 2014-04-30 → 2014-07-08 (+69d) |  | 2d → -57d |  |
| DUKHCONP1AZ6ARGF3030 | Paint First coat | 2014-04-19 → 2014-06-23 (+65d) | 2014-05-17 → 2014-07-21 (+65d) |  | 5d → -51d |  |
| DUKHCONP1AZ6ARGF3015 | Wet area waterproofing & Protection Screed | 2014-04-16 → 2014-06-24 (+69d) | 2014-05-03 → 2014-07-10 (+68d) |  | -6d → -65d |  |
| DUKHCONP1AZ6ARGF3020 | Ceramic Wall Tiling | 2014-04-22 → 2014-06-30 (+69d) | 2014-05-20 → 2014-07-28 (+69d) |  | -6d → -65d |  |
| DUKHCONP1AZ6ARGF3025 | Porcelain Tile flooring | 2014-04-28 → 2014-07-06 (+69d) | 2014-05-26 → 2014-08-06 (+72d) |  | -6d → -65d |  |
| DUKHCONP1AZ6ARGF3045 | Fixing of Suspension systems | 2014-05-15 → 2014-07-23 (+69d) | 2014-06-07 → 2014-08-18 (+72d) |  | -6d → -65d |  |
| DUKHCONP1AZ6ARGF3035 | Slate Tile Flooring & Skirting | 2014-05-18 → 2014-07-26 (+69d) | 2014-06-03 → 2014-08-14 (+72d) |  | -1d → -60d |  |
| DUKHCONP1AZ6ARGF3055 | Aluminum tile false ceiling | 2014-05-24 → 2014-07-31 (+68d) | 2014-06-21 → 2014-09-01 (+72d) |  | -3d → -62d |  |
| DUKHCONP1AZ6ARGF3040 | Cobble Tile flooring | 2014-05-25 → 2014-08-05 (+72d) | 2014-06-10 → 2014-08-21 (+72d) |  | -3d → -62d |  |
| DUKHCONP1AZ6ARGF3060 | Gypsum board false ceiling | 2014-05-27 → 2014-08-07 (+72d) | 2014-06-24 → 2014-09-04 (+72d) |  | -6d → -65d |  |
| DUKHCONP1AZ6ARGF3050 | Granite - Stair case flooring & Skirting | 2014-06-02 → 2014-08-13 (+72d) | 2014-06-24 → 2014-09-04 (+72d) |  | -3d → -62d |  |
| DUKHCONP1AZ6ARGF3065 | Wooden door & PVC Door | 2014-06-16 → 2014-08-27 (+72d) | 2014-07-02 → 2014-09-13 (+73d) |  | -3d → -62d |  |
| DUKHCONP1AZ6ARGF3070 | Aluminum doors | 2014-06-22 → 2014-09-02 (+72d) | 2014-07-08 → 2014-09-18 (+72d) |  | -3d → -62d |  |
| DUKHCONP1AZ6ARGF3075 | Carpentry & Joinery Works | 2014-06-28 → 2014-09-08 (+72d) | 2014-07-20 → 2014-09-30 (+72d) |  | -3d → -62d |  |
| DUKHCONP1AZ6ARGF3080 | Aluminum windows | 2014-06-29 → 2014-09-09 (+72d) | 2014-07-21 → 2014-10-01 (+72d) |  | 7d → -52d |  |
| DUKHCONP1AZ6ARGF3085 | S.S.Balustrade | 2014-07-06 → 2014-09-16 (+72d) | 2014-07-28 → 2014-10-08 (+72d) |  | 2d → -57d |  |
| DUKHCONP1AZ6ARGF3090 | Installation of Granite Counter Top | 2014-07-10 → 2014-09-21 (+73d) | 2014-07-27 → 2014-10-07 (+72d) |  | -3d → -62d |  |
| DUKHCONP1AZ6ARGF3095 | Final Painting | 2014-07-20 → 2014-09-30 (+72d) | 2014-08-20 → 2014-10-30 (+71d) |  | -3d → -62d |  |
| 15 | **FIRST FLOORS** | 2014-04-19 → 2014-06-18 (+60d) | 2014-09-14 → 2014-11-16 (+63d) |  |  |  |
| DUKHCONP1AZ6ARFF3300 | Block work | 2014-04-19 → 2014-06-18 (+60d) | 2014-05-17 → 2014-07-16 (+60d) |  | -24d → -76d |  |
| DUKHCONP1AZ6ARFF3305 | Plastering work | 2014-05-13 → 2014-07-13 (+61d) | 2014-06-10 → 2014-08-13 (+64d) |  | -24d → -76d |  |
| DUKHCONP1AZ6ARFF3310 | Flooring screed | 2014-05-21 → 2014-07-21 (+61d) | 2014-06-14 → 2014-08-17 (+64d) |  | -12d → -64d |  |
| DUKHCONP1AZ6ARFF3330 | Paint First coat | 2014-05-29 → 2014-07-29 (+61d) | 2014-06-26 → 2014-08-30 (+65d) |  | -10d → -62d |  |
| DUKHCONP1AZ6ARFF3315 | Wet area waterproofing | 2014-06-02 → 2014-08-05 (+64d) | 2014-06-18 → 2014-08-21 (+64d) |  | -24d → -76d |  |
| DUKHCONP1AZ6ARFF3320 | Ceramic Wall Tiling | 2014-06-09 → 2014-08-12 (+64d) | 2014-07-07 → 2014-09-09 (+64d) |  | -24d → -76d |  |
| DUKHCONP1AZ6ARFF3325 | Porcelain Tile flooring | 2014-06-16 → 2014-08-19 (+64d) | 2014-07-14 → 2014-09-16 (+64d) |  | -24d → -76d |  |
| DUKHCONP1AZ6ARFF3345 | Fixing of Suspension systems | 2014-06-29 → 2014-09-01 (+64d) | 2014-07-21 → 2014-09-23 (+64d) |  | -24d → -76d |  |
| DUKHCONP1AZ6ARFF3335 | Slate Tile Flooring & Skirting | 2014-07-03 → 2014-09-06 (+65d) | 2014-07-20 → 2014-09-22 (+64d) |  | -16d → -68d |  |
| DUKHCONP1AZ6ARFF3360 | Gypsum board false ceiling | 2014-07-06 → 2014-09-08 (+64d) | 2014-08-06 → 2014-10-06 (+61d) |  | -24d → -76d |  |

| ID | Task | Start | Finish | Total float |
| --- | --- | --- | --- | --- |
| DUKHCONP1AZ6ARFF3350 | Granite - Stair case flooring & Skirting | 2014-07-07 → 2014-09-09 (+64d) | 2014-07-29 → 2014-10-01 (+64d) | -22d → -74d |
| DUKHCONP1AZ6ARFF3365 | Wooden door | 2014-07-21 → 2014-09-23 (+64d) | 2014-08-10 → 2014-10-12 (+63d) | -24d → -76d |
| DUKHCONP1AZ6ARFF3370 | Aluminum Door | 2014-07-21 → 2014-09-23 (+64d) | 2014-08-16 → 2014-10-18 (+63d) | -24d → -76d |
| DUKHCONP1AZ6ARFF3375 | Carpentry & Joinery Works | 2014-07-27 → 2014-09-29 (+64d) | 2014-08-27 → 2014-10-29 (+63d) | -24d → -76d |
| DUKHCONP1AZ6ARFF3380 | Aluminum windows | 2014-07-28 → 2014-09-30 (+64d) | 2014-08-23 → 2014-10-25 (+63d) | -20d → -72d |
| DUKHCONP1AZ6ARFF3385 | Handrail & Balustrade | 2014-08-11 → 2014-10-13 (+63d) | 2014-09-02 → 2014-11-04 (+63d) | -24d → -76d |
| DUKHCONP1AZ6ARFF3390 | Installation of Granite Counter Top | 2014-08-11 → 2014-10-13 (+63d) | 2014-09-02 → 2014-11-04 (+63d) | -23d → -75d |
| DUKHCONP1AZ6ARFF3395 | Final Painting | 2014-08-17 → 2014-10-19 (+63d) | 2014-09-14 → 2014-11-16 (+63d) | -24d → -76d |
| 20 | **ROOF** | 2014-05-03 → 2014-07-01 (+59d) | 2014-07-06 → 2014-09-07 (+63d) |  |
| DUKHCONP1AZ6ARRF3600 | Block work | 2014-05-03 → 2014-07-01 (+59d) | 2014-05-25 → 2014-07-23 (+59d) | 28d → -23d |
| DUKHCONP1AZ6ARRF3605 | Plastering work | 2014-05-11 → 2014-07-09 (+59d) | 2014-06-02 → 2014-07-31 (+59d) | 28d → -23d |
| DUKHCONP1AZ6ARRF3610 | Flooring screed | 2014-05-25 → 2014-07-23 (+59d) | 2014-06-10 → 2014-08-12 (+63d) | 33d → -18d |
| DUKHCONP1AZ6ARRF3695 | Painting -Storage area | 2014-06-02 → 2014-07-31 (+59d) | 2014-06-24 → 2014-08-26 (+63d) | 33d → -18d |
| DUKHCONP1AZ6ARRF3620 | Epoxy Painting -Storage area | 2014-06-19 → 2014-08-21 (+63d) | 2014-07-06 → 2014-09-07 (+63d) | 33d → -18d |
| 15 | **EXTERNAL FINISHES** | 2014-05-25 → 2014-07-24 (+60d) | 2014-08-14 → 2014-10-16 (+63d) |  |
| 10 | **ROOF** | 2014-06-08 → 2014-08-11 (+64d) | 2014-08-14 → 2014-10-16 (+63d) |  |
| DUKHCONP1AZ6ARRF3630 | Leveling Screed for Waterproofing | 2014-06-08 → 2014-08-11 (+64d) | 2014-07-06 → 2014-09-08 (+64d) | -3d → -55d |
| DUKHCONP1AZ6ARRF3635 | Laying of Waterproofing Membrane | 2014-06-11 → 2014-08-14 (+64d) | 2014-07-09 → 2014-09-11 (+64d) | -3d → -55d |
| DUKHCONP1AZ6ARRF3640 | Installation of Insulation & Protection | 2014-06-16 → 2014-08-19 (+64d) | 2014-07-14 → 2014-09-16 (+64d) | -3d → -55d |
| DUKHCONP1AZ6ARRF3645 | Lime Stone Chips & Paving slab Installation | 2014-06-21 → 2014-08-24 (+64d) | 2014-07-19 → 2014-09-21 (+64d) | -3d → -55d |
| DUKHCONP1AZ6ARRF3650 | Install. of Gal. Frame & Aluminum Slat Screen | 2014-06-29 → 2014-09-01 (+64d) | 2014-07-27 → 2014-09-29 (+64d) | -3d → -55d |
| DUKHCONP1AZ6ARRF3655 | Installation of Pumps Protection cabinets | 2014-07-14 → 2014-09-16 (+64d) | 2014-08-09 → 2014-10-08 (+60d) | -3d → -55d |
| DUKHCONP1AZ6ARRF3660 | Installation of Access Ladder | 2014-07-26 → 2014-09-28 (+64d) | 2014-08-14 → 2014-10-16 (+63d) | 2d → -50d |
| 15 | **ELEVATION** | 2014-05-25 → 2014-07-24 (+60d) | 2014-07-15 → 2014-09-17 (+64d) |  |
| DUKHCONP1AZ6AREL3665 | External Plastering | 2014-05-25 → 2014-07-24 (+60d) | 2014-06-22 → 2014-08-25 (+64d) | 23d → -29d |
| DUKHCONP1AZ6AREL3670 | External stone cladding works | 2014-06-11 → 2014-08-14 (+64d) | 2014-07-03 → 2014-09-06 (+65d) | 25d → -27d |
| DUKHCONP1AZ6AREL3680 | External Painting | 2014-06-23 → 2014-08-26 (+64d) | 2014-07-15 → 2014-09-17 (+64d) | 25d → -27d |
| 20 | **MEP WORKS** | 2013-11-30 → 2013-12-07 (+7d) | 2014-09-13 → 2014-11-15 (+63d) |  |
| 10 | **ELECTRICAL WORKS** | 2014-03-13 → 2014-05-21 (+69d) | 2014-09-13 → 2014-11-15 (+63d) |  |
| 10 | **GROUND FLOOR** | 2014-03-13 → 2014-05-21 (+69d) | 2014-07-20 → 2014-09-30 (+72d) |  |
| DUKHCONP1AZ6ELGF4000 | Fixing of wall conduits & switch socket boxes | 2014-03-13 → 2014-05-21 (+69d) | 2014-04-10 → 2014-06-18 (+69d) | 3d → -56d |
| DUKHCONP1AZ6ELGF4005 | Cable tray & trunking installation | 2014-03-25 → 2014-06-02 (+69d) | 2014-04-16 → 2014-06-24 (+69d) | 21d → -38d |
| DUKHCONP1AZ6ELGF4010 | Installation of wiring & Main Cabling | 2014-04-02 → 2014-06-10 (+69d) | 2014-04-30 → 2014-07-08 (+69d) | 21d → -38d |
| DUKHCONP1AZ6ELGF4015 | Install. of CAMS & Fire Fighting Accessories | 2014-06-04 → 2014-08-16 (+73d) | 2014-07-02 → 2014-09-13 (+73d) | 6d → -53d |
| DUKHCONP1AZ6ELGF4020 | Installation of DBS,MCCB Accessories. | 2014-06-10 → 2014-08-21 (+72d) | 2014-07-02 → 2014-09-13 (+73d) | -6d → -65d |
| DUKHCONP1AZ6ELGF4025 | Installation of Lighting fixtures & Accessories | 2014-06-22 → 2014-09-02 (+72d) | 2014-07-20 → 2014-09-30 (+72d) | 1d → -58d |
| DUKHCONP1AZ6ELGF4030 | Installation of Telephone System | 2014-06-22 → 2014-09-02 (+72d) | 2014-07-14 → 2014-09-24 (+72d) | -6d → -65d |
| 15 | **FIRST FLOORS** | 2014-04-24 → 2014-06-24 (+61d) | 2014-08-26 → 2014-10-28 (+63d) |  |
| DUKHCONP1AZ6ELFF4035 | Fixing of wall conduits & switch socket boxes | 2014-04-24 → 2014-06-24 (+61d) | 2014-05-22 → 2014-07-22 (+61d) | -13d → -65d |
| DUKHCONP1AZ6ELFF4040 | Cable tray & trunking installation | 2014-05-06 → 2014-07-06 (+61d) | 2014-05-28 → 2014-07-28 (+61d) | 5d → -47d |
| DUKHCONP1AZ6ELFF4045 | Installation of wiring & Main Cabling | 2014-05-17 → 2014-07-16 (+60d) | 2014-06-14 → 2014-08-17 (+64d) | 3d → -49d |
| DUKHCONP1AZ6ELFF4050 | Installation of Telephone System | 2014-07-15 → 2014-09-16 (+63d) | 2014-08-16 → 2014-10-16 (+61d) | -16d → -67d |
| DUKHCONP1AZ6ELFF4055 | Install. of CAMS & Fire Fighting Accessories | 2014-07-14 → 2014-09-16 (+64d) | 2014-08-14 → 2014-10-16 (+63d) | -23d → -75d |
| DUKHCONP1AZ6ELFF4060 | Installation of DBS,MCCB Accessories. | 2014-07-17 → 2014-09-20 (+65d) | 2014-08-12 → 2014-10-14 (+63d) | -21d → -73d |
| DUKHCONP1AZ6ELFF4065 | Installation of Lighting fixtures & Accessories | 2014-07-26 → 2014-09-28 (+64d) | 2014-08-26 → 2014-10-28 (+63d) | -23d → -75d |
| 20 | **ROOF** | 2014-08-12 → 2014-10-14 (+63d) | 2014-09-13 → 2014-11-15 (+63d) |  |
| DUKHCONP1AZ6ELRF4070 | Installation of Isolator | 2014-08-12 → 2014-10-14 (+63d) | 2014-09-01 → 2014-11-03 (+63d) | -23d → -75d |
| DUKHCONP1AZ6ELRF4075 | Installation of TV Dish Antenna | 2014-08-18 → 2014-10-20 (+63d) | 2014-09-13 → 2014-11-15 (+63d) | -23d → -75d |
| 15 | **PLUMBING, DRAINAGE & FIRE FIGHTING WORKS** | 2013-11-30 → 2013-12-07 (+7d) | 2014-09-13 → 2014-11-15 (+63d) |  |
| 10 | **GROUND FLOOR** | 2013-11-30 → 2013-12-07 (+7d) | 2014-07-20 → 2014-09-30 (+72d) |  |
| DUKHCONP1AZ6PLUG4300 | Drainage / Storm Pipes in Grade Slab | 2013-11-30 → 2013-12-07 (+7d) | 2013-12-17 → 2013-12-25 (+8d) | -24d → -30d |
| DUKHCONP1AZ6PLGF4305 | Installation of Plumbing pipes & testing | 2014-03-24 → 2014-06-01 (+69d) | 2014-04-13 → 2014-06-21 (+69d) | -6d → -65d |
| DUKHCONP1AZ6PLGF4310 | Installation of Drainage pipes &testing | 2014-03-24 → 2014-06-01 (+69d) | 2014-04-13 → 2014-06-21 (+69d) | -3d → -62d |
| DUKHCONP1AZ6PLGF4315 | Sanitary Fittings & Accessories | 2014-06-22 → 2014-09-02 (+72d) | 2014-07-14 → 2014-09-24 (+72d) | 21d → -38d |
| DUKHCONP1AZ6PLGF4320 | Installation of Water Heater | 2014-07-03 → 2014-09-14 (+73d) | 2014-07-20 → 2014-09-30 (+72d) | 21d → -38d |
| 15 | **FIRST FLOORS** | 2014-05-06 → 2014-07-06 (+61d) | 2014-08-21 → 2014-10-23 (+63d) |  |
| DUKHCONP1AZ6PLFF4325 | Installation of Plumbing pipes & testing | 2014-05-06 → 2014-07-06 (+61d) | 2014-05-26 → 2014-07-26 (+61d) | -24d → -76d |
| DUKHCONP1AZ6PLFF4330 | Installation of Drainage pipes & testing | 2014-05-06 → 2014-07-06 (+61d) | 2014-05-26 → 2014-07-26 (+61d) | -2d → -54d |
| DUKHCONP1AZ6PLFF4335 | Sanitary Fittings & Accessories | 2014-07-21 → 2014-09-23 (+64d) | 2014-08-16 → 2014-10-18 (+63d) | -19d → -71d |
| DUKHCONP1AZ6PLFF4340 | Installation of Water Heater | 2014-08-05 → 2014-10-05 (+61d) | 2014-08-21 → 2014-10-23 (+63d) | -19d → -71d |
| 20 | **ROOF** | 2014-05-25 → 2014-07-23 (+59d) | 2014-09-13 → 2014-11-15 (+63d) |  |
| DUKHCONP1AZ6PLRF4345 | Installation of Plumbing pipes & fittings | 2014-05-25 → 2014-07-23 (+59d) | 2014-06-10 → 2014-08-12 (+63d) | 32d → -19d |
| DUKHCONP1AZ6PLRF4350 | Installation of Rain water Pipes | 2014-07-08 → 2014-09-10 (+64d) | 2014-07-24 → 2014-09-27 (+65d) | 2d → -50d |
| DUKHCONP1AZ6PLRF4355 | Roof Water Tank Installation & Connections | 2014-08-16 → 2014-10-18 (+63d) | 2014-09-13 → 2014-11-15 (+63d) | -23d → -75d |
| 20 | **AC WORKS** | 2014-04-13 → 2014-06-21 (+69d) | 2014-09-10 → 2014-11-12 (+63d) |  |
| 10 | **GROUND FLOOR** | 2014-04-13 → 2014-06-21 (+69d) | 2014-07-17 → 2014-09-28 (+73d) |  |
| DUKHCONP1AZ6ACGF4600 | Installation AC Pipes | 2014-04-13 → 2014-06-21 (+69d) | 2014-05-05 → 2014-07-13 (+69d) | 25d → -34d |
| DUKHCONP1AZ6ACGF4605 | Fixing of Ventilation Equipments | 2014-06-04 → 2014-08-16 (+73d) | 2014-07-02 → 2014-09-13 (+73d) | 8d → -51d |
| DUKHCONP1AZ6ACGF4610 | Fixing of Split AC | 2014-06-25 → 2014-09-06 (+73d) | 2014-07-17 → 2014-09-28 (+73d) | 8d → -51d |
| 15 | **FIRST FLOORS** | 2014-05-27 → 2014-07-27 (+61d) | 2014-08-30 → 2014-11-01 (+63d) |  |

| ID | Task | Start | Finish | Complete | Total float | Other |
| --- | --- | --- | --- | --- | --- | --- |
| DUKHCONP1AZ6ACFF4615 | Installation AC Pipes | 2014-05-27 → 2014-07-27 (+61d) | 2014-06-18 → 2014-08-21 (+64d) |  | 3d → -49d |  |
| DUKHCONP1AZ6ACFF4620 | Fixing of Ventilation Equipments | 2014-07-14 → 2014-09-16 (+64d) | 2014-08-14 → 2014-10-16 (+63d) |  | -22d → -74d |  |
| DUKHCONP1AZ6ACFF4625 | Fixing of Split AC | 2014-08-07 → 2014-10-07 (+61d) | 2014-08-30 → 2014-11-01 (+63d) |  | -22d → -74d |  |
| 20 | **ROOF** | 2014-06-29 → 2014-09-01 (+64d) | 2014-09-10 → 2014-11-12 (+63d) |  |  |  |
| DUKHCONP1AZ6ACRF4630 | Installation of Refrigerant Pipes | 2014-06-29 → 2014-09-01 (+64d) | 2014-07-27 → 2014-09-29 (+64d) |  | 10d → -42d |  |
| DUKHCONP1AZ6ACRF4635 | Installation of Condensing Unit | 2014-08-13 → 2014-10-15 (+63d) | 2014-09-10 → 2014-11-12 (+63d) |  | -21d → -73d |  |
| 25 | **EXTERNAL WORKS** | 2014-04-20 → 2014-06-18 (+59d) | 2014-09-08 → 2014-11-09 (+62d) |  |  |  |
| 10 | **MISCELLANEOUS** | 2014-04-20 → 2014-06-18 (+59d) | 2014-09-08 → 2014-11-09 (+62d) |  |  |  |
| DUKHCONP1AZ6MSEX5000 | Construction of Manholes | 2014-04-20 → 2014-06-18 (+59d) | 2014-05-18 → 2014-07-16 (+59d) |  | -16d → -67d |  |
| DUKHCONP1AZ6MSEX5005 | Construction of Soak pit, Chambers | 2014-05-04 → 2014-07-02 (+59d) | 2014-06-01 → 2014-07-30 (+59d) |  | -16d → -67d |  |
| DUKHCONP1AZ6MSEX5015 | Construction of grease Trap | 2014-05-24 → 2014-07-22 (+59d) | 2014-06-15 → 2014-08-17 (+63d) |  | -16d → -67d |  |
| DUKHCONP1AZ6MSEX5020 | Construction Entrance Ramp | 2014-06-10 → 2014-08-13 (+64d) | 2014-07-08 → 2014-09-10 (+64d) |  | -8d → -60d |  |
| DUKHCONP1AZ6MSEX5010 | Telephone cable laying | 2014-06-16 → 2014-08-18 (+63d) | 2014-07-14 → 2014-09-15 (+63d) |  | -16d → -67d |  |
| DUKHCONP1AZ6MSEX5025 | SS.Handrails and Balustrades | 2014-06-28 → 2014-08-31 (+64d) | 2014-07-20 → 2014-09-22 (+64d) |  | -5d → -57d |  |
| DUKHCONP1AZ6MSEX5335 | Aluminum Roll-up Shutter with 2m Wall | 2014-08-11 → 2014-10-12 (+62d) | 2014-09-08 → 2014-11-09 (+62d) |  | 60d → 9d |  |
| 15 | **WATER TANK ENCLOSURE** | 2014-05-19 → 2014-07-19 (+61d) | 2014-09-03 → 2014-11-05 (+63d) |  |  |  |
| DUKHCONP1AZ6WEEX5030 | Excavation | 2014-05-19 → 2014-07-19 (+61d) | 2014-06-10 → 2014-08-13 (+64d) |  | 9d → -43d |  |
| DUKHCONP1AZ6WEEX5035 | Construction of Raft | 2014-05-25 → 2014-07-24 (+60d) | 2014-06-22 → 2014-08-25 (+64d) |  | 9d → -43d |  |
| DUKHCONP1AZ6WEEX5040 | Block works & Plastering | 2014-06-03 → 2014-08-06 (+64d) | 2014-07-01 → 2014-09-03 (+64d) |  | 9d → -43d |  |
| DUKHCONP1AZ6WEEX5045 | Flooring & Painting | 2014-06-10 → 2014-08-13 (+64d) | 2014-07-08 → 2014-09-10 (+64d) |  | 9d → -43d |  |
| DUKHCONP1AZ6WEEX5050 | Installation of Steel Gate | 2014-07-09 → 2014-09-11 (+64d) | 2014-07-31 → 2014-10-04 (+65d) |  | -5d → -57d |  |
| DUKHCONP1AZ6WEEX5060 | Structural steel & SS Shed cover installation | 2014-07-26 → 2014-09-28 (+64d) | 2014-08-26 → 2014-10-28 (+63d) |  | -14d → -66d |  |
| DUKHCONP1AZ6WEEX5065 | Install. of Water Tank,Chiller,Pump & Meter | 2014-08-06 → 2014-10-06 (+61d) | 2014-09-03 → 2014-11-05 (+63d) |  | -15d → -67d |  |
| 20 | **HARD LANDSCAPING** | 2014-06-24 → 2014-08-27 (+64d) | 2014-08-07 → 2014-10-07 (+61d) |  |  |  |
| DUKHCONP1AZ6HDEX5090 | kerb works | 2014-06-24 → 2014-08-27 (+64d) | 2014-07-16 → 2014-09-18 (+64d) |  | -8d → -60d |  |
| DUKHCONP1AZ6HDEX5095 | Cobble Stone Works | 2014-07-06 → 2014-09-08 (+64d) | 2014-07-28 → 2014-09-30 (+64d) |  | -8d → -60d |  |
| DUKHCONP1AZ6HDEX5100 | Interlock works | 2014-07-13 → 2014-09-15 (+64d) | 2014-08-07 → 2014-10-07 (+61d) |  | -8d → -60d |  |
| 25 | **SOFT LANDSCAPING** | 2014-07-19 → 2014-09-21 (+64d) | 2014-08-26 → 2014-10-28 (+63d) |  |  |  |
| DUKHCONP1AZ6SLEX5105 | Laying of Grass/ green area | 2014-07-19 → 2014-09-21 (+64d) | 2014-08-19 → 2014-10-21 (+63d) |  | -8d → -60d |  |
| DUKHCONP1AZ6SLEX5110 | Laying of Palm tree | 2014-07-26 → 2014-09-28 (+64d) | 2014-08-26 → 2014-10-28 (+63d) |  | -8d → -60d |  |
| 30 | **TESTING AND COMMISSIONING** | 2014-09-15 → 2014-11-17 (+63d) | 2014-10-15 → 2014-12-15 (+61d) |  |  |  |
| DUKHCONP1AZ6ACTC8000 | Pre-Commissioning & Testing of AC Works | 2014-09-15 → 2014-11-17 (+63d) | 2014-10-15 → 2014-12-15 (+61d) |  | -24d → -76d |  |
| DUKHCONP1AZ6ELTC8010 | Pre-Commissioning & Testing of Electrical Works | 2014-09-15 → 2014-11-17 (+63d) | 2014-10-15 → 2014-12-15 (+61d) |  | -24d → -76d |  |
| DUKHCONP1AZ6PLTC8005 | Pre-Commissioning & Testing of Plumbing Works | 2014-09-15 → 2014-11-17 (+63d) | 2014-10-15 → 2014-12-15 (+61d) |  | -24d → -76d |  |
| 40 | **ZONE - 7 (4 Twin Villas)** | 2013-08-25 → 2013-08-13 (-12d) | 2014-11-13 → 2015-01-14 (+62d) |  |  |  |
| 10 | **STRUCTURAL WORKS** | 2013-08-25 → 2013-08-13 (-12d) | 2014-06-17 → 2014-08-20 (+64d) |  |  |  |
| 10 | **SUB STRUCTURE** | 2013-08-25 → 2013-08-13 (-12d) | 2014-02-05 → 2014-04-02 (+56d) |  |  |  |
| 10 | **UPTO GRADE SLAB** | 2013-08-25 → 2013-08-13 (-12d) | 2014-02-05 → 2014-04-02 (+56d) |  |  |  |
| DUKHCONP1AZ7STUG1000 | Footing Excavation | 2013-08-25 → 2013-08-13 A (-12d) | 2013-09-22 → 2013-09-10 A (-12d) | 0% → 100% | -11d → none |  |
| DUKHCONP1AZ7STUG1005 | Footing Antitermite | 2013-09-05 → 2013-08-25 A (-11d) | 2013-10-01 → 2013-09-19 A (-12d) | 0% → 100% | -11d → none |  |
| DUKHCONP1AZ7STUG1010 | Footing Blinding | 2013-09-09 → 2013-08-28 A (-12d) | 2013-10-05 → 2013-09-23 A (-12d) | 0% → 100% | -11d → none | resources BLINDING MASON SK [454 h]; LABOR- SUBCONTRACTOR [340.5 h]; BLINDING QTY [567 Sqm] → CONCRETE MASON SK [454 h]; LABOR- SUBCONTRACTOR [340.5 h]; BLINDING QTY [567 Sqm] |
| DUKHCONP1AZ7STUG1015 | Footing Waterproofing & Screed | 2013-09-15 → 2013-09-03 A (-12d) | 2013-10-13 → 2013-10-01 A (-12d) | 0% → 100% | -11d → none |  |
| DUKHCONP1AZ7STUG1020 | Construction of foundations | 2013-09-30 → 2013-09-18 A (-12d) | 2013-10-24 → 2013-10-10 A (-14d) | 0% → 100% | -11d → none |  |
| DUKHCONP1AZ7STUG1025 | Construction of neck of columns | 2013-10-27 → 2013-10-28 A (+1d) | 2013-11-24 → 2013-11-25 (+1d) | 0% → 16% | -24d → -25d |  |
| DUKHCONP1AZ7STUG1030 | Waterproofing Footing & Neck Column | 2013-11-05 → 2013-11-06 (+1d) | 2013-12-03 → 2013-12-04 (+1d) |  | -24d → -25d |  |
| DUKHCONP1AZ7STUG1035 | Backfilling Upto Grade Beam Bottom | 2013-11-19 → 2013-11-26 (+7d) | 2013-12-17 → 2013-12-25 (+8d) |  | -24d → -30d |  |
| DUKHCONP1AZ7STUG1040 | Construction of Grade Beams | 2013-12-05 → 2013-12-12 (+7d) | 2014-01-04 → 2014-01-11 (+7d) |  | -24d → -30d | resources BLINDING MASON SK [244 h]; SCREED MASON SK [224 h]; STEEL FIXERS SK [1497 h]; CARPENTERS SK [2152 h]; CONCRETE MASON SK [256 h]; LABOR- SUBCONTRACTOR [3195.75 h]; BLINDING QTY [304 Sqm]; SCREED QTY [280 Sqm]; REINFORCEMENT BARS QTY [18709 kg]; FORMWORK QTY [1076 Sqm]; CONCRETE QTY [128 Cum] → CONCRETE MASON SK [244 h]; SCREED MASON SK [224 h]; STEEL FIXERS SK [1497 h]; CARPENTERS SK [2152 h]; CONCRETE MASON SK [256 h]; LABOR- SUBCONTRACTOR [3195.75 h]; BLINDING QTY [304 Sqm]; SCREED QTY [280 Sqm]; REINFORCEMENT BARS QTY [18709 kg]; FORMWORK QTY [1076 Sqm]; CONCRETE QTY [128 Cum] |
| DUKHCONP1AZ7STUG1045 | Construction of slab on grade | 2014-01-08 → 2014-03-05 (+56d) | 2014-02-05 → 2014-04-02 (+56d) |  | -24d → -71d | resources BLINDING MASON SK [923 h]; SCREED MASON SK [850 h]; STEEL FIXERS SK [536 h]; CONCRETE MASON SK [400 h]; LABOR- SUBCONTRACTOR [1713 h]; BLINDING QTY [1153 Sqm]; SCREED QTY [1062 Sqm]; CONCRETE QTY [200 Cum]; WELDED WIRE MESH [2008 Sqm] → CONCRETE MASON SK [923 h]; SCREED MASON SK [850 h]; STEEL FIXERS SK [536 h]; CONCRETE MASON SK [400 h]; LABOR- SUBCONTRACTOR [1713 h]; BLINDING QTY [1153 Sqm]; SCREED QTY [1062 Sqm]; CONCRETE QTY [200 Cum]; WELDED WIRE MESH [2008 Sqm] |
| 15 | **SUPERSTRUCTURE** | 2014-01-25 → 2014-03-22 (+56d) | 2014-06-17 → 2014-08-20 (+64d) |  |  |  |
| 10 | **GROUND FLOOR** | 2014-01-25 → 2014-03-22 (+56d) | 2014-03-22 → 2014-05-15 (+54d) |  |  |  |
| DUKHCONP1AZ7STGF2000 | Column-Rebar & Formwork | 2014-01-25 → 2014-03-22 (+56d) | 2014-02-23 → 2014-04-19 (+55d) |  | -24d → -71d |  |
| DUKHCONP1AZ7STGF2005 | Column-Concrete | 2014-02-02 → 2014-03-30 (+56d) | 2014-03-02 → 2014-04-26 (+55d) |  | -22d → -69d |  |
| DUKHCONP1AZ7STGF2010 | Beam, Stairs ,Slab-Rebar & Formwork | 2014-02-18 → 2014-04-14 (+55d) | 2014-03-18 → 2014-05-12 (+55d) |  | -22d → -69d |  |
| DUKHCONP1AZ7STGF2015 | Beam, Stairs ,Slab-Concrete | 2014-03-06 → 2014-04-30 (+55d) | 2014-03-22 → 2014-05-15 (+54d) |  | -22d → -69d |  |
| 15 | **FIRST FLOORS** | 2014-03-09 → 2014-05-07 (+59d) | 2014-05-04 → 2014-07-02 (+59d) |  |  |  |
| DUKHCONP1AZ7STFF2020 | Column-Rebar & Formwork | 2014-03-09 → 2014-05-07 (+59d) | 2014-04-06 → 2014-06-04 (+59d) |  | -22d → -73d |  |
| DUKHCONP1AZ7STFF2025 | Column-Concrete | 2014-03-18 → 2014-05-17 (+60d) | 2014-04-14 → 2014-06-12 (+59d) |  | -20d → -71d |  |
| DUKHCONP1AZ7STFF2030 | Beam, Stairs ,Slab-Rebar & Formwork | 2014-04-02 → 2014-06-01 (+60d) | 2014-04-30 → 2014-06-29 (+60d) |  | -20d → -71d |  |
| DUKHCONP1AZ7STFF2035 | Beam, Stairs ,Slab-Concrete | 2014-04-19 → 2014-06-17 (+59d) | 2014-05-04 → 2014-07-02 (+59d) |  | -20d → -71d |  |
| 20 | **ROOF** | 2014-04-21 → 2014-06-19 (+59d) | 2014-06-17 → 2014-08-20 (+64d) |  |  |  |
| DUKHCONP1AZ7STRF2040 | Column-Rebar & Formwork | 2014-04-21 → 2014-06-19 (+59d) | 2014-05-11 → 2014-07-09 (+59d) |  | -16d → -67d |  |
| DUKHCONP1AZ7STRF2045 | Column-Concrete | 2014-04-24 → 2014-06-23 (+60d) | 2014-05-13 → 2014-07-12 (+60d) |  | -16d → -67d |  |
| DUKHCONP1AZ7STRF2050 | Slab-Rebar & Formwork - Head Room | 2014-04-27 → 2014-06-25 (+59d) | 2014-05-19 → 2014-07-17 (+59d) |  | -16d → -67d |  |
| DUKHCONP1AZ7STRF2055 | Slab-Concrete-Head room | 2014-05-07 → 2014-07-06 (+60d) | 2014-05-21 → 2014-07-20 (+60d) |  | -16d → -67d |  |
| DUKHCONP1AZ7STRF2060 | Construction of Parapets | 2014-05-10 → 2014-07-08 (+59d) | 2014-06-07 → 2014-08-09 (+63d) |  | 32d → -19d |  |
| DUKHCONP1AZ7STRF2065 | Construction of up stands/Plinth | 2014-05-20 → 2014-07-20 (+61d) | 2014-06-17 → 2014-08-20 (+64d) |  | 28d → -24d |  |
| 15 | **FINISHING WORKS** | 2014-04-06 → 2014-06-14 (+69d) | 2014-10-15 → 2014-12-15 (+61d) |  |  |  |
| 10 | **INTERNAL FINISHES** | 2014-04-06 → 2014-06-14 (+69d) | 2014-10-15 → 2014-12-15 (+61d) |  |  |  |
| 10 | **GROUND FLOOR** | 2014-04-06 → 2014-06-14 (+69d) | 2014-09-18 → 2014-11-29 (+72d) |  |  |  |
| DUKHCONP1AZ7ARGF3000 | Block work | 2014-04-06 → 2014-06-14 (+69d) | 2014-05-04 → 2014-07-12 (+69d) |  | -6d → -65d |  |

| ID | Task | Start | Finish | Total float |
| --- | --- | --- | --- | --- |
| DUKHCONP1AZ7ARGF3005 | Plastering work | 2014-04-28 → 2014-07-06 (+69d) | 2014-05-26 → 2014-08-06 (+72d) | -6d → -65d |
| DUKHCONP1AZ7ARGF3010 | Flooring screed | 2014-05-06 → 2014-07-14 (+69d) | 2014-05-29 → 2014-08-10 (+73d) | 2d → -57d |
| DUKHCONP1AZ7ARGF3030 | Paint First coat | 2014-05-18 → 2014-07-22 (+65d) | 2014-06-15 → 2014-08-23 (+69d) | 5d → -51d |
| DUKHCONP1AZ7ARGF3015 | Wet area waterproofing & Protection Screed | 2014-05-15 → 2014-07-23 (+69d) | 2014-06-01 → 2014-08-12 (+72d) | -6d → -65d |
| DUKHCONP1AZ7ARGF3020 | Ceramic Wall Tiling | 2014-05-21 → 2014-07-29 (+69d) | 2014-06-18 → 2014-08-30 (+73d) | -6d → -65d |
| DUKHCONP1AZ7ARGF3025 | Porcelain Tile flooring | 2014-05-27 → 2014-08-07 (+72d) | 2014-06-24 → 2014-09-04 (+72d) | -6d → -65d |
| DUKHCONP1AZ7ARGF3045 | Fixing of Suspension systems | 2014-06-14 → 2014-08-25 (+72d) | 2014-07-06 → 2014-09-16 (+72d) | -6d → -65d |
| DUKHCONP1AZ7ARGF3035 | Slate Tile Flooring & Skirting | 2014-06-16 → 2014-08-27 (+72d) | 2014-07-02 → 2014-09-13 (+73d) | -1d → -60d |
| DUKHCONP1AZ7ARGF3055 | Aluminum tile false ceiling | 2014-06-22 → 2014-09-02 (+72d) | 2014-07-20 → 2014-09-30 (+72d) | -3d → -62d |
| DUKHCONP1AZ7ARGF3040 | Cobble Tile flooring | 2014-06-23 → 2014-09-03 (+72d) | 2014-07-09 → 2014-09-20 (+73d) | -3d → -62d |
| DUKHCONP1AZ7ARGF3060 | Gypsum board false ceiling | 2014-06-25 → 2014-09-06 (+73d) | 2014-07-23 → 2014-10-04 (+73d) | -6d → -65d |
| DUKHCONP1AZ7ARGF3050 | Granite - Stair case flooring & Skirting | 2014-07-01 → 2014-09-11 (+72d) | 2014-07-23 → 2014-10-04 (+73d) | -3d → -62d |
| DUKHCONP1AZ7ARGF3065 | Wooden door & PVC Door | 2014-07-15 → 2014-09-25 (+72d) | 2014-07-31 → 2014-10-14 (+75d) | -3d → -62d |
| DUKHCONP1AZ7ARGF3070 | Aluminum doors | 2014-07-21 → 2014-10-01 (+72d) | 2014-08-10 → 2014-10-20 (+71d) | -3d → -62d |
| DUKHCONP1AZ7ARGF3075 | Carpentry & Joinery Works | 2014-07-27 → 2014-10-07 (+72d) | 2014-08-21 → 2014-11-01 (+72d) | -3d → -62d |
| DUKHCONP1AZ7ARGF3080 | Aluminum windows | 2014-07-28 → 2014-10-08 (+72d) | 2014-08-23 → 2014-11-02 (+71d) | 7d → -52d |
| DUKHCONP1AZ7ARGF3085 | S.S.Balustrade | 2014-08-07 → 2014-10-18 (+72d) | 2014-08-30 → 2014-11-09 (+71d) | 2d → -57d |
| DUKHCONP1AZ7ARGF3090 | Installation of Granite Counter Top | 2014-08-12 → 2014-10-22 (+71d) | 2014-08-28 → 2014-11-08 (+72d) | -3d → -62d |
| DUKHCONP1AZ7ARGF3095 | Final Painting | 2014-08-21 → 2014-11-01 (+72d) | 2014-09-18 → 2014-11-29 (+72d) | -3d → -62d |
| 15 | **FIRST FLOORS** | 2014-05-18 → 2014-07-17 (+60d) | 2014-10-15 → 2014-12-15 (+61d) |  |
| DUKHCONP1AZ7ARFF3300 | Block work | 2014-05-18 → 2014-07-17 (+60d) | 2014-06-15 → 2014-08-18 (+64d) | -24d → -76d |
| DUKHCONP1AZ7ARFF3305 | Plastering work | 2014-06-11 → 2014-08-14 (+64d) | 2014-07-09 → 2014-09-11 (+64d) | -24d → -76d |
| DUKHCONP1AZ7ARFF3310 | Flooring screed | 2014-06-19 → 2014-08-23 (+65d) | 2014-07-13 → 2014-09-15 (+64d) | -12d → -64d |
| DUKHCONP1AZ7ARFF3330 | Paint First coat | 2014-06-28 → 2014-08-31 (+64d) | 2014-07-26 → 2014-09-28 (+64d) | -10d → -62d |
| DUKHCONP1AZ7ARFF3315 | Wet area waterproofing | 2014-07-01 → 2014-09-03 (+64d) | 2014-07-17 → 2014-09-20 (+65d) | -24d → -76d |
| DUKHCONP1AZ7ARFF3320 | Ceramic Wall Tiling | 2014-07-08 → 2014-09-10 (+64d) | 2014-08-09 → 2014-10-08 (+60d) | -24d → -76d |
| DUKHCONP1AZ7ARFF3325 | Porcelain Tile flooring | 2014-07-15 → 2014-09-17 (+64d) | 2014-08-16 → 2014-10-18 (+63d) | -24d → -76d |
| DUKHCONP1AZ7ARFF3345 | Fixing of Suspension systems | 2014-07-28 → 2014-09-30 (+64d) | 2014-08-23 → 2014-10-25 (+63d) | -24d → -76d |
| DUKHCONP1AZ7ARFF3335 | Slate Tile Flooring & Skirting | 2014-08-05 → 2014-10-05 (+61d) | 2014-08-21 → 2014-10-23 (+63d) | -16d → -68d |
| DUKHCONP1AZ7ARFF3360 | Gypsum board false ceiling | 2014-08-07 → 2014-10-07 (+61d) | 2014-09-04 → 2014-11-06 (+63d) | -24d → -76d |
| DUKHCONP1AZ7ARFF3350 | Granite - Stair case flooring & Skirting | 2014-08-09 → 2014-10-08 (+60d) | 2014-08-31 → 2014-11-02 (+63d) | -22d → -74d |
| DUKHCONP1AZ7ARFF3365 | Wooden door | 2014-08-23 → 2014-10-25 (+63d) | 2014-09-08 → 2014-11-10 (+63d) | -24d → -76d |
| DUKHCONP1AZ7ARFF3370 | Aluminum Door | 2014-08-23 → 2014-10-25 (+63d) | 2014-09-14 → 2014-11-16 (+63d) | -24d → -76d |
| DUKHCONP1AZ7ARFF3375 | Carpentry & Joinery Works | 2014-08-28 → 2014-10-30 (+63d) | 2014-09-25 → 2014-11-27 (+63d) | -24d → -76d |
| DUKHCONP1AZ7ARFF3380 | Aluminum windows | 2014-08-30 → 2014-11-01 (+63d) | 2014-09-21 → 2014-11-23 (+63d) | -20d → -72d |
| DUKHCONP1AZ7ARFF3385 | Handrail & Balustrade | 2014-09-09 → 2014-11-11 (+63d) | 2014-10-01 → 2014-12-03 (+63d) | -24d → -76d |
| DUKHCONP1AZ7ARFF3390 | Installation of Granite Counter Top | 2014-09-09 → 2014-11-11 (+63d) | 2014-10-01 → 2014-12-03 (+63d) | -23d → -75d |
| DUKHCONP1AZ7ARFF3395 | Final Painting | 2014-09-15 → 2014-11-17 (+63d) | 2014-10-15 → 2014-12-15 (+61d) | -24d → -76d |
| 20 | **ROOF** | 2014-06-01 → 2014-07-30 (+59d) | 2014-08-07 → 2014-10-06 (+60d) |  |
| DUKHCONP1AZ7ARRF3600 | Block work | 2014-06-01 → 2014-07-30 (+59d) | 2014-06-23 → 2014-08-25 (+63d) | 28d → -23d |
| DUKHCONP1AZ7ARRF3605 | Plastering work | 2014-06-09 → 2014-08-11 (+63d) | 2014-07-01 → 2014-09-02 (+63d) | 28d → -23d |
| DUKHCONP1AZ7ARRF3610 | Flooring screed | 2014-06-23 → 2014-08-25 (+63d) | 2014-07-09 → 2014-09-10 (+63d) | 33d → -18d |
| DUKHCONP1AZ7ARRF3695 | Painting -Storage area | 2014-07-01 → 2014-09-02 (+63d) | 2014-07-23 → 2014-09-24 (+63d) | 33d → -18d |
| DUKHCONP1AZ7ARRF3620 | Epoxy Painting -Storage area | 2014-07-19 → 2014-09-20 (+63d) | 2014-08-07 → 2014-10-06 (+60d) | 33d → -18d |
| 15 | **EXTERNAL FINISHES** | 2014-06-23 → 2014-08-26 (+64d) | 2014-09-13 → 2014-11-15 (+63d) |  |
| 10 | **ROOF** | 2014-07-07 → 2014-09-09 (+64d) | 2014-09-13 → 2014-11-15 (+63d) |  |
| DUKHCONP1AZ7ARRF3630 | Leveling Screed for Waterproofing | 2014-07-07 → 2014-09-09 (+64d) | 2014-08-07 → 2014-10-07 (+61d) | -3d → -55d |
| DUKHCONP1AZ7ARRF3635 | Laying of Waterproofing Membrane | 2014-07-10 → 2014-09-13 (+65d) | 2014-08-11 → 2014-10-13 (+63d) | -3d → -55d |
| DUKHCONP1AZ7ARRF3640 | Installation of Insulation & Protection | 2014-07-15 → 2014-09-17 (+64d) | 2014-08-16 → 2014-10-18 (+63d) | -3d → -55d |
| DUKHCONP1AZ7ARRF3645 | Lime Stone Chips & Paving slab Installation | 2014-07-20 → 2014-09-22 (+64d) | 2014-08-20 → 2014-10-22 (+63d) | -3d → -55d |
| DUKHCONP1AZ7ARRF3650 | Install. of Gal. Frame & Aluminum Slat Screen | 2014-07-28 → 2014-09-30 (+64d) | 2014-08-28 → 2014-10-30 (+63d) | -3d → -55d |
| DUKHCONP1AZ7ARRF3655 | Installation of Pumps Protection cabinets | 2014-08-16 → 2014-10-18 (+63d) | 2014-09-07 → 2014-11-09 (+63d) | -3d → -55d |
| DUKHCONP1AZ7ARRF3660 | Installation of Access Ladder | 2014-08-27 → 2014-10-29 (+63d) | 2014-09-13 → 2014-11-15 (+63d) | 2d → -50d |
| 15 | **ELEVATION** | 2014-06-23 → 2014-08-26 (+64d) | 2014-08-17 → 2014-10-19 (+63d) |  |
| DUKHCONP1AZ7AREL3665 | External Plastering | 2014-06-23 → 2014-08-26 (+64d) | 2014-07-21 → 2014-09-23 (+64d) | 23d → -29d |
| DUKHCONP1AZ7AREL3670 | External stone cladding works | 2014-07-10 → 2014-09-13 (+65d) | 2014-08-05 → 2014-10-05 (+61d) | 25d → -27d |
| DUKHCONP1AZ7AREL3680 | External Painting | 2014-07-22 → 2014-09-24 (+64d) | 2014-08-17 → 2014-10-19 (+63d) | 25d → -27d |
| 20 | **MEP WORKS** | 2013-12-30 → 2014-01-06 (+7d) | 2014-10-14 → 2014-12-14 (+61d) |  |
| 10 | **ELECTRICAL WORKS** | 2014-04-12 → 2014-06-19 (+68d) | 2014-10-14 → 2014-12-14 (+61d) |  |
| 10 | **GROUND FLOOR** | 2014-04-12 → 2014-06-19 (+68d) | 2014-08-21 → 2014-11-01 (+72d) |  |
| DUKHCONP1AZ7ELGF4000 | Fixing of wall conduits & switch socket boxes | 2014-04-12 → 2014-06-19 (+68d) | 2014-05-10 → 2014-07-17 (+68d) | 3d → -56d |
| DUKHCONP1AZ7ELGF4005 | Cable tray & trunking installation | 2014-04-23 → 2014-07-01 (+69d) | 2014-05-15 → 2014-07-23 (+69d) | 21d → -38d |
| DUKHCONP1AZ7ELGF4010 | Installation of wiring & Main Cabling | 2014-05-01 → 2014-07-09 (+69d) | 2014-05-29 → 2014-08-10 (+73d) | 21d → -38d |
| DUKHCONP1AZ7ELGF4015 | Install. of CAMS & Fire Fighting Accessories | 2014-07-03 → 2014-09-14 (+73d) | 2014-07-31 → 2014-10-14 (+75d) | 6d → -53d |
| DUKHCONP1AZ7ELGF4020 | Installation of DBS,MCCB Accessories. | 2014-07-09 → 2014-09-20 (+73d) | 2014-07-31 → 2014-10-14 (+75d) | -6d → -65d |
| DUKHCONP1AZ7ELGF4025 | Installation of Lighting fixtures & Accessories | 2014-07-21 → 2014-10-01 (+72d) | 2014-08-21 → 2014-11-01 (+72d) | 1d → -58d |
| DUKHCONP1AZ7ELGF4030 | Installation of Telephone System | 2014-07-21 → 2014-10-01 (+72d) | 2014-08-16 → 2014-10-26 (+71d) | -6d → -65d |
| 15 | **FIRST FLOORS** | 2014-05-24 → 2014-07-23 (+60d) | 2014-09-24 → 2014-11-26 (+63d) |  |
| DUKHCONP1AZ7ELFF4035 | Fixing of wall conduits & switch socket boxes | 2014-05-24 → 2014-07-23 (+60d) | 2014-06-21 → 2014-08-24 (+64d) | -13d → -65d |
| DUKHCONP1AZ7ELFF4040 | Cable tray & trunking installation | 2014-06-04 → 2014-08-07 (+64d) | 2014-06-26 → 2014-08-30 (+65d) | 5d → -47d |

| ID | Task | Start | Finish | Complete | Total float |
| --- | --- | --- | --- | --- | --- |
| DUKHCONP1AZ7ELFF4045 | Installation of wiring & Main Cabling | 2014-06-15 → 2014-08-18 (+64d) | 2014-07-13 → 2014-09-15 (+64d) |  | 3d → -49d |
| DUKHCONP1AZ7ELFF4050 | Installation of Telephone System | 2014-08-17 → 2014-10-18 (+62d) | 2014-09-14 → 2014-11-15 (+62d) |  | -16d → -67d |
| DUKHCONP1AZ7ELFF4055 | Install. of CAMS & Fire Fighting Accessories | 2014-08-16 → 2014-10-18 (+63d) | 2014-09-13 → 2014-11-15 (+63d) |  | -23d → -75d |
| DUKHCONP1AZ7ELFF4060 | Installation of DBS,MCCB Accessories. | 2014-08-19 → 2014-10-21 (+63d) | 2014-09-10 → 2014-11-12 (+63d) |  | -21d → -73d |
| DUKHCONP1AZ7ELFF4065 | Installation of Lighting fixtures & Accessories | 2014-08-27 → 2014-10-29 (+63d) | 2014-09-24 → 2014-11-26 (+63d) |  | -23d → -75d |
| 20 | **ROOF** | 2014-09-10 → 2014-11-12 (+63d) | 2014-10-14 → 2014-12-14 (+61d) |  |  |
| DUKHCONP1AZ7ELRF4070 | Installation of Isolator | 2014-09-10 → 2014-11-12 (+63d) | 2014-09-30 → 2014-12-02 (+63d) |  | -23d → -75d |
| DUKHCONP1AZ7ELRF4075 | Installation of TV Dish Antenna | 2014-09-16 → 2014-11-18 (+63d) | 2014-10-14 → 2014-12-14 (+61d) |  | -23d → -75d |
| 15 | **PLUMBING, DRAINAGE & FIRE FIGHTING WORKS** | 2013-12-30 → 2014-01-06 (+7d) | 2014-10-14 → 2014-12-14 (+61d) |  |  |
| 10 | **GROUND FLOOR** | 2013-12-30 → 2014-01-06 (+7d) | 2014-08-21 → 2014-11-01 (+72d) |  |  |
| DUKHCONP1AZ7PLUG4300 | Drainage / Storm Pipes in Grade Slab | 2013-12-30 → 2014-01-06 (+7d) | 2014-01-16 → 2014-01-23 (+7d) |  | -24d → -30d |
| DUKHCONP1AZ7PLGF4305 | Installation of Plumbing pipes & testing | 2014-04-22 → 2014-06-30 (+69d) | 2014-05-12 → 2014-07-20 (+69d) |  | -6d → -65d |
| DUKHCONP1AZ7PLGF4310 | Installation of Drainage pipes &testing | 2014-04-22 → 2014-06-30 (+69d) | 2014-05-12 → 2014-07-20 (+69d) |  | -3d → -62d |
| DUKHCONP1AZ7PLGF4315 | Sanitary Fittings & Accessories | 2014-07-21 → 2014-10-01 (+72d) | 2014-08-16 → 2014-10-26 (+71d) |  | 21d → -38d |
| DUKHCONP1AZ7PLGF4320 | Installation of Water Heater | 2014-08-05 → 2014-10-15 (+71d) | 2014-08-21 → 2014-11-01 (+72d) |  | 21d → -38d |
| 15 | **FIRST FLOORS** | 2014-06-04 → 2014-08-07 (+64d) | 2014-09-20 → 2014-11-22 (+63d) |  |  |
| DUKHCONP1AZ7PLFF4325 | Installation of Plumbing pipes & testing | 2014-06-04 → 2014-08-07 (+64d) | 2014-06-24 → 2014-08-27 (+64d) |  | -24d → -76d |
| DUKHCONP1AZ7PLFF4330 | Installation of Drainage pipes & testing | 2014-06-04 → 2014-08-07 (+64d) | 2014-06-24 → 2014-08-27 (+64d) |  | -2d → -54d |
| DUKHCONP1AZ7PLFF4335 | Sanitary Fittings & Accessories | 2014-08-23 → 2014-10-25 (+63d) | 2014-09-14 → 2014-11-16 (+63d) |  | -19d → -71d |
| DUKHCONP1AZ7PLFF4340 | Installation of Water Heater | 2014-09-03 → 2014-11-05 (+63d) | 2014-09-20 → 2014-11-22 (+63d) |  | -19d → -71d |
| 20 | **ROOF** | 2014-06-23 → 2014-08-25 (+63d) | 2014-10-14 → 2014-12-14 (+61d) |  |  |
| DUKHCONP1AZ7PLRF4345 | Installation of Plumbing pipes & fittings | 2014-06-23 → 2014-08-25 (+63d) | 2014-07-09 → 2014-09-10 (+63d) |  | 32d → -19d |
| DUKHCONP1AZ7PLRF4350 | Installation of Rain water Pipes | 2014-08-10 → 2014-10-12 (+63d) | 2014-08-26 → 2014-10-28 (+63d) |  | 2d → -50d |
| DUKHCONP1AZ7PLRF4355 | Roof Water Tank Installation & Connections | 2014-09-14 → 2014-11-16 (+63d) | 2014-10-14 → 2014-12-14 (+61d) |  | -23d → -75d |
| 20 | **AC WORKS** | 2014-05-12 → 2014-07-20 (+69d) | 2014-10-12 → 2014-12-11 (+60d) |  |  |
| 10 | **GROUND FLOOR** | 2014-05-12 → 2014-07-20 (+69d) | 2014-08-19 → 2014-10-29 (+71d) |  |  |
| DUKHCONP1AZ7ACGF4600 | Installation AC Pipes | 2014-05-12 → 2014-07-20 (+69d) | 2014-06-03 → 2014-08-14 (+72d) |  | 25d → -34d |
| DUKHCONP1AZ7ACGF4605 | Fixing of Ventilation Equipments | 2014-07-03 → 2014-09-14 (+73d) | 2014-07-31 → 2014-10-14 (+75d) |  | 8d → -51d |
| DUKHCONP1AZ7ACGF4610 | Fixing of Split AC | 2014-07-24 → 2014-10-05 (+73d) | 2014-08-19 → 2014-10-29 (+71d) |  | 8d → -51d |
| 15 | **FIRST FLOORS** | 2014-06-25 → 2014-08-28 (+64d) | 2014-09-28 → 2014-11-30 (+63d) |  |  |
| DUKHCONP1AZ7ACFF4615 | Installation AC Pipes | 2014-06-25 → 2014-08-28 (+64d) | 2014-07-17 → 2014-09-20 (+65d) |  | 3d → -49d |
| DUKHCONP1AZ7ACFF4620 | Fixing of Ventilation Equipments | 2014-08-16 → 2014-10-18 (+63d) | 2014-09-13 → 2014-11-15 (+63d) |  | -22d → -74d |
| DUKHCONP1AZ7ACFF4625 | Fixing of Split AC | 2014-09-06 → 2014-11-08 (+63d) | 2014-09-28 → 2014-11-30 (+63d) |  | -22d → -74d |
| 20 | **ROOF** | 2014-07-28 → 2014-09-30 (+64d) | 2014-10-12 → 2014-12-11 (+60d) |  |  |
| DUKHCONP1AZ7ACRF4630 | Installation of Refrigerant Pipes | 2014-07-28 → 2014-09-30 (+64d) | 2014-08-28 → 2014-10-30 (+63d) |  | 10d → -42d |
| DUKHCONP1AZ7ACRF4635 | Installation of Condensing Unit | 2014-09-11 → 2014-11-13 (+63d) | 2014-10-12 → 2014-12-11 (+60d) |  | -21d → -73d |
| 25 | **EXTERNAL WORKS** | 2014-05-19 → 2014-07-17 (+59d) | 2014-10-13 → 2014-12-11 (+59d) |  |  |
| 10 | **MISCELLANEOUS** | 2014-05-19 → 2014-07-17 (+59d) | 2014-10-13 → 2014-12-11 (+59d) |  |  |
| DUKHCONP1AZ7MSEX5000 | Construction of Manholes | 2014-05-19 → 2014-07-17 (+59d) | 2014-06-16 → 2014-08-18 (+63d) |  | -16d → -67d |
| DUKHCONP1AZ7MSEX5005 | Construction of Soak pit, Chambers | 2014-06-02 → 2014-07-31 (+59d) | 2014-06-30 → 2014-09-01 (+63d) |  | -16d → -67d |
| DUKHCONP1AZ7MSEX5015 | Construction of grease Trap | 2014-06-22 → 2014-08-24 (+63d) | 2014-07-14 → 2014-09-15 (+63d) |  | -16d → -67d |
| DUKHCONP1AZ7MSEX5020 | Construction Entrance Ramp | 2014-07-09 → 2014-09-11 (+64d) | 2014-08-10 → 2014-10-12 (+63d) |  | -8d → -60d |
| DUKHCONP1AZ7MSEX5010 | Telephone cable laying | 2014-07-15 → 2014-09-16 (+63d) | 2014-08-16 → 2014-10-16 (+61d) |  | -16d → -67d |
| DUKHCONP1AZ7MSEX5025 | SS.Handrails and Balustrades | 2014-07-27 → 2014-09-29 (+64d) | 2014-08-21 → 2014-10-23 (+63d) |  | -5d → -57d |
| DUKHCONP1AZ7MSEX5335 | Aluminum Roll-up Shutter with 2m Wall | 2014-09-13 → 2014-11-13 (+61d) | 2014-10-13 → 2014-12-11 (+59d) |  | 39d → -12d |
| 15 | **WATER TANK ENCLOSURE** | 2014-06-11 → 2014-08-14 (+64d) | 2014-10-02 → 2014-12-04 (+63d) |  |  |
| DUKHCONP1AZ7WEEX5030 | Excavation | 2014-06-11 → 2014-08-14 (+64d) | 2014-07-03 → 2014-09-06 (+65d) |  | 14d → -38d |
| DUKHCONP1AZ7WEEX5035 | Construction of Raft | 2014-06-17 → 2014-08-20 (+64d) | 2014-07-15 → 2014-09-17 (+64d) |  | 14d → -38d |
| DUKHCONP1AZ7WEEX5040 | Block works & Plastering | 2014-06-26 → 2014-08-30 (+65d) | 2014-07-24 → 2014-09-27 (+65d) |  | 14d → -38d |
| DUKHCONP1AZ7WEEX5045 | Flooring & Painting | 2014-07-03 → 2014-09-06 (+65d) | 2014-07-31 → 2014-10-04 (+65d) |  | 14d → -38d |
| DUKHCONP1AZ7WEEX5050 | Installation of Steel Gate | 2014-08-11 → 2014-10-13 (+63d) | 2014-09-02 → 2014-11-04 (+63d) |  | -5d → -57d |
| DUKHCONP1AZ7WEEX5060 | Structural steel & SS Shed cover installation | 2014-08-27 → 2014-10-29 (+63d) | 2014-09-24 → 2014-11-26 (+63d) |  | -14d → -66d |
| DUKHCONP1AZ7WEEX5065 | Install. of Water Tank,Chiller,Pump & Meter | 2014-09-04 → 2014-11-06 (+63d) | 2014-10-02 → 2014-12-04 (+63d) |  | -15d → -67d |
| 20 | **HARD LANDSCAPING** | 2014-07-23 → 2014-09-25 (+64d) | 2014-09-06 → 2014-11-08 (+63d) |  |  |
| DUKHCONP1AZ7HDEX5090 | kerb works | 2014-07-23 → 2014-09-25 (+64d) | 2014-08-18 → 2014-10-20 (+63d) |  | -8d → -60d |
| DUKHCONP1AZ7HDEX5095 | Cobble Stone Works | 2014-08-07 → 2014-10-07 (+61d) | 2014-08-30 → 2014-11-01 (+63d) |  | -8d → -60d |
| DUKHCONP1AZ7HDEX5100 | Interlock works | 2014-08-14 → 2014-10-16 (+63d) | 2014-09-06 → 2014-11-08 (+63d) |  | -8d → -60d |
| 25 | **SOFT LANDSCAPING** | 2014-08-20 → 2014-10-22 (+63d) | 2014-09-24 → 2014-11-26 (+63d) |  |  |
| DUKHCONP1AZ7SLEX5105 | Laying of Grass/ green area | 2014-08-20 → 2014-10-22 (+63d) | 2014-09-17 → 2014-11-19 (+63d) |  | -8d → -60d |
| DUKHCONP1AZ7SLEX5110 | Laying of Palm tree | 2014-08-27 → 2014-10-29 (+63d) | 2014-09-24 → 2014-11-26 (+63d) |  | -8d → -60d |
| 30 | **TESTING AND COMMISSIONING** | 2014-10-16 → 2014-12-16 (+61d) | 2014-11-13 → 2015-01-14 (+62d) |  |  |
| DUKHCONP1AZ7ACTC8000 | Pre-Commissioning & Testing of AC Works | 2014-10-16 → 2014-12-16 (+61d) | 2014-11-13 → 2015-01-14 (+62d) |  | -24d → -76d |
| DUKHCONP1AZ7ELTC8010 | Pre-Commissioning & Testing of Electrical Works | 2014-10-16 → 2014-12-16 (+61d) | 2014-11-13 → 2015-01-14 (+62d) |  | -24d → -76d |
| DUKHCONP1AZ7PLTC8005 | Pre-Commissioning & Testing of Plumbing Works | 2014-10-16 → 2014-12-16 (+61d) | 2014-11-13 → 2015-01-14 (+62d) |  | -24d → -76d |
| 45 | **ZONE - 8 (4 Twin Villas)** | 2013-09-23 → 2013-09-11 (-12d) | 2014-12-13 → 2015-02-14 (+63d) |  |  |
| 10 | **STRUCTURAL WORKS** | 2013-09-23 → 2013-09-11 (-12d) | 2014-07-16 → 2014-09-18 (+64d) |  |  |
| 10 | **SUB STRUCTURE** | 2013-09-23 → 2013-09-11 (-12d) | 2014-03-08 → 2014-05-01 (+54d) |  |  |
| 10 | **UPTO GRADE SLAB** | 2013-09-23 → 2013-09-11 (-12d) | 2014-03-08 → 2014-05-01 (+54d) |  |  |
| DUKHCONP1AZ8STUG1000 | Footing Excavation | 2013-09-23 → 2013-09-11 A (-12d) | 2013-10-23 → 2013-10-09 A (-14d) | 0% → 100% | -11d → none |
| DUKHCONP1AZ8STUG1005 | Footing Antitermite | 2013-10-05 → 2013-09-23 A (-12d) | 2013-11-02 → 2013-10-21 A (-12d) | 0% → 100% | -11d → none |

| ID | Task | Start | Finish | Complete | Total float | Other |
| --- | --- | --- | --- | --- | --- | --- |
| DUKHCONP1AZ8STUG1010 | Footing Blinding | 2013-10-08 → 2013-09-26 A (-12d) | 2013-11-05 → 2013-10-24 A (-12d) | 0% → 100% | -11d → none | resources BLINDING MASON SK [454 h]; LABOR- SUBCONTRACTOR [340.5 h]; BLINDING QTY [567 Sqm] → CONCRETE MASON SK [454 h]; LABOR- SUBCONTRACTOR [340.5 h]; BLINDING QTY [567 Sqm] |
| DUKHCONP1AZ8STUG1015 | Footing Waterproofing & Screed | 2013-10-14 → 2013-10-02 A (-12d) | 2013-11-13 → 2013-11-02 (-11d) | 0% → 96% | -11d → -4d |  |
| DUKHCONP1AZ8STUG1020 | Construction of foundations | 2013-10-31 → 2013-10-20 A (-11d) | 2013-11-23 → 2013-11-11 (-12d) | 0% → 55% | -11d → -4d |  |
| DUKHCONP1AZ8STUG1025 | Construction of neck of columns | 2013-11-25 → 2013-11-26 (+1d) | 2013-12-24 → 2013-12-25 (+1d) |  | -24d → -25d |  |
| DUKHCONP1AZ8STUG1030 | Waterproofing Footing & Neck Column | 2013-12-04 → 2013-12-05 (+1d) | 2014-01-02 → 2014-01-04 (+2d) |  | -24d → -25d |  |
| DUKHCONP1AZ8STUG1035 | Backfilling Upto Grade Beam Bottom | 2013-12-19 → 2013-12-26 (+7d) | 2014-01-16 → 2014-01-23 (+7d) |  | -24d → -30d |  |
| DUKHCONP1AZ8STUG1040 | Construction of Grade Beams | 2014-01-05 → 2014-01-12 (+7d) | 2014-02-02 → 2014-02-09 (+7d) |  | -24d → -30d | resources BLINDING MASON SK [244 h]; SCREED MASON SK [224 h]; STEEL FIXERS SK [1497 h]; CARPENTERS SK [2152 h]; CONCRETE MASON SK [256 h]; LABOR- SUBCONTRACTOR [3195.75 h]; BLINDING QTY [304 Sqm]; SCREED QTY [280 Sqm]; REINFORCEMENT BARS QTY [18709 kg]; FORMWORK QTY [1076 Sqm]; CONCRETE QTY [128 Cum] → CONCRETE MASON SK [244 h]; SCREED MASON SK [224 h]; STEEL FIXERS SK [1497 h]; CARPENTERS SK [2152 h]; CONCRETE MASON SK [256 h]; LABOR- SUBCONTRACTOR [3195.75 h]; BLINDING QTY [304 Sqm]; SCREED QTY [280 Sqm]; REINFORCEMENT BARS QTY [18709 kg]; FORMWORK QTY [1076 Sqm]; CONCRETE QTY [128 Cum] |
| DUKHCONP1AZ8STUG1045 | Construction of slab on grade | 2014-02-06 → 2014-04-03 (+56d) | 2014-03-08 → 2014-05-01 (+54d) |  | -24d → -71d | resources BLINDING MASON SK [923 h]; SCREED MASON SK [850 h]; STEEL FIXERS SK [536 h]; CONCRETE MASON SK [400 h]; LABOR- SUBCONTRACTOR [1713 h]; BLINDING QTY [1153 Sqm]; SCREED QTY [1062 Sqm]; CONCRETE QTY [200 Cum]; WELDED WIRE MESH [2008 Sqm] → CONCRETE MASON SK [923 h]; SCREED MASON SK [850 h]; STEEL FIXERS SK [536 h]; CONCRETE MASON SK [400 h]; LABOR- SUBCONTRACTOR [1713 h]; BLINDING QTY [1153 Sqm]; SCREED QTY [1062 Sqm]; CONCRETE QTY [200 Cum]; WELDED WIRE MESH [2008 Sqm] |
| 15 | **SUPERSTRUCTURE** | 2014-02-24 → 2014-04-20 (+55d) | 2014-07-16 → 2014-09-18 (+64d) |  |  |  |
| 10 | **GROUND FLOOR** | 2014-02-24 → 2014-04-20 (+55d) | 2014-04-20 → 2014-06-14 (+55d) |  |  |  |
| DUKHCONP1AZ8STGF2000 | Column-Rebar & Formwork | 2014-02-24 → 2014-04-20 (+55d) | 2014-03-24 → 2014-05-18 (+55d) |  | -24d → -71d |  |
| DUKHCONP1AZ8STGF2005 | Column-Concrete | 2014-03-04 → 2014-04-28 (+55d) | 2014-03-31 → 2014-05-25 (+55d) |  | -22d → -69d |  |
| DUKHCONP1AZ8STGF2010 | Beam, Stairs ,Slab-Rebar & Formwork | 2014-03-19 → 2014-05-13 (+55d) | 2014-04-16 → 2014-06-10 (+55d) |  | -22d → -69d |  |
| DUKHCONP1AZ8STGF2015 | Beam, Stairs ,Slab-Concrete | 2014-04-05 → 2014-05-29 (+54d) | 2014-04-20 → 2014-06-14 (+55d) |  | -22d → -69d |  |
| 15 | **FIRST FLOORS** | 2014-04-07 → 2014-06-05 (+59d) | 2014-06-02 → 2014-07-31 (+59d) |  |  |  |
| DUKHCONP1AZ8STFF2020 | Column-Rebar & Formwork | 2014-04-07 → 2014-06-05 (+59d) | 2014-05-05 → 2014-07-03 (+59d) |  | -22d → -73d |  |
| DUKHCONP1AZ8STFF2025 | Column-Concrete | 2014-04-16 → 2014-06-15 (+60d) | 2014-05-13 → 2014-07-12 (+60d) |  | -20d → -71d |  |
| DUKHCONP1AZ8STFF2030 | Beam, Stairs ,Slab-Rebar & Formwork | 2014-05-01 → 2014-06-30 (+60d) | 2014-05-29 → 2014-07-28 (+60d) |  | -20d → -71d |  |
| DUKHCONP1AZ8STFF2035 | Beam, Stairs ,Slab-Concrete | 2014-05-18 → 2014-07-16 (+59d) | 2014-06-02 → 2014-07-31 (+59d) |  | -20d → -71d |  |
| 20 | **ROOF** | 2014-05-20 → 2014-07-19 (+60d) | 2014-07-16 → 2014-09-18 (+64d) |  |  |  |
| DUKHCONP1AZ8STRF2040 | Column-Rebar & Formwork | 2014-05-20 → 2014-07-19 (+60d) | 2014-06-09 → 2014-08-11 (+63d) |  | -16d → -67d |  |
| DUKHCONP1AZ8STRF2045 | Column-Concrete | 2014-05-24 → 2014-07-22 (+59d) | 2014-06-11 → 2014-08-13 (+63d) |  | -16d → -67d |  |
| DUKHCONP1AZ8STRF2050 | Slab-Rebar & Formwork - Head Room | 2014-05-26 → 2014-07-24 (+59d) | 2014-06-17 → 2014-08-19 (+63d) |  | -16d → -67d |  |
| DUKHCONP1AZ8STRF2055 | Slab-Concrete-Head room | 2014-06-05 → 2014-08-07 (+63d) | 2014-06-19 → 2014-08-21 (+63d) |  | -16d → -67d |  |
| DUKHCONP1AZ8STRF2060 | Construction of Parapets | 2014-06-08 → 2014-08-10 (+63d) | 2014-07-06 → 2014-09-07 (+63d) |  | 32d → -19d |  |
| DUKHCONP1AZ8STRF2065 | Construction of up stands/Plinth | 2014-06-18 → 2014-08-21 (+64d) | 2014-07-16 → 2014-09-18 (+64d) |  | 28d → -24d |  |
| 15 | **FINISHING WORKS** | 2014-05-05 → 2014-07-13 (+69d) | 2014-11-13 → 2015-01-14 (+62d) |  |  |  |
| 10 | **INTERNAL FINISHES** | 2014-05-05 → 2014-07-13 (+69d) | 2014-11-13 → 2015-01-14 (+62d) |  |  |  |
| 10 | **GROUND FLOOR** | 2014-05-05 → 2014-07-13 (+69d) | 2014-10-20 → 2014-12-29 (+70d) |  |  |  |
| DUKHCONP1AZ8ARGF3000 | Block work | 2014-05-05 → 2014-07-13 (+69d) | 2014-06-02 → 2014-08-13 (+72d) |  | -6d → -65d |  |
| DUKHCONP1AZ8ARGF3005 | Plastering work | 2014-05-27 → 2014-08-07 (+72d) | 2014-06-24 → 2014-09-04 (+72d) |  | -6d → -65d |  |
| DUKHCONP1AZ8ARGF3010 | Flooring screed | 2014-06-04 → 2014-08-16 (+73d) | 2014-06-28 → 2014-09-08 (+72d) |  | 2d → -57d |  |
| DUKHCONP1AZ8ARGF3030 | Paint First coat | 2014-06-16 → 2014-08-24 (+69d) | 2014-07-14 → 2014-09-21 (+69d) |  | 5d → -51d |  |
| DUKHCONP1AZ8ARGF3015 | Wet area waterproofing & Protection Screed | 2014-06-14 → 2014-08-25 (+72d) | 2014-06-30 → 2014-09-10 (+72d) |  | -6d → -65d |  |
| DUKHCONP1AZ8ARGF3020 | Ceramic Wall Tiling | 2014-06-19 → 2014-08-31 (+73d) | 2014-07-17 → 2014-09-28 (+73d) |  | -6d → -65d |  |
| DUKHCONP1AZ8ARGF3025 | Porcelain Tile flooring | 2014-06-25 → 2014-09-06 (+73d) | 2014-07-23 → 2014-10-04 (+73d) |  | -6d → -65d |  |
| DUKHCONP1AZ8ARGF3045 | Fixing of Suspension systems | 2014-07-13 → 2014-09-23 (+72d) | 2014-08-07 → 2014-10-18 (+72d) |  | -6d → -65d |  |
| DUKHCONP1AZ8ARGF3035 | Slate Tile Flooring & Skirting | 2014-07-15 → 2014-09-25 (+72d) | 2014-07-31 → 2014-10-14 (+75d) |  | -1d → -60d |  |
| DUKHCONP1AZ8ARGF3055 | Aluminum tile false ceiling | 2014-07-21 → 2014-10-01 (+72d) | 2014-08-21 → 2014-11-01 (+72d) |  | -3d → -62d |  |
| DUKHCONP1AZ8ARGF3040 | Cobble Tile flooring | 2014-07-22 → 2014-10-02 (+72d) | 2014-08-11 → 2014-10-21 (+71d) |  | -3d → -62d |  |
| DUKHCONP1AZ8ARGF3060 | Gypsum board false ceiling | 2014-07-24 → 2014-10-05 (+73d) | 2014-08-25 → 2014-11-04 (+71d) |  | -6d → -65d |  |
| DUKHCONP1AZ8ARGF3050 | Granite - Stair case flooring & Skirting | 2014-07-30 → 2014-10-13 (+75d) | 2014-08-25 → 2014-11-04 (+71d) |  | -3d → -62d |  |
| DUKHCONP1AZ8ARGF3065 | Wooden door & PVC Door | 2014-08-17 → 2014-10-27 (+71d) | 2014-09-02 → 2014-11-12 (+71d) |  | -3d → -62d |  |
| DUKHCONP1AZ8ARGF3070 | Aluminum doors | 2014-08-23 → 2014-11-02 (+71d) | 2014-09-08 → 2014-11-18 (+71d) |  | -3d → -62d |  |
| DUKHCONP1AZ8ARGF3075 | Carpentry & Joinery Works | 2014-08-28 → 2014-11-08 (+72d) | 2014-09-20 → 2014-11-30 (+71d) |  | -3d → -62d |  |
| DUKHCONP1AZ8ARGF3080 | Aluminum windows | 2014-08-30 → 2014-11-09 (+71d) | 2014-09-21 → 2014-12-01 (+71d) |  | 7d → -52d |  |
| DUKHCONP1AZ8ARGF3085 | S.S.Balustrade | 2014-09-06 → 2014-11-16 (+71d) | 2014-09-28 → 2014-12-08 (+71d) |  | 2d → -57d |  |
| DUKHCONP1AZ8ARGF3090 | Installation of Granite Counter Top | 2014-09-10 → 2014-11-20 (+71d) | 2014-09-27 → 2014-12-07 (+71d) |  | -3d → -62d |  |
| DUKHCONP1AZ8ARGF3095 | Final Painting | 2014-09-20 → 2014-11-30 (+71d) | 2014-10-20 → 2014-12-29 (+70d) |  | -3d → -62d |  |
| 15 | **FIRST FLOORS** | 2014-06-16 → 2014-08-19 (+64d) | 2014-11-13 → 2015-01-14 (+62d) |  |  |  |
| DUKHCONP1AZ8ARFF3300 | Block work | 2014-06-16 → 2014-08-19 (+64d) | 2014-07-14 → 2014-09-16 (+64d) |  | -24d → -76d |  |
| DUKHCONP1AZ8ARFF3305 | Plastering work | 2014-07-10 → 2014-09-13 (+65d) | 2014-08-11 → 2014-10-13 (+63d) |  | -24d → -76d |  |
| DUKHCONP1AZ8ARFF3310 | Flooring screed | 2014-07-19 → 2014-09-21 (+64d) | 2014-08-14 → 2014-10-16 (+63d) |  | -12d → -64d |  |
| DUKHCONP1AZ8ARFF3330 | Paint First coat | 2014-07-27 → 2014-09-29 (+64d) | 2014-08-27 → 2014-10-29 (+63d) |  | -10d → -62d |  |
| DUKHCONP1AZ8ARFF3315 | Wet area waterproofing | 2014-07-30 → 2014-10-02 (+64d) | 2014-08-19 → 2014-10-21 (+63d) |  | -24d → -76d |  |
| DUKHCONP1AZ8ARFF3320 | Ceramic Wall Tiling | 2014-08-10 → 2014-10-12 (+63d) | 2014-09-07 → 2014-11-09 (+63d) |  | -24d → -76d |  |
| DUKHCONP1AZ8ARFF3325 | Porcelain Tile flooring | 2014-08-17 → 2014-10-19 (+63d) | 2014-09-14 → 2014-11-16 (+63d) |  | -24d → -76d |  |
| DUKHCONP1AZ8ARFF3345 | Fixing of Suspension systems | 2014-08-30 → 2014-11-01 (+63d) | 2014-09-21 → 2014-11-23 (+63d) |  | -24d → -76d |  |
| DUKHCONP1AZ8ARFF3335 | Slate Tile Flooring & Skirting | 2014-09-03 → 2014-11-05 (+63d) | 2014-09-20 → 2014-11-22 (+63d) |  | -16d → -68d |  |
| DUKHCONP1AZ8ARFF3360 | Gypsum board false ceiling | 2014-09-06 → 2014-11-08 (+63d) | 2014-10-04 → 2014-12-06 (+63d) |  | -24d → -76d |  |
| DUKHCONP1AZ8ARFF3350 | Granite - Stair case flooring & Skirting | 2014-09-07 → 2014-11-09 (+63d) | 2014-09-29 → 2014-12-01 (+63d) |  | -22d → -74d |  |
| DUKHCONP1AZ8ARFF3365 | Wooden door | 2014-09-21 → 2014-11-23 (+63d) | 2014-10-07 → 2014-12-09 (+63d) |  | -24d → -76d |  |
| DUKHCONP1AZ8ARFF3370 | Aluminum Door | 2014-09-21 → 2014-11-23 (+63d) | 2014-10-15 → 2014-12-15 (+61d) |  | -24d → -76d |  |
| DUKHCONP1AZ8ARFF3375 | Carpentry & Joinery Works | 2014-09-27 → 2014-11-29 (+63d) | 2014-10-27 → 2014-12-28 (+62d) |  | -24d → -76d |  |
| DUKHCONP1AZ8ARFF3380 | Aluminum windows | 2014-09-28 → 2014-11-30 (+63d) | 2014-10-22 → 2014-12-23 (+62d) |  | -20d → -72d |  |
| DUKHCONP1AZ8ARFF3385 | Handrail & Balustrade | 2014-10-08 → 2014-12-10 (+63d) | 2014-11-02 → 2015-01-03 (+62d) |  | -24d → -76d |  |
| DUKHCONP1AZ8ARFF3390 | Installation of Granite Counter Top | 2014-10-08 → 2014-12-10 (+63d) | 2014-11-02 → 2015-01-03 (+62d) |  | -23d → -75d |  |
| DUKHCONP1AZ8ARFF3395 | Final Painting | 2014-10-16 → 2014-12-16 (+61d) | 2014-11-13 → 2015-01-14 (+62d) |  | -24d → -76d |  |
| 20 | **ROOF** | 2014-06-30 → 2014-09-01 (+63d) | 2014-09-06 → 2014-11-06 (+61d) |  |  |  |
| DUKHCONP1AZ8ARRF3600 | Block work | 2014-06-30 → 2014-09-01 (+63d) | 2014-07-22 → 2014-09-23 (+63d) |  | 28d → -23d |  |

| ID | Task | Start | Finish | Total float |
| --- | --- | --- | --- | --- |
| DUKHCONP1AZ8ARRF3605 | Plastering work | 2014-07-08 → 2014-09-09 (+63d) | 2014-07-30 → 2014-10-01 (+63d) | 28d → -23d |
| DUKHCONP1AZ8ARRF3610 | Flooring screed | 2014-07-22 → 2014-09-23 (+63d) | 2014-08-11 → 2014-10-12 (+62d) | 33d → -18d |
| DUKHCONP1AZ8ARRF3695 | Painting -Storage area | 2014-07-30 → 2014-10-01 (+63d) | 2014-08-25 → 2014-10-26 (+62d) | 33d → -18d |
| DUKHCONP1AZ8ARRF3620 | Epoxy Painting -Storage area | 2014-08-20 → 2014-10-21 (+62d) | 2014-09-06 → 2014-11-06 (+61d) | 33d → -18d |
| 15 | **EXTERNAL FINISHES** | 2014-07-22 → 2014-09-24 (+64d) | 2014-10-14 → 2014-12-14 (+61d) |  |
| 10 | **ROOF** | 2014-08-09 → 2014-10-08 (+60d) | 2014-10-14 → 2014-12-14 (+61d) |  |
| DUKHCONP1AZ8ARRF3630 | Leveling Screed for Waterproofing | 2014-08-09 → 2014-10-08 (+60d) | 2014-09-06 → 2014-11-08 (+63d) | -3d → -55d |
| DUKHCONP1AZ8ARRF3635 | Laying of Waterproofing Membrane | 2014-08-12 → 2014-10-14 (+63d) | 2014-09-09 → 2014-11-11 (+63d) | -3d → -55d |
| DUKHCONP1AZ8ARRF3640 | Installation of Insulation & Protection | 2014-08-17 → 2014-10-19 (+63d) | 2014-09-14 → 2014-11-16 (+63d) | -3d → -55d |
| DUKHCONP1AZ8ARRF3645 | Lime Stone Chips & Paving slab Installation | 2014-08-21 → 2014-10-23 (+63d) | 2014-09-18 → 2014-11-20 (+63d) | -3d → -55d |
| DUKHCONP1AZ8ARRF3650 | Install. of Gal. Frame & Aluminum Slat Screen | 2014-08-30 → 2014-11-01 (+63d) | 2014-09-27 → 2014-11-29 (+63d) | -3d → -55d |
| DUKHCONP1AZ8ARRF3655 | Installation of Pumps Protection cabinets | 2014-09-14 → 2014-11-16 (+63d) | 2014-10-06 → 2014-12-08 (+63d) | -3d → -55d |
| DUKHCONP1AZ8ARRF3660 | Installation of Access Ladder | 2014-09-25 → 2014-11-27 (+63d) | 2014-10-14 → 2014-12-14 (+61d) | 2d → -50d |
| 15 | **ELEVATION** | 2014-07-22 → 2014-09-24 (+64d) | 2014-09-15 → 2014-11-17 (+63d) |  |
| DUKHCONP1AZ8AREL3665 | External Plastering | 2014-07-22 → 2014-09-24 (+64d) | 2014-08-23 → 2014-10-25 (+63d) | 23d → -29d |
| DUKHCONP1AZ8AREL3670 | External stone cladding works | 2014-08-12 → 2014-10-14 (+63d) | 2014-09-03 → 2014-11-05 (+63d) | 25d → -27d |
| DUKHCONP1AZ8AREL3680 | External Painting | 2014-08-24 → 2014-10-26 (+63d) | 2014-09-15 → 2014-11-17 (+63d) | 25d → -27d |
| 20 | **MEP WORKS** | 2014-01-28 → 2014-02-04 (+7d) | 2014-11-12 → 2015-01-13 (+62d) |  |
| 10 | **ELECTRICAL WORKS** | 2014-05-11 → 2014-07-19 (+69d) | 2014-11-12 → 2015-01-13 (+62d) |  |
| 10 | **GROUND FLOOR** | 2014-05-11 → 2014-07-19 (+69d) | 2014-09-20 → 2014-11-30 (+71d) |  |
| DUKHCONP1AZ8ELGF4000 | Fixing of wall conduits & switch socket boxes | 2014-05-11 → 2014-07-19 (+69d) | 2014-06-08 → 2014-08-19 (+72d) | 3d → -56d |
| DUKHCONP1AZ8ELGF4005 | Cable tray & trunking installation | 2014-05-22 → 2014-07-30 (+69d) | 2014-06-14 → 2014-08-25 (+72d) | 21d → -38d |
| DUKHCONP1AZ8ELGF4010 | Installation of wiring & Main Cabling | 2014-05-31 → 2014-08-11 (+72d) | 2014-06-28 → 2014-09-08 (+72d) | 21d → -38d |
| DUKHCONP1AZ8ELGF4015 | Install. of CAMS & Fire Fighting Accessories | 2014-08-05 → 2014-10-15 (+71d) | 2014-09-02 → 2014-11-12 (+71d) | 6d → -53d |
| DUKHCONP1AZ8ELGF4020 | Installation of DBS,MCCB Accessories. | 2014-08-11 → 2014-10-21 (+71d) | 2014-09-02 → 2014-11-12 (+71d) | -6d → -65d |
| DUKHCONP1AZ8ELGF4025 | Installation of Lighting fixtures & Accessories | 2014-08-23 → 2014-11-02 (+71d) | 2014-09-20 → 2014-11-30 (+71d) | 1d → -58d |
| DUKHCONP1AZ8ELGF4030 | Installation of Telephone System | 2014-08-23 → 2014-11-02 (+71d) | 2014-09-14 → 2014-11-24 (+71d) | -6d → -65d |
| 15 | **FIRST FLOORS** | 2014-06-22 → 2014-08-25 (+64d) | 2014-10-26 → 2014-12-27 (+62d) |  |
| DUKHCONP1AZ8ELFF4035 | Fixing of wall conduits & switch socket boxes | 2014-06-22 → 2014-08-25 (+64d) | 2014-07-20 → 2014-09-22 (+64d) | -13d → -65d |
| DUKHCONP1AZ8ELFF4040 | Cable tray & trunking installation | 2014-07-03 → 2014-09-06 (+65d) | 2014-07-26 → 2014-09-28 (+64d) | 5d → -47d |
| DUKHCONP1AZ8ELFF4045 | Installation of wiring & Main Cabling | 2014-07-14 → 2014-09-16 (+64d) | 2014-08-14 → 2014-10-16 (+63d) | 3d → -49d |
| DUKHCONP1AZ8ELFF4050 | Installation of Telephone System | 2014-09-15 → 2014-11-16 (+62d) | 2014-10-15 → 2014-12-14 (+60d) | -16d → -67d |
| DUKHCONP1AZ8ELFF4055 | Install. of CAMS & Fire Fighting Accessories | 2014-09-14 → 2014-11-16 (+63d) | 2014-10-14 → 2014-12-14 (+61d) | -23d → -75d |
| DUKHCONP1AZ8ELFF4060 | Installation of DBS,MCCB Accessories. | 2014-09-17 → 2014-11-19 (+63d) | 2014-10-12 → 2014-12-11 (+60d) | -21d → -73d |
| DUKHCONP1AZ8ELFF4065 | Installation of Lighting fixtures & Accessories | 2014-09-25 → 2014-11-27 (+63d) | 2014-10-26 → 2014-12-27 (+62d) | -23d → -75d |
| 20 | **ROOF** | 2014-10-12 → 2014-12-11 (+60d) | 2014-11-12 → 2015-01-13 (+62d) |  |
| DUKHCONP1AZ8ELRF4070 | Installation of Isolator | 2014-10-12 → 2014-12-11 (+60d) | 2014-11-01 → 2015-01-01 (+61d) | -23d → -75d |
| DUKHCONP1AZ8ELRF4075 | Installation of TV Dish Antenna | 2014-10-18 → 2014-12-17 (+60d) | 2014-11-12 → 2015-01-13 (+62d) | -23d → -75d |
| 15 | **PLUMBING, DRAINAGE & FIRE FIGHTING WORKS** | 2014-01-28 → 2014-02-04 (+7d) | 2014-11-12 → 2015-01-13 (+62d) |  |
| 10 | **GROUND FLOOR** | 2014-01-28 → 2014-02-04 (+7d) | 2014-09-20 → 2014-11-30 (+71d) |  |
| DUKHCONP1AZ8PLUG4300 | Drainage / Storm Pipes in Grade Slab | 2014-01-28 → 2014-02-04 (+7d) | 2014-02-16 → 2014-02-23 (+7d) | -24d → -30d |
| DUKHCONP1AZ8PLGF4305 | Installation of Plumbing pipes & testing | 2014-05-21 → 2014-07-29 (+69d) | 2014-06-10 → 2014-08-21 (+72d) | -6d → -65d |
| DUKHCONP1AZ8PLGF4310 | Installation of Drainage pipes &testing | 2014-05-21 → 2014-07-29 (+69d) | 2014-06-10 → 2014-08-21 (+72d) | -3d → -62d |
| DUKHCONP1AZ8PLGF4315 | Sanitary Fittings & Accessories | 2014-08-23 → 2014-11-02 (+71d) | 2014-09-14 → 2014-11-24 (+71d) | 21d → -38d |
| DUKHCONP1AZ8PLGF4320 | Installation of Water Heater | 2014-09-03 → 2014-11-13 (+71d) | 2014-09-20 → 2014-11-30 (+71d) | 21d → -38d |
| 15 | **FIRST FLOORS** | 2014-07-03 → 2014-09-06 (+65d) | 2014-10-21 → 2014-12-22 (+62d) |  |
| DUKHCONP1AZ8PLFF4325 | Installation of Plumbing pipes & testing | 2014-07-03 → 2014-09-06 (+65d) | 2014-07-23 → 2014-09-25 (+64d) | -24d → -76d |
| DUKHCONP1AZ8PLFF4330 | Installation of Drainage pipes & testing | 2014-07-03 → 2014-09-06 (+65d) | 2014-07-23 → 2014-09-25 (+64d) | -2d → -54d |
| DUKHCONP1AZ8PLFF4335 | Sanitary Fittings & Accessories | 2014-09-21 → 2014-11-23 (+63d) | 2014-10-15 → 2014-12-15 (+61d) | -19d → -71d |
| DUKHCONP1AZ8PLFF4340 | Installation of Water Heater | 2014-10-02 → 2014-12-04 (+63d) | 2014-10-21 → 2014-12-22 (+62d) | -19d → -71d |
| 20 | **ROOF** | 2014-07-22 → 2014-09-23 (+63d) | 2014-11-12 → 2015-01-13 (+62d) |  |
| DUKHCONP1AZ8PLRF4345 | Installation of Plumbing pipes & fittings | 2014-07-22 → 2014-09-23 (+63d) | 2014-08-11 → 2014-10-12 (+62d) | 32d → -19d |
| DUKHCONP1AZ8PLRF4350 | Installation of Rain water Pipes | 2014-09-08 → 2014-11-10 (+63d) | 2014-09-24 → 2014-11-26 (+63d) | 2d → -50d |
| DUKHCONP1AZ8PLRF4355 | Roof Water Tank Installation & Connections | 2014-10-15 → 2014-12-15 (+61d) | 2014-11-12 → 2015-01-13 (+62d) | -23d → -75d |
| 20 | **AC WORKS** | 2014-06-10 → 2014-08-21 (+72d) | 2014-11-10 → 2015-01-11 (+62d) |  |
| 10 | **GROUND FLOOR** | 2014-06-10 → 2014-08-21 (+72d) | 2014-09-17 → 2014-11-27 (+71d) |  |
| DUKHCONP1AZ8ACGF4600 | Installation AC Pipes | 2014-06-10 → 2014-08-21 (+72d) | 2014-07-02 → 2014-09-13 (+73d) | 25d → -34d |
| DUKHCONP1AZ8ACGF4605 | Fixing of Ventilation Equipments | 2014-08-05 → 2014-10-15 (+71d) | 2014-09-02 → 2014-11-12 (+71d) | 8d → -51d |
| DUKHCONP1AZ8ACGF4610 | Fixing of Split AC | 2014-08-26 → 2014-11-05 (+71d) | 2014-09-17 → 2014-11-27 (+71d) | 8d → -51d |
| 15 | **FIRST FLOORS** | 2014-07-24 → 2014-09-27 (+65d) | 2014-10-29 → 2014-12-30 (+62d) |  |
| DUKHCONP1AZ8ACFF4615 | Installation AC Pipes | 2014-07-24 → 2014-09-27 (+65d) | 2014-08-19 → 2014-10-21 (+63d) | 3d → -49d |
| DUKHCONP1AZ8ACFF4620 | Fixing of Ventilation Equipments | 2014-09-14 → 2014-11-16 (+63d) | 2014-10-14 → 2014-12-14 (+61d) | -22d → -74d |
| DUKHCONP1AZ8ACFF4625 | Fixing of Split AC | 2014-10-05 → 2014-12-07 (+63d) | 2014-10-29 → 2014-12-30 (+62d) | -22d → -74d |
| 20 | **ROOF** | 2014-08-30 → 2014-11-01 (+63d) | 2014-11-10 → 2015-01-11 (+62d) |  |
| DUKHCONP1AZ8ACRF4630 | Installation of Refrigerant Pipes | 2014-08-30 → 2014-11-01 (+63d) | 2014-09-27 → 2014-11-29 (+63d) | 10d → -42d |
| DUKHCONP1AZ8ACRF4635 | Installation of Condensing Unit | 2014-10-13 → 2014-12-13 (+61d) | 2014-11-10 → 2015-01-11 (+62d) | -21d → -73d |
| 25 | **EXTERNAL WORKS** | 2014-06-17 → 2014-08-19 (+63d) | 2014-11-03 → 2015-01-04 (+62d) |  |
| 10 | **MISCELLANEOUS** | 2014-06-17 → 2014-08-19 (+63d) | 2014-10-30 → 2014-12-30 (+61d) |  |
| DUKHCONP1AZ8MSEX5000 | Construction of Manholes | 2014-06-17 → 2014-08-19 (+63d) | 2014-07-15 → 2014-09-16 (+63d) | -16d → -67d |
| DUKHCONP1AZ8MSEX5005 | Construction of Soak pit, Chambers | 2014-07-01 → 2014-09-02 (+63d) | 2014-07-29 → 2014-09-30 (+63d) | -16d → -67d |

| ID | Task | Start | Finish | Complete | Total float | Other |
| --- | --- | --- | --- | --- | --- | --- |
| DUKHCONP1AZ8MSEX5015 | Construction of grease Trap | 2014-07-21 → 2014-09-22 (+63d) | 2014-08-16 → 2014-10-16 (+61d) |  | -16d → -67d |  |
| DUKHCONP1AZ8MSEX5020 | Construction Entrance Ramp | 2014-08-11 → 2014-10-13 (+63d) | 2014-09-08 → 2014-11-10 (+63d) |  | -8d → -60d |  |
| DUKHCONP1AZ8MSEX5010 | Telephone cable laying | 2014-08-17 → 2014-10-18 (+62d) | 2014-09-14 → 2014-11-15 (+62d) |  | -16d → -67d |  |
| DUKHCONP1AZ8MSEX5025 | SS.Handrails and Balustrades | 2014-08-28 → 2014-10-30 (+63d) | 2014-09-20 → 2014-11-22 (+63d) |  | -5d → -57d |  |
| DUKHCONP1AZ8MSEX5335 | Aluminum Roll-up Shutter with 2m Wall | 2014-09-30 → 2014-12-01 (+62d) | 2014-10-30 → 2014-12-30 (+61d) |  | 31d → -20d |  |
| 15 | **WATER TANK ENCLOSURE** | 2014-07-05 → 2014-09-07 (+64d) | 2014-11-03 → 2015-01-04 (+62d) |  |  |  |
| DUKHCONP1AZ8WEEX5030 | Excavation | 2014-07-05 → 2014-09-07 (+64d) | 2014-07-27 → 2014-09-29 (+64d) |  | 19d → -33d |  |
| DUKHCONP1AZ8WEEX5035 | Construction of Raft | 2014-07-10 → 2014-09-13 (+65d) | 2014-08-11 → 2014-10-13 (+63d) |  | 19d → -33d |  |
| DUKHCONP1AZ8WEEX5040 | Block works & Plastering | 2014-07-20 → 2014-09-22 (+64d) | 2014-08-20 → 2014-10-22 (+63d) |  | 19d → -33d |  |
| DUKHCONP1AZ8WEEX5045 | Flooring & Painting | 2014-07-27 → 2014-09-29 (+64d) | 2014-08-27 → 2014-10-29 (+63d) |  | 19d → -33d |  |
| DUKHCONP1AZ8WEEX5050 | Installation of Steel Gate | 2014-09-09 → 2014-11-11 (+63d) | 2014-10-01 → 2014-12-03 (+63d) |  | -5d → -57d |  |
| DUKHCONP1AZ8WEEX5060 | Structural steel & SS Shed cover installation | 2014-09-25 → 2014-11-27 (+63d) | 2014-10-26 → 2014-12-27 (+62d) |  | -14d → -66d |  |
| DUKHCONP1AZ8WEEX5065 | Install. of Water Tank,Chiller,Pump & Meter | 2014-10-04 → 2014-12-06 (+63d) | 2014-11-03 → 2015-01-04 (+62d) |  | -15d → -67d |  |
| 20 | **HARD LANDSCAPING** | 2014-08-25 → 2014-10-27 (+63d) | 2014-10-05 → 2014-12-07 (+63d) |  |  |  |
| DUKHCONP1AZ8HDEX5090 | kerb works | 2014-08-25 → 2014-10-27 (+63d) | 2014-09-16 → 2014-11-18 (+63d) |  | -8d → -60d |  |
| DUKHCONP1AZ8HDEX5095 | Cobble Stone Works | 2014-09-06 → 2014-11-08 (+63d) | 2014-09-28 → 2014-11-30 (+63d) |  | -8d → -60d |  |
| DUKHCONP1AZ8HDEX5100 | Interlock works | 2014-09-13 → 2014-11-15 (+63d) | 2014-10-05 → 2014-12-07 (+63d) |  | -8d → -60d |  |
| 25 | **SOFT LANDSCAPING** | 2014-09-18 → 2014-11-20 (+63d) | 2014-10-26 → 2014-12-27 (+62d) |  |  |  |
| DUKHCONP1AZ8SLEX5105 | Laying of Grass/ green area | 2014-09-18 → 2014-11-20 (+63d) | 2014-10-19 → 2014-12-20 (+62d) |  | -8d → -60d |  |
| DUKHCONP1AZ8SLEX5110 | Laying of Palm tree | 2014-09-25 → 2014-11-27 (+63d) | 2014-10-26 → 2014-12-27 (+62d) |  | -8d → -60d |  |
| 30 | **TESTING AND COMMISSIONING** | 2014-11-15 → 2015-01-15 (+61d) | 2014-12-13 → 2015-02-14 (+63d) |  |  |  |
| DUKHCONP1AZ8ACTC8000 | Pre-Commissioning & Testing of AC Works | 2014-11-15 → 2015-01-15 (+61d) | 2014-12-13 → 2015-02-14 (+63d) |  | -24d → -76d |  |
| DUKHCONP1AZ8ELTC8010 | Pre-Commissioning & Testing of Electrical Works | 2014-11-15 → 2015-01-15 (+61d) | 2014-12-13 → 2015-02-14 (+63d) |  | -24d → -76d |  |
| DUKHCONP1AZ8PLTC8005 | Pre-Commissioning & Testing of Plumbing Works | 2014-11-15 → 2015-01-15 (+61d) | 2014-12-13 → 2015-02-14 (+63d) |  | -24d → -76d |  |
| 50 | **ZONE - 9 (5 Twin Villas)** | 2013-10-24 → 2013-10-10 (-14d) | 2015-01-12 → 2015-03-15 (+62d) |  |  |  |
| 10 | **STRUCTURAL WORKS** | 2013-10-24 → 2013-10-10 (-14d) | 2014-08-18 → 2014-10-20 (+63d) |  |  |  |
| 10 | **SUB STRUCTURE** | 2013-10-24 → 2013-10-10 (-14d) | 2014-04-06 → 2014-05-31 (+55d) |  |  |  |
| 10 | **UPTO GRADE SLAB** | 2013-10-24 → 2013-10-10 (-14d) | 2014-04-06 → 2014-05-31 (+55d) |  |  |  |
| DUKHCONP1AZ9STUG1000 | Footing Excavation | 2013-10-24 → 2013-10-10 A (-14d) | 2013-11-21 → 2013-11-10 (-11d) | 0% → 68% | -11d → -1d |  |
| DUKHCONP1AZ9STUG1005 | Footing Antitermite | 2013-11-05 → 2013-10-24 A (-12d) | 2013-12-01 → 2013-11-19 (-12d) | 0% → 30% | -11d → -1d |  |
| DUKHCONP1AZ9STUG1010 | Footing Blinding | 2013-11-09 → 2013-10-28 A (-12d) | 2013-12-04 → 2013-11-23 (-11d) | 0% → 17% | -11d → -1d | resources BLINDING MASON SK [568 h]; LABOR- SUBCONTRACTOR [426 h]; BLINDING QTY [709 Sqm] → CONCRETE MASON SK [568 h]; LABOR- SUBCONTRACTOR [426 h]; BLINDING QTY [709 Sqm] |
| DUKHCONP1AZ9STUG1015 | Footing Waterproofing & Screed | 2013-11-14 → 2013-11-03 (-11d) | 2013-12-12 → 2013-12-01 (-11d) |  | -11d → -1d |  |
| DUKHCONP1AZ9STUG1020 | Construction of foundations | 2013-11-30 → 2013-11-18 (-12d) | 2013-12-23 → 2013-12-10 (-13d) |  | -11d → -1d |  |
| DUKHCONP1AZ9STUG1025 | Construction of neck of columns | 2013-12-25 → 2013-12-26 (+1d) | 2014-01-22 → 2014-01-23 (+1d) |  | -24d → -25d |  |
| DUKHCONP1AZ9STUG1030 | Waterproofing Footing & Neck Column | 2014-01-04 → 2014-01-05 (+1d) | 2014-02-01 → 2014-02-02 (+1d) |  | -24d → -25d |  |
| DUKHCONP1AZ9STUG1035 | Backfilling Upto Grade Beam Bottom | 2014-01-18 → 2014-01-25 (+7d) | 2014-02-16 → 2014-02-23 (+7d) |  | -24d → -30d |  |
| DUKHCONP1AZ9STUG1040 | Construction of Grade Beams | 2014-02-03 → 2014-02-10 (+7d) | 2014-03-04 → 2014-03-11 (+7d) |  | -24d → -30d | resources BLINDING MASON SK [304 h]; SCREED MASON SK [280 h]; STEEL FIXERS SK [1871 h]; CARPENTERS SK [2692 h]; CONCRETE MASON SK [320 h]; LABOR- SUBCONTRACTOR [3995.25 h]; BLINDING QTY [380 Sqm]; SCREED QTY [350 Sqm]; REINFORCEMENT BARS QTY [23386 kg]; FORMWORK QTY [1346 Sqm]; CONCRETE QTY [160 Cum] → CONCRETE MASON SK [304 h]; SCREED MASON SK [280 h]; STEEL FIXERS SK [1871 h]; CARPENTERS SK [2692 h]; CONCRETE MASON SK [320 h]; LABOR- SUBCONTRACTOR [3995.25 h]; BLINDING QTY [380 Sqm]; SCREED QTY [350 Sqm]; REINFORCEMENT BARS QTY [23386 kg]; FORMWORK QTY [1346 Sqm]; CONCRETE QTY [160 Cum] |
| DUKHCONP1AZ9STUG1045 | Construction of slab on grade | 2014-03-09 → 2014-05-03 (+55d) | 2014-04-06 → 2014-05-31 (+55d) |  | -24d → -71d | resources BLINDING MASON SK [1154 h]; SCREED MASON SK [1063 h]; STEEL FIXERS SK [670 h]; CONCRETE MASON SK [500 h]; LABOR- SUBCONTRACTOR [2142 h]; BLINDING QTY [1442 Sqm]; SCREED QTY [1328 Sqm]; CONCRETE QTY [250 Cum]; WELDED WIRE MESH [2510 Sqm] → CONCRETE MASON SK [1154 h]; SCREED MASON SK [1063 h]; STEEL FIXERS SK [670 h]; CONCRETE MASON SK [500 h]; LABOR- SUBCONTRACTOR [2142 h]; BLINDING QTY [1442 Sqm]; SCREED QTY [1328 Sqm]; CONCRETE QTY [250 Cum]; WELDED WIRE MESH [2510 Sqm] |
| 15 | **SUPERSTRUCTURE** | 2014-03-25 → 2014-05-19 (+55d) | 2014-08-18 → 2014-10-20 (+63d) |  |  |  |
| 10 | **GROUND FLOOR** | 2014-03-25 → 2014-05-19 (+55d) | 2014-05-20 → 2014-07-14 (+55d) |  |  |  |
| DUKHCONP1AZ9STGF2000 | Column-Rebar & Formwork | 2014-03-25 → 2014-05-19 (+55d) | 2014-04-22 → 2014-06-16 (+55d) |  | -24d → -71d |  |
| DUKHCONP1AZ9STGF2005 | Column-Concrete | 2014-04-03 → 2014-05-28 (+55d) | 2014-04-30 → 2014-06-24 (+55d) |  | -24d → -71d |  |
| DUKHCONP1AZ9STGF2010 | Beam, Stairs ,Slab-Rebar & Formwork | 2014-04-19 → 2014-06-12 (+54d) | 2014-05-17 → 2014-07-10 (+54d) |  | -24d → -71d |  |
| DUKHCONP1AZ9STGF2015 | Beam, Stairs ,Slab-Concrete | 2014-05-05 → 2014-06-29 (+55d) | 2014-05-20 → 2014-07-14 (+55d) |  | -24d → -71d |  |
| 15 | **FIRST FLOORS** | 2014-05-08 → 2014-07-05 (+58d) | 2014-07-06 → 2014-09-04 (+60d) |  |  |  |
| DUKHCONP1AZ9STFF2020 | Column-Rebar & Formwork | 2014-05-08 → 2014-07-05 (+58d) | 2014-06-05 → 2014-08-05 (+61d) |  | -24d → -73d |  |
| DUKHCONP1AZ9STFF2025 | Column-Concrete | 2014-05-20 → 2014-07-16 (+57d) | 2014-06-16 → 2014-08-16 (+61d) |  | -24d → -73d |  |
| DUKHCONP1AZ9STFF2030 | Beam, Stairs ,Slab-Rebar & Formwork | 2014-06-04 → 2014-07-31 (+57d) | 2014-07-02 → 2014-09-01 (+61d) |  | -24d → -73d |  |
| DUKHCONP1AZ9STFF2035 | Beam, Stairs ,Slab-Concrete | 2014-06-21 → 2014-08-20 (+60d) | 2014-07-06 → 2014-09-04 (+60d) |  | -24d → -73d |  |
| 20 | **ROOF** | 2014-06-23 → 2014-08-23 (+61d) | 2014-08-18 → 2014-10-20 (+63d) |  |  |  |
| DUKHCONP1AZ9STRF2040 | Column-Rebar & Formwork | 2014-06-23 → 2014-08-23 (+61d) | 2014-07-13 → 2014-09-11 (+60d) |  | -15d → -64d |  |
| DUKHCONP1AZ9STRF2045 | Column-Concrete | 2014-06-26 → 2014-08-26 (+61d) | 2014-07-15 → 2014-09-14 (+61d) |  | -15d → -64d |  |
| DUKHCONP1AZ9STRF2050 | Slab-Rebar & Formwork - Head Room | 2014-06-29 → 2014-08-28 (+60d) | 2014-07-21 → 2014-09-20 (+61d) |  | -15d → -64d |  |
| DUKHCONP1AZ9STRF2055 | Slab-Concrete-Head room | 2014-07-09 → 2014-09-08 (+61d) | 2014-07-23 → 2014-09-22 (+61d) |  | -15d → -64d |  |
| DUKHCONP1AZ9STRF2060 | Construction of Parapets | 2014-07-12 → 2014-09-10 (+60d) | 2014-08-12 → 2014-10-08 (+57d) |  | 28d → -21d |  |
| DUKHCONP1AZ9STRF2065 | Construction of up stands/Plinth | 2014-07-17 → 2014-09-20 (+65d) | 2014-08-18 → 2014-10-20 (+63d) |  | 28d → -24d |  |
| 15 | **FINISHING WORKS** | 2014-06-03 → 2014-08-14 (+72d) | 2014-12-13 → 2015-02-14 (+63d) |  |  |  |
| 10 | **INTERNAL FINISHES** | 2014-06-03 → 2014-08-14 (+72d) | 2014-12-13 → 2015-02-14 (+63d) |  |  |  |
| 10 | **GROUND FLOOR** | 2014-06-03 → 2014-08-14 (+72d) | 2014-11-18 → 2015-01-27 (+70d) |  |  |  |
| DUKHCONP1AZ9ARGF3000 | Block work | 2014-06-03 → 2014-08-14 (+72d) | 2014-07-01 → 2014-09-11 (+72d) |  | -6d → -65d |  |
| DUKHCONP1AZ9ARGF3005 | Plastering work | 2014-06-25 → 2014-09-06 (+73d) | 2014-07-23 → 2014-10-04 (+73d) |  | -6d → -65d |  |
| DUKHCONP1AZ9ARGF3010 | Flooring screed | 2014-07-03 → 2014-09-14 (+73d) | 2014-07-27 → 2014-10-07 (+72d) |  | 2d → -57d |  |
| DUKHCONP1AZ9ARGF3030 | Paint First coat | 2014-07-15 → 2014-09-22 (+69d) | 2014-08-16 → 2014-10-22 (+67d) |  | 5d → -51d |  |
| DUKHCONP1AZ9ARGF3015 | Wet area waterproofing & Protection Screed | 2014-07-13 → 2014-09-23 (+72d) | 2014-07-29 → 2014-10-12 (+75d) |  | -6d → -65d |  |
| DUKHCONP1AZ9ARGF3020 | Ceramic Wall Tiling | 2014-07-19 → 2014-09-29 (+72d) | 2014-08-19 → 2014-10-29 (+71d) |  | -6d → -65d |  |
| DUKHCONP1AZ9ARGF3025 | Porcelain Tile flooring | 2014-07-24 → 2014-10-05 (+73d) | 2014-08-25 → 2014-11-04 (+71d) |  | -6d → -65d |  |
| DUKHCONP1AZ9ARGF3045 | Fixing of Suspension systems | 2014-08-14 → 2014-10-25 (+72d) | 2014-09-06 → 2014-11-16 (+71d) |  | -6d → -65d |  |
| DUKHCONP1AZ9ARGF3035 | Slate Tile Flooring & Skirting | 2014-08-17 → 2014-10-27 (+71d) | 2014-09-02 → 2014-11-12 (+71d) |  | -1d → -60d |  |
| DUKHCONP1AZ9ARGF3055 | Aluminum tile false ceiling | 2014-08-23 → 2014-11-02 (+71d) | 2014-09-20 → 2014-11-30 (+71d) |  | -3d → -62d |  |
| DUKHCONP1AZ9ARGF3040 | Cobble Tile flooring | 2014-08-24 → 2014-11-03 (+71d) | 2014-09-09 → 2014-11-19 (+71d) |  | -3d → -62d |  |

| ID | Task | Start | Finish | Total float |
| --- | --- | --- | --- | --- |
| DUKHCONP1AZ9ARGF3060 | Gypsum board false ceiling | 2014-08-26 → 2014-11-05 (+71d) | 2014-09-23 → 2014-12-03 (+71d) | -6d → -65d |
| DUKHCONP1AZ9ARGF3050 | Granite - Stair case flooring & Skirting | 2014-09-01 → 2014-11-11 (+71d) | 2014-09-23 → 2014-12-03 (+71d) | -3d → -62d |
| DUKHCONP1AZ9ARGF3065 | Wooden door & PVC Door | 2014-09-15 → 2014-11-25 (+71d) | 2014-10-01 → 2014-12-11 (+71d) | -3d → -62d |
| DUKHCONP1AZ9ARGF3070 | Aluminum doors | 2014-09-21 → 2014-12-01 (+71d) | 2014-10-07 → 2014-12-17 (+71d) | -3d → -62d |
| DUKHCONP1AZ9ARGF3075 | Carpentry & Joinery Works | 2014-09-27 → 2014-12-07 (+71d) | 2014-10-21 → 2014-12-30 (+70d) | -3d → -62d |
| DUKHCONP1AZ9ARGF3080 | Aluminum windows | 2014-09-28 → 2014-12-08 (+71d) | 2014-10-22 → 2014-12-31 (+70d) | 7d → -52d |
| DUKHCONP1AZ9ARGF3085 | S.S.Balustrade | 2014-10-05 → 2014-12-15 (+71d) | 2014-10-29 → 2015-01-07 (+70d) | 2d → -57d |
| DUKHCONP1AZ9ARGF3090 | Installation of Granite Counter Top | 2014-10-12 → 2014-12-21 (+70d) | 2014-10-28 → 2015-01-06 (+70d) | -3d → -62d |
| DUKHCONP1AZ9ARGF3095 | Final Painting | 2014-10-21 → 2014-12-30 (+70d) | 2014-11-18 → 2015-01-27 (+70d) | -3d → -62d |
| 15 | **FIRST FLOORS** | 2014-07-15 → 2014-09-17 (+64d) | 2014-12-13 → 2015-02-14 (+63d) |  |
| DUKHCONP1AZ9ARFF3300 | Block work | 2014-07-15 → 2014-09-17 (+64d) | 2014-08-16 → 2014-10-18 (+63d) | -24d → -76d |
| DUKHCONP1AZ9ARFF3305 | Plastering work | 2014-08-12 → 2014-10-14 (+63d) | 2014-09-09 → 2014-11-11 (+63d) | -24d → -76d |
| DUKHCONP1AZ9ARFF3310 | Flooring screed | 2014-08-20 → 2014-10-22 (+63d) | 2014-09-13 → 2014-11-15 (+63d) | -12d → -64d |
| DUKHCONP1AZ9ARFF3330 | Paint First coat | 2014-08-28 → 2014-10-30 (+63d) | 2014-09-25 → 2014-11-27 (+63d) | -10d → -62d |
| DUKHCONP1AZ9ARFF3315 | Wet area waterproofing | 2014-09-01 → 2014-11-03 (+63d) | 2014-09-17 → 2014-11-19 (+63d) | -24d → -76d |
| DUKHCONP1AZ9ARFF3320 | Ceramic Wall Tiling | 2014-09-08 → 2014-11-10 (+63d) | 2014-10-06 → 2014-12-08 (+63d) | -24d → -76d |
| DUKHCONP1AZ9ARFF3325 | Porcelain Tile flooring | 2014-09-15 → 2014-11-17 (+63d) | 2014-10-15 → 2014-12-15 (+61d) | -24d → -76d |
| DUKHCONP1AZ9ARFF3345 | Fixing of Suspension systems | 2014-09-28 → 2014-11-30 (+63d) | 2014-10-22 → 2014-12-23 (+62d) | -24d → -76d |
| DUKHCONP1AZ9ARFF3335 | Slate Tile Flooring & Skirting | 2014-10-02 → 2014-12-04 (+63d) | 2014-10-21 → 2014-12-22 (+62d) | -16d → -68d |
| DUKHCONP1AZ9ARFF3360 | Gypsum board false ceiling | 2014-10-05 → 2014-12-07 (+63d) | 2014-11-04 → 2015-01-05 (+62d) | -24d → -76d |
| DUKHCONP1AZ9ARFF3350 | Granite - Stair case flooring & Skirting | 2014-10-06 → 2014-12-08 (+63d) | 2014-10-30 → 2014-12-31 (+62d) | -22d → -74d |
| DUKHCONP1AZ9ARFF3365 | Wooden door | 2014-10-22 → 2014-12-23 (+62d) | 2014-11-08 → 2015-01-08 (+61d) | -24d → -76d |
| DUKHCONP1AZ9ARFF3370 | Aluminum Door | 2014-10-22 → 2014-12-23 (+62d) | 2014-11-13 → 2015-01-14 (+62d) | -24d → -76d |
| DUKHCONP1AZ9ARFF3375 | Carpentry & Joinery Works | 2014-10-28 → 2014-12-29 (+62d) | 2014-11-25 → 2015-01-26 (+62d) | -24d → -76d |
| DUKHCONP1AZ9ARFF3380 | Aluminum windows | 2014-10-29 → 2014-12-30 (+62d) | 2014-11-20 → 2015-01-21 (+62d) | -20d → -72d |
| DUKHCONP1AZ9ARFF3385 | Handrail & Balustrade | 2014-11-09 → 2015-01-10 (+62d) | 2014-12-01 → 2015-02-01 (+62d) | -24d → -76d |
| DUKHCONP1AZ9ARFF3390 | Installation of Granite Counter Top | 2014-11-09 → 2015-01-10 (+62d) | 2014-12-01 → 2015-02-01 (+62d) | -23d → -75d |
| DUKHCONP1AZ9ARFF3395 | Final Painting | 2014-11-15 → 2015-01-15 (+61d) | 2014-12-13 → 2015-02-14 (+63d) | -24d → -76d |
| 20 | **ROOF** | 2014-08-06 → 2014-10-02 (+57d) | 2014-10-12 → 2014-12-08 (+57d) |  |
| DUKHCONP1AZ9ARRF3600 | Block work | 2014-08-06 → 2014-10-02 (+57d) | 2014-08-28 → 2014-10-27 (+60d) | 24d → -25d |
| DUKHCONP1AZ9ARRF3605 | Plastering work | 2014-08-14 → 2014-10-13 (+60d) | 2014-09-06 → 2014-11-04 (+59d) | 24d → -25d |
| DUKHCONP1AZ9ARRF3610 | Flooring screed | 2014-08-28 → 2014-10-27 (+60d) | 2014-09-14 → 2014-11-12 (+59d) | 29d → -20d |
| DUKHCONP1AZ9ARRF3695 | Painting -Storage area | 2014-09-06 → 2014-11-04 (+59d) | 2014-09-28 → 2014-11-26 (+59d) | 29d → -20d |
| DUKHCONP1AZ9ARRF3620 | Epoxy Painting -Storage area | 2014-09-23 → 2014-11-22 (+60d) | 2014-10-12 → 2014-12-08 (+57d) | 29d → -20d |
| 15 | **EXTERNAL FINISHES** | 2014-08-24 → 2014-10-26 (+63d) | 2014-11-12 → 2015-01-13 (+62d) |  |
| 10 | **ROOF** | 2014-09-07 → 2014-11-09 (+63d) | 2014-11-12 → 2015-01-13 (+62d) |  |
| DUKHCONP1AZ9ARRF3630 | Leveling Screed for Waterproofing | 2014-09-07 → 2014-11-09 (+63d) | 2014-10-05 → 2014-12-07 (+63d) | -3d → -55d |
| DUKHCONP1AZ9ARRF3635 | Laying of Waterproofing Membrane | 2014-09-10 → 2014-11-12 (+63d) | 2014-10-08 → 2014-12-10 (+63d) | -3d → -55d |
| DUKHCONP1AZ9ARRF3640 | Installation of Insulation & Protection | 2014-09-15 → 2014-11-17 (+63d) | 2014-10-15 → 2014-12-15 (+61d) | -3d → -55d |
| DUKHCONP1AZ9ARRF3645 | Lime Stone Chips & Paving slab Installation | 2014-09-20 → 2014-11-22 (+63d) | 2014-10-20 → 2014-12-21 (+62d) | -3d → -55d |
| DUKHCONP1AZ9ARRF3650 | Install. of Gal. Frame & Aluminum Slat Screen | 2014-09-28 → 2014-11-30 (+63d) | 2014-10-28 → 2014-12-29 (+62d) | -3d → -55d |
| DUKHCONP1AZ9ARRF3655 | Installation of Pumps Protection cabinets | 2014-10-15 → 2014-12-15 (+61d) | 2014-11-06 → 2015-01-07 (+62d) | -3d → -55d |
| DUKHCONP1AZ9ARRF3660 | Installation of Access Ladder | 2014-10-27 → 2014-12-28 (+62d) | 2014-11-12 → 2015-01-13 (+62d) | 2d → -50d |
| 15 | **ELEVATION** | 2014-08-24 → 2014-10-26 (+63d) | 2014-10-16 → 2014-12-16 (+61d) |  |
| DUKHCONP1AZ9AREL3665 | External Plastering | 2014-08-24 → 2014-10-26 (+63d) | 2014-09-21 → 2014-11-23 (+63d) | 23d → -29d |
| DUKHCONP1AZ9AREL3670 | External stone cladding works | 2014-09-10 → 2014-11-12 (+63d) | 2014-10-02 → 2014-12-04 (+63d) | 25d → -27d |
| DUKHCONP1AZ9AREL3680 | External Painting | 2014-09-22 → 2014-11-24 (+63d) | 2014-10-16 → 2014-12-16 (+61d) | 25d → -27d |
| 20 | **MEP WORKS** | 2014-02-26 → 2014-03-05 (+7d) | 2014-12-11 → 2015-02-12 (+63d) |  |
| 10 | **ELECTRICAL WORKS** | 2014-06-09 → 2014-08-20 (+72d) | 2014-12-11 → 2015-02-12 (+63d) |  |
| 10 | **GROUND FLOOR** | 2014-06-09 → 2014-08-20 (+72d) | 2014-10-21 → 2014-12-30 (+70d) |  |
| DUKHCONP1AZ9ELGF4000 | Fixing of wall conduits & switch socket boxes | 2014-06-09 → 2014-08-20 (+72d) | 2014-07-07 → 2014-09-17 (+72d) | 3d → -56d |
| DUKHCONP1AZ9ELGF4005 | Cable tray & trunking installation | 2014-06-21 → 2014-09-01 (+72d) | 2014-07-13 → 2014-09-23 (+72d) | 21d → -38d |
| DUKHCONP1AZ9ELGF4010 | Installation of wiring & Main Cabling | 2014-06-29 → 2014-09-09 (+72d) | 2014-07-27 → 2014-10-07 (+72d) | 21d → -38d |
| DUKHCONP1AZ9ELGF4015 | Install. of CAMS & Fire Fighting Accessories | 2014-09-03 → 2014-11-13 (+71d) | 2014-10-01 → 2014-12-11 (+71d) | 6d → -53d |
| DUKHCONP1AZ9ELGF4020 | Installation of DBS,MCCB Accessories. | 2014-09-09 → 2014-11-19 (+71d) | 2014-10-01 → 2014-12-11 (+71d) | -6d → -65d |
| DUKHCONP1AZ9ELGF4025 | Installation of Lighting fixtures & Accessories | 2014-09-21 → 2014-12-01 (+71d) | 2014-10-21 → 2014-12-30 (+70d) | 1d → -58d |
| DUKHCONP1AZ9ELGF4030 | Installation of Telephone System | 2014-09-21 → 2014-12-01 (+71d) | 2014-10-15 → 2014-12-24 (+70d) | -6d → -65d |
| 15 | **FIRST FLOORS** | 2014-07-21 → 2014-09-23 (+64d) | 2014-11-24 → 2015-01-25 (+62d) |  |
| DUKHCONP1AZ9ELFF4035 | Fixing of wall conduits & switch socket boxes | 2014-07-21 → 2014-09-23 (+64d) | 2014-08-21 → 2014-10-23 (+63d) | -13d → -65d |
| DUKHCONP1AZ9ELFF4040 | Cable tray & trunking installation | 2014-08-05 → 2014-10-05 (+61d) | 2014-08-27 → 2014-10-29 (+63d) | 5d → -47d |
| DUKHCONP1AZ9ELFF4045 | Installation of wiring & Main Cabling | 2014-08-16 → 2014-10-18 (+63d) | 2014-09-13 → 2014-11-15 (+63d) | 3d → -49d |
| DUKHCONP1AZ9ELFF4050 | Installation of Telephone System | 2014-10-15 → 2014-12-13 (+59d) | 2014-11-12 → 2015-01-11 (+60d) | -15d → -65d |
| DUKHCONP1AZ9ELFF4055 | Install. of CAMS & Fire Fighting Accessories | 2014-10-15 → 2014-12-15 (+61d) | 2014-11-12 → 2015-01-13 (+62d) | -23d → -75d |
| DUKHCONP1AZ9ELFF4060 | Installation of DBS,MCCB Accessories. | 2014-10-19 → 2014-12-20 (+62d) | 2014-11-10 → 2015-01-11 (+62d) | -21d → -73d |
| DUKHCONP1AZ9ELFF4065 | Installation of Lighting fixtures & Accessories | 2014-10-27 → 2014-12-28 (+62d) | 2014-11-24 → 2015-01-25 (+62d) | -23d → -75d |
| 20 | **ROOF** | 2014-11-10 → 2015-01-11 (+62d) | 2014-12-11 → 2015-02-12 (+63d) |  |
| DUKHCONP1AZ9ELRF4070 | Installation of Isolator | 2014-11-10 → 2015-01-11 (+62d) | 2014-11-30 → 2015-01-31 (+62d) | -23d → -75d |
| DUKHCONP1AZ9ELRF4075 | Installation of TV Dish Antenna | 2014-11-16 → 2015-01-17 (+62d) | 2014-12-11 → 2015-02-12 (+63d) | -23d → -75d |
| 15 | **PLUMBING, DRAINAGE & FIRE FIGHTING WORKS** | 2014-02-26 → 2014-03-05 (+7d) | 2014-12-11 → 2015-02-12 (+63d) |  |
| 10 | **GROUND FLOOR** | 2014-02-26 → 2014-03-05 (+7d) | 2014-10-21 → 2014-12-30 (+70d) |  |

| ID | Task | Start | Finish | Total float |
| --- | --- | --- | --- | --- |
| DUKHCONP1AZ9PLUG4300 | Drainage / Storm Pipes in Grade Slab | 2014-02-26 → 2014-03-05 (+7d) | 2014-03-16 → 2014-03-23 (+7d) | -24d → -30d |
| DUKHCONP1AZ9PLGF4305 | Installation of Plumbing pipes & testing | 2014-06-19 → 2014-08-31 (+73d) | 2014-07-09 → 2014-09-20 (+73d) | -6d → -65d |
| DUKHCONP1AZ9PLGF4310 | Installation of Drainage pipes &testing | 2014-06-19 → 2014-08-31 (+73d) | 2014-07-09 → 2014-09-20 (+73d) | -3d → -62d |
| DUKHCONP1AZ9PLGF4315 | Sanitary Fittings & Accessories | 2014-09-21 → 2014-12-01 (+71d) | 2014-10-15 → 2014-12-24 (+70d) | 21d → -38d |
| DUKHCONP1AZ9PLGF4320 | Installation of Water Heater | 2014-10-02 → 2014-12-13 (+72d) | 2014-10-21 → 2014-12-30 (+70d) | 21d → -38d |
| 15 | **FIRST FLOORS** | 2014-08-05 → 2014-10-05 (+61d) | 2014-11-19 → 2015-01-20 (+62d) |  |
| DUKHCONP1AZ9PLFF4325 | Installation of Plumbing pipes & testing | 2014-08-05 → 2014-10-05 (+61d) | 2014-08-25 → 2014-10-27 (+63d) | -24d → -76d |
| DUKHCONP1AZ9PLFF4330 | Installation of Drainage pipes & testing | 2014-08-05 → 2014-10-05 (+61d) | 2014-08-25 → 2014-10-27 (+63d) | -2d → -54d |
| DUKHCONP1AZ9PLFF4335 | Sanitary Fittings & Accessories | 2014-10-22 → 2014-12-23 (+62d) | 2014-11-13 → 2015-01-14 (+62d) | -19d → -71d |
| DUKHCONP1AZ9PLFF4340 | Installation of Water Heater | 2014-11-03 → 2015-01-04 (+62d) | 2014-11-19 → 2015-01-20 (+62d) | -19d → -71d |
| 20 | **ROOF** | 2014-08-28 → 2014-10-27 (+60d) | 2014-12-11 → 2015-02-12 (+63d) |  |
| DUKHCONP1AZ9PLRF4345 | Installation of Plumbing pipes & fittings | 2014-08-28 → 2014-10-27 (+60d) | 2014-09-14 → 2014-11-12 (+59d) | 28d → -21d |
| DUKHCONP1AZ9PLRF4350 | Installation of Rain water Pipes | 2014-10-07 → 2014-12-09 (+63d) | 2014-10-26 → 2014-12-27 (+62d) | 2d → -50d |
| DUKHCONP1AZ9PLRF4355 | Roof Water Tank Installation & Connections | 2014-11-13 → 2015-01-14 (+62d) | 2014-12-11 → 2015-02-12 (+63d) | -23d → -75d |
| 20 | **AC WORKS** | 2014-07-09 → 2014-09-20 (+73d) | 2014-12-09 → 2015-02-09 (+62d) |  |
| 10 | **GROUND FLOOR** | 2014-07-09 → 2014-09-20 (+73d) | 2014-10-19 → 2014-12-28 (+70d) |  |
| DUKHCONP1AZ9ACGF4600 | Installation AC Pipes | 2014-07-09 → 2014-09-20 (+73d) | 2014-07-31 → 2014-10-14 (+75d) | 25d → -34d |
| DUKHCONP1AZ9ACGF4605 | Fixing of Ventilation Equipments | 2014-09-03 → 2014-11-13 (+71d) | 2014-10-01 → 2014-12-11 (+71d) | 8d → -51d |
| DUKHCONP1AZ9ACGF4610 | Fixing of Split AC | 2014-09-24 → 2014-12-04 (+71d) | 2014-10-19 → 2014-12-28 (+70d) | 8d → -51d |
| 15 | **FIRST FLOORS** | 2014-08-26 → 2014-10-28 (+63d) | 2014-11-27 → 2015-01-28 (+62d) |  |
| DUKHCONP1AZ9ACFF4615 | Installation AC Pipes | 2014-08-26 → 2014-10-28 (+63d) | 2014-09-17 → 2014-11-19 (+63d) | 3d → -49d |
| DUKHCONP1AZ9ACFF4620 | Fixing of Ventilation Equipments | 2014-10-15 → 2014-12-15 (+61d) | 2014-11-12 → 2015-01-13 (+62d) | -22d → -74d |
| DUKHCONP1AZ9ACFF4625 | Fixing of Split AC | 2014-11-05 → 2015-01-06 (+62d) | 2014-11-27 → 2015-01-28 (+62d) | -22d → -74d |
| 20 | **ROOF** | 2014-09-28 → 2014-11-30 (+63d) | 2014-12-09 → 2015-02-09 (+62d) |  |
| DUKHCONP1AZ9ACRF4630 | Installation of Refrigerant Pipes | 2014-09-28 → 2014-11-30 (+63d) | 2014-10-28 → 2014-12-29 (+62d) | 10d → -42d |
| DUKHCONP1AZ9ACRF4635 | Installation of Condensing Unit | 2014-11-11 → 2015-01-12 (+62d) | 2014-12-09 → 2015-02-09 (+62d) | -21d → -73d |
| 25 | **EXTERNAL WORKS** | 2014-07-15 → 2014-09-14 (+61d) | 2014-12-02 → 2015-02-02 (+62d) |  |
| 10 | **MISCELLANEOUS** | 2014-07-15 → 2014-09-14 (+61d) | 2014-12-02 → 2015-02-01 (+61d) |  |
| DUKHCONP1AZ9MSEX5000 | Construction of Manholes | 2014-07-15 → 2014-09-14 (+61d) | 2014-08-16 → 2014-10-14 (+59d) | -15d → -64d |
| DUKHCONP1AZ9MSEX5005 | Construction of Soak pit, Chambers | 2014-07-29 → 2014-09-28 (+61d) | 2014-08-30 → 2014-10-28 (+59d) | -15d → -64d |
| DUKHCONP1AZ9MSEX5015 | Construction of grease Trap | 2014-08-21 → 2014-10-20 (+60d) | 2014-09-13 → 2014-11-11 (+59d) | -15d → -64d |
| DUKHCONP1AZ9MSEX5020 | Construction Entrance Ramp | 2014-09-09 → 2014-11-11 (+63d) | 2014-10-07 → 2014-12-09 (+63d) | -8d → -60d |
| DUKHCONP1AZ9MSEX5010 | Telephone cable laying | 2014-09-14 → 2014-11-12 (+59d) | 2014-10-14 → 2014-12-10 (+57d) | -15d → -64d |
| DUKHCONP1AZ9MSEX5025 | SS.Handrails and Balustrades | 2014-09-27 → 2014-11-29 (+63d) | 2014-10-21 → 2014-12-22 (+62d) | -5d → -57d |
| DUKHCONP1AZ9MSEX5335 | Aluminum Roll-up Shutter with 2m Wall | 2014-11-04 → 2015-01-04 (+61d) | 2014-12-02 → 2015-02-01 (+61d) | 10d → -41d |
| 15 | **WATER TANK ENCLOSURE** | 2014-07-28 → 2014-09-30 (+64d) | 2014-12-02 → 2015-02-02 (+62d) |  |
| DUKHCONP1AZ9WEEX5030 | Excavation | 2014-07-28 → 2014-09-30 (+64d) | 2014-08-23 → 2014-10-25 (+63d) | 24d → -28d |
| DUKHCONP1AZ9WEEX5035 | Construction of Raft | 2014-08-06 → 2014-10-06 (+61d) | 2014-09-03 → 2014-11-05 (+63d) | 24d → -28d |
| DUKHCONP1AZ9WEEX5040 | Block works & Plastering | 2014-08-16 → 2014-10-18 (+63d) | 2014-09-13 → 2014-11-15 (+63d) | 24d → -28d |
| DUKHCONP1AZ9WEEX5045 | Flooring & Painting | 2014-08-23 → 2014-10-25 (+63d) | 2014-09-20 → 2014-11-22 (+63d) | 24d → -28d |
| DUKHCONP1AZ9WEEX5050 | Installation of Steel Gate | 2014-10-08 → 2014-12-10 (+63d) | 2014-11-02 → 2015-01-03 (+62d) | -5d → -57d |
| DUKHCONP1AZ9WEEX5060 | Structural steel & SS Shed cover installation | 2014-10-27 → 2014-12-28 (+62d) | 2014-11-24 → 2015-01-25 (+62d) | -14d → -66d |
| DUKHCONP1AZ9WEEX5065 | Install. of Water Tank,Chiller,Pump & Meter | 2014-11-04 → 2015-01-05 (+62d) | 2014-12-02 → 2015-02-02 (+62d) | -15d → -67d |
| 20 | **HARD LANDSCAPING** | 2014-09-23 → 2014-11-25 (+63d) | 2014-11-05 → 2015-01-06 (+62d) |  |
| DUKHCONP1AZ9HDEX5090 | kerb works | 2014-09-23 → 2014-11-25 (+63d) | 2014-10-18 → 2014-12-17 (+60d) | -8d → -60d |
| DUKHCONP1AZ9HDEX5095 | Cobble Stone Works | 2014-10-05 → 2014-12-07 (+63d) | 2014-10-29 → 2014-12-30 (+62d) | -8d → -60d |
| DUKHCONP1AZ9HDEX5100 | Interlock works | 2014-10-14 → 2014-12-14 (+61d) | 2014-11-05 → 2015-01-06 (+62d) | -8d → -60d |
| 25 | **SOFT LANDSCAPING** | 2014-10-20 → 2014-12-21 (+62d) | 2014-11-24 → 2015-01-25 (+62d) |  |
| DUKHCONP1AZ9SLEX5105 | Laying of Grass/ green area | 2014-10-20 → 2014-12-21 (+62d) | 2014-11-17 → 2015-01-18 (+62d) | -8d → -60d |
| DUKHCONP1AZ9SLEX5110 | Laying of Palm tree | 2014-10-27 → 2014-12-28 (+62d) | 2014-11-24 → 2015-01-25 (+62d) | -8d → -60d |
| 30 | **TESTING AND COMMISSIONING** | 2014-12-14 → 2015-02-15 (+63d) | 2015-01-12 → 2015-03-15 (+62d) |  |
| DUKHCONP1AZ9ACTC8000 | Pre-Commissioning & Testing of AC Works | 2014-12-14 → 2015-02-15 (+63d) | 2015-01-12 → 2015-03-15 (+62d) | -24d → -76d |
| DUKHCONP1AZ9ELTC8010 | Pre-Commissioning & Testing of Electrical Works | 2014-12-14 → 2015-02-15 (+63d) | 2015-01-12 → 2015-03-15 (+62d) | -24d → -76d |
| DUKHCONP1AZ9PLTC8005 | Pre-Commissioning & Testing of Plumbing Works | 2014-12-14 → 2015-02-15 (+63d) | 2015-01-12 → 2015-03-15 (+62d) | -24d → -76d |
| L20 | **PACKAGE-1A INFRASTRUCTURE WORKS** | 2013-09-21 → 2013-11-10 (+50d) | 2015-01-19 → 2015-03-21 (+61d) |  |
| 10 | **ZONE - 1** | 2013-09-21 → 2013-11-10 (+50d) | 2014-06-18 → 2014-08-09 (+52d) |  |
| 10 | **INFRASTRUCTURE WORKS** | 2013-09-21 → 2013-11-10 (+50d) | 2014-06-18 → 2014-08-09 (+52d) |  |
| 10 | **DRAINAGE LINES** | 2013-09-21 → 2013-11-10 (+50d) | 2013-11-19 → 2014-01-07 (+49d) |  |
| DUKHCONI1AZ1DRGL5115 | Excavation for Drainage line | 2013-09-21 → 2013-11-10 (+50d) | 2013-10-21 → 2013-12-08 (+48d) | -4d → -45d |
| DUKHCONI1AZ1DRGL5120 | Laying of Drainage line | 2013-10-02 → 2013-11-21 (+50d) | 2013-11-02 → 2013-12-21 (+49d) | -4d → -45d |
| DUKHCONI1AZ1DRGL5125 | Testing of Drainage line | 2013-10-14 → 2013-12-03 (+50d) | 2013-11-13 → 2014-01-01 (+49d) | -4d → -45d |
| DUKHCONI1AZ1DRGL5130 | Backfilling Drainage line | 2013-11-03 → 2013-12-22 (+49d) | 2013-11-19 → 2014-01-07 (+49d) | -4d → -45d |
| 15 | **MANHOLES & SOAKAWAY** | 2013-11-03 → 2013-12-22 (+49d) | 2014-01-23 → 2014-03-13 (+49d) |  |
| DUKHCONI1AZ1SAGL5135 | Construction of manholes Drainage | 2013-11-03 → 2013-12-22 (+49d) | 2013-12-01 → 2014-01-19 (+49d) | 68d → 27d |
| DUKHCONI1AZ1SAGL5140 | Construction of soakaways | 2013-11-03 → 2013-12-22 (+49d) | 2013-12-01 → 2014-01-19 (+49d) | -4d → -45d |
| DUKHCONI1AZ1SAGL5145 | Construction of Road gullies | 2013-12-02 → 2014-01-20 (+49d) | 2013-12-31 → 2014-02-18 (+49d) | -4d → -45d |
| DUKHCONI1AZ1SAGL5150 | Connection with existing sewer manhole | 2014-01-01 → 2014-02-19 (+49d) | 2014-01-23 → 2014-03-13 (+49d) | 43d → 2d |
| 20 | **WATER SUPPLY SYSTEM** | 2013-11-14 → 2014-01-02 (+49d) | 2014-01-29 → 2014-03-19 (+49d) |  |
| DUKHCONI1AZ1WSGL5155 | Excavation for water line | 2013-11-14 → 2014-01-02 (+49d) | 2013-12-12 → 2014-01-30 (+49d) | -4d → -45d |
| DUKHCONI1AZ1WSGL5160 | Laying of water line | 2013-11-20 → 2014-01-08 (+49d) | 2013-12-19 → 2014-02-05 (+48d) | -4d → -45d |

| ID | Task | Start | Finish | Total float |
| --- | --- | --- | --- | --- |
| DUKHCONI1AZ1WSGL5165 | Testing of potable water line | 2013-11-26 → 2014-01-14 (+49d) | 2013-12-25 → 2014-02-12 (+49d) | -4d → -45d |
| DUKHCONI1AZ1WSGL5170 | Backfilling potable water line | 2013-12-02 → 2014-01-20 (+49d) | 2013-12-31 → 2014-02-18 (+49d) | -4d → -45d |
| DUKHCONI1AZ1WSGL5175 | Construction of valve chambers & Thrust Blocks | 2013-12-08 → 2014-01-26 (+49d) | 2014-01-06 → 2014-02-24 (+49d) | 38d → -3d |
| DUKHCONI1AZ1WSGL5180 | Installation of meter ,Accessories & Connection | 2014-01-07 → 2014-02-25 (+49d) | 2014-01-29 → 2014-03-19 (+49d) | 38d → -3d |
| 25 | **FIREFIGHTING LINES** | 2013-12-14 → 2014-02-01 (+49d) | 2014-02-13 → 2014-04-02 (+48d) |  |
| DUKHCONI1AZ1FFGL5185 | Excavation for firefighting line | 2013-12-14 → 2014-02-01 (+49d) | 2014-01-12 → 2014-03-02 (+49d) | -4d → -45d |
| DUKHCONI1AZ1FFGL5190 | Laying of firefighting line | 2013-12-23 → 2014-02-09 (+48d) | 2014-01-20 → 2014-03-10 (+49d) | -4d → -45d |
| DUKHCONI1AZ1FFGL5195 | Testing of firefighting line | 2013-12-29 → 2014-02-16 (+49d) | 2014-01-26 → 2014-03-16 (+49d) | -4d → -45d |
| DUKHCONI1AZ1FFGL5200 | Backfilling firefighting line | 2014-01-04 → 2014-02-22 (+49d) | 2014-02-01 → 2014-03-22 (+49d) | -4d → -45d |
| DUKHCONI1AZ1FFGL5205 | Construction of valve chambers & Thrust Blocks | 2014-01-09 → 2014-02-27 (+49d) | 2014-02-06 → 2014-03-27 (+49d) | 26d → -15d |
| DUKHCONI1AZ1FFGL5210 | Connection with existing Firewater System | 2014-01-15 → 2014-03-05 (+49d) | 2014-02-13 → 2014-04-02 (+48d) | 26d → -15d |
| 30 | **ELECTRICAL LINES** | 2014-01-12 → 2014-03-02 (+49d) | 2014-03-12 → 2014-04-29 (+48d) |  |
| DUKHCONI1AZ1ELGL5215 | Excavation Cable Trenches & Duct Banks | 2014-01-12 → 2014-03-02 (+49d) | 2014-02-09 → 2014-03-30 (+49d) | 4d → -37d |
| DUKHCONI1AZ1ELGL5220 | Laying of electrical cables | 2014-01-18 → 2014-03-08 (+49d) | 2014-02-16 → 2014-04-05 (+48d) | 7d → -34d |
| DUKHCONI1AZ1ELGL5225 | Backfilling Electrical trench | 2014-01-26 → 2014-03-16 (+49d) | 2014-02-24 → 2014-04-13 (+48d) | 7d → -34d |
| DUKHCONI1AZ1ELGL5230 | Construction of Submain Board & Feeder Pillar | 2014-02-12 → 2014-04-01 (+48d) | 2014-03-12 → 2014-04-29 (+48d) | 71d → 30d |
| 35 | **STREET LIGHTING** | 2014-01-12 → 2014-03-02 (+49d) | 2014-05-05 → 2014-06-22 (+48d) |  |
| DUKHCONI1AZ1STGL5235 | Excavation for Street lighting | 2014-01-12 → 2014-03-02 (+49d) | 2014-02-09 → 2014-03-30 (+49d) | 4d → -37d |
| DUKHCONI1AZ1STGL5240 | Construction of Duct Banks | 2014-01-18 → 2014-03-08 (+49d) | 2014-02-16 → 2014-04-05 (+48d) | 4d → -37d |
| DUKHCONI1AZ1STGL5245 | Construction of Foundation | 2014-01-18 → 2014-03-08 (+49d) | 2014-02-16 → 2014-04-05 (+48d) | 4d → -37d |
| DUKHCONI1AZ1STGL5250 | Backfilling Street Lighting | 2014-01-23 → 2014-03-13 (+49d) | 2014-02-22 → 2014-04-10 (+47d) | 4d → -37d |
| DUKHCONI1AZ1STGL5255 | Installation of light Post | 2014-03-01 → 2014-04-17 (+47d) | 2014-03-29 → 2014-05-15 (+47d) | 71d → 30d |
| DUKHCONI1AZ1STGL5260 | Electrical Works | 2014-04-07 → 2014-05-25 (+48d) | 2014-05-05 → 2014-06-22 (+48d) | 71d → 30d |
| 40 | **IRRIGATION LINES** | 2014-02-25 → 2014-04-14 (+48d) | 2014-05-01 → 2014-06-18 (+48d) |  |
| DUKHCONI1AZ1IRGL5265 | Excavation for irrigation line | 2014-02-25 → 2014-04-14 (+48d) | 2014-03-25 → 2014-05-12 (+48d) | 29d → -12d |
| DUKHCONI1AZ1IRGL5270 | Laying of irrigationline | 2014-03-03 → 2014-04-20 (+48d) | 2014-03-31 → 2014-05-18 (+48d) | 29d → -12d |
| DUKHCONI1AZ1IRGL5275 | Testing of irrigation line | 2014-03-09 → 2014-04-26 (+48d) | 2014-04-06 → 2014-05-24 (+48d) | 29d → -12d |
| DUKHCONI1AZ1IRGL5280 | Backfilling irrigation line | 2014-03-15 → 2014-05-01 (+47d) | 2014-04-12 → 2014-05-29 (+47d) | 29d → -12d |
| DUKHCONI1AZ1IRGL5285 | Construction of Thrust Blocks,Pull boxes | 2014-03-26 → 2014-05-13 (+48d) | 2014-04-23 → 2014-06-10 (+48d) | 49d → 8d |
| DUKHCONI1AZ1IRGL5290 | Irrigation Fittings (Nozzle,Values) | 2014-04-03 → 2014-05-21 (+48d) | 2014-05-01 → 2014-06-18 (+48d) | 49d → 8d |
| 45 | **TELECOMMUNICATION LINES** | 2014-02-04 → 2014-03-25 (+49d) | 2014-03-23 → 2014-05-10 (+48d) |  |
| DUKHCONI1AZ1TCGL5295 | Excavation Telecommunication trenches | 2014-02-04 → 2014-03-25 (+49d) | 2014-02-27 → 2014-04-16 (+48d) | 4d → -37d |
| DUKHCONI1AZ1TCGL5300 | Laying of cables | 2014-02-10 → 2014-03-31 (+49d) | 2014-03-05 → 2014-04-22 (+48d) | 4d → -37d |
| DUKHCONI1AZ1TCGL5305 | Backfilling telecommunication trench | 2014-02-17 → 2014-04-06 (+48d) | 2014-03-11 → 2014-04-28 (+48d) | 4d → -37d |
| DUKHCONI1AZ1TCGL5310 | Connection & Installation | 2014-03-01 → 2014-04-17 (+47d) | 2014-03-23 → 2014-05-10 (+48d) | 9d → -32d |
| 50 | **BOUNDARY WALL** | 2014-02-04 → 2014-03-25 (+49d) | 2014-05-01 → 2014-06-18 (+48d) |  |
| DUKHCONI1AZ1BWGL5315 | Construction of Boundary Wall (Ht-3m) | 2014-02-04 → 2014-03-25 (+49d) | 2014-03-05 → 2014-04-22 (+48d) | 75d → 34d |
| DUKHCONI1AZ1BWGL5320 | Install.Steel Gate,Entance Barrier (3m Wall) | 2014-02-22 → 2014-04-10 (+47d) | 2014-03-22 → 2014-05-08 (+47d) | 75d → 34d |
| DUKHCONI1AZ1BWGL5325 | Const. of Villa Front Boundary Wall (Ht-2m) | 2014-03-23 → 2014-05-10 (+48d) | 2014-04-20 → 2014-06-07 (+48d) | 75d → 34d |
| DUKHCONI1AZ1BWGL5330 | Const. of Blockwork fence Wall (Ht-1.85m) | 2014-04-03 → 2014-05-21 (+48d) | 2014-05-01 → 2014-06-18 (+48d) | 75d → 34d |
| 55 | **ROAD WORKS** | 2014-03-12 → 2014-04-29 (+48d) | 2014-05-26 → 2014-07-13 (+48d) |  |
| DUKHCONI1AZ1RWGL6000 | Excavation & Earth Filling | 2014-03-12 → 2014-04-29 (+48d) | 2014-03-23 → 2014-05-10 (+48d) | 4d → -37d |
| DUKHCONI1AZ1RWGL6005 | Laying of Sub Grade | 2014-03-24 → 2014-05-11 (+48d) | 2014-04-21 → 2014-06-08 (+48d) | 4d → -37d |
| DUKHCONI1AZ1RWGL6010 | Laying of Precast Kerbs | 2014-04-05 → 2014-05-22 (+47d) | 2014-05-03 → 2014-06-19 (+47d) | 4d → -37d |
| DUKHCONI1AZ1RWGL6015 | Laying of Granular Sub Base Coarse | 2014-04-16 → 2014-06-03 (+48d) | 2014-05-08 → 2014-06-25 (+48d) | 4d → -37d |
| DUKHCONI1AZ1RWGL6020 | Laying of Road Base Asphalt Concrete | 2014-05-10 → 2014-06-26 (+47d) | 2014-05-14 → 2014-07-01 (+48d) | 64d → 23d |
| DUKHCONI1AZ1RWGL6025 | Laying of Asphalt Wearing Coarse | 2014-05-15 → 2014-07-02 (+48d) | 2014-05-20 → 2014-07-07 (+48d) | 73d → 32d |
| DUKHCONI1AZ1RWGL6030 | Traffic Signage & Road Marking | 2014-05-21 → 2014-07-08 (+48d) | 2014-05-26 → 2014-07-13 (+48d) | 79d → 38d |
| 60 | **PARKING SHED** | 2014-04-22 → 2014-06-09 (+48d) | 2014-06-18 → 2014-08-09 (+52d) |  |
| DUKHCONI1AZ1PSGL7000 | Excavation | 2014-04-22 → 2014-06-09 (+48d) | 2014-05-08 → 2014-06-25 (+48d) | 69d → 28d |
| DUKHCONI1AZ1PSGL7005 | Foundation casting | 2014-05-04 → 2014-06-21 (+48d) | 2014-05-20 → 2014-07-07 (+48d) | 64d → 23d |
| DUKHCONI1AZ1PSGL7010 | Column, Frame& Fabrics Erection | 2014-05-15 → 2014-07-02 (+48d) | 2014-06-12 → 2014-07-30 (+48d) | 64d → 23d |
| DUKHCONI1AZ1PSGL7015 | Electrical Works-Parking Shed | 2014-05-21 → 2014-07-08 (+48d) | 2014-06-18 → 2014-08-09 (+52d) | 64d → 23d |
| 65 | **HARD LANDSCAPING** | 2014-03-12 → 2014-04-29 (+48d) | 2014-06-12 → 2014-07-30 (+48d) |  |
| DUKHCONI1AZ1HDGL7020 | Precast Concrete Kerbs works | 2014-03-12 → 2014-04-29 (+48d) | 2014-04-03 → 2014-05-21 (+48d) | 38d → -3d |
| DUKHCONI1AZ1HDGL7025 | Interlocking for Walkways | 2014-03-24 → 2014-05-11 (+48d) | 2014-04-21 → 2014-06-08 (+48d) | 38d → -3d |
| DUKHCONI1AZ1HDGL7030 | Construction of Retaining wall | 2014-04-05 → 2014-05-22 (+47d) | 2014-05-03 → 2014-06-19 (+47d) | 38d → -3d |
| DUKHCONI1AZ1HDGL7035 | Construction of Wash Stone Boulders | 2014-04-05 → 2014-05-22 (+47d) | 2014-05-03 → 2014-06-19 (+47d) | 38d → -3d |
| DUKHCONI1AZ1HDGL7040 | Construction of Speed Humps | 2014-05-21 → 2014-07-08 (+48d) | 2014-06-12 → 2014-07-30 (+48d) | 73d → 32d |
| 70 | **SOFT LANDSCAPING** | 2014-04-16 → 2014-06-03 (+48d) | 2014-06-12 → 2014-07-30 (+48d) |  |
| DUKHCONI1AZ1SLGL7200 | Excavation | 2014-04-16 → 2014-06-03 (+48d) | 2014-05-14 → 2014-07-01 (+48d) | 38d → -3d |
| DUKHCONI1AZ1SLGL7205 | Sweet Soil Laying | 2014-04-28 → 2014-06-15 (+48d) | 2014-05-26 → 2014-07-13 (+48d) | 38d → -3d |
| DUKHCONI1AZ1SLGL7210 | Plantation works | 2014-05-15 → 2014-07-02 (+48d) | 2014-06-12 → 2014-07-30 (+48d) | 73d → 32d |
| 15 | **ZONE- 2** | 2013-12-04 → 2014-02-03 (+61d) | 2014-08-19 → 2014-10-20 (+62d) |  |
| 10 | **INFRASTRUCTURE WORKS** | 2013-12-04 → 2014-02-03 (+61d) | 2014-08-19 → 2014-10-20 (+62d) |  |
| 10 | **DRAINAGE LINES** | 2013-12-04 → 2014-02-03 (+61d) | 2014-01-23 → 2014-03-25 (+61d) |  |
| DUKHCONI1AZ2DRGL5115 | Excavation for Drainage line | 2013-12-04 → 2014-02-03 (+61d) | 2014-01-02 → 2014-03-04 (+61d) | -15d → -66d |
| DUKHCONI1AZ2DRGL5120 | Laying of Drainage line | 2013-12-11 → 2014-02-10 (+61d) | 2014-01-09 → 2014-03-11 (+61d) | -15d → -66d |
| DUKHCONI1AZ2DRGL5125 | Testing of Drainage line | 2013-12-21 → 2014-02-19 (+60d) | 2014-01-18 → 2014-03-19 (+60d) | -15d → -66d |
| DUKHCONI1AZ2DRGL5130 | Backfilling Drainage line | 2014-01-07 → 2014-03-09 (+61d) | 2014-01-23 → 2014-03-25 (+61d) | -15d → -66d |

| ID | Task | Start | Finish | Total float |
| --- | --- | --- | --- | --- |
| 15 | **MANHOLES & SOAKAWAY** | 2014-01-05 → 2014-03-06 (+60d) | 2014-03-27 → 2014-05-26 (+60d) |  |
| DUKHCONI1AZ2SAGL5140 | Construction of soakaways | 2014-01-05 → 2014-03-06 (+60d) | 2014-02-02 → 2014-04-03 (+60d) | -10d → -61d |
| DUKHCONI1AZ2SAGL5135 | Construction of manholes Drainage | 2014-01-07 → 2014-03-09 (+61d) | 2014-02-04 → 2014-04-06 (+61d) | 53d → 2d |
| DUKHCONI1AZ2SAGL5145 | Construction of Road gullies | 2014-02-03 → 2014-04-05 (+61d) | 2014-03-04 → 2014-05-03 (+60d) | -10d → -61d |
| DUKHCONI1AZ2SAGL5150 | Connection with existing sewer manhole | 2014-03-05 → 2014-05-04 (+60d) | 2014-03-27 → 2014-05-26 (+60d) | 30d → -21d |
| 20 | **WATER SUPPLY SYSTEM** | 2014-01-19 → 2014-03-20 (+60d) | 2014-04-05 → 2014-06-03 (+59d) |  |
| DUKHCONI1AZ2WSGL5155 | Excavation for water line | 2014-01-19 → 2014-03-20 (+60d) | 2014-02-17 → 2014-04-17 (+59d) | -12d → -63d |
| DUKHCONI1AZ2WSGL5160 | Laying of water line | 2014-01-25 → 2014-03-26 (+60d) | 2014-02-23 → 2014-04-23 (+59d) | -12d → -63d |
| DUKHCONI1AZ2WSGL5165 | Testing of potable water line | 2014-01-30 → 2014-04-01 (+61d) | 2014-03-01 → 2014-04-29 (+59d) | -12d → -63d |
| DUKHCONI1AZ2WSGL5170 | Backfilling potable water line | 2014-02-05 → 2014-04-07 (+61d) | 2014-03-06 → 2014-05-05 (+60d) | -12d → -63d |
| DUKHCONI1AZ2WSGL5175 | Construction of valve chambers & Thrust Blocks | 2014-02-12 → 2014-04-13 (+60d) | 2014-03-12 → 2014-05-11 (+60d) | 23d → -28d |
| DUKHCONI1AZ2WSGL5180 | Installation of meter ,Accessories & Connection | 2014-03-13 → 2014-05-12 (+60d) | 2014-04-05 → 2014-06-03 (+59d) | 23d → -28d |
| 25 | **FIREFIGHTING LINES** | 2014-02-12 → 2014-04-13 (+60d) | 2014-04-13 → 2014-06-11 (+59d) |  |
| DUKHCONI1AZ2FFGL5185 | Excavation for firefighting line | 2014-02-12 → 2014-04-13 (+60d) | 2014-03-12 → 2014-05-11 (+60d) | -12d → -63d |
| DUKHCONI1AZ2FFGL5190 | Laying of firefighting line | 2014-02-20 → 2014-04-21 (+60d) | 2014-03-20 → 2014-05-19 (+60d) | -12d → -63d |
| DUKHCONI1AZ2FFGL5195 | Testing of firefighting line | 2014-02-26 → 2014-04-27 (+60d) | 2014-03-26 → 2014-05-25 (+60d) | -12d → -63d |
| DUKHCONI1AZ2FFGL5200 | Backfilling firefighting line | 2014-03-04 → 2014-05-03 (+60d) | 2014-04-01 → 2014-05-31 (+60d) | -12d → -63d |
| DUKHCONI1AZ2FFGL5205 | Construction of valve chambers & Thrust Blocks | 2014-03-10 → 2014-05-08 (+59d) | 2014-04-07 → 2014-06-05 (+59d) | 16d → -35d |
| DUKHCONI1AZ2FFGL5210 | Connection with existing Firewater System | 2014-03-16 → 2014-05-14 (+59d) | 2014-04-13 → 2014-06-11 (+59d) | 16d → -35d |
| 30 | **ELECTRICAL LINES** | 2014-03-12 → 2014-05-11 (+60d) | 2014-05-05 → 2014-07-03 (+59d) |  |
| DUKHCONI1AZ2ELGL5215 | Excavation Cable Trenches & Duct Banks | 2014-03-12 → 2014-05-11 (+60d) | 2014-04-09 → 2014-06-08 (+60d) | -6d → -57d |
| DUKHCONI1AZ2ELGL5220 | Laying of electrical cables | 2014-03-18 → 2014-05-17 (+60d) | 2014-04-15 → 2014-06-14 (+60d) | -3d → -54d |
| DUKHCONI1AZ2ELGL5225 | Backfilling Electrical trench | 2014-03-26 → 2014-05-25 (+60d) | 2014-04-23 → 2014-06-22 (+60d) | -3d → -54d |
| DUKHCONI1AZ2ELGL5230 | Construction of Submain Board & Feeder Pillar | 2014-04-07 → 2014-06-05 (+59d) | 2014-05-05 → 2014-07-03 (+59d) | 71d → 20d |
| 35 | **STREET LIGHTING** | 2014-03-12 → 2014-05-11 (+60d) | 2014-06-03 → 2014-08-05 (+63d) |  |
| DUKHCONI1AZ2STGL5235 | Excavation for Street lighting | 2014-03-12 → 2014-05-11 (+60d) | 2014-04-09 → 2014-06-08 (+60d) | -6d → -57d |
| DUKHCONI1AZ2STGL5240 | Construction of Duct Banks | 2014-03-18 → 2014-05-17 (+60d) | 2014-04-15 → 2014-06-14 (+60d) | -6d → -57d |
| DUKHCONI1AZ2STGL5245 | Construction of Foundation | 2014-03-18 → 2014-05-17 (+60d) | 2014-04-15 → 2014-06-14 (+60d) | -6d → -57d |
| DUKHCONI1AZ2STGL5250 | Backfilling Street Lighting | 2014-03-24 → 2014-05-22 (+59d) | 2014-04-21 → 2014-06-19 (+59d) | -6d → -57d |
| DUKHCONI1AZ2STGL5255 | Installation of light Post | 2014-04-09 → 2014-06-08 (+60d) | 2014-05-07 → 2014-07-06 (+60d) | 69d → 18d |
| DUKHCONI1AZ2STGL5260 | Electrical Works | 2014-05-06 → 2014-07-05 (+60d) | 2014-06-03 → 2014-08-05 (+63d) | 71d → 20d |
| 40 | **IRRIGATION LINES** | 2014-04-24 → 2014-06-23 (+60d) | 2014-06-29 → 2014-08-31 (+63d) |  |
| DUKHCONI1AZ2IRGL5265 | Excavation for irrigation line | 2014-04-24 → 2014-06-23 (+60d) | 2014-05-22 → 2014-07-21 (+60d) | 19d → -32d |
| DUKHCONI1AZ2IRGL5270 | Laying of irrigationline | 2014-04-30 → 2014-06-29 (+60d) | 2014-05-28 → 2014-07-27 (+60d) | 19d → -32d |
| DUKHCONI1AZ2IRGL5275 | Testing of irrigation line | 2014-05-06 → 2014-07-05 (+60d) | 2014-06-03 → 2014-08-05 (+63d) | 19d → -32d |
| DUKHCONI1AZ2IRGL5280 | Backfilling irrigation line | 2014-05-12 → 2014-07-10 (+59d) | 2014-06-09 → 2014-08-11 (+63d) | 19d → -32d |
| DUKHCONI1AZ2IRGL5285 | Construction of Thrust Blocks,Pull boxes | 2014-05-24 → 2014-07-22 (+59d) | 2014-06-21 → 2014-08-23 (+63d) | 34d → -17d |
| DUKHCONI1AZ2IRGL5290 | Irrigation Fittings (Nozzle,Values) | 2014-06-01 → 2014-07-30 (+59d) | 2014-06-29 → 2014-08-31 (+63d) | 34d → -17d |
| 45 | **TELECOMMUNICATION LINES** | 2014-04-05 → 2014-06-03 (+59d) | 2014-05-20 → 2014-07-19 (+60d) |  |
| DUKHCONI1AZ2TCGL5295 | Excavation Telecommunication trenches | 2014-04-05 → 2014-06-03 (+59d) | 2014-04-27 → 2014-06-25 (+59d) | -6d → -57d |
| DUKHCONI1AZ2TCGL5300 | Laying of cables | 2014-04-10 → 2014-06-09 (+60d) | 2014-05-03 → 2014-07-01 (+59d) | -6d → -57d |
| DUKHCONI1AZ2TCGL5305 | Backfilling telecommunication trench | 2014-04-16 → 2014-06-15 (+60d) | 2014-05-08 → 2014-07-07 (+60d) | -6d → -57d |
| DUKHCONI1AZ2TCGL5310 | Connection & Installation | 2014-04-28 → 2014-06-26 (+59d) | 2014-05-20 → 2014-07-19 (+60d) | 73d → 22d |
| 50 | **BOUNDARY WALL** | 2014-04-05 → 2014-06-03 (+59d) | 2014-06-29 → 2014-08-31 (+63d) |  |
| DUKHCONI1AZ2BWGL5315 | Construction of Boundary Wall (Ht-3m) | 2014-04-05 → 2014-06-03 (+59d) | 2014-05-03 → 2014-07-01 (+59d) | 50d → -1d |
| DUKHCONI1AZ2BWGL5320 | Install.Steel Gate,Entance Barrier (3m Wall) | 2014-04-21 → 2014-06-19 (+59d) | 2014-05-19 → 2014-07-17 (+59d) | 50d → -1d |
| DUKHCONI1AZ2BWGL5325 | Const. of Villa Front Boundary Wall (Ht-2m) | 2014-05-20 → 2014-07-19 (+60d) | 2014-06-17 → 2014-08-19 (+63d) | 50d → -1d |
| DUKHCONI1AZ2BWGL5330 | Const. of Blockwork fence Wall (Ht-1.85m) | 2014-06-01 → 2014-07-30 (+59d) | 2014-06-29 → 2014-08-31 (+63d) | 50d → -1d |
| 55 | **ROAD WORKS** | 2014-05-10 → 2014-07-08 (+59d) | 2014-07-23 → 2014-09-24 (+63d) |  |
| DUKHCONI1AZ2RWGL6000 | Excavation & Earth Filling | 2014-05-10 → 2014-07-08 (+59d) | 2014-05-20 → 2014-07-19 (+60d) | -6d → -57d |
| DUKHCONI1AZ2RWGL6005 | Laying of Sub Grade | 2014-05-21 → 2014-07-20 (+60d) | 2014-06-18 → 2014-08-20 (+63d) | -6d → -57d |
| DUKHCONI1AZ2RWGL6010 | Laying of Precast Kerbs | 2014-06-02 → 2014-07-31 (+59d) | 2014-06-30 → 2014-09-01 (+63d) | -6d → -57d |
| DUKHCONI1AZ2RWGL6015 | Laying of Granular Sub Base Coarse | 2014-06-14 → 2014-08-16 (+63d) | 2014-07-06 → 2014-09-07 (+63d) | -6d → -57d |
| DUKHCONI1AZ2RWGL6020 | Laying of Road Base Asphalt Concrete | 2014-07-07 → 2014-09-08 (+63d) | 2014-07-12 → 2014-09-13 (+63d) | 39d → -12d |
| DUKHCONI1AZ2RWGL6025 | Laying of Asphalt Wearing Coarse | 2014-07-13 → 2014-09-14 (+63d) | 2014-07-17 → 2014-09-18 (+63d) | 54d → 3d |
| DUKHCONI1AZ2RWGL6030 | Traffic Signage & Road Marking | 2014-07-19 → 2014-09-20 (+63d) | 2014-07-23 → 2014-09-24 (+63d) | 54d → 3d |
| 60 | **PARKING SHED** | 2014-06-19 → 2014-08-21 (+63d) | 2014-08-19 → 2014-10-20 (+62d) |  |
| DUKHCONI1AZ2PSGL7000 | Excavation | 2014-06-19 → 2014-08-21 (+63d) | 2014-07-06 → 2014-09-07 (+63d) | 44d → -7d |
| DUKHCONI1AZ2PSGL7005 | Foundation casting | 2014-07-01 → 2014-09-02 (+63d) | 2014-07-17 → 2014-09-18 (+63d) | 39d → -12d |
| DUKHCONI1AZ2PSGL7010 | Column, Frame& Fabrics Erection | 2014-07-13 → 2014-09-14 (+63d) | 2014-08-13 → 2014-10-14 (+62d) | 39d → -12d |
| DUKHCONI1AZ2PSGL7015 | Electrical Works-Parking Shed | 2014-07-19 → 2014-09-20 (+63d) | 2014-08-19 → 2014-10-20 (+62d) | 39d → -12d |
| 65 | **HARD LANDSCAPING** | 2014-05-10 → 2014-07-08 (+59d) | 2014-08-13 → 2014-10-14 (+62d) |  |
| DUKHCONI1AZ2HDGL7020 | Precast Concrete Kerbs works | 2014-05-10 → 2014-07-08 (+59d) | 2014-06-01 → 2014-07-30 (+59d) | 23d → -28d |
| DUKHCONI1AZ2HDGL7025 | Interlocking for Walkways | 2014-05-21 → 2014-07-20 (+60d) | 2014-06-18 → 2014-08-20 (+63d) | 23d → -28d |
| DUKHCONI1AZ2HDGL7030 | Construction of Retaining wall | 2014-06-02 → 2014-07-31 (+59d) | 2014-06-30 → 2014-09-01 (+63d) | 23d → -28d |
| DUKHCONI1AZ2HDGL7035 | Construction of Wash Stone Boulders | 2014-06-02 → 2014-07-31 (+59d) | 2014-06-30 → 2014-09-01 (+63d) | 23d → -28d |
| DUKHCONI1AZ2HDGL7040 | Construction of Speed Humps | 2014-07-19 → 2014-09-20 (+63d) | 2014-08-13 → 2014-10-14 (+62d) | 73d → 22d |
| 70 | **SOFT LANDSCAPING** | 2014-06-14 → 2014-08-16 (+63d) | 2014-08-07 → 2014-10-06 (+60d) |  |
| DUKHCONI1AZ2SLGL7200 | Excavation | 2014-06-14 → 2014-08-16 (+63d) | 2014-07-12 → 2014-09-13 (+63d) | 23d → -28d |
| DUKHCONI1AZ2SLGL7205 | Sweet Soil Laying | 2014-06-25 → 2014-08-27 (+63d) | 2014-07-23 → 2014-09-24 (+63d) | 23d → -28d |

| ID | Task | Start | Finish | Total float |
| --- | --- | --- | --- | --- |
| DUKHCONI1AZ2SLGL7210 | Plantation works | 2014-07-07 → 2014-09-08 (+63d) | 2014-08-07 → 2014-10-06 (+60d) | 53d → 2d |
| 20 | **ZONE - 3** | 2014-01-25 → 2014-03-26 (+60d) | 2014-10-08 → 2014-12-09 (+62d) |  |
| 10 | **INFRASTRUCTURE WORKS** | 2014-01-25 → 2014-03-26 (+60d) | 2014-10-08 → 2014-12-09 (+62d) |  |
| 10 | **DRAINAGE LINES** | 2014-01-25 → 2014-03-26 (+60d) | 2014-03-16 → 2014-05-14 (+59d) |  |
| DUKHCONI1AZ3DRGL5115 | Excavation for Drainage line | 2014-01-25 → 2014-03-26 (+60d) | 2014-02-23 → 2014-04-23 (+59d) | -15d → -66d |
| DUKHCONI1AZ3DRGL5120 | Laying of Drainage line | 2014-02-01 → 2014-04-02 (+60d) | 2014-03-02 → 2014-04-30 (+59d) | -15d → -66d |
| DUKHCONI1AZ3DRGL5125 | Testing of Drainage line | 2014-02-09 → 2014-04-10 (+60d) | 2014-03-10 → 2014-05-08 (+59d) | -15d → -66d |
| DUKHCONI1AZ3DRGL5130 | Backfilling Drainage line | 2014-02-27 → 2014-04-28 (+60d) | 2014-03-16 → 2014-05-14 (+59d) | -15d → -66d |
| 15 | **MANHOLES & SOAKAWAY** | 2014-02-25 → 2014-04-26 (+60d) | 2014-05-17 → 2014-07-15 (+59d) |  |
| DUKHCONI1AZ3SAGL5140 | Construction of soakaways | 2014-02-25 → 2014-04-26 (+60d) | 2014-03-25 → 2014-05-24 (+60d) | -11d → -62d |
| DUKHCONI1AZ3SAGL5135 | Construction of manholes Drainage | 2014-02-27 → 2014-04-28 (+60d) | 2014-03-27 → 2014-05-26 (+60d) | 50d → -1d |
| DUKHCONI1AZ3SAGL5145 | Construction of Road gullies | 2014-03-26 → 2014-05-25 (+60d) | 2014-04-23 → 2014-06-22 (+60d) | -11d → -62d |
| DUKHCONI1AZ3SAGL5150 | Connection with existing sewer manhole | 2014-04-24 → 2014-06-23 (+60d) | 2014-05-17 → 2014-07-15 (+59d) | 27d → -24d |
| 20 | **WATER SUPPLY SYSTEM** | 2014-03-11 → 2014-05-10 (+60d) | 2014-05-25 → 2014-07-23 (+59d) |  |
| DUKHCONI1AZ3WSGL5155 | Excavation for water line | 2014-03-11 → 2014-05-10 (+60d) | 2014-04-08 → 2014-06-07 (+60d) | -13d → -64d |
| DUKHCONI1AZ3WSGL5160 | Laying of water line | 2014-03-17 → 2014-05-15 (+59d) | 2014-04-14 → 2014-06-12 (+59d) | -13d → -64d |
| DUKHCONI1AZ3WSGL5165 | Testing of potable water line | 2014-03-23 → 2014-05-21 (+59d) | 2014-04-20 → 2014-06-18 (+59d) | -13d → -64d |
| DUKHCONI1AZ3WSGL5170 | Backfilling potable water line | 2014-03-29 → 2014-05-27 (+59d) | 2014-04-26 → 2014-06-24 (+59d) | -13d → -64d |
| DUKHCONI1AZ3WSGL5175 | Construction of valve chambers & Thrust Blocks | 2014-04-03 → 2014-06-02 (+60d) | 2014-05-01 → 2014-06-30 (+60d) | 20d → -31d |
| DUKHCONI1AZ3WSGL5180 | Installation of meter ,Accessories & Connection | 2014-05-03 → 2014-07-01 (+59d) | 2014-05-25 → 2014-07-23 (+59d) | 20d → -31d |
| 25 | **FIREFIGHTING LINES** | 2014-04-03 → 2014-06-02 (+60d) | 2014-06-02 → 2014-07-31 (+59d) |  |
| DUKHCONI1AZ3FFGL5185 | Excavation for firefighting line | 2014-04-03 → 2014-06-02 (+60d) | 2014-05-01 → 2014-06-30 (+60d) | -13d → -64d |
| DUKHCONI1AZ3FFGL5190 | Laying of firefighting line | 2014-04-12 → 2014-06-10 (+59d) | 2014-05-10 → 2014-07-08 (+59d) | -13d → -64d |
| DUKHCONI1AZ3FFGL5195 | Testing of firefighting line | 2014-04-17 → 2014-06-16 (+60d) | 2014-05-15 → 2014-07-14 (+60d) | -13d → -64d |
| DUKHCONI1AZ3FFGL5200 | Backfilling firefighting line | 2014-04-23 → 2014-06-22 (+60d) | 2014-05-21 → 2014-07-20 (+60d) | -13d → -64d |
| DUKHCONI1AZ3FFGL5205 | Construction of valve chambers & Thrust Blocks | 2014-04-29 → 2014-06-28 (+60d) | 2014-05-27 → 2014-07-26 (+60d) | 13d → -38d |
| DUKHCONI1AZ3FFGL5210 | Connection with existing Firewater System | 2014-05-05 → 2014-07-03 (+59d) | 2014-06-02 → 2014-07-31 (+59d) | 13d → -38d |
| 30 | **ELECTRICAL LINES** | 2014-05-01 → 2014-06-30 (+60d) | 2014-06-24 → 2014-08-26 (+63d) |  |
| DUKHCONI1AZ3ELGL5215 | Excavation Cable Trenches & Duct Banks | 2014-05-01 → 2014-06-30 (+60d) | 2014-05-29 → 2014-07-28 (+60d) | -9d → -60d |
| DUKHCONI1AZ3ELGL5220 | Laying of electrical cables | 2014-05-07 → 2014-07-06 (+60d) | 2014-06-04 → 2014-08-06 (+63d) | -6d → -57d |
| DUKHCONI1AZ3ELGL5225 | Backfilling Electrical trench | 2014-05-15 → 2014-07-14 (+60d) | 2014-06-12 → 2014-08-14 (+63d) | -6d → -57d |
| DUKHCONI1AZ3ELGL5230 | Construction of Submain Board & Feeder Pillar | 2014-05-27 → 2014-07-26 (+60d) | 2014-06-24 → 2014-08-26 (+63d) | 53d → 2d |
| 35 | **STREET LIGHTING** | 2014-05-01 → 2014-06-30 (+60d) | 2014-07-23 → 2014-09-24 (+63d) |  |
| DUKHCONI1AZ3STGL5235 | Excavation for Street lighting | 2014-05-01 → 2014-06-30 (+60d) | 2014-05-29 → 2014-07-28 (+60d) | -9d → -60d |
| DUKHCONI1AZ3STGL5240 | Construction of Duct Banks | 2014-05-07 → 2014-07-06 (+60d) | 2014-06-04 → 2014-08-06 (+63d) | -9d → -60d |
| DUKHCONI1AZ3STGL5245 | Construction of Foundation | 2014-05-07 → 2014-07-06 (+60d) | 2014-06-04 → 2014-08-06 (+63d) | -9d → -60d |
| DUKHCONI1AZ3STGL5250 | Backfilling Street Lighting | 2014-05-13 → 2014-07-12 (+60d) | 2014-06-10 → 2014-08-12 (+63d) | -9d → -60d |
| DUKHCONI1AZ3STGL5255 | Installation of light Post | 2014-05-25 → 2014-07-23 (+59d) | 2014-06-22 → 2014-08-24 (+63d) | 55d → 4d |
| DUKHCONI1AZ3STGL5260 | Electrical Works | 2014-06-25 → 2014-08-27 (+63d) | 2014-07-23 → 2014-09-24 (+63d) | 53d → 2d |
| 40 | **IRRIGATION LINES** | 2014-06-14 → 2014-08-16 (+63d) | 2014-08-21 → 2014-10-22 (+62d) |  |
| DUKHCONI1AZ3IRGL5265 | Excavation for irrigation line | 2014-06-14 → 2014-08-16 (+63d) | 2014-07-12 → 2014-09-13 (+63d) | 16d → -35d |
| DUKHCONI1AZ3IRGL5270 | Laying of irrigationline | 2014-06-19 → 2014-08-21 (+63d) | 2014-07-17 → 2014-09-18 (+63d) | 16d → -35d |
| DUKHCONI1AZ3IRGL5275 | Testing of irrigation line | 2014-06-25 → 2014-08-27 (+63d) | 2014-07-23 → 2014-09-24 (+63d) | 16d → -35d |
| DUKHCONI1AZ3IRGL5280 | Backfilling irrigation line | 2014-07-01 → 2014-09-02 (+63d) | 2014-07-29 → 2014-09-30 (+63d) | 16d → -35d |
| DUKHCONI1AZ3IRGL5285 | Construction of Thrust Blocks,Pull boxes | 2014-07-13 → 2014-09-14 (+63d) | 2014-08-13 → 2014-10-14 (+62d) | 26d → -25d |
| DUKHCONI1AZ3IRGL5290 | Irrigation Fittings (Nozzle,Values) | 2014-07-21 → 2014-09-22 (+63d) | 2014-08-21 → 2014-10-22 (+62d) | 26d → -25d |
| 45 | **TELECOMMUNICATION LINES** | 2014-05-25 → 2014-07-23 (+59d) | 2014-07-09 → 2014-09-10 (+63d) |  |
| DUKHCONI1AZ3TCGL5295 | Excavation Telecommunication trenches | 2014-05-25 → 2014-07-23 (+59d) | 2014-06-16 → 2014-08-18 (+63d) | -9d → -60d |
| DUKHCONI1AZ3TCGL5300 | Laying of cables | 2014-05-31 → 2014-07-29 (+59d) | 2014-06-22 → 2014-08-24 (+63d) | -9d → -60d |
| DUKHCONI1AZ3TCGL5305 | Backfilling telecommunication trench | 2014-06-05 → 2014-08-07 (+63d) | 2014-06-28 → 2014-08-30 (+63d) | -9d → -60d |
| DUKHCONI1AZ3TCGL5310 | Connection & Installation | 2014-06-17 → 2014-08-19 (+63d) | 2014-07-09 → 2014-09-10 (+63d) | 50d → -1d |
| 50 | **BOUNDARY WALL** | 2014-05-25 → 2014-07-23 (+59d) | 2014-08-21 → 2014-10-22 (+62d) |  |
| DUKHCONI1AZ3BWGL5315 | Construction of Boundary Wall (Ht-3m) | 2014-05-25 → 2014-07-23 (+59d) | 2014-06-22 → 2014-08-24 (+63d) | 46d → -5d |
| DUKHCONI1AZ3BWGL5320 | Install.Steel Gate,Entance Barrier (3m Wall) | 2014-06-10 → 2014-08-12 (+63d) | 2014-07-08 → 2014-09-09 (+63d) | 46d → -5d |
| DUKHCONI1AZ3BWGL5325 | Const. of Villa Front Boundary Wall (Ht-2m) | 2014-07-09 → 2014-09-10 (+63d) | 2014-08-10 → 2014-10-08 (+59d) | 46d → -5d |
| DUKHCONI1AZ3BWGL5330 | Const. of Blockwork fence Wall (Ht-1.85m) | 2014-07-21 → 2014-09-22 (+63d) | 2014-08-21 → 2014-10-22 (+62d) | 57d → 6d |
| 55 | **ROAD WORKS** | 2014-06-29 → 2014-08-31 (+63d) | 2014-09-15 → 2014-11-16 (+62d) |  |
| DUKHCONI1AZ3RWGL6000 | Excavation & Earth Filling | 2014-06-29 → 2014-08-31 (+63d) | 2014-07-09 → 2014-09-10 (+63d) | -9d → -60d |
| DUKHCONI1AZ3RWGL6005 | Laying of Sub Grade | 2014-07-10 → 2014-09-11 (+63d) | 2014-08-11 → 2014-10-12 (+62d) | -9d → -60d |
| DUKHCONI1AZ3RWGL6010 | Laying of Precast Kerbs | 2014-07-22 → 2014-09-23 (+63d) | 2014-08-23 → 2014-10-23 (+61d) | -9d → -60d |
| DUKHCONI1AZ3RWGL6015 | Laying of Granular Sub Base Coarse | 2014-08-06 → 2014-10-05 (+60d) | 2014-08-28 → 2014-10-29 (+62d) | -9d → -60d |
| DUKHCONI1AZ3RWGL6020 | Laying of Road Base Asphalt Concrete | 2014-08-30 → 2014-10-30 (+61d) | 2014-09-03 → 2014-11-04 (+62d) | 21d → -30d |
| DUKHCONI1AZ3RWGL6025 | Laying of Asphalt Wearing Coarse | 2014-09-04 → 2014-11-05 (+62d) | 2014-09-09 → 2014-11-10 (+62d) | 36d → -15d |
| DUKHCONI1AZ3RWGL6030 | Traffic Signage & Road Marking | 2014-09-10 → 2014-11-11 (+62d) | 2014-09-15 → 2014-11-16 (+62d) | 36d → -15d |
| 60 | **PARKING SHED** | 2014-08-12 → 2014-10-13 (+62d) | 2014-10-08 → 2014-12-09 (+62d) |  |
| DUKHCONI1AZ3PSGL7000 | Excavation | 2014-08-12 → 2014-10-13 (+62d) | 2014-08-28 → 2014-10-29 (+62d) | 26d → -25d |
| DUKHCONI1AZ3PSGL7005 | Foundation casting | 2014-08-24 → 2014-10-25 (+62d) | 2014-09-09 → 2014-11-10 (+62d) | 21d → -30d |
| DUKHCONI1AZ3PSGL7010 | Column, Frame& Fabrics Erection | 2014-09-04 → 2014-11-05 (+62d) | 2014-10-02 → 2014-12-03 (+62d) | 21d → -30d |
| DUKHCONI1AZ3PSGL7015 | Electrical Works-Parking Shed | 2014-09-10 → 2014-11-11 (+62d) | 2014-10-08 → 2014-12-09 (+62d) | 21d → -30d |
| 65 | **HARD LANDSCAPING** | 2014-06-29 → 2014-08-31 (+63d) | 2014-09-21 → 2014-11-22 (+62d) |  |

| ID | Task | Start | Finish | Total float |
| --- | --- | --- | --- | --- |
| DUKHCONI1AZ3HDGL7020 | Precast Concrete Kerbs works | 2014-06-29 → 2014-08-31 (+63d) | 2014-07-21 → 2014-09-22 (+63d) | 15d → -36d |
| DUKHCONI1AZ3HDGL7025 | Interlocking for Walkways | 2014-07-10 → 2014-09-11 (+63d) | 2014-08-11 → 2014-10-12 (+62d) | 15d → -36d |
| DUKHCONI1AZ3HDGL7030 | Construction of Retaining wall | 2014-07-22 → 2014-09-23 (+63d) | 2014-08-23 → 2014-10-23 (+61d) | 15d → -36d |
| DUKHCONI1AZ3HDGL7035 | Construction of Wash Stone Boulders | 2014-07-22 → 2014-09-23 (+63d) | 2014-08-23 → 2014-10-23 (+61d) | 15d → -36d |
| DUKHCONI1AZ3HDGL7040 | Construction of Speed Humps | 2014-09-10 → 2014-11-11 (+62d) | 2014-09-21 → 2014-11-22 (+62d) | 50d → -1d |
| 70 | **SOFT LANDSCAPING** | 2014-08-06 → 2014-10-05 (+60d) | 2014-09-27 → 2014-11-27 (+61d) |  |
| DUKHCONI1AZ3SLGL7200 | Excavation | 2014-08-06 → 2014-10-05 (+60d) | 2014-09-03 → 2014-11-04 (+62d) | 15d → -36d |
| DUKHCONI1AZ3SLGL7205 | Sweet Soil Laying | 2014-08-18 → 2014-10-19 (+62d) | 2014-09-15 → 2014-11-16 (+62d) | 15d → -36d |
| DUKHCONI1AZ3SLGL7210 | Plantation works | 2014-08-30 → 2014-10-30 (+61d) | 2014-09-27 → 2014-11-27 (+61d) | 35d → -16d |
| 25 | **ZONE - 4** | 2014-03-17 → 2014-05-15 (+59d) | 2014-11-30 → 2015-01-29 (+60d) |  |
| 10 | **INFRASTRUCTURE WORKS** | 2014-03-17 → 2014-05-15 (+59d) | 2014-11-30 → 2015-01-29 (+60d) |  |
| 10 | **DRAINAGE LINES** | 2014-03-17 → 2014-05-15 (+59d) | 2014-05-05 → 2014-07-03 (+59d) |  |
| DUKHCONI1AZ4DRGL5115 | Excavation for Drainage line | 2014-03-17 → 2014-05-15 (+59d) | 2014-04-14 → 2014-06-12 (+59d) | -15d → -66d |
| DUKHCONI1AZ4DRGL5120 | Laying of Drainage line | 2014-03-24 → 2014-05-22 (+59d) | 2014-04-21 → 2014-06-19 (+59d) | -15d → -66d |
| DUKHCONI1AZ4DRGL5125 | Testing of Drainage line | 2014-04-01 → 2014-05-31 (+60d) | 2014-04-29 → 2014-06-28 (+60d) | -15d → -66d |
| DUKHCONI1AZ4DRGL5130 | Backfilling Drainage line | 2014-04-19 → 2014-06-17 (+59d) | 2014-05-05 → 2014-07-03 (+59d) | -15d → -66d |
| 15 | **MANHOLES & SOAKAWAY** | 2014-04-16 → 2014-06-15 (+60d) | 2014-07-06 → 2014-09-07 (+63d) |  |
| DUKHCONI1AZ4SAGL5140 | Construction of soakaways | 2014-04-16 → 2014-06-15 (+60d) | 2014-05-14 → 2014-07-13 (+60d) | -12d → -63d |
| DUKHCONI1AZ4SAGL5135 | Construction of manholes Drainage | 2014-04-19 → 2014-06-17 (+59d) | 2014-05-17 → 2014-07-15 (+59d) | 47d → -4d |
| DUKHCONI1AZ4SAGL5145 | Construction of Road gullies | 2014-05-15 → 2014-07-14 (+60d) | 2014-06-12 → 2014-08-14 (+63d) | -12d → -63d |
| DUKHCONI1AZ4SAGL5150 | Connection with existing sewer manhole | 2014-06-14 → 2014-08-16 (+63d) | 2014-07-06 → 2014-09-07 (+63d) | 24d → -27d |
| 20 | **WATER SUPPLY SYSTEM** | 2014-04-30 → 2014-06-29 (+60d) | 2014-07-14 → 2014-09-15 (+63d) |  |
| DUKHCONI1AZ4WSGL5155 | Excavation for water line | 2014-04-30 → 2014-06-29 (+60d) | 2014-05-28 → 2014-07-27 (+60d) | -14d → -65d |
| DUKHCONI1AZ4WSGL5160 | Laying of water line | 2014-05-06 → 2014-07-05 (+60d) | 2014-06-03 → 2014-08-05 (+63d) | -14d → -65d |
| DUKHCONI1AZ4WSGL5165 | Testing of potable water line | 2014-05-12 → 2014-07-10 (+59d) | 2014-06-09 → 2014-08-11 (+63d) | -14d → -65d |
| DUKHCONI1AZ4WSGL5170 | Backfilling potable water line | 2014-05-18 → 2014-07-16 (+59d) | 2014-06-15 → 2014-08-17 (+63d) | -14d → -65d |
| DUKHCONI1AZ4WSGL5175 | Construction of valve chambers & Thrust Blocks | 2014-05-24 → 2014-07-22 (+59d) | 2014-06-21 → 2014-08-23 (+63d) | 17d → -34d |
| DUKHCONI1AZ4WSGL5180 | Installation of meter ,Accessories & Connection | 2014-06-22 → 2014-08-24 (+63d) | 2014-07-14 → 2014-09-15 (+63d) | 17d → -34d |
| 25 | **FIREFIGHTING LINES** | 2014-05-24 → 2014-07-22 (+59d) | 2014-07-22 → 2014-09-23 (+63d) |  |
| DUKHCONI1AZ4FFGL5185 | Excavation for firefighting line | 2014-05-24 → 2014-07-22 (+59d) | 2014-06-21 → 2014-08-23 (+63d) | -14d → -65d |
| DUKHCONI1AZ4FFGL5190 | Laying of firefighting line | 2014-06-01 → 2014-07-30 (+59d) | 2014-06-29 → 2014-08-31 (+63d) | -14d → -65d |
| DUKHCONI1AZ4FFGL5195 | Testing of firefighting line | 2014-06-07 → 2014-08-09 (+63d) | 2014-07-05 → 2014-09-06 (+63d) | -14d → -65d |
| DUKHCONI1AZ4FFGL5200 | Backfilling firefighting line | 2014-06-12 → 2014-08-14 (+63d) | 2014-07-10 → 2014-09-11 (+63d) | -14d → -65d |
| DUKHCONI1AZ4FFGL5205 | Construction of valve chambers & Thrust Blocks | 2014-06-18 → 2014-08-20 (+63d) | 2014-07-16 → 2014-09-17 (+63d) | 10d → -41d |
| DUKHCONI1AZ4FFGL5210 | Connection with existing Firewater System | 2014-06-24 → 2014-08-26 (+63d) | 2014-07-22 → 2014-09-23 (+63d) | 10d → -41d |
| 30 | **ELECTRICAL LINES** | 2014-06-21 → 2014-08-23 (+63d) | 2014-08-17 → 2014-10-18 (+62d) |  |
| DUKHCONI1AZ4ELGL5215 | Excavation Cable Trenches & Duct Banks | 2014-06-21 → 2014-08-23 (+63d) | 2014-07-19 → 2014-09-20 (+63d) | -12d → -63d |
| DUKHCONI1AZ4ELGL5220 | Laying of electrical cables | 2014-06-26 → 2014-08-28 (+63d) | 2014-07-24 → 2014-09-25 (+63d) | -9d → -60d |
| DUKHCONI1AZ4ELGL5225 | Backfilling Electrical trench | 2014-07-05 → 2014-09-06 (+63d) | 2014-08-05 → 2014-10-04 (+60d) | -9d → -60d |
| DUKHCONI1AZ4ELGL5230 | Construction of Submain Board & Feeder Pillar | 2014-07-16 → 2014-09-17 (+63d) | 2014-08-17 → 2014-10-18 (+62d) | 35d → -16d |
| 35 | **STREET LIGHTING** | 2014-06-21 → 2014-08-23 (+63d) | 2014-09-15 → 2014-11-16 (+62d) |  |
| DUKHCONI1AZ4STGL5235 | Excavation for Street lighting | 2014-06-21 → 2014-08-23 (+63d) | 2014-07-19 → 2014-09-20 (+63d) | -12d → -63d |
| DUKHCONI1AZ4STGL5240 | Construction of Duct Banks | 2014-06-26 → 2014-08-28 (+63d) | 2014-07-24 → 2014-09-25 (+63d) | -12d → -63d |
| DUKHCONI1AZ4STGL5245 | Construction of Foundation | 2014-06-26 → 2014-08-28 (+63d) | 2014-07-24 → 2014-09-25 (+63d) | -12d → -63d |
| DUKHCONI1AZ4STGL5250 | Backfilling Street Lighting | 2014-07-02 → 2014-09-03 (+63d) | 2014-07-30 → 2014-10-01 (+63d) | -12d → -63d |
| DUKHCONI1AZ4STGL5255 | Installation of light Post | 2014-07-14 → 2014-09-15 (+63d) | 2014-08-14 → 2014-10-15 (+62d) | 52d → 1d |
| DUKHCONI1AZ4STGL5260 | Electrical Works | 2014-08-18 → 2014-10-19 (+62d) | 2014-09-15 → 2014-11-16 (+62d) | 35d → -16d |
| 40 | **IRRIGATION LINES** | 2014-08-06 → 2014-10-05 (+60d) | 2014-10-13 → 2014-12-11 (+59d) |  |
| DUKHCONI1AZ4IRGL5265 | Excavation for irrigation line | 2014-08-06 → 2014-10-05 (+60d) | 2014-09-03 → 2014-11-04 (+62d) | 13d → -38d |
| DUKHCONI1AZ4IRGL5270 | Laying of irrigationline | 2014-08-12 → 2014-10-13 (+62d) | 2014-09-09 → 2014-11-10 (+62d) | 13d → -38d |
| DUKHCONI1AZ4IRGL5275 | Testing of irrigation line | 2014-08-18 → 2014-10-19 (+62d) | 2014-09-15 → 2014-11-16 (+62d) | 13d → -38d |
| DUKHCONI1AZ4IRGL5280 | Backfilling irrigation line | 2014-08-24 → 2014-10-25 (+62d) | 2014-09-21 → 2014-11-22 (+62d) | 13d → -38d |
| DUKHCONI1AZ4IRGL5285 | Construction of Thrust Blocks,Pull boxes | 2014-09-04 → 2014-11-05 (+62d) | 2014-10-02 → 2014-12-03 (+62d) | 18d → -33d |
| DUKHCONI1AZ4IRGL5290 | Irrigation Fittings (Nozzle,Values) | 2014-09-13 → 2014-11-13 (+61d) | 2014-10-13 → 2014-12-11 (+59d) | 18d → -33d |
| 45 | **TELECOMMUNICATION LINES** | 2014-07-14 → 2014-09-15 (+63d) | 2014-09-01 → 2014-11-02 (+62d) |  |
| DUKHCONI1AZ4TCGL5295 | Excavation Telecommunication trenches | 2014-07-14 → 2014-09-15 (+63d) | 2014-08-09 → 2014-10-07 (+59d) | -12d → -63d |
| DUKHCONI1AZ4TCGL5300 | Laying of cables | 2014-07-20 → 2014-09-21 (+63d) | 2014-08-14 → 2014-10-15 (+62d) | -12d → -63d |
| DUKHCONI1AZ4TCGL5305 | Backfilling telecommunication trench | 2014-07-26 → 2014-09-27 (+63d) | 2014-08-20 → 2014-10-21 (+62d) | -12d → -63d |
| DUKHCONI1AZ4TCGL5310 | Connection & Installation | 2014-08-10 → 2014-10-08 (+59d) | 2014-09-01 → 2014-11-02 (+62d) | 27d → -24d |
| 50 | **BOUNDARY WALL** | 2014-07-14 → 2014-09-15 (+63d) | 2014-10-13 → 2014-12-11 (+59d) |  |
| DUKHCONI1AZ4BWGL5315 | Construction of Boundary Wall (Ht-3m) | 2014-07-14 → 2014-09-15 (+63d) | 2014-08-14 → 2014-10-15 (+62d) | 28d → -23d |
| DUKHCONI1AZ4BWGL5320 | Install.Steel Gate,Entance Barrier (3m Wall) | 2014-07-30 → 2014-10-01 (+63d) | 2014-08-31 → 2014-11-01 (+62d) | 28d → -23d |
| DUKHCONI1AZ4BWGL5325 | Const. of Villa Front Boundary Wall (Ht-2m) | 2014-09-01 → 2014-11-02 (+62d) | 2014-09-29 → 2014-11-30 (+62d) | 28d → -23d |
| DUKHCONI1AZ4BWGL5330 | Const. of Blockwork fence Wall (Ht-1.85m) | 2014-09-13 → 2014-11-13 (+61d) | 2014-10-13 → 2014-12-11 (+59d) | 39d → -12d |
| 55 | **ROAD WORKS** | 2014-08-21 → 2014-10-22 (+62d) | 2014-11-06 → 2015-01-06 (+61d) |  |
| DUKHCONI1AZ4RWGL6000 | Excavation & Earth Filling | 2014-08-21 → 2014-10-22 (+62d) | 2014-09-01 → 2014-11-02 (+62d) | -12d → -63d |
| DUKHCONI1AZ4RWGL6005 | Laying of Sub Grade | 2014-09-02 → 2014-11-03 (+62d) | 2014-09-30 → 2014-12-01 (+62d) | -12d → -63d |
| DUKHCONI1AZ4RWGL6010 | Laying of Precast Kerbs | 2014-09-14 → 2014-11-15 (+62d) | 2014-10-14 → 2014-12-13 (+60d) | -12d → -63d |
| DUKHCONI1AZ4RWGL6015 | Laying of Granular Sub Base Coarse | 2014-09-25 → 2014-11-26 (+62d) | 2014-10-20 → 2014-12-20 (+61d) | -12d → -63d |
| DUKHCONI1AZ4RWGL6020 | Laying of Road Base Asphalt Concrete | 2014-10-21 → 2014-12-21 (+61d) | 2014-10-26 → 2014-12-25 (+60d) | 3d → -48d |

| ID | Task | Start | Finish | Total float |
| --- | --- | --- | --- | --- |
| DUKHCONI1AZ4RWGL6025 | Laying of Asphalt Wearing Coarse | 2014-10-27 → 2014-12-27 (+61d) | 2014-11-01 → 2014-12-31 (+60d) | 17d → -34d |
| DUKHCONI1AZ4RWGL6030 | Traffic Signage & Road Marking | 2014-11-02 → 2015-01-01 (+60d) | 2014-11-06 → 2015-01-06 (+61d) | 18d → -33d |
| 60 | **PARKING SHED** | 2014-10-01 → 2014-12-02 (+62d) | 2014-11-30 → 2015-01-29 (+60d) |  |
| DUKHCONI1AZ4PSGL7000 | Excavation | 2014-10-01 → 2014-12-02 (+62d) | 2014-10-20 → 2014-12-20 (+61d) | 8d → -43d |
| DUKHCONI1AZ4PSGL7005 | Foundation casting | 2014-10-15 → 2014-12-14 (+60d) | 2014-11-01 → 2014-12-31 (+60d) | 3d → -48d |
| DUKHCONI1AZ4PSGL7010 | Column, Frame& Fabrics Erection | 2014-10-27 → 2014-12-27 (+61d) | 2014-11-24 → 2015-01-24 (+61d) | 3d → -48d |
| DUKHCONI1AZ4PSGL7015 | Electrical Works-Parking Shed | 2014-11-02 → 2015-01-01 (+60d) | 2014-11-30 → 2015-01-29 (+60d) | 3d → -48d |
| 65 | **HARD LANDSCAPING** | 2014-08-21 → 2014-10-22 (+62d) | 2014-11-12 → 2015-01-12 (+61d) |  |
| DUKHCONI1AZ4HDGL7020 | Precast Concrete Kerbs works | 2014-08-21 → 2014-10-22 (+62d) | 2014-09-13 → 2014-11-13 (+61d) | 7d → -44d |
| DUKHCONI1AZ4HDGL7025 | Interlocking for Walkways | 2014-09-02 → 2014-11-03 (+62d) | 2014-09-30 → 2014-12-01 (+62d) | 7d → -44d |
| DUKHCONI1AZ4HDGL7030 | Construction of Retaining wall | 2014-09-14 → 2014-11-15 (+62d) | 2014-10-14 → 2014-12-13 (+60d) | 7d → -44d |
| DUKHCONI1AZ4HDGL7035 | Construction of Wash Stone Boulders | 2014-09-14 → 2014-11-15 (+62d) | 2014-10-14 → 2014-12-13 (+60d) | 7d → -44d |
| DUKHCONI1AZ4HDGL7040 | Construction of Speed Humps | 2014-11-02 → 2015-01-01 (+60d) | 2014-11-12 → 2015-01-12 (+61d) | 17d → -34d |
| 70 | **SOFT LANDSCAPING** | 2014-09-25 → 2014-11-26 (+62d) | 2014-11-18 → 2015-01-18 (+61d) |  |
| DUKHCONI1AZ4SLGL7200 | Excavation | 2014-09-25 → 2014-11-26 (+62d) | 2014-10-26 → 2014-12-25 (+60d) | 7d → -44d |
| DUKHCONI1AZ4SLGL7205 | Sweet Soil Laying | 2014-10-07 → 2014-12-08 (+62d) | 2014-11-06 → 2015-01-06 (+61d) | 7d → -44d |
| DUKHCONI1AZ4SLGL7210 | Plantation works | 2014-10-21 → 2014-12-21 (+61d) | 2014-11-18 → 2015-01-18 (+61d) | 17d → -34d |
| 30 | **ZONE - 5** | 2014-05-06 → 2014-07-05 (+60d) | 2015-01-19 → 2015-03-21 (+61d) |  |
| 10 | **INFRASTRUCTURE WORKS** | 2014-05-06 → 2014-07-05 (+60d) | 2015-01-19 → 2015-03-21 (+61d) |  |
| 10 | **DRAINAGE LINES** | 2014-05-06 → 2014-07-05 (+60d) | 2014-06-24 → 2014-08-26 (+63d) |  |
| DUKHCONI1AZ5DRGL5115 | Excavation for Drainage line | 2014-05-06 → 2014-07-05 (+60d) | 2014-06-03 → 2014-08-05 (+63d) | -15d → -66d |
| DUKHCONI1AZ5DRGL5120 | Laying of Drainage line | 2014-05-13 → 2014-07-12 (+60d) | 2014-06-10 → 2014-08-12 (+63d) | -15d → -66d |
| DUKHCONI1AZ5DRGL5125 | Testing of Drainage line | 2014-05-21 → 2014-07-20 (+60d) | 2014-06-18 → 2014-08-20 (+63d) | -15d → -66d |
| DUKHCONI1AZ5DRGL5130 | Backfilling Drainage line | 2014-06-08 → 2014-08-10 (+63d) | 2014-06-24 → 2014-08-26 (+63d) | -15d → -66d |
| 15 | **MANHOLES & SOAKAWAY** | 2014-06-05 → 2014-08-07 (+63d) | 2014-08-28 → 2014-10-29 (+62d) |  |
| DUKHCONI1AZ5SAGL5140 | Construction of soakaways | 2014-06-05 → 2014-08-07 (+63d) | 2014-07-03 → 2014-09-04 (+63d) | -13d → -64d |
| DUKHCONI1AZ5SAGL5135 | Construction of manholes Drainage | 2014-06-08 → 2014-08-10 (+63d) | 2014-07-06 → 2014-09-07 (+63d) | 44d → -7d |
| DUKHCONI1AZ5SAGL5145 | Construction of Road gullies | 2014-07-05 → 2014-09-06 (+63d) | 2014-08-05 → 2014-10-04 (+60d) | -13d → -64d |
| DUKHCONI1AZ5SAGL5150 | Connection with existing sewer manhole | 2014-08-06 → 2014-10-05 (+60d) | 2014-08-28 → 2014-10-29 (+62d) | 21d → -30d |
| 20 | **WATER SUPPLY SYSTEM** | 2014-06-19 → 2014-08-21 (+63d) | 2014-09-06 → 2014-11-06 (+61d) |  |
| DUKHCONI1AZ5WSGL5155 | Excavation for water line | 2014-06-19 → 2014-08-21 (+63d) | 2014-07-17 → 2014-09-18 (+63d) | -15d → -66d |
| DUKHCONI1AZ5WSGL5160 | Laying of water line | 2014-06-25 → 2014-08-27 (+63d) | 2014-07-23 → 2014-09-24 (+63d) | -15d → -66d |
| DUKHCONI1AZ5WSGL5165 | Testing of potable water line | 2014-07-01 → 2014-09-02 (+63d) | 2014-07-29 → 2014-09-30 (+63d) | -15d → -66d |
| DUKHCONI1AZ5WSGL5170 | Backfilling potable water line | 2014-07-07 → 2014-09-08 (+63d) | 2014-08-07 → 2014-10-06 (+60d) | -15d → -66d |
| DUKHCONI1AZ5WSGL5175 | Construction of valve chambers & Thrust Blocks | 2014-07-13 → 2014-09-14 (+63d) | 2014-08-13 → 2014-10-14 (+62d) | 14d → -37d |
| DUKHCONI1AZ5WSGL5180 | Installation of meter ,Accessories & Connection | 2014-08-14 → 2014-10-15 (+62d) | 2014-09-06 → 2014-11-06 (+61d) | 14d → -37d |
| 25 | **FIREFIGHTING LINES** | 2014-07-13 → 2014-09-14 (+63d) | 2014-09-14 → 2014-11-15 (+62d) |  |
| DUKHCONI1AZ5FFGL5185 | Excavation for firefighting line | 2014-07-13 → 2014-09-14 (+63d) | 2014-08-13 → 2014-10-14 (+62d) | -15d → -66d |
| DUKHCONI1AZ5FFGL5190 | Laying of firefighting line | 2014-07-21 → 2014-09-22 (+63d) | 2014-08-21 → 2014-10-22 (+62d) | -15d → -66d |
| DUKHCONI1AZ5FFGL5195 | Testing of firefighting line | 2014-07-27 → 2014-09-28 (+63d) | 2014-08-27 → 2014-10-28 (+62d) | -15d → -66d |
| DUKHCONI1AZ5FFGL5200 | Backfilling firefighting line | 2014-08-05 → 2014-10-04 (+60d) | 2014-09-02 → 2014-11-03 (+62d) | -15d → -66d |
| DUKHCONI1AZ5FFGL5205 | Construction of valve chambers & Thrust Blocks | 2014-08-11 → 2014-10-12 (+62d) | 2014-09-08 → 2014-11-09 (+62d) | 7d → -44d |
| DUKHCONI1AZ5FFGL5210 | Connection with existing Firewater System | 2014-08-17 → 2014-10-18 (+62d) | 2014-09-14 → 2014-11-15 (+62d) | 7d → -44d |
| 30 | **ELECTRICAL LINES** | 2014-08-13 → 2014-10-14 (+62d) | 2014-10-06 → 2014-12-07 (+62d) |  |
| DUKHCONI1AZ5ELGL5215 | Excavation Cable Trenches & Duct Banks | 2014-08-13 → 2014-10-14 (+62d) | 2014-09-10 → 2014-11-11 (+62d) | -15d → -66d |
| DUKHCONI1AZ5ELGL5220 | Laying of electrical cables | 2014-08-19 → 2014-10-20 (+62d) | 2014-09-16 → 2014-11-17 (+62d) | -2d → -53d |
| DUKHCONI1AZ5ELGL5225 | Backfilling Electrical trench | 2014-08-27 → 2014-10-28 (+62d) | 2014-09-24 → 2014-11-25 (+62d) | -2d → -53d |
| DUKHCONI1AZ5ELGL5230 | Construction of Submain Board & Feeder Pillar | 2014-09-08 → 2014-11-09 (+62d) | 2014-10-06 → 2014-12-07 (+62d) | 17d → -34d |
| 35 | **STREET LIGHTING** | 2014-08-13 → 2014-10-14 (+62d) | 2014-11-06 → 2015-01-06 (+61d) |  |
| DUKHCONI1AZ5STGL5235 | Excavation for Street lighting | 2014-08-13 → 2014-10-14 (+62d) | 2014-09-10 → 2014-11-11 (+62d) | -15d → -66d |
| DUKHCONI1AZ5STGL5240 | Construction of Duct Banks | 2014-08-19 → 2014-10-20 (+62d) | 2014-09-16 → 2014-11-17 (+62d) | -15d → -66d |
| DUKHCONI1AZ5STGL5245 | Construction of Foundation | 2014-08-19 → 2014-10-20 (+62d) | 2014-09-16 → 2014-11-17 (+62d) | -15d → -66d |
| DUKHCONI1AZ5STGL5250 | Backfilling Street Lighting | 2014-08-25 → 2014-10-26 (+62d) | 2014-09-22 → 2014-11-23 (+62d) | -15d → -66d |
| DUKHCONI1AZ5STGL5255 | Installation of light Post | 2014-09-06 → 2014-11-06 (+61d) | 2014-10-04 → 2014-12-04 (+61d) | 34d → -17d |
| DUKHCONI1AZ5STGL5260 | Electrical Works | 2014-10-07 → 2014-12-08 (+62d) | 2014-11-06 → 2015-01-06 (+61d) | 17d → -34d |
| 40 | **IRRIGATION LINES** | 2014-09-25 → 2014-11-26 (+62d) | 2014-12-02 → 2015-02-01 (+61d) |  |
| DUKHCONI1AZ5IRGL5265 | Excavation for irrigation line | 2014-09-25 → 2014-11-26 (+62d) | 2014-10-26 → 2014-12-25 (+60d) | 10d → -41d |
| DUKHCONI1AZ5IRGL5270 | Laying of irrigationline | 2014-10-01 → 2014-12-02 (+62d) | 2014-11-01 → 2014-12-31 (+60d) | 10d → -41d |
| DUKHCONI1AZ5IRGL5275 | Testing of irrigation line | 2014-10-07 → 2014-12-08 (+62d) | 2014-11-06 → 2015-01-06 (+61d) | 10d → -41d |
| DUKHCONI1AZ5IRGL5280 | Backfilling irrigation line | 2014-10-15 → 2014-12-14 (+60d) | 2014-11-12 → 2015-01-12 (+61d) | 10d → -41d |
| DUKHCONI1AZ5IRGL5285 | Construction of Thrust Blocks,Pull boxes | 2014-10-27 → 2014-12-27 (+61d) | 2014-11-24 → 2015-01-24 (+61d) | 10d → -41d |
| DUKHCONI1AZ5IRGL5290 | Irrigation Fittings (Nozzle,Values) | 2014-11-04 → 2015-01-04 (+61d) | 2014-12-02 → 2015-02-01 (+61d) | 10d → -41d |
| 45 | **TELECOMMUNICATION LINES** | 2014-09-06 → 2014-11-06 (+61d) | 2014-10-23 → 2014-12-23 (+61d) |  |
| DUKHCONI1AZ5TCGL5295 | Excavation Telecommunication trenches | 2014-09-06 → 2014-11-06 (+61d) | 2014-09-28 → 2014-11-29 (+62d) | -15d → -66d |
| DUKHCONI1AZ5TCGL5300 | Laying of cables | 2014-09-11 → 2014-11-12 (+62d) | 2014-10-04 → 2014-12-04 (+61d) | -15d → -66d |
| DUKHCONI1AZ5TCGL5305 | Backfilling telecommunication trench | 2014-09-17 → 2014-11-18 (+62d) | 2014-10-12 → 2014-12-10 (+59d) | -15d → -66d |
| DUKHCONI1AZ5TCGL5310 | Connection & Installation | 2014-09-29 → 2014-11-30 (+62d) | 2014-10-23 → 2014-12-23 (+61d) | 4d → -47d |
| 50 | **BOUNDARY WALL** | 2014-09-06 → 2014-11-06 (+61d) | 2014-12-02 → 2015-02-01 (+61d) |  |
| DUKHCONI1AZ5BWGL5315 | Construction of Boundary Wall (Ht-3m) | 2014-09-06 → 2014-11-06 (+61d) | 2014-10-04 → 2014-12-04 (+61d) | 10d → -41d |
| DUKHCONI1AZ5BWGL5320 | Install.Steel Gate,Entance Barrier (3m Wall) | 2014-09-22 → 2014-11-23 (+62d) | 2014-10-22 → 2014-12-22 (+61d) | 10d → -41d |

| ID | Task | Start | Finish | Total float | Other |
| --- | --- | --- | --- | --- | --- |
| DUKHCONI1AZ5BWGL5325 | Const. of Villa Front Boundary Wall (Ht-2m) | 2014-10-23 → 2014-12-23 (+61d) | 2014-11-20 → 2015-01-20 (+61d) | 10d → -41d |  |
| DUKHCONI1AZ5BWGL5330 | Const. of Blockwork fence Wall (Ht-1.85m) | 2014-11-04 → 2015-01-04 (+61d) | 2014-12-02 → 2015-02-01 (+61d) | 21d → -30d |  |
| 55 | **ROAD WORKS** | 2014-10-13 → 2014-12-11 (+59d) | 2014-12-27 → 2015-02-25 (+60d) |  |  |
| DUKHCONI1AZ5RWGL6000 | Excavation & Earth Filling | 2014-10-13 → 2014-12-11 (+59d) | 2014-10-23 → 2014-12-23 (+61d) | -15d → -66d |  |
| DUKHCONI1AZ5RWGL6005 | Laying of Sub Grade | 2014-10-25 → 2014-12-24 (+60d) | 2014-11-22 → 2015-01-21 (+60d) | -15d → -66d |  |
| DUKHCONI1AZ5RWGL6010 | Laying of Precast Kerbs | 2014-11-05 → 2015-01-05 (+61d) | 2014-12-03 → 2015-02-02 (+61d) | -15d → -66d |  |
| DUKHCONI1AZ5RWGL6015 | Laying of Granular Sub Base Coarse | 2014-11-16 → 2015-01-15 (+60d) | 2014-12-08 → 2015-02-07 (+61d) | -15d → -66d |  |
| DUKHCONI1AZ5RWGL6020 | Laying of Road Base Asphalt Concrete | 2014-12-09 → 2015-02-08 (+61d) | 2014-12-14 → 2015-02-14 (+62d) | -15d → -66d |  |
| DUKHCONI1AZ5RWGL6025 | Laying of Asphalt Wearing Coarse | 2014-12-15 → 2015-02-15 (+62d) | 2014-12-21 → 2015-02-19 (+60d) | -15d → -66d |  |
| DUKHCONI1AZ5RWGL6030 | Traffic Signage & Road Marking | 2014-12-22 → 2015-02-21 (+61d) | 2014-12-27 → 2015-02-25 (+60d) | 1d → -50d |  |
| 60 | **PARKING SHED** | 2014-11-22 → 2015-01-21 (+60d) | 2015-01-19 → 2015-03-21 (+61d) |  |  |
| DUKHCONI1AZ5PSGL7000 | Excavation | 2014-11-22 → 2015-01-21 (+60d) | 2014-12-08 → 2015-02-07 (+61d) | -9d → -60d |  |
| DUKHCONI1AZ5PSGL7005 | Foundation casting | 2014-12-03 → 2015-02-02 (+61d) | 2014-12-21 → 2015-02-19 (+60d) | -14d → -65d |  |
| DUKHCONI1AZ5PSGL7010 | Column, Frame& Fabrics Erection | 2014-12-15 → 2015-02-15 (+62d) | 2015-01-13 → 2015-03-15 (+61d) | -14d → -65d |  |
| DUKHCONI1AZ5PSGL7015 | Electrical Works-Parking Shed | 2014-12-22 → 2015-02-21 (+61d) | 2015-01-19 → 2015-03-21 (+61d) | -14d → -65d |  |
| 65 | **HARD LANDSCAPING** | 2014-10-13 → 2014-12-11 (+59d) | 2015-01-01 → 2015-03-03 (+61d) |  |  |
| DUKHCONI1AZ5HDGL7020 | Precast Concrete Kerbs works | 2014-10-13 → 2014-12-11 (+59d) | 2014-11-04 → 2015-01-04 (+61d) | -1d → -52d |  |
| DUKHCONI1AZ5HDGL7025 | Interlocking for Walkways | 2014-10-25 → 2014-12-24 (+60d) | 2014-11-22 → 2015-01-21 (+60d) | -1d → -52d |  |
| DUKHCONI1AZ5HDGL7030 | Construction of Retaining wall | 2014-11-05 → 2015-01-05 (+61d) | 2014-12-03 → 2015-02-02 (+61d) | -1d → -52d |  |
| DUKHCONI1AZ5HDGL7035 | Construction of Wash Stone Boulders | 2014-11-05 → 2015-01-05 (+61d) | 2014-12-03 → 2015-02-02 (+61d) | -1d → -52d |  |
| DUKHCONI1AZ5HDGL7040 | Construction of Speed Humps | 2014-12-22 → 2015-02-21 (+61d) | 2015-01-01 → 2015-03-03 (+61d) | -15d → -66d |  |
| 70 | **SOFT LANDSCAPING** | 2014-11-17 → 2015-01-17 (+61d) | 2015-01-08 → 2015-03-10 (+61d) |  |  |
| DUKHCONI1AZ5SLGL7200 | Excavation for Landscaping | 2014-11-17 → 2015-01-17 (+61d) | 2014-12-15 → 2015-02-15 (+62d) | -1d → -52d |  |
| DUKHCONI1AZ5SLGL7205 | Sweet Soil Laying | 2014-11-29 → 2015-01-28 (+60d) | 2014-12-28 → 2015-02-26 (+60d) | -1d → -52d |  |
| DUKHCONI1AZ5SLGL7210 | Plantation works | 2014-12-10 → 2015-02-09 (+61d) | 2015-01-08 → 2015-03-10 (+61d) | -1d → -52d |  |
| 35 | **SECONDARY BUILDINGS** | 2014-06-23 → 2014-08-23 (+61d) | 2014-12-25 → 2015-02-24 (+61d) |  |  |
| 10 | **INFRASTRUCTURE WORKS** | 2014-06-23 → 2014-08-23 (+61d) | 2014-12-25 → 2015-02-24 (+61d) |  |  |
| 10 | **IRRIGATION WATER TANK & PUMP ROOM** | 2014-06-23 → 2014-08-23 (+61d) | 2014-12-22 → 2015-02-18 (+58d) |  |  |
| DUKHCONI1ASBIWGL7400 | Excavation | 2014-06-23 → 2014-08-23 (+61d) | 2014-07-13 → 2014-09-11 (+60d) | -6d → -55d |  |
| DUKHCONI1ASBIWGL7405 | Blinding & base waterproofing | 2014-07-14 → 2014-09-13 (+61d) | 2014-07-24 → 2014-09-23 (+61d) | -6d → -55d | resources BLINDING MASON SK [64 h]; LABOR- SUBCONTRACTOR [48 h]; LABOR- SUBCONTRACTOR [24 h]; BLINDING QTY [78 Sqm]; WATERPROOFING QTY [78 Sqm]; WATERPROOFING SPECIALIST SK [64 h] → CONCRETE MASON SK [64 h]; LABOR- SUBCONTRACTOR [48 h]; LABOR- SUBCONTRACTOR [24 h]; BLINDING QTY [78 Sqm]; WATERPROOFING QTY [78 Sqm]; WATERPROOFING SPECIALIST SK [64 h] |
| DUKHCONI1ASBIWGL7410 | Construction of Raft slab | 2014-07-26 → 2014-09-24 (+60d) | 2014-08-11 → 2014-10-07 (+57d) | -6d → -55d |  |
| DUKHCONI1ASBIWGL7415 | Construction of RCC Wall | 2014-08-12 → 2014-10-08 (+57d) | 2014-09-09 → 2014-11-08 (+60d) | -6d → -55d |  |
| DUKHCONI1ASBIWGL7420 | Construction of Roof Slab | 2014-09-10 → 2014-11-09 (+60d) | 2014-10-02 → 2014-12-01 (+60d) | -6d → -55d |  |
| DUKHCONI1ASBIWGL7425 | Waterproofing & Backfilling | 2014-10-04 → 2014-12-02 (+59d) | 2014-10-22 → 2014-12-20 (+59d) | 0d → -49d |  |
| DUKHCONI1ASBIWGL7950 | Laying of Interlock | 2014-10-23 → 2014-12-21 (+59d) | 2014-11-03 → 2014-12-31 (+58d) | 15d → -34d |  |
| DUKHCONI1ASBIWGL7430 | Floor screed | 2014-10-30 → 2014-12-28 (+59d) | 2014-11-04 → 2015-01-01 (+58d) | -6d → -55d |  |
| DUKHCONI1ASBIWGL7435 | Installation of Boundary Fences | 2014-11-04 → 2015-01-01 (+58d) | 2014-11-20 → 2015-01-18 (+59d) | 15d → -34d |  |
| DUKHCONI1ASBIWGL7440 | Plumbing , Drainage & Firefighting works | 2014-11-05 → 2015-01-03 (+59d) | 2014-12-03 → 2015-01-31 (+59d) | -6d → -55d |  |
| DUKHCONI1ASBIWGL7445 | AC Works | 2014-11-05 → 2015-01-03 (+59d) | 2014-12-03 → 2015-01-31 (+59d) | -6d → -55d |  |
| DUKHCONI1ASBIWGL7450 | Electrical Works | 2014-11-05 → 2015-01-03 (+59d) | 2014-12-03 → 2015-01-31 (+59d) | -6d → -55d |  |
| DUKHCONI1ASBIWGL7455 | Internal epoxy coating & Painting | 2014-12-04 → 2015-02-01 (+59d) | 2014-12-09 → 2015-02-05 (+58d) | -6d → -55d |  |
| DUKHCONI1ASBIWGL7460 | Installation of Steel Ladder | 2014-12-10 → 2015-02-07 (+59d) | 2014-12-15 → 2015-02-12 (+59d) | -6d → -55d |  |
| DUKHCONI1ASBIWGL7465 | Installation of G.I Handrails | 2014-12-16 → 2015-02-14 (+60d) | 2014-12-22 → 2015-02-18 (+58d) | -6d → -55d |  |
| 15 | **TELECOMMUNICATION ROOM** | 2014-07-14 → 2014-09-13 (+61d) | 2014-11-30 → 2015-01-29 (+60d) |  |  |
| DUKHCONI1ASBTRGL7600 | Excavation | 2014-07-14 → 2014-09-13 (+61d) | 2014-07-24 → 2014-09-23 (+61d) | 6d → -43d |  |
| DUKHCONI1ASBTRGL7605 | Construction of foundation & Grade slab | 2014-07-26 → 2014-09-24 (+60d) | 2014-08-20 → 2014-10-19 (+60d) | 16d → -33d |  |
| DUKHCONI1ASBTRGL7610 | Construction Column,Beams & Roof Slab | 2014-08-21 → 2014-10-20 (+60d) | 2014-09-13 → 2014-11-11 (+59d) | 16d → -33d |  |
| DUKHCONI1ASBTRGL7615 | Finishing Works | 2014-10-08 → 2014-12-07 (+60d) | 2014-11-08 → 2015-01-05 (+58d) | 16d → -33d |  |
| DUKHCONI1ASBTRGL7620 | Plumbing , Drainage & Firefighting works | 2014-10-27 → 2014-12-27 (+61d) | 2014-11-24 → 2015-01-24 (+61d) | 12d → -39d |  |
| DUKHCONI1ASBTRGL7625 | AC Works | 2014-10-27 → 2014-12-27 (+61d) | 2014-11-24 → 2015-01-24 (+61d) | 12d → -39d |  |
| DUKHCONI1ASBTRGL7630 | Electrical Works-Telecom Room | 2014-10-27 → 2014-12-27 (+61d) | 2014-11-24 → 2015-01-24 (+61d) | 12d → -39d |  |
| DUKHCONI1ASBTRGL7635 | Final Paintings | 2014-11-25 → 2015-01-25 (+61d) | 2014-11-30 → 2015-01-29 (+60d) | 12d → -39d |  |
| 20 | **GUARD HOUSE** | 2014-07-26 → 2014-09-24 (+60d) | 2014-12-07 → 2015-02-03 (+58d) |  |  |
| DUKHCONI1ASBGHGL7800 | Excavation | 2014-07-26 → 2014-09-24 (+60d) | 2014-08-09 → 2014-10-05 (+57d) | 6d → -43d |  |
| DUKHCONI1ASBGHGL7805 | Construction of foundation & Grade slab | 2014-08-10 → 2014-10-06 (+57d) | 2014-09-01 → 2014-10-30 (+59d) | 6d → -43d |  |
| DUKHCONI1ASBGHGL7810 | Construction Column,Beams & Roof Slab | 2014-09-02 → 2014-11-01 (+60d) | 2014-09-24 → 2014-11-23 (+60d) | 6d → -43d |  |
| DUKHCONI1ASBGHGL7815 | Finishing Works | 2014-10-22 → 2014-12-20 (+59d) | 2014-11-19 → 2015-01-17 (+59d) | 6d → -43d |  |
| DUKHCONI1ASBGHGL7820 | Plumbing , Drainage & Firefighting works | 2014-11-03 → 2014-12-31 (+58d) | 2014-12-01 → 2015-01-28 (+58d) | 6d → -43d |  |
| DUKHCONI1ASBGHGL7825 | AC Works | 2014-11-03 → 2014-12-31 (+58d) | 2014-12-01 → 2015-01-28 (+58d) | 6d → -43d |  |
| DUKHCONI1ASBGHGL7830 | Electrical Works-Telecom Room | 2014-11-03 → 2014-12-31 (+58d) | 2014-12-01 → 2015-01-28 (+58d) | 6d → -43d |  |
| DUKHCONI1ASBGHGL7835 | Final Paintings | 2014-12-02 → 2015-01-29 (+58d) | 2014-12-07 → 2015-02-03 (+58d) | 6d → -43d |  |
| 25 | **GAZEBO** | 2014-09-14 → 2014-11-15 (+62d) | 2014-11-12 → 2015-01-12 (+61d) |  |  |
| DUKHCONI1ASBGZGL7900 | Construction of Concrete structure | 2014-09-14 → 2014-11-15 (+62d) | 2014-10-06 → 2014-12-07 (+62d) | 7d → -44d |  |
| DUKHCONI1ASBGZGL7905 | Installation of Wooden Works | 2014-09-25 → 2014-11-26 (+62d) | 2014-10-26 → 2014-12-25 (+60d) | 7d → -44d |  |
| DUKHCONI1ASBGZGL7915 | Park Benches Installation | 2014-09-25 → 2014-11-26 (+62d) | 2014-10-14 → 2014-12-13 (+60d) | 17d → -34d |  |
| DUKHCONI1ASBGZGL7910 | Electrical Works-Gazebo | 2014-10-27 → 2014-12-27 (+61d) | 2014-11-12 → 2015-01-12 (+61d) | 7d → -44d |  |
| 30 | **SUBSTATION-(LANDSCAPING,FENCES & CHANNEL WORKS)** | 2014-10-07 → 2014-12-08 (+62d) | 2014-12-25 → 2015-02-24 (+61d) |  |  |
| DUKHCONI1ASBSSGL7930 | Construction of Drainage Channel | 2014-10-07 → 2014-12-08 (+62d) | 2014-11-12 → 2015-01-12 (+61d) | 11d → -40d |  |
| DUKHCONI1ASBSSGL7920 | Hard landscaping around substation | 2014-10-23 → 2014-12-23 (+61d) | 2014-11-26 → 2015-01-26 (+61d) | 11d → -40d |  |
| DUKHCONI1ASBSSGL7925 | Soft landscaping around substation | 2014-11-06 → 2015-01-06 (+61d) | 2014-12-10 → 2015-02-09 (+61d) | 11d → -40d |  |

| ID | Task | Start | Finish | Duration | Complete | Total float | Other |
| --- | --- | --- | --- | --- | --- | --- | --- |
| DUKHCONI1ASBSSGL7935 | Fencing Works | 2014-11-20 → 2015-01-20 (+61d) | 2014-12-25 → 2015-02-24 (+61d) |  |  | 11d → -40d |  |
| L25 | **PACKAGE-1B** |  | 2014-12-24 → 2015-01-20 (+27d) |  |  |  |  |
| 10 | **ZONE - 1 (4 Twin Villas)** |  | 2014-07-24 → 2014-08-12 (+19d) |  |  |  |  |
| 10 | **STRUCTURAL WORKS** |  | 2014-02-03 → 2014-02-19 (+16d) |  |  |  |  |
| 10 | **SUB STRUCTURE** |  | 2013-09-15 → 2013-09-27 (+12d) |  |  |  |  |
| 10 | **UPTO GRADE SLAB** |  | 2013-09-15 → 2013-09-27 (+12d) |  |  |  |  |
| DUKHCONP1BZ1STUG1000 | Footing Excavation | 2013-04-27 A | 2013-05-25 A |  | 0% → 100% | -11d → none |  |
| DUKHCONP1BZ1STUG1005 | Footing Antitermite | 2013-05-08 A | 2013-06-03 → 2013-06-01 A (-2d) |  | 0% → 100% | -11d → none |  |
| DUKHCONP1BZ1STUG1010 | Footing Blinding | 2013-05-12 A | 2013-06-06 A |  | 0% → 100% | -11d → none |  |
| DUKHCONP1BZ1STUG1015 | Footing Waterproofing & Screed | 2013-05-18 A | 2013-06-15 A |  | 0% → 100% | -11d → none |  |
| DUKHCONP1BZ1STUG1020 | Construction of foundations | 2013-06-02 A | 2013-06-24 A |  | 0% → 100% | -11d → none | resources STEEL FIXERS SK [2778 h]; CARPENTERS SK [1136 h]; CONCRETE MASON SK [640 h]; LABOR- SUBCONTRACTOR [3415.5 h]; REINFORCEMENT BARS QTY [34722 kg]; FORMWORK QTY [568 Sqm]; CONCRETE QTY [320 Cum] → STEEL FIXERS SK [1742.89 h]; CARPENTERS SK [712.72 h]; CONCRETE MASON SK [401.53 h]; LABOR- SUBCONTRACTOR [2142.86 h]; REINFORCEMENT BARS QTY [34722 kg]; FORMWORK QTY [568 Sqm]; CONCRETE QTY [320 Cum] |
| DUKHCONP1BZ1STUG1025 | Construction of neck of columns | 2013-06-11 A | 2013-07-09 A |  | 0% → 100% | -11d → none |  |
| DUKHCONP1BZ1STUG1030 | Waterproofing Footing & Neck Column | 2013-06-20 A | 2013-07-18 A |  | 0% → 100% | -11d → none |  |
| DUKHCONP1BZ1STUG1035 | Backfilling Upto Grade Beam Bottom | 2013-07-02 A | 2013-07-30 → 2013-07-27 A (-3d) |  | 0% → 100% | -11d → none |  |
| DUKHCONP1BZ1STUG1040 | Construction of Grade Beams | 2013-07-18 A | 2013-08-19 A |  | 0% → 100% | -11d → none |  |
| DUKHCONP1BZ1STUG1045 | Construction of slab on grade | 2013-08-18 → 2013-08-31 A (+13d) | 2013-09-15 → 2013-09-27 A (+12d) |  | 0% → 100% | -11d → none | resources BLINDING MASON SK [1219 h]; SCREED MASON SK [1218 h]; STEEL FIXERS SK [493 h]; CONCRETE MASON SK [496 h]; LABOR- SUBCONTRACTOR [2112.75 h]; BLINDING QTY [1523 Sqm]; SCREED QTY [1522 Sqm]; CONCRETE QTY [248 Cum]; WELDED WIRE MESH [1848 Sqm] → CONCRETE MASON SK [1219 h]; SCREED MASON SK [1218 h]; STEEL FIXERS SK [493 h]; CONCRETE MASON SK [496 h]; LABOR- SUBCONTRACTOR [2112.75 h]; BLINDING QTY [1523 Sqm]; SCREED QTY [1522 Sqm]; CONCRETE QTY [248 Cum]; WELDED WIRE MESH [1848 Sqm] |
| 15 | **SUPERSTRUCTURE** | 2013-09-03 → 2013-09-16 (+13d) | 2014-02-03 → 2014-02-19 (+16d) |  |  |  |  |
| 10 | **GROUND FLOOR** | 2013-09-03 → 2013-09-16 (+13d) | 2013-10-30 → 2013-11-12 (+13d) |  |  |  |  |
| DUKHCONP1BZ1STGF2000 | Column-Rebar & Formwork | 2013-09-03 → 2013-09-16 A (+13d) | 2013-10-01 → 2013-10-14 A (+13d) |  | 0% → 100% | -11d → none |  |
| DUKHCONP1BZ1STGF2005 | Column-Concrete | 2013-09-12 → 2013-09-25 A (+13d) | 2013-10-08 → 2013-10-23 A (+15d) |  | 0% → 100% | -11d → none |  |
| DUKHCONP1BZ1STGF2010 | Beam, Stairs ,Slab-Rebar & Formwork | 2013-09-26 → 2013-10-09 A (+13d) | 2013-10-27 → 2013-11-09 (+13d) |  | 0% → 72% | -11d → -22d |  |
| DUKHCONP1BZ1STGF2015 | Beam, Stairs ,Slab-Concrete | 2013-10-13 → 2013-10-28 A (+15d) | 2013-10-30 → 2013-11-12 (+13d) |  | 0% → 29% | -11d → -22d |  |
| 15 | **FIRST FLOORS** | 2013-10-15 → 2013-11-02 (+18d) | 2013-12-11 → 2013-12-28 (+17d) |  |  |  |  |
| DUKHCONP1BZ1STFF2020 | Column-Rebar & Formwork | 2013-10-15 → 2013-11-02 (+18d) | 2013-11-14 → 2013-11-27 (+13d) | 25d → 23d |  | -11d → -22d |  |
| DUKHCONP1BZ1STFF2025 | Column-Concrete | 2013-10-27 → 2013-11-11 (+15d) | 2013-11-21 → 2013-12-07 (+16d) |  |  | -8d → -21d |  |
| DUKHCONP1BZ1STFF2030 | Beam, Stairs ,Slab-Rebar & Formwork | 2013-11-10 → 2013-11-25 (+15d) | 2013-12-08 → 2013-12-24 (+16d) |  |  | -8d → -21d |  |
| DUKHCONP1BZ1STFF2035 | Beam, Stairs ,Slab-Concrete | 2013-11-26 → 2013-12-11 (+15d) | 2013-12-11 → 2013-12-28 (+17d) |  |  | -8d → -21d |  |
| 20 | **ROOF** | 2013-12-02 → 2013-12-17 (+15d) | 2014-02-03 → 2014-02-19 (+16d) |  |  |  |  |
| DUKHCONP1BZ1STRF2040 | Column-Rebar & Formwork | 2013-12-02 → 2013-12-17 (+15d) | 2013-12-23 → 2014-01-07 (+15d) |  |  | 10d → -3d |  |
| DUKHCONP1BZ1STRF2045 | Column-Concrete | 2013-12-05 → 2013-12-22 (+17d) | 2013-12-25 → 2014-01-09 (+15d) |  |  | 10d → -3d |  |
| DUKHCONP1BZ1STRF2050 | Slab-Rebar & Formwork - Head Room | 2013-12-08 → 2013-12-24 (+16d) | 2013-12-31 → 2014-01-15 (+15d) |  |  | 10d → -3d |  |
| DUKHCONP1BZ1STRF2055 | Slab-Concrete-Head room | 2013-12-23 → 2014-01-07 (+15d) | 2014-01-06 → 2014-01-21 (+15d) |  |  | 10d → -3d |  |
| DUKHCONP1BZ1STRF2060 | Construction of Parapets | 2013-12-25 → 2014-01-09 (+15d) | 2014-01-22 → 2014-02-06 (+15d) |  |  | 40d → 27d |  |
| DUKHCONP1BZ1STRF2065 | Construction of up stands/Plinth | 2014-01-06 → 2014-01-21 (+15d) | 2014-02-03 → 2014-02-19 (+16d) |  |  | 67d → 54d |  |
| 15 | **FINISHING WORKS** | 2013-11-09 → 2013-11-21 (+12d) | 2014-06-25 → 2014-07-10 (+15d) |  |  |  |  |
| 10 | **INTERNAL FINISHES** | 2013-11-09 → 2013-11-21 (+12d) | 2014-06-25 → 2014-07-10 (+15d) |  |  |  |  |
| 10 | **GROUND FLOOR** | 2013-11-09 → 2013-11-21 (+12d) | 2014-04-22 → 2014-05-05 (+13d) |  |  |  |  |
| DUKHCONP1BZ1ARGF3000 | Block work | 2013-11-09 → 2013-11-21 (+12d) | 2013-12-07 → 2013-12-21 (+14d) |  |  | 33d → 22d |  |
| DUKHCONP1BZ1ARGF3005 | Plastering work | 2013-12-01 → 2013-12-14 (+13d) | 2013-12-30 → 2014-01-12 (+13d) |  |  | 39d → 28d |  |
| DUKHCONP1BZ1ARGF3010 | Flooring screed | 2013-12-09 → 2013-12-23 (+14d) | 2014-01-02 → 2014-01-15 (+13d) |  |  | 47d → 36d |  |
| DUKHCONP1BZ1ARGF3030 | Paint First coat | 2013-12-17 → 2013-12-31 (+14d) | 2014-01-15 → 2014-01-28 (+13d) |  |  | 53d → 42d |  |
| DUKHCONP1BZ1ARGF3015 | Wet area waterproofing & Protection Screed | 2013-12-19 → 2014-01-01 (+13d) | 2014-01-05 → 2014-01-18 (+13d) |  |  | 39d → 28d |  |
| DUKHCONP1BZ1ARGF3020 | Ceramic Wall Tiling | 2013-12-25 → 2014-01-07 (+13d) | 2014-01-22 → 2014-02-04 (+13d) |  |  | 39d → 28d |  |
| DUKHCONP1BZ1ARGF3025 | Porcelain Tile flooring | 2013-12-31 → 2014-01-13 (+13d) | 2014-01-28 → 2014-02-10 (+13d) |  |  | 39d → 28d |  |
| DUKHCONP1BZ1ARGF3045 | Fixing of Suspension systems | 2014-01-18 → 2014-01-30 (+12d) | 2014-02-09 → 2014-02-23 (+14d) |  |  | 39d → 28d |  |
| DUKHCONP1BZ1ARGF3035 | Slate Tile Flooring & Skirting | 2014-01-20 → 2014-02-02 (+13d) | 2014-02-05 → 2014-02-19 (+14d) |  |  | 49d → 38d |  |
| DUKHCONP1BZ1ARGF3055 | Aluminum tile false ceiling | 2014-01-26 → 2014-02-08 (+13d) | 2014-02-24 → 2014-03-09 (+13d) |  |  | 42d → 31d |  |
| DUKHCONP1BZ1ARGF3040 | Cobble Tile flooring | 2014-01-27 → 2014-02-09 (+13d) | 2014-02-13 → 2014-02-26 (+13d) |  |  | 47d → 36d |  |
| DUKHCONP1BZ1ARGF3060 | Gypsum board false ceiling | 2014-01-29 → 2014-02-12 (+14d) | 2014-02-27 → 2014-03-12 (+13d) |  |  | 39d → 28d |  |
| DUKHCONP1BZ1ARGF3050 | Granite - Stair case flooring & Skirting | 2014-02-04 → 2014-02-18 (+14d) | 2014-02-27 → 2014-03-12 (+13d) |  |  | 47d → 36d |  |
| DUKHCONP1BZ1ARGF3065 | Wooden door & PVC Door | 2014-02-19 → 2014-03-04 (+13d) | 2014-03-08 → 2014-03-20 (+12d) |  |  | 47d → 36d |  |
| DUKHCONP1BZ1ARGF3070 | Aluminum doors | 2014-02-25 → 2014-03-10 (+13d) | 2014-03-13 → 2014-03-26 (+13d) |  |  | 47d → 36d |  |
| DUKHCONP1BZ1ARGF3075 | Carpentry & Joinery Works | 2014-03-03 → 2014-03-16 (+13d) | 2014-03-25 → 2014-04-07 (+13d) |  |  | 47d → 36d |  |
| DUKHCONP1BZ1ARGF3080 | Aluminum windows | 2014-03-04 → 2014-03-17 (+13d) | 2014-03-26 → 2014-04-08 (+13d) |  |  | 57d → 46d |  |
| DUKHCONP1BZ1ARGF3085 | S.S.Balustrade | 2014-03-11 → 2014-03-24 (+13d) | 2014-04-02 → 2014-04-15 (+13d) |  |  | 52d → 41d |  |
| DUKHCONP1BZ1ARGF3090 | Installation of Granite Counter Top | 2014-03-16 → 2014-03-29 (+13d) | 2014-04-01 → 2014-04-14 (+13d) |  |  | 47d → 36d |  |
| DUKHCONP1BZ1ARGF3095 | Final Painting | 2014-03-25 → 2014-04-07 (+13d) | 2014-04-22 → 2014-05-05 (+13d) |  |  | 47d → 36d |  |
| 15 | **FIRST FLOORS** | 2013-12-22 → 2014-01-06 (+15d) | 2014-06-25 → 2014-07-10 (+15d) |  |  |  |  |
| DUKHCONP1BZ1ARFF3300 | Block work | 2013-12-22 → 2014-01-06 (+15d) | 2014-01-19 → 2014-02-03 (+15d) |  |  | -8d → -21d |  |
| DUKHCONP1BZ1ARFF3305 | Plastering work | 2014-01-18 → 2014-02-02 (+15d) | 2014-02-16 → 2014-03-03 (+15d) |  |  | -8d → -21d |  |
| DUKHCONP1BZ1ARFF3310 | Flooring screed | 2014-01-26 → 2014-02-10 (+15d) | 2014-02-19 → 2014-03-06 (+15d) |  |  | 9d → -4d |  |
| DUKHCONP1BZ1ARFF3330 | Paint First coat | 2014-02-03 → 2014-02-19 (+16d) | 2014-03-04 → 2014-03-19 (+15d) |  |  | 18d → 5d |  |
| DUKHCONP1BZ1ARFF3315 | Wet area waterproofing | 2014-02-08 → 2014-02-24 (+16d) | 2014-02-25 → 2014-03-12 (+15d) |  |  | -8d → -21d |  |
| DUKHCONP1BZ1ARFF3320 | Ceramic Wall Tiling | 2014-02-18 → 2014-03-05 (+15d) | 2014-03-18 → 2014-04-02 (+15d) |  |  | -8d → -21d |  |
| DUKHCONP1BZ1ARFF3325 | Porcelain Tile flooring | 2014-02-27 → 2014-03-15 (+16d) | 2014-03-27 → 2014-04-12 (+16d) |  |  | -8d → -21d |  |
| DUKHCONP1BZ1ARFF3335 | Slate Tile Flooring & Skirting | 2014-03-17 → 2014-04-01 (+15d) | 2014-04-02 → 2014-04-17 (+15d) |  |  | 11d → -2d |  |
| DUKHCONP1BZ1ARFF3345 | Fixing of Suspension systems | 2014-03-20 → 2014-04-05 (+16d) | 2014-04-12 → 2014-04-27 (+15d) |  |  | -8d → -21d |  |
| DUKHCONP1BZ1ARFF3350 | Granite - Stair case flooring & Skirting | 2014-03-20 → 2014-04-05 (+16d) | 2014-04-12 → 2014-04-27 (+15d) |  |  | 3d → -10d |  |
| DUKHCONP1BZ1ARFF3360 | Gypsum board false ceiling | 2014-04-01 → 2014-04-16 (+15d) | 2014-04-29 → 2014-05-14 (+15d) |  |  | -8d → -21d |  |
| DUKHCONP1BZ1ARFF3365 | Wooden door | 2014-04-16 → 2014-05-01 (+15d) | 2014-05-03 → 2014-05-18 (+15d) |  |  | -8d → -21d |  |

| ID | Task | Start | Finish | Complete | Total float |
| --- | --- | --- | --- | --- | --- |
| DUKHCONP1BZ1ARFF3370 | Aluminum Door | 2014-04-24 → 2014-05-10 (+16d) | 2014-05-17 → 2014-06-01 (+15d) |  | -8d → -21d |
| DUKHCONP1BZ1ARFF3380 | Aluminum windows | 2014-05-01 → 2014-05-17 (+16d) | 2014-05-24 → 2014-06-08 (+15d) |  | 5d → -8d |
| DUKHCONP1BZ1ARFF3375 | Carpentry & Joinery Works | 2014-05-03 → 2014-05-18 (+15d) | 2014-05-31 → 2014-06-15 (+15d) |  | -8d → -21d |
| DUKHCONP1BZ1ARFF3385 | Handrail & Balustrade | 2014-05-17 → 2014-06-01 (+15d) | 2014-06-08 → 2014-06-23 (+15d) |  | -8d → -21d |
| DUKHCONP1BZ1ARFF3390 | Installation of Granite Counter Top | 2014-05-17 → 2014-06-01 (+15d) | 2014-06-08 → 2014-06-23 (+15d) |  | -6d → -19d |
| DUKHCONP1BZ1ARFF3395 | Final Painting | 2014-05-28 → 2014-06-12 (+15d) | 2014-06-25 → 2014-07-10 (+15d) |  | -8d → -21d |
| 20 | **ROOF** | 2014-01-16 → 2014-02-01 (+16d) | 2014-03-26 → 2014-04-10 (+15d) |  |  |
| DUKHCONP1BZ1ARRF3600 | Block work | 2014-01-16 → 2014-02-01 (+16d) | 2014-02-08 → 2014-02-24 (+16d) |  | 64d → 51d |
| DUKHCONP1BZ1ARRF3605 | Plastering work | 2014-01-25 → 2014-02-09 (+15d) | 2014-02-17 → 2014-03-04 (+15d) |  | 64d → 51d |
| DUKHCONP1BZ1ARRF3610 | Flooring screed | 2014-02-08 → 2014-02-24 (+16d) | 2014-02-25 → 2014-03-12 (+15d) |  | 70d → 57d |
| DUKHCONP1BZ1ARRF3695 | Painting -Storage area | 2014-02-20 → 2014-03-08 (+16d) | 2014-03-15 → 2014-03-30 (+15d) |  | 70d → 57d |
| DUKHCONP1BZ1ARRF3620 | Epoxy Painting -Storage area | 2014-03-10 → 2014-03-25 (+15d) | 2014-03-26 → 2014-04-10 (+15d) |  | 70d → 57d |
| 15 | **EXTERNAL FINISHES** | 2014-01-18 → 2014-02-02 (+15d) | 2014-04-01 → 2014-04-16 (+15d) |  |  |
| 10 | **ROOF** | 2014-01-18 → 2014-02-02 (+15d) | 2014-03-26 → 2014-04-10 (+15d) |  |  |
| DUKHCONP1BZ1ARRF3630 | Leveling Screed for Waterproofing | 2014-01-18 → 2014-02-02 (+15d) | 2014-02-16 → 2014-03-03 (+15d) |  | 67d → 54d |
| DUKHCONP1BZ1ARRF3635 | Laying of Waterproofing Membrane | 2014-01-21 → 2014-02-05 (+15d) | 2014-02-19 → 2014-03-06 (+15d) |  | 67d → 54d |
| DUKHCONP1BZ1ARRF3640 | Installation of Insulation & Protection | 2014-01-26 → 2014-02-10 (+15d) | 2014-02-24 → 2014-03-11 (+15d) |  | 67d → 54d |
| DUKHCONP1BZ1ARRF3645 | Lime Stone Chips & Paving slab Installation | 2014-01-30 → 2014-02-16 (+17d) | 2014-03-01 → 2014-03-16 (+15d) |  | 67d → 54d |
| DUKHCONP1BZ1ARRF3650 | Install. of Gal. Frame & Aluminum Slat Screen | 2014-02-08 → 2014-02-24 (+16d) | 2014-03-09 → 2014-03-24 (+15d) |  | 67d → 54d |
| DUKHCONP1BZ1ARRF3655 | Installation of Pumps Protection cabinets | 2014-02-24 → 2014-03-11 (+15d) | 2014-03-18 → 2014-04-02 (+15d) |  | 67d → 54d |
| DUKHCONP1BZ1ARRF3660 | Installation of Access Ladder | 2014-03-10 → 2014-03-25 (+15d) | 2014-03-26 → 2014-04-10 (+15d) |  | 70d → 57d |
| 15 | **ELEVATION** | 2014-02-02 → 2014-02-18 (+16d) | 2014-04-01 → 2014-04-16 (+15d) |  |  |
| DUKHCONP1BZ1AREL3665 | External Plastering | 2014-02-02 → 2014-02-18 (+16d) | 2014-03-03 → 2014-03-18 (+15d) |  | 64d → 51d |
| DUKHCONP1BZ1AREL3670 | External stone cladding works | 2014-02-20 → 2014-03-08 (+16d) | 2014-03-15 → 2014-03-30 (+15d) |  | 65d → 52d |
| DUKHCONP1BZ1AREL3675 | GRC works | 2014-02-26 → 2014-03-13 (+15d) | 2014-03-20 → 2014-04-05 (+16d) |  | 65d → 52d |
| DUKHCONP1BZ1AREL3680 | External Painting | 2014-03-10 → 2014-03-25 (+15d) | 2014-04-01 → 2014-04-16 (+15d) |  | 65d → 52d |
| 20 | **MEP WORKS** |  | 2014-06-25 → 2014-07-10 (+15d) |  |  |
| 10 | **ELECTRICAL WORKS** | 2013-11-14 → 2013-11-27 (+13d) | 2014-06-25 → 2014-07-10 (+15d) |  |  |
| 10 | **GROUND FLOOR** | 2013-11-14 → 2013-11-27 (+13d) | 2014-03-25 → 2014-04-07 (+13d) |  |  |
| DUKHCONP1BZ1ELGF4000 | Fixing of wall conduits & switch socket boxes | 2013-11-14 → 2013-11-27 (+13d) | 2013-12-12 → 2013-12-26 (+14d) |  | 48d → 37d |
| DUKHCONP1BZ1ELGF4005 | Cable tray & trunking installation | 2013-11-26 → 2013-12-09 (+13d) | 2013-12-19 → 2014-01-01 (+13d) |  | 66d → 55d |
| DUKHCONP1BZ1ELGF4010 | Installation of wiring & Main Cabling | 2013-12-04 → 2013-12-17 (+13d) | 2014-01-02 → 2014-01-15 (+13d) |  | 66d → 55d |
| DUKHCONP1BZ1ELGF4015 | Install. of CAMS & Fire Fighting Accessories | 2014-02-06 → 2014-02-20 (+14d) | 2014-03-08 → 2014-03-20 (+12d) |  | 61d → 50d |
| DUKHCONP1BZ1ELGF4020 | Installation of DBS,MCCB Accessories. | 2014-02-13 → 2014-02-26 (+13d) | 2014-03-08 → 2014-03-20 (+12d) |  | 39d → 28d |
| DUKHCONP1BZ1ELGF4025 | Installation of Lighting fixtures & Accessories | 2014-02-25 → 2014-03-10 (+13d) | 2014-03-25 → 2014-04-07 (+13d) |  | 41d → 30d |
| DUKHCONP1BZ1ELGF4030 | Installation of Telephone System | 2014-02-25 → 2014-03-10 (+13d) | 2014-03-19 → 2014-04-01 (+13d) |  | 39d → 28d |
| 15 | **FIRST FLOORS** | 2013-12-28 → 2014-01-12 (+15d) | 2014-05-27 → 2014-06-11 (+15d) |  |  |
| DUKHCONP1BZ1ELFF4035 | Fixing of wall conduits & switch socket boxes | 2013-12-28 → 2014-01-12 (+15d) | 2014-01-25 → 2014-02-09 (+15d) |  | 5d → -8d |
| DUKHCONP1BZ1ELFF4040 | Cable tray & trunking installation | 2014-01-08 → 2014-01-23 (+15d) | 2014-01-30 → 2014-02-16 (+17d) |  | 35d → 22d |
| DUKHCONP1BZ1ELFF4045 | Installation of wiring & Main Cabling | 2014-01-16 → 2014-02-01 (+16d) | 2014-02-15 → 2014-03-02 (+15d) |  | 35d → 22d |
| DUKHCONP1BZ1ELFF4050 | Installation of Telephone System | 2014-04-07 → 2014-04-22 (+15d) | 2014-05-05 → 2014-05-20 (+15d) |  | 14d → 1d |
| DUKHCONP1BZ1ELFF4055 | Install. of CAMS & Fire Fighting Accessories | 2014-04-09 → 2014-04-24 (+15d) | 2014-05-07 → 2014-05-22 (+15d) |  | 34d → 21d |
| DUKHCONP1BZ1ELFF4060 | Installation of DBS,MCCB Accessories. | 2014-04-16 → 2014-05-01 (+15d) | 2014-05-08 → 2014-05-24 (+16d) |  | -8d → -21d |
| DUKHCONP1BZ1ELFF4065 | Installation of Lighting fixtures & Accessories | 2014-04-29 → 2014-05-14 (+15d) | 2014-05-27 → 2014-06-11 (+15d) |  | -8d → -21d |
| 20 | **ROOF** | 2014-05-19 → 2014-06-03 (+15d) | 2014-06-25 → 2014-07-10 (+15d) |  |  |
| DUKHCONP1BZ1ELRF4070 | Installation of Isolator | 2014-05-19 → 2014-06-03 (+15d) | 2014-06-08 → 2014-06-23 (+15d) |  | -8d → -21d |
| DUKHCONP1BZ1ELRF4075 | Installation of TV Dish Antenna | 2014-05-31 → 2014-06-15 (+15d) | 2014-06-25 → 2014-07-10 (+15d) |  | -8d → -21d |
| 15 | **PLUMBING, DRAINAGE & FIRE FIGHTING WORKS** |  | 2014-06-07 → 2014-06-22 (+15d) |  |  |
| 10 | **GROUND FLOOR** |  | 2014-03-25 → 2014-04-07 (+13d) |  |  |
| DUKHCONP1BZ1PLUG4300 | Drainage / Storm Pipes in Grade Slab | 2013-08-05 A | 2013-08-31 A | 0% → 100% | -11d → none |
| DUKHCONP1BZ1PLGF4305 | Installation of Plumbing pipes & testing | 2013-11-25 → 2013-12-08 (+13d) | 2013-12-15 → 2013-12-29 (+14d) |  | 33d → 22d |
| DUKHCONP1BZ1PLGF4310 | Installation of Drainage pipes &testing | 2013-11-25 → 2013-12-08 (+13d) | 2013-12-15 → 2013-12-29 (+14d) |  | 33d → 22d |
| DUKHCONP1BZ1PLGF4315 | Sanitary Fittings & Accessories | 2014-02-25 → 2014-03-10 (+13d) | 2014-03-19 → 2014-04-01 (+13d) |  | 71d → 60d |
| DUKHCONP1BZ1PLGF4320 | Installation of Water Heater | 2014-03-09 → 2014-03-22 (+13d) | 2014-03-25 → 2014-04-07 (+13d) |  | 71d → 60d |
| 15 | **FIRST FLOORS** | 2014-01-08 → 2014-01-23 (+15d) | 2014-05-20 → 2014-06-04 (+15d) |  |  |
| DUKHCONP1BZ1PLFF4325 | Installation of Plumbing pipes & testing | 2014-01-08 → 2014-01-23 (+15d) | 2014-01-28 → 2014-02-13 (+16d) |  | -8d → -21d |
| DUKHCONP1BZ1PLFF4330 | Installation of Drainage pipes & testing | 2014-01-08 → 2014-01-23 (+15d) | 2014-01-28 → 2014-02-13 (+16d) |  | 19d → 6d |
| DUKHCONP1BZ1PLFF4335 | Sanitary Fittings & Accessories | 2014-04-22 → 2014-05-07 (+15d) | 2014-05-14 → 2014-05-29 (+15d) |  | 8d → -5d |
| DUKHCONP1BZ1PLFF4340 | Installation of Water Heater | 2014-05-04 → 2014-05-19 (+15d) | 2014-05-20 → 2014-06-04 (+15d) |  | 8d → -5d |
| 20 | **ROOF** | 2014-02-10 → 2014-02-26 (+16d) | 2014-06-07 → 2014-06-22 (+15d) |  |  |
| DUKHCONP1BZ1PLRF4345 | Installation of Plumbing pipes & fittings | 2014-02-10 → 2014-02-26 (+16d) | 2014-02-26 → 2014-03-13 (+15d) |  | 70d → 57d |
| DUKHCONP1BZ1PLRF4350 | Installation of Rain water Pipes | 2014-02-23 → 2014-03-10 (+15d) | 2014-03-11 → 2014-03-26 (+15d) |  | 68d → 55d |
| DUKHCONP1BZ1PLRF4355 | Roof Water Tank Installation & Connections | 2014-05-10 → 2014-05-25 (+15d) | 2014-06-07 → 2014-06-22 (+15d) |  | 8d → -5d |
| 20 | **AC WORKS** | 2013-12-15 → 2013-12-29 (+14d) | 2014-06-03 → 2014-06-18 (+15d) |  |  |
| 10 | **GROUND FLOOR** | 2013-12-15 → 2013-12-29 (+14d) | 2014-03-23 → 2014-04-05 (+13d) |  |  |
| DUKHCONP1BZ1ACGF4600 | Installation AC Pipes | 2013-12-15 → 2013-12-29 (+14d) | 2014-01-07 → 2014-01-20 (+13d) |  | 70d → 59d |
| DUKHCONP1BZ1ACGF4605 | Fixing of Ventilation Equipments | 2014-02-06 → 2014-02-20 (+14d) | 2014-03-08 → 2014-03-20 (+12d) |  | 58d → 47d |
| DUKHCONP1BZ1ACGF4610 | Fixing of Split AC | 2014-03-01 → 2014-03-13 (+12d) | 2014-03-23 → 2014-04-05 (+13d) |  | 58d → 47d |
| 15 | **FIRST FLOORS** | 2014-02-01 → 2014-02-17 (+16d) | 2014-05-22 → 2014-06-07 (+16d) |  |  |
| DUKHCONP1BZ1ACFF4615 | Installation AC Pipes | 2014-02-01 → 2014-02-17 (+16d) | 2014-02-24 → 2014-03-11 (+15d) |  | 35d → 22d |

| ID | Task | Start | Finish | Duration | Complete | Total float | Other |
| --- | --- | --- | --- | --- | --- | --- | --- |
| DUKHCONP1BZ1ACFF4620 | Fixing of Ventilation Equipments | 2014-04-09 → 2014-04-24 (+15d) | 2014-05-07 → 2014-05-22 (+15d) |  |  | 6d → -7d |  |
| DUKHCONP1BZ1ACFF4625 | Fixing of Split AC | 2014-04-30 → 2014-05-15 (+15d) | 2014-05-22 → 2014-06-07 (+16d) |  |  | 6d → -7d |  |
| 20 | **ROOF** | 2014-02-13 → 2014-03-01 (+16d) | 2014-06-03 → 2014-06-18 (+15d) |  |  |  |  |
| DUKHCONP1BZ1ACRF4630 | Installation of Refrigerant Pipes | 2014-02-13 → 2014-03-01 (+16d) | 2014-03-13 → 2014-03-29 (+16d) |  |  | 76d → 63d |  |
| DUKHCONP1BZ1ACRF4635 | Installation of Condensing Unit | 2014-05-06 → 2014-05-21 (+15d) | 2014-06-03 → 2014-06-18 (+15d) |  |  | 11d → -2d |  |
| 25 | **EXTERNAL WORKS** | 2013-12-23 → 2014-01-07 (+15d) | 2014-06-29 → 2014-07-15 (+16d) |  |  |  |  |
| 10 | **MISCELLANEOUS** | 2013-12-23 → 2014-01-07 (+15d) | 2014-06-29 → 2014-07-15 (+16d) |  |  |  |  |
| DUKHCONP1BZ1MSEX5020 | Construction Entrance Ramp | 2013-12-23 → 2014-01-07 (+15d) | 2014-01-20 → 2014-02-04 (+15d) |  |  | 58d → 45d |  |
| DUKHCONP1BZ1MSEX5000 | Construction of Manholes | 2014-01-04 → 2014-01-19 (+15d) | 2014-02-01 → 2014-02-17 (+16d) |  |  | 10d → -3d |  |
| DUKHCONP1BZ1MSEX5025 | SS.Handrails and Balustrades | 2014-01-12 → 2014-01-27 (+15d) | 2014-02-03 → 2014-02-19 (+16d) |  |  | 58d → 45d |  |
| DUKHCONP1BZ1MSEX5005 | Construction of Soak pit, Chambers | 2014-01-18 → 2014-02-02 (+15d) | 2014-02-16 → 2014-03-03 (+15d) |  |  | 19d → 6d |  |
| DUKHCONP1BZ1MSEX5015 | Construction of grease Trap | 2014-02-06 → 2014-02-23 (+17d) | 2014-03-02 → 2014-03-17 (+15d) |  |  | 19d → 6d |  |
| DUKHCONP1BZ1MSEX5010 | Telephone cable laying | 2014-03-03 → 2014-03-18 (+15d) | 2014-03-31 → 2014-04-15 (+15d) |  |  | 19d → 6d |  |
| DUKHCONP1BZ1MSEX5335 | Aluminum Roll-up Shutter with 2m Wall | 2014-06-01 → 2014-06-17 (+16d) | 2014-06-29 → 2014-07-15 (+16d) |  |  | 14d → 0d |  |
| 15 | **WATER TANK ENCLOSURE** | 2014-01-06 → 2014-01-21 (+15d) | 2014-04-07 → 2014-04-22 (+15d) |  |  |  |  |
| DUKHCONP1BZ1WEEX5030 | Excavation | 2014-01-06 → 2014-01-21 (+15d) | 2014-01-28 → 2014-02-13 (+16d) |  |  | 40d → 27d |  |
| DUKHCONP1BZ1WEEX5035 | Construction of Raft | 2014-01-12 → 2014-01-27 (+15d) | 2014-02-09 → 2014-02-25 (+16d) |  |  | 60d → 47d |  |
| DUKHCONP1BZ1WEEX5040 | Block works & Plastering | 2014-01-21 → 2014-02-05 (+15d) | 2014-02-19 → 2014-03-06 (+15d) |  |  | 60d → 47d |  |
| DUKHCONP1BZ1WEEX5045 | Flooring & Painting | 2014-02-02 → 2014-02-18 (+16d) | 2014-03-03 → 2014-03-18 (+15d) |  |  | 60d → 47d |  |
| DUKHCONP1BZ1WEEX5050 | Installation of Steel Gate | 2014-02-20 → 2014-03-08 (+16d) | 2014-03-15 → 2014-03-30 (+15d) |  |  | 60d → 47d |  |
| DUKHCONP1BZ1WEEX5060 | Structural steel & SS Shed cover installation | 2014-02-26 → 2014-03-13 (+15d) | 2014-03-26 → 2014-04-10 (+15d) |  |  | 60d → 47d |  |
| DUKHCONP1BZ1WEEX5065 | Install. of Water Tank,Chiller,Pump & Meter | 2014-03-10 → 2014-03-25 (+15d) | 2014-04-07 → 2014-04-22 (+15d) |  |  | 60d → 47d |  |
| 20 | **HARD LANDSCAPING** | 2014-01-20 → 2014-02-04 (+15d) | 2014-03-11 → 2014-03-26 (+15d) |  |  |  |  |
| DUKHCONP1BZ1HDEX5090 | kerb works | 2014-01-20 → 2014-02-04 (+15d) | 2014-02-12 → 2014-02-27 (+15d) |  |  | 58d → 45d |  |
| DUKHCONP1BZ1HDEX5095 | Cobble Stone Works | 2014-02-01 → 2014-02-17 (+16d) | 2014-02-24 → 2014-03-11 (+15d) |  |  | 58d → 45d |  |
| DUKHCONP1BZ1HDEX5100 | Interlock works | 2014-02-17 → 2014-03-04 (+15d) | 2014-03-11 → 2014-03-26 (+15d) |  |  | 58d → 45d |  |
| 25 | **SOFT LANDSCAPING** | 2014-03-01 → 2014-03-16 (+15d) | 2014-04-09 → 2014-04-24 (+15d) |  |  |  |  |
| DUKHCONP1BZ1SLEX5105 | Laying of Grass/ green area | 2014-03-01 → 2014-03-16 (+15d) | 2014-03-29 → 2014-04-13 (+15d) |  |  | 58d → 45d |  |
| DUKHCONP1BZ1SLEX5110 | Laying of Palm tree | 2014-03-12 → 2014-03-27 (+15d) | 2014-04-09 → 2014-04-24 (+15d) |  |  | 58d → 45d |  |
| 30 | **TESTING AND COMMISSIONING** | 2014-06-26 → 2014-07-12 (+16d) | 2014-07-24 → 2014-08-12 (+19d) |  |  |  |  |
| DUKHCONP1BZ1ACTC8000 | Pre-Commissioning & Testing of AC Works | 2014-06-26 → 2014-07-12 (+16d) | 2014-07-24 → 2014-08-12 (+19d) |  |  | -8d → -21d |  |
| DUKHCONP1BZ1ELTC8010 | Pre-Commissioning & Testing of Electrical Works | 2014-06-26 → 2014-07-12 (+16d) | 2014-07-24 → 2014-08-12 (+19d) |  |  | -8d → -21d |  |
| DUKHCONP1BZ1PLTC8005 | Pre-Commissioning & Testing of Plumbing Works | 2014-06-26 → 2014-07-12 (+16d) | 2014-07-24 → 2014-08-12 (+19d) |  |  | -8d → -21d |  |
| 15 | **ZONE - 2 (4 Twin Villas)** |  | 2014-08-26 → 2014-09-10 (+15d) |  |  |  |  |
| 10 | **STRUCTURAL WORKS** |  | 2014-03-05 → 2014-03-20 (+15d) |  |  |  |  |
| 10 | **SUB STRUCTURE** |  | 2013-10-14 → 2013-11-02 (+19d) |  |  |  |  |
| 10 | **UPTO GRADE SLAB** |  | 2013-10-14 → 2013-11-02 (+19d) |  |  |  |  |
| DUKHCONP1BZ2STUG1000 | Footing Excavation | 2013-05-26 A | 2013-06-23 A |  | 0% → 100% | -11d → none |  |
| DUKHCONP1BZ2STUG1005 | Footing Antitermite | 2013-06-06 A | 2013-07-02 A |  | 0% → 100% | -11d → none |  |
| DUKHCONP1BZ2STUG1010 | Footing Blinding | 2013-06-10 A | 2013-07-06 A |  | 0% → 100% | -11d → none |  |
| DUKHCONP1BZ2STUG1015 | Footing Waterproofing & Screed | 2013-06-16 A | 2013-07-14 A |  | 0% → 100% | -11d → none |  |
| DUKHCONP1BZ2STUG1020 | Construction of foundations | 2013-07-01 A | 2013-07-23 A |  | 0% → 100% | -11d → none |  |
| DUKHCONP1BZ2STUG1025 | Construction of neck of columns | 2013-07-10 → 2013-07-27 A (+17d) | 2013-08-07 A | 25d → 11d | 0% → 100% | -11d → none |  |
| DUKHCONP1BZ2STUG1030 | Waterproofing Footing & Neck Column | 2013-07-20 → 2013-08-05 A (+16d) | 2013-08-20 A | 25d → 11d | 0% → 100% | -11d → none |  |
| DUKHCONP1BZ2STUG1035 | Backfilling Upto Grade Beam Bottom | 2013-07-31 → 2013-08-20 A (+20d) | 2013-09-01 → 2013-09-17 A (+16d) |  | 0% → 100% | -11d → none |  |
| DUKHCONP1BZ2STUG1040 | Construction of Grade Beams | 2013-08-20 → 2013-09-05 A (+16d) | 2013-09-17 → 2013-10-03 A (+16d) |  | 0% → 100% | -11d → none | resources BLINDING MASON SK [321 h]; SCREED MASON SK [321 h]; STEEL FIXERS SK [1621 h]; CARPENTERS SK [2112 h]; CONCRETE MASON SK [320 h]; LABOR- SUBCONTRACTOR [3401.25 h]; BLINDING QTY [401 Sqm]; SCREED QTY [401 Sqm]; REINFORCEMENT BARS QTY [20261 kg]; FORMWORK QTY [1056 Sqm]; CONCRETE QTY [160 Cum] → CONCRETE MASON SK [321 h]; SCREED MASON SK [321 h]; STEEL FIXERS SK [1621 h]; CARPENTERS SK [2112 h]; CONCRETE MASON SK [320 h]; LABOR- SUBCONTRACTOR [3401.25 h]; BLINDING QTY [401 Sqm]; SCREED QTY [401 Sqm]; REINFORCEMENT BARS QTY [20261 kg]; FORMWORK QTY [1056 Sqm]; CONCRETE QTY [160 Cum] |
| DUKHCONP1BZ2STUG1045 | Construction of slab on grade | 2013-09-16 → 2013-10-02 A (+16d) | 2013-10-14 → 2013-11-02 A (+19d) |  | 0% → 100% | -11d → none | resources BLINDING MASON SK [1219 h]; SCREED MASON SK [1218 h]; STEEL FIXERS SK [493 h]; CONCRETE MASON SK [496 h]; BLINDING QTY [1523 Sqm]; SCREED QTY [1522 Sqm]; CONCRETE QTY [248 Cum]; WELDED WIRE MESH [1848 Sqm]; LABOR- SUBCONTRACTOR [2112.75 h] → CONCRETE MASON SK [1219 h]; SCREED MASON SK [1218 h]; STEEL FIXERS SK [493 h]; CONCRETE MASON SK [496 h]; BLINDING QTY [1523 Sqm]; SCREED QTY [1522 Sqm]; CONCRETE QTY [248 Cum]; WELDED WIRE MESH [1848 Sqm]; LABOR- SUBCONTRACTOR [2112.75 h] |
| 15 | **SUPERSTRUCTURE** | 2013-10-02 → 2013-10-21 (+19d) | 2014-03-05 → 2014-03-20 (+15d) |  |  |  |  |
| 10 | **GROUND FLOOR** | 2013-10-02 → 2013-10-21 (+19d) | 2013-11-28 → 2013-12-15 (+17d) |  |  |  |  |
| DUKHCONP1BZ2STGF2000 | Column-Rebar & Formwork | 2013-10-02 → 2013-10-21 A (+19d) | 2013-11-02 → 2013-11-01 A (-1d) |  | 0% → 100% | -11d → none |  |
| DUKHCONP1BZ2STGF2005 | Column-Concrete | 2013-10-12 → 2013-10-30 A (+18d) | 2013-11-09 → 2013-11-25 (+16d) |  | 0% → 9% | -11d → -25d |  |
| DUKHCONP1BZ2STGF2010 | Beam, Stairs ,Slab-Rebar & Formwork | 2013-10-28 → 2013-11-13 (+16d) | 2013-11-25 → 2013-12-11 (+16d) |  |  | -11d → -25d |  |
| DUKHCONP1BZ2STGF2015 | Beam, Stairs ,Slab-Concrete | 2013-11-13 → 2013-11-30 (+17d) | 2013-11-28 → 2013-12-15 (+17d) |  |  | -11d → -25d |  |
| 15 | **FIRST FLOORS** | 2013-11-16 → 2013-12-02 (+16d) | 2013-12-31 → 2014-01-16 (+16d) |  |  |  |  |
| DUKHCONP1BZ2STFF2020 | Column-Rebar & Formwork | 2013-11-16 → 2013-12-02 (+16d) | 2013-12-14 → 2013-12-31 (+17d) |  |  | -11d → -25d |  |
| DUKHCONP1BZ2STFF2025 | Column-Concrete | 2013-11-25 → 2013-12-11 (+16d) | 2013-12-22 → 2014-01-07 (+16d) |  |  | -11d → -25d |  |
| DUKHCONP1BZ2STFF2030 | Beam, Stairs ,Slab-Rebar & Formwork | 2013-11-28 → 2013-12-15 (+17d) | 2013-12-28 → 2014-01-13 (+16d) |  |  | 1d → -13d |  |
| DUKHCONP1BZ2STFF2035 | Beam, Stairs ,Slab-Concrete | 2013-12-15 → 2014-01-01 (+17d) | 2013-12-31 → 2014-01-16 (+16d) |  |  | 1d → -13d |  |
| 20 | **ROOF** | 2013-12-24 → 2014-01-08 (+15d) | 2014-03-05 → 2014-03-20 (+15d) |  |  |  |  |
| DUKHCONP1BZ2STRF2040 | Column-Rebar & Formwork | 2013-12-24 → 2014-01-08 (+15d) | 2014-01-13 → 2014-01-28 (+15d) |  |  | 26d → 13d |  |
| DUKHCONP1BZ2STRF2045 | Column-Concrete | 2013-12-28 → 2014-01-12 (+15d) | 2014-01-15 → 2014-01-30 (+15d) |  |  | 26d → 13d |  |
| DUKHCONP1BZ2STRF2050 | Slab-Rebar & Formwork - Head Room | 2013-12-30 → 2014-01-14 (+15d) | 2014-01-21 → 2014-02-05 (+15d) |  |  | 26d → 13d |  |
| DUKHCONP1BZ2STRF2055 | Slab-Concrete-Head room | 2014-01-13 → 2014-01-28 (+15d) | 2014-01-27 → 2014-02-12 (+16d) |  |  | 26d → 13d |  |
| DUKHCONP1BZ2STRF2060 | Construction of Parapets | 2014-01-15 → 2014-01-30 (+15d) | 2014-02-13 → 2014-03-01 (+16d) |  |  | 50d → 37d |  |
| DUKHCONP1BZ2STRF2065 | Construction of up stands/Plinth | 2014-02-04 → 2014-02-20 (+16d) | 2014-03-05 → 2014-03-20 (+15d) |  |  | 67d → 54d |  |
| 15 | **FINISHING WORKS** | 2013-12-08 → 2013-12-25 (+17d) | 2014-07-24 → 2014-08-12 (+19d) |  |  |  |  |
| 10 | **INTERNAL FINISHES** | 2013-12-08 → 2013-12-25 (+17d) | 2014-07-24 → 2014-08-12 (+19d) |  |  |  |  |
| 10 | **GROUND FLOOR** | 2013-12-08 → 2013-12-25 (+17d) | 2014-05-21 → 2014-06-07 (+17d) |  |  |  |  |
| DUKHCONP1BZ2ARGF3000 | Block work | 2013-12-08 → 2013-12-25 (+17d) | 2014-01-06 → 2014-01-22 (+16d) |  |  | 39d → 25d |  |
| DUKHCONP1BZ2ARGF3005 | Plastering work | 2013-12-31 → 2014-01-16 (+16d) | 2014-01-28 → 2014-02-15 (+18d) |  |  | 39d → 25d |  |

| ID | Task | Start | Finish | Total float |
| --- | --- | --- | --- | --- |
| DUKHCONP1BZ2ARGF3010 | Flooring screed | 2014-01-08 → 2014-01-25 (+17d) | 2014-02-01 → 2014-02-18 (+17d) | 47d → 33d |
| DUKHCONP1BZ2ARGF3030 | Paint First coat | 2014-01-16 → 2014-02-02 (+17d) | 2014-02-15 → 2014-03-03 (+16d) | 53d → 39d |
| DUKHCONP1BZ2ARGF3015 | Wet area waterproofing & Protection Screed | 2014-01-18 → 2014-02-03 (+16d) | 2014-02-03 → 2014-02-20 (+17d) | 39d → 25d |
| DUKHCONP1BZ2ARGF3020 | Ceramic Wall Tiling | 2014-01-23 → 2014-02-09 (+17d) | 2014-02-22 → 2014-03-10 (+16d) | 39d → 25d |
| DUKHCONP1BZ2ARGF3025 | Porcelain Tile flooring | 2014-01-29 → 2014-02-16 (+18d) | 2014-02-27 → 2014-03-16 (+17d) | 39d → 25d |
| DUKHCONP1BZ2ARGF3045 | Fixing of Suspension systems | 2014-02-17 → 2014-03-05 (+16d) | 2014-03-11 → 2014-03-27 (+16d) | 39d → 25d |
| DUKHCONP1BZ2ARGF3035 | Slate Tile Flooring & Skirting | 2014-02-19 → 2014-03-08 (+17d) | 2014-03-08 → 2014-03-24 (+16d) | 49d → 35d |
| DUKHCONP1BZ2ARGF3055 | Aluminum tile false ceiling | 2014-02-25 → 2014-03-13 (+16d) | 2014-03-25 → 2014-04-10 (+16d) | 42d → 28d |
| DUKHCONP1BZ2ARGF3040 | Cobble Tile flooring | 2014-02-26 → 2014-03-15 (+17d) | 2014-03-15 → 2014-03-31 (+16d) | 47d → 33d |
| DUKHCONP1BZ2ARGF3060 | Gypsum board false ceiling | 2014-03-01 → 2014-03-17 (+16d) | 2014-03-29 → 2014-04-14 (+16d) | 39d → 25d |
| DUKHCONP1BZ2ARGF3050 | Granite - Stair case flooring & Skirting | 2014-03-06 → 2014-03-23 (+17d) | 2014-03-29 → 2014-04-14 (+16d) | 47d → 33d |
| DUKHCONP1BZ2ARGF3065 | Wooden door & PVC Door | 2014-03-20 → 2014-04-06 (+17d) | 2014-04-06 → 2014-04-22 (+16d) | 47d → 33d |
| DUKHCONP1BZ2ARGF3070 | Aluminum doors | 2014-03-26 → 2014-04-12 (+17d) | 2014-04-12 → 2014-04-28 (+16d) | 47d → 33d |
| DUKHCONP1BZ2ARGF3075 | Carpentry & Joinery Works | 2014-04-01 → 2014-04-17 (+16d) | 2014-04-23 → 2014-05-10 (+17d) | 47d → 33d |
| DUKHCONP1BZ2ARGF3080 | Aluminum windows | 2014-04-02 → 2014-04-19 (+17d) | 2014-04-24 → 2014-05-11 (+17d) | 57d → 43d |
| DUKHCONP1BZ2ARGF3085 | S.S.Balustrade | 2014-04-09 → 2014-04-26 (+17d) | 2014-05-01 → 2014-05-18 (+17d) | 52d → 38d |
| DUKHCONP1BZ2ARGF3090 | Installation of Granite Counter Top | 2014-04-14 → 2014-04-30 (+16d) | 2014-04-30 → 2014-05-17 (+17d) | 47d → 33d |
| DUKHCONP1BZ2ARGF3095 | Final Painting | 2014-04-23 → 2014-05-10 (+17d) | 2014-05-21 → 2014-06-07 (+17d) | 47d → 33d |
| 15 | **FIRST FLOORS** | 2014-01-20 → 2014-02-04 (+15d) | 2014-07-24 → 2014-08-12 (+19d) |  |
| DUKHCONP1BZ2ARFF3300 | Block work | 2014-01-20 → 2014-02-04 (+15d) | 2014-02-18 → 2014-03-05 (+15d) | -8d → -21d |
| DUKHCONP1BZ2ARFF3305 | Plastering work | 2014-02-17 → 2014-03-04 (+15d) | 2014-03-17 → 2014-04-01 (+15d) | -8d → -21d |
| DUKHCONP1BZ2ARFF3310 | Flooring screed | 2014-02-25 → 2014-03-12 (+15d) | 2014-03-20 → 2014-04-05 (+16d) | 9d → -4d |
| DUKHCONP1BZ2ARFF3330 | Paint First coat | 2014-03-05 → 2014-03-20 (+15d) | 2014-04-02 → 2014-04-17 (+15d) | 18d → 5d |
| DUKHCONP1BZ2ARFF3315 | Wet area waterproofing | 2014-03-10 → 2014-03-25 (+15d) | 2014-03-26 → 2014-04-10 (+15d) | -8d → -21d |
| DUKHCONP1BZ2ARFF3320 | Ceramic Wall Tiling | 2014-03-19 → 2014-04-03 (+15d) | 2014-04-16 → 2014-05-01 (+15d) | -8d → -21d |
| DUKHCONP1BZ2ARFF3325 | Porcelain Tile flooring | 2014-03-29 → 2014-04-13 (+15d) | 2014-04-26 → 2014-05-11 (+15d) | -8d → -21d |
| DUKHCONP1BZ2ARFF3335 | Slate Tile Flooring & Skirting | 2014-04-15 → 2014-04-30 (+15d) | 2014-05-01 → 2014-05-17 (+16d) | 11d → -2d |
| DUKHCONP1BZ2ARFF3345 | Fixing of Suspension systems | 2014-04-19 → 2014-05-04 (+15d) | 2014-05-11 → 2014-05-26 (+15d) | -8d → -21d |
| DUKHCONP1BZ2ARFF3350 | Granite - Stair case flooring & Skirting | 2014-04-19 → 2014-05-04 (+15d) | 2014-05-11 → 2014-05-26 (+15d) | 3d → -10d |
| DUKHCONP1BZ2ARFF3360 | Gypsum board false ceiling | 2014-04-30 → 2014-05-15 (+15d) | 2014-05-28 → 2014-06-12 (+15d) | -8d → -21d |
| DUKHCONP1BZ2ARFF3365 | Wooden door | 2014-05-15 → 2014-05-31 (+16d) | 2014-06-01 → 2014-06-16 (+15d) | -8d → -21d |
| DUKHCONP1BZ2ARFF3370 | Aluminum Door | 2014-05-24 → 2014-06-08 (+15d) | 2014-06-15 → 2014-06-30 (+15d) | -8d → -21d |
| DUKHCONP1BZ2ARFF3380 | Aluminum windows | 2014-05-31 → 2014-06-15 (+15d) | 2014-06-22 → 2014-07-07 (+15d) | 5d → -8d |
| DUKHCONP1BZ2ARFF3375 | Carpentry & Joinery Works | 2014-06-01 → 2014-06-16 (+15d) | 2014-06-29 → 2014-07-14 (+15d) | -8d → -21d |
| DUKHCONP1BZ2ARFF3385 | Handrail & Balustrade | 2014-06-15 → 2014-06-30 (+15d) | 2014-07-07 → 2014-07-22 (+15d) | -8d → -21d |
| DUKHCONP1BZ2ARFF3390 | Installation of Granite Counter Top | 2014-06-15 → 2014-06-30 (+15d) | 2014-07-07 → 2014-07-22 (+15d) | -6d → -19d |
| DUKHCONP1BZ2ARFF3395 | Final Painting | 2014-06-26 → 2014-07-12 (+16d) | 2014-07-24 → 2014-08-12 (+19d) | -8d → -21d |
| 20 | **ROOF** | 2014-02-09 → 2014-02-25 (+16d) | 2014-04-24 → 2014-05-10 (+16d) |  |
| DUKHCONP1BZ2ARRF3600 | Block work | 2014-02-09 → 2014-02-25 (+16d) | 2014-03-04 → 2014-03-19 (+15d) | 69d → 56d |
| DUKHCONP1BZ2ARRF3605 | Plastering work | 2014-02-18 → 2014-03-05 (+15d) | 2014-03-12 → 2014-03-27 (+15d) | 69d → 56d |
| DUKHCONP1BZ2ARRF3610 | Flooring screed | 2014-03-09 → 2014-03-24 (+15d) | 2014-03-25 → 2014-04-09 (+15d) | 70d → 57d |
| DUKHCONP1BZ2ARRF3695 | Painting -Storage area | 2014-03-22 → 2014-04-06 (+15d) | 2014-04-13 → 2014-04-28 (+15d) | 70d → 57d |
| DUKHCONP1BZ2ARRF3620 | Epoxy Painting -Storage area | 2014-04-08 → 2014-04-23 (+15d) | 2014-04-24 → 2014-05-10 (+16d) | 70d → 57d |
| 15 | **EXTERNAL FINISHES** | 2014-02-17 → 2014-03-04 (+15d) | 2014-04-30 → 2014-05-15 (+15d) |  |
| 10 | **ROOF** | 2014-02-17 → 2014-03-04 (+15d) | 2014-04-24 → 2014-05-10 (+16d) |  |
| DUKHCONP1BZ2ARRF3630 | Leveling Screed for Waterproofing | 2014-02-17 → 2014-03-04 (+15d) | 2014-03-17 → 2014-04-01 (+15d) | 67d → 54d |
| DUKHCONP1BZ2ARRF3635 | Laying of Waterproofing Membrane | 2014-02-20 → 2014-03-08 (+16d) | 2014-03-20 → 2014-04-05 (+16d) | 67d → 54d |
| DUKHCONP1BZ2ARRF3640 | Installation of Insulation & Protection | 2014-02-25 → 2014-03-12 (+15d) | 2014-03-25 → 2014-04-09 (+15d) | 67d → 54d |
| DUKHCONP1BZ2ARRF3645 | Lime Stone Chips & Paving slab Installation | 2014-03-02 → 2014-03-17 (+15d) | 2014-03-30 → 2014-04-14 (+15d) | 67d → 54d |
| DUKHCONP1BZ2ARRF3650 | Install. of Gal. Frame & Aluminum Slat Screen | 2014-03-10 → 2014-03-25 (+15d) | 2014-04-07 → 2014-04-22 (+15d) | 67d → 54d |
| DUKHCONP1BZ2ARRF3655 | Installation of Pumps Protection cabinets | 2014-03-25 → 2014-04-09 (+15d) | 2014-04-16 → 2014-05-01 (+15d) | 67d → 54d |
| DUKHCONP1BZ2ARRF3660 | Installation of Access Ladder | 2014-04-08 → 2014-04-23 (+15d) | 2014-04-24 → 2014-05-10 (+16d) | 70d → 57d |
| 15 | **ELEVATION** | 2014-03-04 → 2014-03-19 (+15d) | 2014-04-30 → 2014-05-15 (+15d) |  |
| DUKHCONP1BZ2AREL3665 | External Plastering | 2014-03-04 → 2014-03-19 (+15d) | 2014-04-01 → 2014-04-16 (+15d) | 64d → 51d |
| DUKHCONP1BZ2AREL3670 | External stone cladding works | 2014-03-22 → 2014-04-06 (+15d) | 2014-04-13 → 2014-04-28 (+15d) | 65d → 52d |
| DUKHCONP1BZ2AREL3675 | GRC works | 2014-03-27 → 2014-04-12 (+16d) | 2014-04-19 → 2014-05-04 (+15d) | 65d → 52d |
| DUKHCONP1BZ2AREL3680 | External Painting | 2014-04-08 → 2014-04-23 (+15d) | 2014-04-30 → 2014-05-15 (+15d) | 65d → 52d |
| 20 | **MEP WORKS** | 2013-09-07 → 2013-09-23 (+16d) | 2014-07-24 → 2014-08-12 (+19d) |  |
| 10 | **ELECTRICAL WORKS** | 2013-12-14 → 2013-12-31 (+17d) | 2014-07-24 → 2014-08-12 (+19d) |  |
| 10 | **GROUND FLOOR** | 2013-12-14 → 2013-12-31 (+17d) | 2014-04-23 → 2014-05-10 (+17d) |  |
| DUKHCONP1BZ2ELGF4000 | Fixing of wall conduits & switch socket boxes | 2013-12-14 → 2013-12-31 (+17d) | 2014-01-12 → 2014-01-28 (+16d) | 48d → 34d |
| DUKHCONP1BZ2ELGF4005 | Cable tray & trunking installation | 2013-12-26 → 2014-01-12 (+17d) | 2014-01-18 → 2014-02-03 (+16d) | 66d → 52d |
| DUKHCONP1BZ2ELGF4010 | Installation of wiring & Main Cabling | 2014-01-04 → 2014-01-20 (+16d) | 2014-02-01 → 2014-02-18 (+17d) | 66d → 52d |
| DUKHCONP1BZ2ELGF4015 | Install. of CAMS & Fire Fighting Accessories | 2014-03-09 → 2014-03-25 (+16d) | 2014-04-06 → 2014-04-22 (+16d) | 61d → 47d |
| DUKHCONP1BZ2ELGF4020 | Installation of DBS,MCCB Accessories. | 2014-03-15 → 2014-03-31 (+16d) | 2014-04-06 → 2014-04-22 (+16d) | 39d → 25d |
| DUKHCONP1BZ2ELGF4025 | Installation of Lighting fixtures & Accessories | 2014-03-26 → 2014-04-12 (+17d) | 2014-04-23 → 2014-05-10 (+17d) | 41d → 27d |
| DUKHCONP1BZ2ELGF4030 | Installation of Telephone System | 2014-03-26 → 2014-04-12 (+17d) | 2014-04-17 → 2014-05-04 (+17d) | 39d → 25d |
| 15 | **FIRST FLOORS** | 2014-01-26 → 2014-02-10 (+15d) | 2014-06-25 → 2014-07-10 (+15d) |  |
| DUKHCONP1BZ2ELFF4035 | Fixing of wall conduits & switch socket boxes | 2014-01-26 → 2014-02-10 (+15d) | 2014-02-24 → 2014-03-11 (+15d) | 5d → -8d |
| DUKHCONP1BZ2ELFF4040 | Cable tray & trunking installation | 2014-02-06 → 2014-02-23 (+17d) | 2014-03-02 → 2014-03-17 (+15d) | 35d → 22d |

| ID | Task | Start | Finish | Complete | Total float |
| --- | --- | --- | --- | --- | --- |
| DUKHCONP1BZ2ELFF4045 | Installation of wiring & Main Cabling | 2014-02-16 → 2014-03-03 (+15d) | 2014-03-16 → 2014-03-31 (+15d) |  | 35d → 22d |
| DUKHCONP1BZ2ELFF4050 | Installation of Telephone System | 2014-05-06 → 2014-05-21 (+15d) | 2014-06-03 → 2014-06-18 (+15d) |  | 14d → 1d |
| DUKHCONP1BZ2ELFF4055 | Install. of CAMS & Fire Fighting Accessories | 2014-05-08 → 2014-05-24 (+16d) | 2014-06-05 → 2014-06-21 (+16d) |  | 34d → 21d |
| DUKHCONP1BZ2ELFF4060 | Installation of DBS,MCCB Accessories. | 2014-05-15 → 2014-05-31 (+16d) | 2014-06-07 → 2014-06-22 (+15d) |  | -8d → -21d |
| DUKHCONP1BZ2ELFF4065 | Installation of Lighting fixtures & Accessories | 2014-05-28 → 2014-06-12 (+15d) | 2014-06-25 → 2014-07-10 (+15d) |  | -8d → -21d |
| 20 | **ROOF** | 2014-06-17 → 2014-07-02 (+15d) | 2014-07-24 → 2014-08-12 (+19d) |  |  |
| DUKHCONP1BZ2ELRF4070 | Installation of Isolator | 2014-06-17 → 2014-07-02 (+15d) | 2014-07-07 → 2014-07-22 (+15d) |  | -8d → -21d |
| DUKHCONP1BZ2ELRF4075 | Installation of TV Dish Antenna | 2014-06-29 → 2014-07-14 (+15d) | 2014-07-24 → 2014-08-12 (+19d) |  | -8d → -21d |
| 15 | **PLUMBING, DRAINAGE & FIRE FIGHTING WORKS** | 2013-09-07 → 2013-09-23 (+16d) | 2014-07-06 → 2014-07-21 (+15d) |  |  |
| 10 | **GROUND FLOOR** | 2013-09-07 → 2013-09-23 (+16d) | 2014-04-23 → 2014-05-10 (+17d) |  |  |
| DUKHCONP1BZ2PLUG4300 | Drainage / Storm Pipes in Grade Slab | 2013-09-07 → 2013-09-23 A (+16d) | 2013-09-29 → 2013-10-15 A (+16d) | 0% → 100% | -11d → none |
| DUKHCONP1BZ2PLGF4305 | Installation of Plumbing pipes & testing | 2013-12-25 → 2014-01-11 (+17d) | 2014-01-14 → 2014-01-30 (+16d) |  | 39d → 25d |
| DUKHCONP1BZ2PLGF4310 | Installation of Drainage pipes &testing | 2013-12-25 → 2014-01-11 (+17d) | 2014-01-14 → 2014-01-30 (+16d) |  | 42d → 28d |
| DUKHCONP1BZ2PLGF4315 | Sanitary Fittings & Accessories | 2014-03-26 → 2014-04-12 (+17d) | 2014-04-17 → 2014-05-04 (+17d) |  | 71d → 57d |
| DUKHCONP1BZ2PLGF4320 | Installation of Water Heater | 2014-04-07 → 2014-04-23 (+16d) | 2014-04-23 → 2014-05-10 (+17d) |  | 71d → 57d |
| 15 | **FIRST FLOORS** | 2014-02-06 → 2014-02-23 (+17d) | 2014-06-18 → 2014-07-03 (+15d) |  |  |
| DUKHCONP1BZ2PLFF4325 | Installation of Plumbing pipes & testing | 2014-02-06 → 2014-02-23 (+17d) | 2014-02-27 → 2014-03-15 (+16d) |  | -8d → -21d |
| DUKHCONP1BZ2PLFF4330 | Installation of Drainage pipes & testing | 2014-02-06 → 2014-02-23 (+17d) | 2014-02-27 → 2014-03-15 (+16d) |  | 19d → 6d |
| DUKHCONP1BZ2PLFF4335 | Sanitary Fittings & Accessories | 2014-05-21 → 2014-06-05 (+15d) | 2014-06-12 → 2014-06-28 (+16d) |  | 8d → -5d |
| DUKHCONP1BZ2PLFF4340 | Installation of Water Heater | 2014-06-02 → 2014-06-17 (+15d) | 2014-06-18 → 2014-07-03 (+15d) |  | 8d → -5d |
| 20 | **ROOF** | 2014-03-06 → 2014-03-22 (+16d) | 2014-07-06 → 2014-07-21 (+15d) |  |  |
| DUKHCONP1BZ2PLRF4345 | Installation of Plumbing pipes & fittings | 2014-03-06 → 2014-03-22 (+16d) | 2014-03-22 → 2014-04-06 (+15d) |  | 73d → 60d |
| DUKHCONP1BZ2PLRF4350 | Installation of Rain water Pipes | 2014-03-29 → 2014-04-13 (+15d) | 2014-04-14 → 2014-04-29 (+15d) |  | 64d → 51d |
| DUKHCONP1BZ2PLRF4355 | Roof Water Tank Installation & Connections | 2014-06-08 → 2014-06-23 (+15d) | 2014-07-06 → 2014-07-21 (+15d) |  | 8d → -5d |
| 20 | **AC WORKS** | 2014-01-14 → 2014-01-30 (+16d) | 2014-07-02 → 2014-07-17 (+15d) |  |  |
| 10 | **GROUND FLOOR** | 2014-01-14 → 2014-01-30 (+16d) | 2014-04-21 → 2014-05-07 (+16d) |  |  |
| DUKHCONP1BZ2ACGF4600 | Installation AC Pipes | 2014-01-14 → 2014-01-30 (+16d) | 2014-02-05 → 2014-02-23 (+18d) |  | 70d → 56d |
| DUKHCONP1BZ2ACGF4605 | Fixing of Ventilation Equipments | 2014-03-09 → 2014-03-25 (+16d) | 2014-04-06 → 2014-04-22 (+16d) |  | 58d → 44d |
| DUKHCONP1BZ2ACGF4610 | Fixing of Split AC | 2014-03-30 → 2014-04-15 (+16d) | 2014-04-21 → 2014-05-07 (+16d) |  | 58d → 44d |
| 15 | **FIRST FLOORS** | 2014-03-03 → 2014-03-18 (+15d) | 2014-06-21 → 2014-07-06 (+15d) |  |  |
| DUKHCONP1BZ2ACFF4615 | Installation AC Pipes | 2014-03-03 → 2014-03-18 (+15d) | 2014-03-25 → 2014-04-09 (+15d) |  | 35d → 22d |
| DUKHCONP1BZ2ACFF4620 | Fixing of Ventilation Equipments | 2014-05-08 → 2014-05-24 (+16d) | 2014-06-05 → 2014-06-21 (+16d) |  | 6d → -7d |
| DUKHCONP1BZ2ACFF4625 | Fixing of Split AC | 2014-05-29 → 2014-06-14 (+16d) | 2014-06-21 → 2014-07-06 (+15d) |  | 6d → -7d |
| 20 | **ROOF** | 2014-03-15 → 2014-03-30 (+15d) | 2014-07-02 → 2014-07-17 (+15d) |  |  |
| DUKHCONP1BZ2ACRF4630 | Installation of Refrigerant Pipes | 2014-03-15 → 2014-03-30 (+15d) | 2014-04-12 → 2014-04-27 (+15d) |  | 76d → 63d |
| DUKHCONP1BZ2ACRF4635 | Installation of Condensing Unit | 2014-06-04 → 2014-06-19 (+15d) | 2014-07-02 → 2014-07-17 (+15d) |  | 11d → -2d |
| 25 | **EXTERNAL WORKS** | 2014-01-21 → 2014-02-05 (+15d) | 2014-07-28 → 2014-08-17 (+20d) |  |  |
| 10 | **MISCELLANEOUS** | 2014-01-21 → 2014-02-05 (+15d) | 2014-07-28 → 2014-08-17 (+20d) |  |  |
| DUKHCONP1BZ2MSEX5020 | Construction Entrance Ramp | 2014-01-21 → 2014-02-05 (+15d) | 2014-02-19 → 2014-03-06 (+15d) |  | 58d → 45d |
| DUKHCONP1BZ2MSEX5000 | Construction of Manholes | 2014-01-25 → 2014-02-09 (+15d) | 2014-02-23 → 2014-03-10 (+15d) |  | 26d → 13d |
| DUKHCONP1BZ2MSEX5005 | Construction of Soak pit, Chambers | 2014-02-08 → 2014-02-24 (+16d) | 2014-03-09 → 2014-03-24 (+15d) |  | 26d → 13d |
| DUKHCONP1BZ2MSEX5025 | SS.Handrails and Balustrades | 2014-02-10 → 2014-02-26 (+16d) | 2014-03-05 → 2014-03-20 (+15d) |  | 58d → 45d |
| DUKHCONP1BZ2MSEX5015 | Construction of grease Trap | 2014-03-01 → 2014-03-16 (+15d) | 2014-03-23 → 2014-04-07 (+15d) |  | 26d → 13d |
| DUKHCONP1BZ2MSEX5010 | Telephone cable laying | 2014-03-24 → 2014-04-08 (+15d) | 2014-04-21 → 2014-05-06 (+15d) |  | 26d → 13d |
| DUKHCONP1BZ2MSEX5335 | Aluminum Roll-up Shutter with 2m Wall | 2014-06-30 → 2014-07-16 (+16d) | 2014-07-28 → 2014-08-17 (+20d) |  | 14d → 0d |
| 15 | **WATER TANK ENCLOSURE** | 2014-01-29 → 2014-02-15 (+17d) | 2014-05-06 → 2014-05-21 (+15d) |  |  |
| DUKHCONP1BZ2WEEX5030 | Excavation | 2014-01-29 → 2014-02-15 (+17d) | 2014-02-22 → 2014-03-09 (+15d) |  | 40d → 27d |
| DUKHCONP1BZ2WEEX5035 | Construction of Raft | 2014-02-04 → 2014-02-20 (+16d) | 2014-03-05 → 2014-03-20 (+15d) |  | 40d → 27d |
| DUKHCONP1BZ2WEEX5040 | Block works & Plastering | 2014-02-17 → 2014-03-04 (+15d) | 2014-03-17 → 2014-04-01 (+15d) |  | 63d → 50d |
| DUKHCONP1BZ2WEEX5045 | Flooring & Painting | 2014-03-01 → 2014-03-16 (+15d) | 2014-03-29 → 2014-04-13 (+15d) |  | 63d → 50d |
| DUKHCONP1BZ2WEEX5050 | Installation of Steel Gate | 2014-03-18 → 2014-04-02 (+15d) | 2014-04-09 → 2014-04-24 (+15d) |  | 63d → 50d |
| DUKHCONP1BZ2WEEX5060 | Structural steel & SS Shed cover installation | 2014-03-27 → 2014-04-12 (+16d) | 2014-04-24 → 2014-05-10 (+16d) |  | 60d → 47d |
| DUKHCONP1BZ2WEEX5065 | Install. of Water Tank,Chiller,Pump & Meter | 2014-04-08 → 2014-04-23 (+15d) | 2014-05-06 → 2014-05-21 (+15d) |  | 60d → 47d |
| 20 | **HARD LANDSCAPING** | 2014-02-19 → 2014-03-06 (+15d) | 2014-04-09 → 2014-04-24 (+15d) |  |  |
| DUKHCONP1BZ2HDEX5090 | kerb works | 2014-02-19 → 2014-03-06 (+15d) | 2014-03-13 → 2014-03-29 (+16d) |  | 58d → 45d |
| DUKHCONP1BZ2HDEX5095 | Cobble Stone Works | 2014-03-03 → 2014-03-18 (+15d) | 2014-03-25 → 2014-04-09 (+15d) |  | 58d → 45d |
| DUKHCONP1BZ2HDEX5100 | Interlock works | 2014-03-18 → 2014-04-02 (+15d) | 2014-04-09 → 2014-04-24 (+15d) |  | 58d → 45d |
| 25 | **SOFT LANDSCAPING** | 2014-03-30 → 2014-04-14 (+15d) | 2014-05-08 → 2014-05-24 (+16d) |  |  |
| DUKHCONP1BZ2SLEX5105 | Laying of Grass/ green area | 2014-03-30 → 2014-04-14 (+15d) | 2014-04-27 → 2014-05-12 (+15d) |  | 58d → 45d |
| DUKHCONP1BZ2SLEX5110 | Laying of Palm tree | 2014-04-10 → 2014-04-26 (+16d) | 2014-05-08 → 2014-05-24 (+16d) |  | 58d → 45d |
| 30 | **TESTING AND COMMISSIONING** | 2014-07-26 → 2014-08-13 (+18d) | 2014-08-26 → 2014-09-10 (+15d) |  |  |
| DUKHCONP1BZ2ACTC8000 | Pre-Commissioning & Testing of AC Works | 2014-07-26 → 2014-08-13 (+18d) | 2014-08-26 → 2014-09-10 (+15d) |  | -8d → -21d |
| DUKHCONP1BZ2ELTC8010 | Pre-Commissioning & Testing of Electrical Works | 2014-07-26 → 2014-08-13 (+18d) | 2014-08-26 → 2014-09-10 (+15d) |  | -8d → -21d |
| DUKHCONP1BZ2PLTC8005 | Pre-Commissioning & Testing of Plumbing Works | 2014-07-26 → 2014-08-13 (+18d) | 2014-08-26 → 2014-09-10 (+15d) |  | -8d → -21d |
| 20 | **ZONE - 3 (4 Twin Villas)** |  | 2014-09-24 → 2014-10-23 (+29d) |  |  |
| 10 | **STRUCTURAL WORKS** |  | 2014-04-03 → 2014-04-24 (+21d) |  |  |
| 10 | **SUB STRUCTURE** |  | 2013-11-16 → 2013-12-23 (+37d) |  |  |
| 10 | **UPTO GRADE SLAB** |  | 2013-11-16 → 2013-12-23 (+37d) |  |  |
| DUKHCONP1BZ3STUG1000 | Footing Excavation | 2013-06-24 A | 2013-07-22 A | 0% → 100% | 0d → none |
| DUKHCONP1BZ3STUG1005 | Footing Antitermite | 2013-07-06 A | 2013-07-31 A | 0% → 100% | 0d → none |

| ID | Task | Start | Finish | Duration | Complete | Total float | Other |
| --- | --- | --- | --- | --- | --- | --- | --- |
| DUKHCONP1BZ3STUG1010 | Footing Blinding | 2013-07-10 A | 2013-08-05 A |  | 0% → 100% | 0d → none |  |
| DUKHCONP1BZ3STUG1015 | Footing Waterproofing & Screed | 2013-07-16 A | 2013-08-17 A |  | 0% → 100% | 0d → none |  |
| DUKHCONP1BZ3STUG1020 | Construction of foundations | 2013-07-31 A | 2013-08-26 A |  | 0% → 100% | 0d → none |  |
| DUKHCONP1BZ3STUG1025 | Construction of neck of columns | 2013-08-13 → 2013-08-31 A (+18d) | 2013-09-10 → 2013-09-28 A (+18d) |  | 0% → 100% | 0d → none | resources STEEL FIXERS SK [232 h]; CARPENTERS SK [832 h]; CONCRETE MASON SK [48 h]; LABOR- SUBCONTRACTOR [834 h]; REINFORCEMENT BARS QTY [2889 kg]; FORMWORK QTY [416 Sqm]; CONCRETE QTY [24 Cum] → STEEL FIXERS SK [119.22 h]; CARPENTERS SK [427.54 h]; CONCRETE MASON SK [24.67 h]; LABOR- SUBCONTRACTOR [428.57 h]; REINFORCEMENT BARS QTY [2889 kg]; FORMWORK QTY [416 Sqm]; CONCRETE QTY [24 Cum] |
| DUKHCONP1BZ3STUG1030 | Waterproofing Footing & Neck Column | 2013-08-22 → 2013-09-28 A (+37d) | 2013-09-19 → 2013-10-07 A (+18d) | 25d → 9d | 0% → 100% | 0d → none | resources LABOR- SUBCONTRACTOR [146.25 h]; WATERPROOFING QTY [486 Sqm]; WATERPROOFING SPECIALIST SK [389 h] → LABOR- SUBCONTRACTOR [218.59 h]; WATERPROOFING QTY [486 Sqm]; WATERPROOFING SPECIALIST SK [581.41 h] |
| DUKHCONP1BZ3STUG1035 | Backfilling Upto Grade Beam Bottom | 2013-09-03 → 2013-10-09 A (+36d) | 2013-10-01 → 2013-10-21 A (+20d) | 25d → 9d | 0% → 100% | 0d → none |  |
| DUKHCONP1BZ3STUG1040 | Construction of Grade Beams | 2013-09-19 → 2013-10-28 A (+39d) | 2013-10-20 → 2013-11-25 (+36d) |  | 0% → 16% | 0d → -31d | resources BLINDING MASON SK [321 h]; SCREED MASON SK [321 h]; STEEL FIXERS SK [1621 h]; CARPENTERS SK [2112 h]; CONCRETE MASON SK [320 h]; LABOR- SUBCONTRACTOR [3401.25 h]; BLINDING QTY [401 Sqm]; SCREED QTY [401 Sqm]; REINFORCEMENT BARS QTY [20261 kg]; FORMWORK QTY [1056 Sqm]; CONCRETE QTY [160 Cum] → CONCRETE MASON SK [321 h]; SCREED MASON SK [321 h]; STEEL FIXERS SK [1621 h]; CARPENTERS SK [2112 h]; CONCRETE MASON SK [320 h]; LABOR- SUBCONTRACTOR [3401.25 h]; BLINDING QTY [401 Sqm]; SCREED QTY [401 Sqm]; REINFORCEMENT BARS QTY [20261 kg]; FORMWORK QTY [1056 Sqm]; CONCRETE QTY [160 Cum] |
| DUKHCONP1BZ3STUG1045 | Construction of slab on grade | 2013-10-16 → 2013-11-24 (+39d) | 2013-11-16 → 2013-12-23 (+37d) |  |  | 0d → -31d | resources BLINDING MASON SK [1219 h]; SCREED MASON SK [1218 h]; STEEL FIXERS SK [493 h]; CONCRETE MASON SK [496 h]; LABOR- SUBCONTRACTOR [2112.75 h]; BLINDING QTY [1523 Sqm]; SCREED QTY [1522 Sqm]; CONCRETE QTY [248 Cum]; WELDED WIRE MESH [1848 Sqm] → CONCRETE MASON SK [1219 h]; SCREED MASON SK [1218 h]; STEEL FIXERS SK [493 h]; CONCRETE MASON SK [496 h]; LABOR- SUBCONTRACTOR [2112.75 h]; BLINDING QTY [1523 Sqm]; SCREED QTY [1522 Sqm]; CONCRETE QTY [248 Cum]; WELDED WIRE MESH [1848 Sqm] |
| 15 | **SUPERSTRUCTURE** | 2013-11-04 → 2013-12-10 (+36d) | 2014-04-03 → 2014-04-24 (+21d) |  |  |  |  |
| 10 | **GROUND FLOOR** | 2013-11-04 → 2013-12-10 (+36d) | 2013-12-30 → 2014-02-04 (+36d) |  |  |  |  |
| DUKHCONP1BZ3STGF2000 | Column-Rebar & Formwork | 2013-11-04 → 2013-12-10 (+36d) | 2013-12-02 → 2014-01-08 (+37d) |  |  | 0d → -31d |  |
| DUKHCONP1BZ3STGF2005 | Column-Concrete | 2013-11-13 → 2013-12-21 (+38d) | 2013-12-09 → 2014-01-15 (+37d) |  |  | 0d → -31d |  |
| DUKHCONP1BZ3STGF2010 | Beam, Stairs ,Slab-Rebar & Formwork | 2013-11-27 → 2014-01-04 (+38d) | 2013-12-26 → 2014-02-01 (+37d) |  |  | 0d → -31d |  |
| DUKHCONP1BZ3STGF2015 | Beam, Stairs ,Slab-Concrete | 2013-12-14 → 2014-01-20 (+37d) | 2013-12-30 → 2014-02-04 (+36d) |  |  | 0d → -31d |  |
| 15 | **FIRST FLOORS** | 2013-12-16 → 2014-01-22 (+37d) | 2014-01-30 → 2014-03-09 (+38d) |  |  |  |  |
| DUKHCONP1BZ3STFF2020 | Column-Rebar & Formwork | 2013-12-16 → 2014-01-22 (+37d) | 2014-01-14 → 2014-02-20 (+37d) |  |  | 0d → -31d |  |
| DUKHCONP1BZ3STFF2025 | Column-Concrete | 2013-12-26 → 2014-02-01 (+37d) | 2014-01-21 → 2014-02-27 (+37d) |  |  | 0d → -31d |  |
| DUKHCONP1BZ3STFF2030 | Beam, Stairs ,Slab-Rebar & Formwork | 2013-12-30 → 2014-02-04 (+36d) | 2014-01-27 → 2014-03-05 (+37d) |  |  | 0d → -31d |  |
| DUKHCONP1BZ3STFF2035 | Beam, Stairs ,Slab-Concrete | 2014-01-15 → 2014-02-22 (+38d) | 2014-01-30 → 2014-03-09 (+38d) |  |  | 0d → -31d |  |
| 20 | **ROOF** | 2014-01-21 → 2014-02-27 (+37d) | 2014-04-03 → 2014-04-24 (+21d) |  |  |  |  |
| DUKHCONP1BZ3STRF2040 | Column-Rebar & Formwork | 2014-01-21 → 2014-02-27 (+37d) | 2014-02-10 → 2014-03-19 (+37d) |  |  | 23d → -8d |  |
| DUKHCONP1BZ3STRF2045 | Column-Concrete | 2014-01-25 → 2014-03-03 (+37d) | 2014-02-13 → 2014-03-22 (+37d) |  |  | 27d → -4d |  |
| DUKHCONP1BZ3STRF2050 | Slab-Rebar & Formwork - Head Room | 2014-01-27 → 2014-03-05 (+37d) | 2014-02-19 → 2014-03-27 (+36d) |  |  | 27d → -4d |  |
| DUKHCONP1BZ3STRF2055 | Slab-Concrete-Head room | 2014-02-10 → 2014-03-19 (+37d) | 2014-02-25 → 2014-04-02 (+36d) |  |  | 27d → -4d |  |
| DUKHCONP1BZ3STRF2060 | Construction of Parapets | 2014-02-15 → 2014-03-22 (+35d) | 2014-03-15 → 2014-04-19 (+35d) |  |  | 50d → 20d |  |
| DUKHCONP1BZ3STRF2065 | Construction of up stands/Plinth | 2014-03-06 → 2014-03-27 (+21d) | 2014-04-03 → 2014-04-24 (+21d) |  |  | 67d → 49d |  |
| 15 | **FINISHING WORKS** | 2014-01-08 → 2014-02-15 (+38d) | 2014-08-26 → 2014-09-22 (+27d) |  |  |  |  |
| 10 | **INTERNAL FINISHES** | 2014-01-08 → 2014-02-15 (+38d) | 2014-08-26 → 2014-09-22 (+27d) |  |  |  |  |
| 10 | **GROUND FLOOR** | 2014-01-08 → 2014-02-15 (+38d) | 2014-06-21 → 2014-07-27 (+36d) |  |  |  |  |
| DUKHCONP1BZ3ARGF3000 | Block work | 2014-01-08 → 2014-02-15 (+38d) | 2014-02-05 → 2014-03-15 (+38d) |  |  | 38d → 7d |  |
| DUKHCONP1BZ3ARGF3005 | Plastering work | 2014-01-30 → 2014-03-09 (+38d) | 2014-03-01 → 2014-04-06 (+36d) |  |  | 38d → 7d |  |
| DUKHCONP1BZ3ARGF3010 | Flooring screed | 2014-02-08 → 2014-03-17 (+37d) | 2014-03-04 → 2014-04-09 (+36d) |  |  | 46d → 15d |  |
| DUKHCONP1BZ3ARGF3030 | Paint First coat | 2014-02-17 → 2014-03-25 (+36d) | 2014-03-17 → 2014-04-22 (+36d) |  |  | 52d → 21d |  |
| DUKHCONP1BZ3ARGF3015 | Wet area waterproofing & Protection Screed | 2014-02-18 → 2014-03-26 (+36d) | 2014-03-06 → 2014-04-12 (+37d) |  |  | 38d → 7d |  |
| DUKHCONP1BZ3ARGF3020 | Ceramic Wall Tiling | 2014-02-24 → 2014-04-01 (+36d) | 2014-03-24 → 2014-04-29 (+36d) |  |  | 38d → 7d |  |
| DUKHCONP1BZ3ARGF3025 | Porcelain Tile flooring | 2014-03-02 → 2014-04-07 (+36d) | 2014-03-30 → 2014-05-05 (+36d) |  |  | 38d → 7d |  |
| DUKHCONP1BZ3ARGF3045 | Fixing of Suspension systems | 2014-03-19 → 2014-04-24 (+36d) | 2014-04-10 → 2014-05-17 (+37d) |  |  | 38d → 7d |  |
| DUKHCONP1BZ3ARGF3035 | Slate Tile Flooring & Skirting | 2014-03-22 → 2014-04-27 (+36d) | 2014-04-07 → 2014-05-13 (+36d) |  |  | 48d → 17d |  |
| DUKHCONP1BZ3ARGF3055 | Aluminum tile false ceiling | 2014-03-27 → 2014-05-03 (+37d) | 2014-04-24 → 2014-05-31 (+37d) |  |  | 41d → 10d |  |
| DUKHCONP1BZ3ARGF3040 | Cobble Tile flooring | 2014-03-29 → 2014-05-04 (+36d) | 2014-04-14 → 2014-05-20 (+36d) |  |  | 46d → 15d |  |
| DUKHCONP1BZ3ARGF3060 | Gypsum board false ceiling | 2014-03-31 → 2014-05-06 (+36d) | 2014-04-28 → 2014-06-03 (+36d) |  |  | 38d → 7d |  |
| DUKHCONP1BZ3ARGF3050 | Granite - Stair case flooring & Skirting | 2014-04-06 → 2014-05-12 (+36d) | 2014-04-28 → 2014-06-03 (+36d) |  |  | 46d → 15d |  |
| DUKHCONP1BZ3ARGF3065 | Wooden door & PVC Door | 2014-04-20 → 2014-05-26 (+36d) | 2014-05-06 → 2014-06-11 (+36d) |  |  | 46d → 15d |  |
| DUKHCONP1BZ3ARGF3070 | Aluminum doors | 2014-04-26 → 2014-06-01 (+36d) | 2014-05-12 → 2014-06-17 (+36d) |  |  | 46d → 15d |  |
| DUKHCONP1BZ3ARGF3075 | Carpentry & Joinery Works | 2014-05-01 → 2014-06-07 (+37d) | 2014-05-24 → 2014-06-29 (+36d) |  |  | 46d → 15d |  |
| DUKHCONP1BZ3ARGF3080 | Aluminum windows | 2014-05-03 → 2014-06-08 (+36d) | 2014-05-25 → 2014-06-30 (+36d) |  |  | 56d → 25d |  |
| DUKHCONP1BZ3ARGF3085 | S.S.Balustrade | 2014-05-10 → 2014-06-15 (+36d) | 2014-06-01 → 2014-07-07 (+36d) |  |  | 51d → 20d |  |
| DUKHCONP1BZ3ARGF3090 | Installation of Granite Counter Top | 2014-05-14 → 2014-06-19 (+36d) | 2014-05-31 → 2014-07-06 (+36d) |  |  | 46d → 15d |  |
| DUKHCONP1BZ3ARGF3095 | Final Painting | 2014-05-24 → 2014-06-29 (+36d) | 2014-06-21 → 2014-07-27 (+36d) |  |  | 46d → 15d |  |
| 15 | **FIRST FLOORS** | 2014-02-19 → 2014-03-18 (+27d) | 2014-08-26 → 2014-09-22 (+27d) |  |  |  |  |
| DUKHCONP1BZ3ARFF3300 | Block work | 2014-02-19 → 2014-03-18 (+27d) | 2014-03-19 → 2014-04-15 (+27d) |  |  | -8d → -31d |  |
| DUKHCONP1BZ3ARFF3305 | Plastering work | 2014-03-18 → 2014-04-14 (+27d) | 2014-04-15 → 2014-05-12 (+27d) |  |  | -8d → -31d |  |
| DUKHCONP1BZ3ARFF3310 | Flooring screed | 2014-03-26 → 2014-04-22 (+27d) | 2014-04-19 → 2014-05-15 (+26d) |  |  | 9d → -14d |  |
| DUKHCONP1BZ3ARFF3330 | Paint First coat | 2014-04-03 → 2014-04-30 (+27d) | 2014-05-01 → 2014-05-28 (+27d) |  |  | 18d → -5d |  |
| DUKHCONP1BZ3ARFF3315 | Wet area waterproofing | 2014-04-08 → 2014-05-05 (+27d) | 2014-04-24 → 2014-05-21 (+27d) |  |  | -8d → -31d |  |
| DUKHCONP1BZ3ARFF3320 | Ceramic Wall Tiling | 2014-04-17 → 2014-05-14 (+27d) | 2014-05-15 → 2014-06-11 (+27d) |  |  | -8d → -31d |  |
| DUKHCONP1BZ3ARFF3325 | Porcelain Tile flooring | 2014-04-27 → 2014-05-24 (+27d) | 2014-05-25 → 2014-06-21 (+27d) |  |  | -8d → -31d |  |
| DUKHCONP1BZ3ARFF3335 | Slate Tile Flooring & Skirting | 2014-05-14 → 2014-06-10 (+27d) | 2014-05-31 → 2014-06-26 (+26d) |  |  | 11d → -12d |  |
| DUKHCONP1BZ3ARFF3345 | Fixing of Suspension systems | 2014-05-18 → 2014-06-14 (+27d) | 2014-06-09 → 2014-07-06 (+27d) |  |  | -8d → -31d |  |
| DUKHCONP1BZ3ARFF3350 | Granite - Stair case flooring & Skirting | 2014-05-18 → 2014-06-14 (+27d) | 2014-06-09 → 2014-07-06 (+27d) |  |  | 3d → -20d |  |
| DUKHCONP1BZ3ARFF3360 | Gypsum board false ceiling | 2014-05-29 → 2014-06-25 (+27d) | 2014-06-26 → 2014-07-23 (+27d) |  |  | -8d → -31d |  |
| DUKHCONP1BZ3ARFF3365 | Wooden door | 2014-06-14 → 2014-07-10 (+26d) | 2014-06-30 → 2014-07-27 (+27d) |  |  | -8d → -31d |  |
| DUKHCONP1BZ3ARFF3370 | Aluminum Door | 2014-06-22 → 2014-07-19 (+27d) | 2014-07-14 → 2014-08-13 (+30d) |  |  | -8d → -31d |  |
| DUKHCONP1BZ3ARFF3380 | Aluminum windows | 2014-06-29 → 2014-07-26 (+27d) | 2014-07-21 → 2014-08-20 (+30d) |  |  | 5d → -18d |  |
| DUKHCONP1BZ3ARFF3375 | Carpentry & Joinery Works | 2014-06-30 → 2014-07-27 (+27d) | 2014-07-28 → 2014-08-27 (+30d) |  |  | -8d → -31d |  |
| DUKHCONP1BZ3ARFF3385 | Handrail & Balustrade | 2014-07-14 → 2014-08-13 (+30d) | 2014-08-09 → 2014-09-04 (+26d) |  |  | -8d → -31d |  |
| DUKHCONP1BZ3ARFF3390 | Installation of Granite Counter Top | 2014-07-14 → 2014-08-13 (+30d) | 2014-08-09 → 2014-09-04 (+26d) |  |  | -6d → -29d |  |
| DUKHCONP1BZ3ARFF3395 | Final Painting | 2014-07-26 → 2014-08-25 (+30d) | 2014-08-26 → 2014-09-22 (+27d) |  |  | -8d → -31d |  |
| 20 | **ROOF** | 2014-03-08 → 2014-04-13 (+36d) | 2014-05-21 → 2014-06-26 (+36d) |  |  |  |  |
| DUKHCONP1BZ3ARRF3600 | Block work | 2014-03-08 → 2014-04-13 (+36d) | 2014-03-30 → 2014-05-05 (+36d) |  |  | 67d → 36d |  |

| ID | Task | Start | Finish | Total float |
| --- | --- | --- | --- | --- |
| DUKHCONP1BZ3ARRF3605 | Plastering work | 2014-03-19 → 2014-04-24 (+36d) | 2014-04-10 → 2014-05-17 (+37d) | 67d → 36d |
| DUKHCONP1BZ3ARRF3610 | Flooring screed | 2014-04-06 → 2014-05-12 (+36d) | 2014-04-22 → 2014-05-28 (+36d) | 67d → 36d |
| DUKHCONP1BZ3ARRF3695 | Painting -Storage area | 2014-04-17 → 2014-05-24 (+37d) | 2014-05-10 → 2014-06-15 (+36d) | 67d → 36d |
| DUKHCONP1BZ3ARRF3620 | Epoxy Painting -Storage area | 2014-05-05 → 2014-06-10 (+36d) | 2014-05-21 → 2014-06-26 (+36d) | 67d → 36d |
| 15 | **EXTERNAL FINISHES** | 2014-03-18 → 2014-04-08 (+21d) | 2014-05-29 → 2014-07-02 (+34d) |  |
| 10 | **ROOF** | 2014-03-18 → 2014-04-08 (+21d) | 2014-05-27 → 2014-07-02 (+36d) |  |
| DUKHCONP1BZ3ARRF3630 | Leveling Screed for Waterproofing | 2014-03-18 → 2014-04-08 (+21d) | 2014-04-15 → 2014-05-06 (+21d) | 67d → 49d |
| DUKHCONP1BZ3ARRF3635 | Laying of Waterproofing Membrane | 2014-03-22 → 2014-04-12 (+21d) | 2014-04-19 → 2014-05-10 (+21d) | 67d → 49d |
| DUKHCONP1BZ3ARRF3640 | Installation of Insulation & Protection | 2014-03-26 → 2014-04-16 (+21d) | 2014-04-23 → 2014-05-14 (+21d) | 67d → 49d |
| DUKHCONP1BZ3ARRF3645 | Lime Stone Chips & Paving slab Installation | 2014-03-31 → 2014-04-21 (+21d) | 2014-04-28 → 2014-05-19 (+21d) | 67d → 49d |
| DUKHCONP1BZ3ARRF3650 | Install. of Gal. Frame & Aluminum Slat Screen | 2014-04-08 → 2014-04-29 (+21d) | 2014-05-06 → 2014-05-27 (+21d) | 67d → 49d |
| DUKHCONP1BZ3ARRF3655 | Installation of Pumps Protection cabinets | 2014-04-23 → 2014-05-14 (+21d) | 2014-05-15 → 2014-06-05 (+21d) | 67d → 49d |
| DUKHCONP1BZ3ARRF3660 | Installation of Access Ladder | 2014-05-11 → 2014-06-16 (+36d) | 2014-05-27 → 2014-07-02 (+36d) | 67d → 36d |
| 15 | **ELEVATION** | 2014-04-02 → 2014-05-03 (+31d) | 2014-05-29 → 2014-06-29 (+31d) |  |
| DUKHCONP1BZ3AREL3665 | External Plastering | 2014-04-02 → 2014-05-03 (+31d) | 2014-04-30 → 2014-05-31 (+31d) | 65d → 39d |
| DUKHCONP1BZ3AREL3670 | External stone cladding works | 2014-04-20 → 2014-05-20 (+30d) | 2014-05-12 → 2014-06-11 (+30d) | 65d → 39d |
| DUKHCONP1BZ3AREL3675 | GRC works | 2014-04-26 → 2014-05-26 (+30d) | 2014-05-18 → 2014-06-17 (+30d) | 65d → 39d |
| DUKHCONP1BZ3AREL3680 | External Painting | 2014-05-07 → 2014-06-07 (+31d) | 2014-05-29 → 2014-06-29 (+31d) | 65d → 39d |
| 20 | **MEP WORKS** | 2013-10-07 → 2013-11-14 (+38d) | 2014-08-26 → 2014-09-22 (+27d) |  |
| 10 | **ELECTRICAL WORKS** | 2014-01-14 → 2014-02-20 (+37d) | 2014-08-26 → 2014-09-22 (+27d) |  |
| 10 | **GROUND FLOOR** | 2014-01-14 → 2014-02-20 (+37d) | 2014-05-24 → 2014-06-29 (+36d) |  |
| DUKHCONP1BZ3ELGF4000 | Fixing of wall conduits & switch socket boxes | 2014-01-14 → 2014-02-20 (+37d) | 2014-02-12 → 2014-03-20 (+36d) | 47d → 16d |
| DUKHCONP1BZ3ELGF4005 | Cable tray & trunking installation | 2014-01-26 → 2014-03-04 (+37d) | 2014-02-18 → 2014-03-26 (+36d) | 65d → 34d |
| DUKHCONP1BZ3ELGF4010 | Installation of wiring & Main Cabling | 2014-02-03 → 2014-03-12 (+37d) | 2014-03-04 → 2014-04-09 (+36d) | 65d → 34d |
| DUKHCONP1BZ3ELGF4015 | Install. of CAMS & Fire Fighting Accessories | 2014-04-08 → 2014-05-14 (+36d) | 2014-05-06 → 2014-06-11 (+36d) | 60d → 29d |
| DUKHCONP1BZ3ELGF4020 | Installation of DBS,MCCB Accessories. | 2014-04-14 → 2014-05-20 (+36d) | 2014-05-06 → 2014-06-11 (+36d) | 38d → 7d |
| DUKHCONP1BZ3ELGF4025 | Installation of Lighting fixtures & Accessories | 2014-04-26 → 2014-06-01 (+36d) | 2014-05-24 → 2014-06-29 (+36d) | 40d → 9d |
| DUKHCONP1BZ3ELGF4030 | Installation of Telephone System | 2014-04-26 → 2014-06-01 (+36d) | 2014-05-18 → 2014-06-23 (+36d) | 38d → 7d |
| 15 | **FIRST FLOORS** | 2014-02-25 → 2014-03-24 (+27d) | 2014-07-24 → 2014-08-24 (+31d) |  |
| DUKHCONP1BZ3ELFF4035 | Fixing of wall conduits & switch socket boxes | 2014-02-25 → 2014-03-24 (+27d) | 2014-03-25 → 2014-04-21 (+27d) | 5d → -18d |
| DUKHCONP1BZ3ELFF4040 | Cable tray & trunking installation | 2014-03-09 → 2014-04-05 (+27d) | 2014-03-31 → 2014-04-27 (+27d) | 35d → 12d |
| DUKHCONP1BZ3ELFF4045 | Installation of wiring & Main Cabling | 2014-03-17 → 2014-04-13 (+27d) | 2014-04-14 → 2014-05-11 (+27d) | 35d → 12d |
| DUKHCONP1BZ3ELFF4050 | Installation of Telephone System | 2014-06-04 → 2014-07-01 (+27d) | 2014-07-02 → 2014-07-29 (+27d) | 14d → -9d |
| DUKHCONP1BZ3ELFF4055 | Install. of CAMS & Fire Fighting Accessories | 2014-06-07 → 2014-07-03 (+26d) | 2014-07-05 → 2014-07-31 (+26d) | 34d → 11d |
| DUKHCONP1BZ3ELFF4060 | Installation of DBS,MCCB Accessories. | 2014-06-14 → 2014-07-10 (+26d) | 2014-07-06 → 2014-08-05 (+30d) | -8d → -31d |
| DUKHCONP1BZ3ELFF4065 | Installation of Lighting fixtures & Accessories | 2014-06-26 → 2014-07-23 (+27d) | 2014-07-24 → 2014-08-24 (+31d) | -8d → -31d |
| 20 | **ROOF** | 2014-07-16 → 2014-08-16 (+31d) | 2014-08-26 → 2014-09-22 (+27d) |  |
| DUKHCONP1BZ3ELRF4070 | Installation of Isolator | 2014-07-16 → 2014-08-16 (+31d) | 2014-08-09 → 2014-09-04 (+26d) | -8d → -31d |
| DUKHCONP1BZ3ELRF4075 | Installation of TV Dish Antenna | 2014-07-28 → 2014-08-27 (+30d) | 2014-08-26 → 2014-09-22 (+27d) | -8d → -31d |
| 15 | **PLUMBING, DRAINAGE & FIRE FIGHTING WORKS** | 2013-10-07 → 2013-11-14 (+38d) | 2014-08-07 → 2014-09-03 (+27d) |  |
| 10 | **GROUND FLOOR** | 2013-10-07 → 2013-11-14 (+38d) | 2014-05-24 → 2014-06-29 (+36d) |  |
| DUKHCONP1BZ3PLUG4300 | Drainage / Storm Pipes in Grade Slab | 2013-10-07 → 2013-11-14 (+38d) | 2013-10-31 → 2013-12-07 (+37d) | 0d → -31d |
| DUKHCONP1BZ3PLGF4305 | Installation of Plumbing pipes & testing | 2014-01-25 → 2014-03-03 (+37d) | 2014-02-15 → 2014-03-23 (+36d) | 38d → 7d |
| DUKHCONP1BZ3PLGF4310 | Installation of Drainage pipes &testing | 2014-01-25 → 2014-03-03 (+37d) | 2014-02-15 → 2014-03-23 (+36d) | 41d → 10d |
| DUKHCONP1BZ3PLGF4315 | Sanitary Fittings & Accessories | 2014-04-26 → 2014-06-01 (+36d) | 2014-05-18 → 2014-06-23 (+36d) | 70d → 39d |
| DUKHCONP1BZ3PLGF4320 | Installation of Water Heater | 2014-05-07 → 2014-06-12 (+36d) | 2014-05-24 → 2014-06-29 (+36d) | 70d → 39d |
| 15 | **FIRST FLOORS** | 2014-03-09 → 2014-04-05 (+27d) | 2014-07-17 → 2014-08-17 (+31d) |  |
| DUKHCONP1BZ3PLFF4325 | Installation of Plumbing pipes & testing | 2014-03-09 → 2014-04-05 (+27d) | 2014-03-29 → 2014-04-24 (+26d) | -8d → -31d |
| DUKHCONP1BZ3PLFF4330 | Installation of Drainage pipes & testing | 2014-03-09 → 2014-04-05 (+27d) | 2014-03-29 → 2014-04-24 (+26d) | 19d → -4d |
| DUKHCONP1BZ3PLFF4335 | Sanitary Fittings & Accessories | 2014-06-19 → 2014-07-16 (+27d) | 2014-07-12 → 2014-08-11 (+30d) | 8d → -15d |
| DUKHCONP1BZ3PLFF4340 | Installation of Water Heater | 2014-07-01 → 2014-07-28 (+27d) | 2014-07-17 → 2014-08-17 (+31d) | 8d → -15d |
| 20 | **ROOF** | 2014-04-05 → 2014-05-11 (+36d) | 2014-08-07 → 2014-09-03 (+27d) |  |
| DUKHCONP1BZ3PLRF4345 | Installation of Plumbing pipes & fittings | 2014-04-05 → 2014-05-11 (+36d) | 2014-04-20 → 2014-05-26 (+36d) | 73d → 42d |
| DUKHCONP1BZ3PLRF4350 | Installation of Rain water Pipes | 2014-04-22 → 2014-05-22 (+30d) | 2014-05-08 → 2014-06-08 (+31d) | 68d → 42d |
| DUKHCONP1BZ3PLRF4355 | Roof Water Tank Installation & Connections | 2014-07-07 → 2014-08-06 (+30d) | 2014-08-07 → 2014-09-03 (+27d) | 8d → -15d |
| 20 | **AC WORKS** | 2014-02-15 → 2014-03-23 (+36d) | 2014-07-31 → 2014-08-31 (+31d) |  |
| 10 | **GROUND FLOOR** | 2014-02-15 → 2014-03-23 (+36d) | 2014-05-21 → 2014-06-26 (+36d) |  |
| DUKHCONP1BZ3ACGF4600 | Installation AC Pipes | 2014-02-15 → 2014-03-23 (+36d) | 2014-03-09 → 2014-04-14 (+36d) | 69d → 38d |
| DUKHCONP1BZ3ACGF4605 | Fixing of Ventilation Equipments | 2014-04-08 → 2014-05-14 (+36d) | 2014-05-06 → 2014-06-11 (+36d) | 57d → 26d |
| DUKHCONP1BZ3ACGF4610 | Fixing of Split AC | 2014-04-29 → 2014-06-04 (+36d) | 2014-05-21 → 2014-06-26 (+36d) | 57d → 26d |
| 15 | **FIRST FLOORS** | 2014-04-01 → 2014-04-28 (+27d) | 2014-07-20 → 2014-08-19 (+30d) |  |
| DUKHCONP1BZ3ACFF4615 | Installation AC Pipes | 2014-04-01 → 2014-04-28 (+27d) | 2014-04-23 → 2014-05-20 (+27d) | 35d → 12d |
| DUKHCONP1BZ3ACFF4620 | Fixing of Ventilation Equipments | 2014-06-07 → 2014-07-03 (+26d) | 2014-07-05 → 2014-07-31 (+26d) | 6d → -17d |
| DUKHCONP1BZ3ACFF4625 | Fixing of Split AC | 2014-06-28 → 2014-07-24 (+26d) | 2014-07-20 → 2014-08-19 (+30d) | 6d → -17d |
| 20 | **ROOF** | 2014-04-13 → 2014-05-06 (+23d) | 2014-07-31 → 2014-08-31 (+31d) |  |
| DUKHCONP1BZ3ACRF4630 | Installation of Refrigerant Pipes | 2014-04-13 → 2014-05-06 (+23d) | 2014-05-11 → 2014-06-03 (+23d) | 76d → 56d |
| DUKHCONP1BZ3ACRF4635 | Installation of Condensing Unit | 2014-07-03 → 2014-07-30 (+27d) | 2014-07-31 → 2014-08-31 (+31d) | 11d → -12d |
| 25 | **EXTERNAL WORKS** | 2014-02-20 → 2014-03-19 (+27d) | 2014-08-30 → 2014-09-15 (+16d) |  |
| 10 | **MISCELLANEOUS** | 2014-02-20 → 2014-03-19 (+27d) | 2014-08-30 → 2014-09-15 (+16d) |  |
| DUKHCONP1BZ3MSEX5020 | Construction Entrance Ramp | 2014-02-20 → 2014-03-19 (+27d) | 2014-03-20 → 2014-04-16 (+27d) | 58d → 35d |

| ID | Task | Start | Finish | Complete | Total float | Other |
| --- | --- | --- | --- | --- | --- | --- |
| DUKHCONP1BZ3MSEX5000 | Construction of Manholes | 2014-02-23 → 2014-03-31 (+36d) | 2014-03-23 → 2014-04-28 (+36d) |  | 27d → -4d |  |
| DUKHCONP1BZ3MSEX5025 | SS.Handrails and Balustrades | 2014-03-10 → 2014-04-06 (+27d) | 2014-04-01 → 2014-04-28 (+27d) |  | 60d → 37d |  |
| DUKHCONP1BZ3MSEX5005 | Construction of Soak pit, Chambers | 2014-03-09 → 2014-04-14 (+36d) | 2014-04-06 → 2014-05-12 (+36d) |  | 27d → -4d |  |
| DUKHCONP1BZ3MSEX5015 | Construction of grease Trap | 2014-03-29 → 2014-05-04 (+36d) | 2014-04-20 → 2014-05-26 (+36d) |  | 27d → -4d |  |
| DUKHCONP1BZ3MSEX5010 | Telephone cable laying | 2014-04-21 → 2014-05-27 (+36d) | 2014-05-19 → 2014-06-24 (+36d) |  | 27d → -4d |  |
| DUKHCONP1BZ3MSEX5335 | Aluminum Roll-up Shutter with 2m Wall | 2014-07-29 → 2014-08-18 (+20d) | 2014-08-30 → 2014-09-15 (+16d) |  | 14d → 0d |  |
| 15 | **WATER TANK ENCLOSURE** | 2014-03-06 → 2014-03-31 (+25d) | 2014-06-10 → 2014-07-05 (+25d) |  |  |  |
| DUKHCONP1BZ3WEEX5030 | Excavation | 2014-03-06 → 2014-03-31 (+25d) | 2014-03-29 → 2014-04-22 (+24d) |  | 40d → 19d |  |
| DUKHCONP1BZ3WEEX5035 | Construction of Raft | 2014-03-18 → 2014-04-12 (+25d) | 2014-04-15 → 2014-05-10 (+25d) |  | 40d → 19d |  |
| DUKHCONP1BZ3WEEX5040 | Block works & Plastering | 2014-03-27 → 2014-04-21 (+25d) | 2014-04-24 → 2014-05-19 (+25d) |  | 55d → 34d |  |
| DUKHCONP1BZ3WEEX5045 | Flooring & Painting | 2014-04-08 → 2014-05-03 (+25d) | 2014-05-06 → 2014-05-31 (+25d) |  | 55d → 34d |  |
| DUKHCONP1BZ3WEEX5050 | Installation of Steel Gate | 2014-04-26 → 2014-05-20 (+24d) | 2014-05-18 → 2014-06-11 (+24d) |  | 55d → 34d |  |
| DUKHCONP1BZ3WEEX5060 | Structural steel & SS Shed cover installation | 2014-05-01 → 2014-05-26 (+25d) | 2014-05-29 → 2014-06-23 (+25d) |  | 55d → 34d |  |
| DUKHCONP1BZ3WEEX5065 | Install. of Water Tank,Chiller,Pump & Meter | 2014-05-13 → 2014-06-07 (+25d) | 2014-06-10 → 2014-07-05 (+25d) |  | 55d → 34d |  |
| 20 | **HARD LANDSCAPING** | 2014-03-18 → 2014-04-14 (+27d) | 2014-05-06 → 2014-06-02 (+27d) |  |  |  |
| DUKHCONP1BZ3HDEX5090 | kerb works | 2014-03-18 → 2014-04-14 (+27d) | 2014-04-09 → 2014-05-06 (+27d) |  | 60d → 37d |  |
| DUKHCONP1BZ3HDEX5095 | Cobble Stone Works | 2014-03-30 → 2014-04-26 (+27d) | 2014-04-21 → 2014-05-18 (+27d) |  | 60d → 37d |  |
| DUKHCONP1BZ3HDEX5100 | Interlock works | 2014-04-14 → 2014-05-11 (+27d) | 2014-05-06 → 2014-06-02 (+27d) |  | 60d → 37d |  |
| 25 | **SOFT LANDSCAPING** | 2014-04-26 → 2014-05-22 (+26d) | 2014-06-04 → 2014-07-01 (+27d) |  |  |  |
| DUKHCONP1BZ3SLEX5105 | Laying of Grass/ green area | 2014-04-26 → 2014-05-22 (+26d) | 2014-05-24 → 2014-06-19 (+26d) |  | 60d → 37d |  |
| DUKHCONP1BZ3SLEX5110 | Laying of Palm tree | 2014-05-07 → 2014-06-03 (+27d) | 2014-06-04 → 2014-07-01 (+27d) |  | 60d → 37d |  |
| 30 | **TESTING AND COMMISSIONING** | 2014-08-27 → 2014-09-23 (+27d) | 2014-09-24 → 2014-10-23 (+29d) |  |  |  |
| DUKHCONP1BZ3ACTC8000 | Pre-Commissioning & Testing of AC Works | 2014-08-27 → 2014-09-23 (+27d) | 2014-09-24 → 2014-10-23 (+29d) |  | -8d → -31d |  |
| DUKHCONP1BZ3ELTC8010 | Pre-Commissioning & Testing of Electrical Works | 2014-08-27 → 2014-09-23 (+27d) | 2014-09-24 → 2014-10-23 (+29d) |  | -8d → -31d |  |
| DUKHCONP1BZ3PLTC8005 | Pre-Commissioning & Testing of Plumbing Works | 2014-08-27 → 2014-09-23 (+27d) | 2014-09-24 → 2014-10-23 (+29d) |  | -8d → -31d |  |
| 25 | **ZONE - 4 (4 Twin Villas)** |  | 2014-10-26 → 2014-11-22 (+27d) |  |  |  |
| 10 | **STRUCTURAL WORKS** |  | 2014-05-03 → 2014-06-03 (+31d) |  |  |  |
| 10 | **SUB STRUCTURE** |  | 2013-12-15 → 2014-01-21 (+37d) |  |  |  |
| 10 | **UPTO GRADE SLAB** |  | 2013-12-15 → 2014-01-21 (+37d) |  |  |  |
| DUKHCONP1BZ4STUG1000 | Footing Excavation | 2013-07-23 A | 2013-08-24 A | 0% → 100% | 0d → none |  |
| DUKHCONP1BZ4STUG1005 | Footing Antitermite | 2013-08-04 A | 2013-09-02 A | 0% → 100% | 0d → none |  |
| DUKHCONP1BZ4STUG1010 | Footing Blinding | 2013-08-08 A | 2013-09-07 A | 0% → 100% | 0d → none | resources BLINDING MASON SK [599 h]; LABOR- SUBCONTRACTOR [449.25 h]; BLINDING QTY [748 Sqm] → CONCRETE MASON SK [599 h]; LABOR- SUBCONTRACTOR [449.25 h]; BLINDING QTY [748 Sqm] |
| DUKHCONP1BZ4STUG1015 | Footing Waterproofing & Screed | 2013-08-18 A | 2013-09-15 A | 0% → 100% | 0d → none |  |
| DUKHCONP1BZ4STUG1020 | Construction of foundations | 2013-09-02 A | 2013-09-24 A | 0% → 100% | 0d → none |  |
| DUKHCONP1BZ4STUG1025 | Construction of neck of columns | 2013-09-11 → 2013-09-29 A (+18d) | 2013-10-09 → 2013-10-29 A (+20d) | 0% → 100% | 0d → none |  |
| DUKHCONP1BZ4STUG1030 | Waterproofing Footing & Neck Column | 2013-09-21 → 2013-10-08 A (+17d) | 2013-10-21 → 2013-11-07 (+17d) | 0% → 76% | 0d → -15d |  |
| DUKHCONP1BZ4STUG1035 | Backfilling Upto Grade Beam Bottom | 2013-10-02 → 2013-10-22 A (+20d) | 2013-11-02 → 2013-11-19 (+17d) | 0% → 36% | 0d → -15d |  |
| DUKHCONP1BZ4STUG1040 | Construction of Grade Beams | 2013-10-21 → 2013-11-07 (+17d) | 2013-11-18 → 2013-12-05 (+17d) |  | 0d → -15d | resources BLINDING MASON SK [321 h]; SCREED MASON SK [321 h]; STEEL FIXERS SK [1621 h]; CARPENTERS SK [2112 h]; CONCRETE MASON SK [320 h]; LABOR- SUBCONTRACTOR [3401.25 h]; BLINDING QTY [401 Sqm]; SCREED QTY [401 Sqm]; REINFORCEMENT BARS QTY [20261 kg]; FORMWORK QTY [1056 Sqm]; CONCRETE QTY [160 Cum] → CONCRETE MASON SK [321 h]; SCREED MASON SK [321 h]; STEEL FIXERS SK [1621 h]; CARPENTERS SK [2112 h]; CONCRETE MASON SK [320 h]; LABOR- SUBCONTRACTOR [3401.25 h]; BLINDING QTY [401 Sqm]; SCREED QTY [401 Sqm]; REINFORCEMENT BARS QTY [20261 kg]; FORMWORK QTY [1056 Sqm]; CONCRETE QTY [160 Cum] |
| DUKHCONP1BZ4STUG1045 | Construction of slab on grade | 2013-11-17 → 2013-12-24 (+37d) | 2013-12-15 → 2014-01-21 (+37d) |  | 0d → -31d | resources BLINDING MASON SK [1219 h]; SCREED MASON SK [1218 h]; STEEL FIXERS SK [493 h]; CONCRETE MASON SK [496 h]; LABOR- SUBCONTRACTOR [2112.75 h]; BLINDING QTY [1523 Sqm]; SCREED QTY [1522 Sqm]; CONCRETE QTY [248 Cum]; WELDED WIRE MESH [1848 Sqm] → CONCRETE MASON SK [1219 h]; SCREED MASON SK [1218 h]; STEEL FIXERS SK [493 h]; CONCRETE MASON SK [496 h]; LABOR- SUBCONTRACTOR [2112.75 h]; BLINDING QTY [1523 Sqm]; SCREED QTY [1522 Sqm]; CONCRETE QTY [248 Cum]; WELDED WIRE MESH [1848 Sqm] |
| 15 | **SUPERSTRUCTURE** | 2013-12-03 → 2014-01-09 (+37d) | 2014-05-03 → 2014-06-03 (+31d) |  |  |  |
| 10 | **GROUND FLOOR** | 2013-12-03 → 2014-01-09 (+37d) | 2014-01-28 → 2014-03-06 (+37d) |  |  |  |
| DUKHCONP1BZ4STGF2000 | Column-Rebar & Formwork | 2013-12-03 → 2014-01-09 (+37d) | 2014-01-01 → 2014-02-06 (+36d) |  | 0d → -31d |  |
| DUKHCONP1BZ4STGF2005 | Column-Concrete | 2013-12-12 → 2014-01-19 (+38d) | 2014-01-08 → 2014-02-15 (+38d) |  | 0d → -31d |  |
| DUKHCONP1BZ4STGF2010 | Beam, Stairs ,Slab-Rebar & Formwork | 2013-12-28 → 2014-02-02 (+36d) | 2014-01-25 → 2014-03-03 (+37d) |  | 0d → -31d |  |
| DUKHCONP1BZ4STGF2015 | Beam, Stairs ,Slab-Concrete | 2014-01-13 → 2014-02-19 (+37d) | 2014-01-28 → 2014-03-06 (+37d) |  | 0d → -31d |  |
| 15 | **FIRST FLOORS** | 2014-01-15 → 2014-02-22 (+38d) | 2014-03-02 → 2014-04-07 (+36d) |  |  |  |
| DUKHCONP1BZ4STFF2020 | Column-Rebar & Formwork | 2014-01-15 → 2014-02-22 (+38d) | 2014-02-13 → 2014-03-22 (+37d) |  | 0d → -31d |  |
| DUKHCONP1BZ4STFF2025 | Column-Concrete | 2014-01-25 → 2014-03-03 (+37d) | 2014-02-20 → 2014-03-29 (+37d) |  | 0d → -31d |  |
| DUKHCONP1BZ4STFF2030 | Beam, Stairs ,Slab-Rebar & Formwork | 2014-01-28 → 2014-03-06 (+37d) | 2014-02-26 → 2014-04-03 (+36d) |  | 0d → -31d |  |
| DUKHCONP1BZ4STFF2035 | Beam, Stairs ,Slab-Concrete | 2014-02-15 → 2014-03-23 (+36d) | 2014-03-02 → 2014-04-07 (+36d) |  | 0d → -31d |  |
| 20 | **ROOF** | 2014-02-20 → 2014-03-29 (+37d) | 2014-05-03 → 2014-06-03 (+31d) |  |  |  |
| DUKHCONP1BZ4STRF2040 | Column-Rebar & Formwork | 2014-02-20 → 2014-03-29 (+37d) | 2014-03-12 → 2014-04-17 (+36d) |  | 16d → -15d |  |
| DUKHCONP1BZ4STRF2045 | Column-Concrete | 2014-02-24 → 2014-04-01 (+36d) | 2014-03-15 → 2014-04-20 (+36d) |  | 26d → -5d |  |
| DUKHCONP1BZ4STRF2050 | Slab-Rebar & Formwork - Head Room | 2014-02-26 → 2014-04-03 (+36d) | 2014-03-20 → 2014-04-26 (+37d) |  | 26d → -5d |  |
| DUKHCONP1BZ4STRF2055 | Slab-Concrete-Head room | 2014-03-12 → 2014-04-17 (+36d) | 2014-03-26 → 2014-05-01 (+36d) |  | 26d → -5d |  |
| DUKHCONP1BZ4STRF2060 | Construction of Parapets | 2014-03-19 → 2014-04-24 (+36d) | 2014-04-16 → 2014-05-22 (+36d) |  | 62d → 31d |  |
| DUKHCONP1BZ4STRF2065 | Construction of up stands/Plinth | 2014-04-05 → 2014-05-06 (+31d) | 2014-05-03 → 2014-06-03 (+31d) |  | 67d → 40d |  |
| 15 | **FINISHING WORKS** | 2014-02-06 → 2014-03-16 (+38d) | 2014-09-24 → 2014-10-23 (+29d) |  |  |  |
| 10 | **INTERNAL FINISHES** | 2014-02-06 → 2014-03-16 (+38d) | 2014-09-24 → 2014-10-23 (+29d) |  |  |  |
| 10 | **GROUND FLOOR** | 2014-02-06 → 2014-03-16 (+38d) | 2014-07-20 → 2014-08-28 (+39d) |  |  |  |
| DUKHCONP1BZ4ARGF3000 | Block work | 2014-02-06 → 2014-03-16 (+38d) | 2014-03-08 → 2014-04-13 (+36d) |  | 38d → 7d |  |
| DUKHCONP1BZ4ARGF3005 | Plastering work | 2014-03-02 → 2014-04-07 (+36d) | 2014-03-30 → 2014-05-05 (+36d) |  | 38d → 7d |  |
| DUKHCONP1BZ4ARGF3010 | Flooring screed | 2014-03-10 → 2014-04-15 (+36d) | 2014-04-02 → 2014-05-08 (+36d) |  | 46d → 15d |  |
| DUKHCONP1BZ4ARGF3030 | Paint First coat | 2014-03-18 → 2014-04-23 (+36d) | 2014-04-15 → 2014-05-21 (+36d) |  | 52d → 21d |  |
| DUKHCONP1BZ4ARGF3015 | Wet area waterproofing & Protection Screed | 2014-03-19 → 2014-04-24 (+36d) | 2014-04-05 → 2014-05-11 (+36d) |  | 38d → 7d |  |
| DUKHCONP1BZ4ARGF3020 | Ceramic Wall Tiling | 2014-03-25 → 2014-04-30 (+36d) | 2014-04-22 → 2014-05-28 (+36d) |  | 38d → 7d |  |
| DUKHCONP1BZ4ARGF3025 | Porcelain Tile flooring | 2014-03-31 → 2014-05-06 (+36d) | 2014-04-28 → 2014-06-03 (+36d) |  | 38d → 7d |  |
| DUKHCONP1BZ4ARGF3045 | Fixing of Suspension systems | 2014-04-17 → 2014-05-24 (+37d) | 2014-05-10 → 2014-06-15 (+36d) |  | 38d → 7d |  |
| DUKHCONP1BZ4ARGF3035 | Slate Tile Flooring & Skirting | 2014-04-20 → 2014-05-26 (+36d) | 2014-05-06 → 2014-06-11 (+36d) |  | 48d → 17d |  |
| DUKHCONP1BZ4ARGF3055 | Aluminum tile false ceiling | 2014-04-26 → 2014-06-01 (+36d) | 2014-05-24 → 2014-06-29 (+36d) |  | 41d → 10d |  |

| ID | Task | Start | Finish | Total float |
| --- | --- | --- | --- | --- |
| DUKHCONP1BZ4ARGF3040 | Cobble Tile flooring | 2014-04-27 → 2014-06-02 (+36d) | 2014-05-13 → 2014-06-18 (+36d) | 46d → 15d |
| DUKHCONP1BZ4ARGF3060 | Gypsum board false ceiling | 2014-04-29 → 2014-06-04 (+36d) | 2014-05-27 → 2014-07-02 (+36d) | 38d → 7d |
| DUKHCONP1BZ4ARGF3050 | Granite - Stair case flooring & Skirting | 2014-05-05 → 2014-06-10 (+36d) | 2014-05-27 → 2014-07-02 (+36d) | 46d → 15d |
| DUKHCONP1BZ4ARGF3065 | Wooden door & PVC Door | 2014-05-19 → 2014-06-24 (+36d) | 2014-06-04 → 2014-07-10 (+36d) | 46d → 15d |
| DUKHCONP1BZ4ARGF3070 | Aluminum doors | 2014-05-25 → 2014-06-30 (+36d) | 2014-06-10 → 2014-07-16 (+36d) | 46d → 15d |
| DUKHCONP1BZ4ARGF3075 | Carpentry & Joinery Works | 2014-05-31 → 2014-07-06 (+36d) | 2014-06-22 → 2014-07-28 (+36d) | 46d → 15d |
| DUKHCONP1BZ4ARGF3080 | Aluminum windows | 2014-06-01 → 2014-07-07 (+36d) | 2014-06-23 → 2014-07-29 (+36d) | 56d → 25d |
| DUKHCONP1BZ4ARGF3085 | S.S.Balustrade | 2014-06-08 → 2014-07-14 (+36d) | 2014-06-30 → 2014-08-09 (+40d) | 51d → 20d |
| DUKHCONP1BZ4ARGF3090 | Installation of Granite Counter Top | 2014-06-12 → 2014-07-19 (+37d) | 2014-06-29 → 2014-08-07 (+39d) | 46d → 15d |
| DUKHCONP1BZ4ARGF3095 | Final Painting | 2014-06-22 → 2014-07-28 (+36d) | 2014-07-20 → 2014-08-28 (+39d) | 46d → 15d |
| 15 | **FIRST FLOORS** | 2014-03-20 → 2014-04-16 (+27d) | 2014-09-24 → 2014-10-23 (+29d) |  |
| DUKHCONP1BZ4ARFF3300 | Block work | 2014-03-20 → 2014-04-16 (+27d) | 2014-04-17 → 2014-05-14 (+27d) | -8d → -31d |
| DUKHCONP1BZ4ARFF3305 | Plastering work | 2014-04-16 → 2014-05-13 (+27d) | 2014-05-14 → 2014-06-10 (+27d) | -8d → -31d |
| DUKHCONP1BZ4ARFF3310 | Flooring screed | 2014-04-24 → 2014-05-21 (+27d) | 2014-05-18 → 2014-06-14 (+27d) | 9d → -14d |
| DUKHCONP1BZ4ARFF3330 | Paint First coat | 2014-05-03 → 2014-05-29 (+26d) | 2014-05-31 → 2014-06-26 (+26d) | 18d → -5d |
| DUKHCONP1BZ4ARFF3315 | Wet area waterproofing | 2014-05-07 → 2014-06-03 (+27d) | 2014-05-24 → 2014-06-19 (+26d) | -8d → -31d |
| DUKHCONP1BZ4ARFF3320 | Ceramic Wall Tiling | 2014-05-17 → 2014-06-12 (+26d) | 2014-06-14 → 2014-07-10 (+26d) | -8d → -31d |
| DUKHCONP1BZ4ARFF3325 | Porcelain Tile flooring | 2014-05-26 → 2014-06-22 (+27d) | 2014-06-23 → 2014-07-20 (+27d) | -8d → -31d |
| DUKHCONP1BZ4ARFF3335 | Slate Tile Flooring & Skirting | 2014-06-12 → 2014-07-09 (+27d) | 2014-06-29 → 2014-07-26 (+27d) | 11d → -12d |
| DUKHCONP1BZ4ARFF3345 | Fixing of Suspension systems | 2014-06-16 → 2014-07-13 (+27d) | 2014-07-08 → 2014-08-07 (+30d) | -8d → -31d |
| DUKHCONP1BZ4ARFF3350 | Granite - Stair case flooring & Skirting | 2014-06-16 → 2014-07-13 (+27d) | 2014-07-08 → 2014-08-07 (+30d) | 3d → -20d |
| DUKHCONP1BZ4ARFF3360 | Gypsum board false ceiling | 2014-06-28 → 2014-07-24 (+26d) | 2014-07-26 → 2014-08-25 (+30d) | -8d → -31d |
| DUKHCONP1BZ4ARFF3365 | Wooden door | 2014-07-13 → 2014-08-12 (+30d) | 2014-07-29 → 2014-08-28 (+30d) | -8d → -31d |
| DUKHCONP1BZ4ARFF3370 | Aluminum Door | 2014-07-21 → 2014-08-20 (+30d) | 2014-08-16 → 2014-09-11 (+26d) | -8d → -31d |
| DUKHCONP1BZ4ARFF3380 | Aluminum windows | 2014-07-28 → 2014-08-27 (+30d) | 2014-08-23 → 2014-09-18 (+26d) | 5d → -18d |
| DUKHCONP1BZ4ARFF3375 | Carpentry & Joinery Works | 2014-07-29 → 2014-08-28 (+30d) | 2014-08-30 → 2014-09-25 (+26d) | -8d → -31d |
| DUKHCONP1BZ4ARFF3385 | Handrail & Balustrade | 2014-08-16 → 2014-09-11 (+26d) | 2014-09-07 → 2014-10-04 (+27d) | -8d → -31d |
| DUKHCONP1BZ4ARFF3390 | Installation of Granite Counter Top | 2014-08-16 → 2014-09-11 (+26d) | 2014-09-07 → 2014-10-04 (+27d) | -6d → -29d |
| DUKHCONP1BZ4ARFF3395 | Final Painting | 2014-08-27 → 2014-09-23 (+27d) | 2014-09-24 → 2014-10-23 (+29d) | -8d → -31d |
| 20 | **ROOF** | 2014-04-06 → 2014-05-12 (+36d) | 2014-06-19 → 2014-07-26 (+37d) |  |
| DUKHCONP1BZ4ARRF3600 | Block work | 2014-04-06 → 2014-05-12 (+36d) | 2014-04-28 → 2014-06-03 (+36d) | 67d → 36d |
| DUKHCONP1BZ4ARRF3605 | Plastering work | 2014-04-17 → 2014-05-24 (+37d) | 2014-05-10 → 2014-06-15 (+36d) | 67d → 36d |
| DUKHCONP1BZ4ARRF3610 | Flooring screed | 2014-05-05 → 2014-06-10 (+36d) | 2014-05-21 → 2014-06-26 (+36d) | 67d → 36d |
| DUKHCONP1BZ4ARRF3695 | Painting -Storage area | 2014-05-17 → 2014-06-22 (+36d) | 2014-06-08 → 2014-07-14 (+36d) | 67d → 36d |
| DUKHCONP1BZ4ARRF3620 | Epoxy Painting -Storage area | 2014-06-03 → 2014-07-09 (+36d) | 2014-06-19 → 2014-07-26 (+37d) | 67d → 36d |
| 15 | **EXTERNAL FINISHES** | 2014-04-16 → 2014-05-18 (+32d) | 2014-06-28 → 2014-07-31 (+33d) |  |
| 10 | **ROOF** | 2014-04-16 → 2014-05-18 (+32d) | 2014-06-25 → 2014-07-31 (+36d) |  |
| DUKHCONP1BZ4ARRF3630 | Leveling Screed for Waterproofing | 2014-04-16 → 2014-05-18 (+32d) | 2014-05-14 → 2014-06-15 (+32d) | 67d → 40d |
| DUKHCONP1BZ4ARRF3635 | Laying of Waterproofing Membrane | 2014-04-20 → 2014-05-21 (+31d) | 2014-05-18 → 2014-06-18 (+31d) | 67d → 40d |
| DUKHCONP1BZ4ARRF3640 | Installation of Insulation & Protection | 2014-04-24 → 2014-05-26 (+32d) | 2014-05-22 → 2014-06-23 (+32d) | 67d → 40d |
| DUKHCONP1BZ4ARRF3645 | Lime Stone Chips & Paving slab Installation | 2014-04-29 → 2014-05-31 (+32d) | 2014-05-27 → 2014-06-28 (+32d) | 67d → 40d |
| DUKHCONP1BZ4ARRF3650 | Install. of Gal. Frame & Aluminum Slat Screen | 2014-05-07 → 2014-06-08 (+32d) | 2014-06-04 → 2014-07-06 (+32d) | 67d → 40d |
| DUKHCONP1BZ4ARRF3655 | Installation of Pumps Protection cabinets | 2014-05-22 → 2014-06-23 (+32d) | 2014-06-14 → 2014-07-15 (+31d) | 67d → 40d |
| DUKHCONP1BZ4ARRF3660 | Installation of Access Ladder | 2014-06-09 → 2014-07-15 (+36d) | 2014-06-25 → 2014-07-31 (+36d) | 67d → 36d |
| 15 | **ELEVATION** | 2014-05-01 → 2014-06-01 (+31d) | 2014-06-28 → 2014-07-28 (+30d) |  |
| DUKHCONP1BZ4AREL3665 | External Plastering | 2014-05-01 → 2014-06-01 (+31d) | 2014-05-29 → 2014-06-29 (+31d) | 65d → 39d |
| DUKHCONP1BZ4AREL3670 | External stone cladding works | 2014-05-19 → 2014-06-18 (+30d) | 2014-06-10 → 2014-07-10 (+30d) | 65d → 39d |
| DUKHCONP1BZ4AREL3675 | GRC works | 2014-05-25 → 2014-06-24 (+30d) | 2014-06-16 → 2014-07-16 (+30d) | 65d → 39d |
| DUKHCONP1BZ4AREL3680 | External Painting | 2014-06-05 → 2014-07-06 (+31d) | 2014-06-28 → 2014-07-28 (+30d) | 65d → 39d |
| 20 | **MEP WORKS** | 2013-11-07 → 2013-11-25 (+18d) | 2014-09-24 → 2014-10-23 (+29d) |  |
| 10 | **ELECTRICAL WORKS** | 2014-02-13 → 2014-03-22 (+37d) | 2014-09-24 → 2014-10-23 (+29d) |  |
| 10 | **GROUND FLOOR** | 2014-02-13 → 2014-03-22 (+37d) | 2014-06-22 → 2014-07-28 (+36d) |  |
| DUKHCONP1BZ4ELGF4000 | Fixing of wall conduits & switch socket boxes | 2014-02-13 → 2014-03-22 (+37d) | 2014-03-13 → 2014-04-19 (+37d) | 47d → 16d |
| DUKHCONP1BZ4ELGF4005 | Cable tray & trunking installation | 2014-02-25 → 2014-04-02 (+36d) | 2014-03-19 → 2014-04-24 (+36d) | 65d → 34d |
| DUKHCONP1BZ4ELGF4010 | Installation of wiring & Main Cabling | 2014-03-05 → 2014-04-10 (+36d) | 2014-04-02 → 2014-05-08 (+36d) | 65d → 34d |
| DUKHCONP1BZ4ELGF4015 | Install. of CAMS & Fire Fighting Accessories | 2014-05-07 → 2014-06-12 (+36d) | 2014-06-04 → 2014-07-10 (+36d) | 60d → 29d |
| DUKHCONP1BZ4ELGF4020 | Installation of DBS,MCCB Accessories. | 2014-05-13 → 2014-06-18 (+36d) | 2014-06-04 → 2014-07-10 (+36d) | 38d → 7d |
| DUKHCONP1BZ4ELGF4025 | Installation of Lighting fixtures & Accessories | 2014-05-25 → 2014-06-30 (+36d) | 2014-06-22 → 2014-07-28 (+36d) | 40d → 9d |
| DUKHCONP1BZ4ELGF4030 | Installation of Telephone System | 2014-05-25 → 2014-06-30 (+36d) | 2014-06-16 → 2014-07-22 (+36d) | 38d → 7d |
| 15 | **FIRST FLOORS** | 2014-03-26 → 2014-04-22 (+27d) | 2014-08-26 → 2014-09-22 (+27d) |  |
| DUKHCONP1BZ4ELFF4035 | Fixing of wall conduits & switch socket boxes | 2014-03-26 → 2014-04-22 (+27d) | 2014-04-23 → 2014-05-20 (+27d) | 5d → -18d |
| DUKHCONP1BZ4ELFF4040 | Cable tray & trunking installation | 2014-04-07 → 2014-05-04 (+27d) | 2014-04-29 → 2014-05-26 (+27d) | 35d → 12d |
| DUKHCONP1BZ4ELFF4045 | Installation of wiring & Main Cabling | 2014-04-15 → 2014-05-12 (+27d) | 2014-05-13 → 2014-06-09 (+27d) | 35d → 12d |
| DUKHCONP1BZ4ELFF4050 | Installation of Telephone System | 2014-07-03 → 2014-07-30 (+27d) | 2014-07-31 → 2014-08-31 (+31d) | 14d → -9d |
| DUKHCONP1BZ4ELFF4055 | Install. of CAMS & Fire Fighting Accessories | 2014-07-06 → 2014-08-05 (+30d) | 2014-08-06 → 2014-09-02 (+27d) | 34d → 11d |
| DUKHCONP1BZ4ELFF4060 | Installation of DBS,MCCB Accessories. | 2014-07-13 → 2014-08-12 (+30d) | 2014-08-07 → 2014-09-03 (+27d) | -8d → -31d |
| DUKHCONP1BZ4ELFF4065 | Installation of Lighting fixtures & Accessories | 2014-07-26 → 2014-08-25 (+30d) | 2014-08-26 → 2014-09-22 (+27d) | -8d → -31d |
| 20 | **ROOF** | 2014-08-18 → 2014-09-14 (+27d) | 2014-09-24 → 2014-10-23 (+29d) |  |
| DUKHCONP1BZ4ELRF4070 | Installation of Isolator | 2014-08-18 → 2014-09-14 (+27d) | 2014-09-07 → 2014-10-04 (+27d) | -8d → -31d |
| DUKHCONP1BZ4ELRF4075 | Installation of TV Dish Antenna | 2014-08-30 → 2014-09-25 (+26d) | 2014-09-24 → 2014-10-23 (+29d) | -8d → -31d |

| ID | Task | Start | Finish | Duration | Complete | Total float | Other |
| --- | --- | --- | --- | --- | --- | --- | --- |
| 15 | **PLUMBING, DRAINAGE & FIRE FIGHTING WORKS** | 2013-11-07 → 2013-11-25 (+18d) | 2014-09-06 → 2014-10-02 (+26d) |  |  |  |  |
| 10 | **GROUND FLOOR** | 2013-11-07 → 2013-11-25 (+18d) | 2014-06-22 → 2014-07-28 (+36d) |  |  |  |  |
| DUKHCONP1BZ4PLUG4300 | Drainage / Storm Pipes in Grade Slab | 2013-11-07 → 2013-11-25 (+18d) | 2013-11-30 → 2013-12-17 (+17d) |  |  | 0d → -15d |  |
| DUKHCONP1BZ4PLGF4305 | Installation of Plumbing pipes & testing | 2014-02-24 → 2014-04-01 (+36d) | 2014-03-16 → 2014-04-21 (+36d) |  |  | 38d → 7d |  |
| DUKHCONP1BZ4PLGF4310 | Installation of Drainage pipes &testing | 2014-02-24 → 2014-04-01 (+36d) | 2014-03-16 → 2014-04-21 (+36d) |  |  | 41d → 10d |  |
| DUKHCONP1BZ4PLGF4315 | Sanitary Fittings & Accessories | 2014-05-25 → 2014-06-30 (+36d) | 2014-06-16 → 2014-07-22 (+36d) |  |  | 70d → 39d |  |
| DUKHCONP1BZ4PLGF4320 | Installation of Water Heater | 2014-06-05 → 2014-07-12 (+37d) | 2014-06-22 → 2014-07-28 (+36d) |  |  | 70d → 39d |  |
| 15 | **FIRST FLOORS** | 2014-04-07 → 2014-05-04 (+27d) | 2014-08-19 → 2014-09-15 (+27d) |  |  |  |  |
| DUKHCONP1BZ4PLFF4325 | Installation of Plumbing pipes & testing | 2014-04-07 → 2014-05-04 (+27d) | 2014-04-27 → 2014-05-24 (+27d) |  |  | -8d → -31d |  |
| DUKHCONP1BZ4PLFF4330 | Installation of Drainage pipes & testing | 2014-04-07 → 2014-05-04 (+27d) | 2014-04-27 → 2014-05-24 (+27d) |  |  | 19d → -4d |  |
| DUKHCONP1BZ4PLFF4335 | Sanitary Fittings & Accessories | 2014-07-19 → 2014-08-18 (+30d) | 2014-08-13 → 2014-09-09 (+27d) |  |  | 8d → -15d |  |
| DUKHCONP1BZ4PLFF4340 | Installation of Water Heater | 2014-07-30 → 2014-08-30 (+31d) | 2014-08-19 → 2014-09-15 (+27d) |  |  | 8d → -15d |  |
| 20 | **ROOF** | 2014-05-04 → 2014-06-09 (+36d) | 2014-09-06 → 2014-10-02 (+26d) |  |  |  |  |
| DUKHCONP1BZ4PLRF4345 | Installation of Plumbing pipes & fittings | 2014-05-04 → 2014-06-09 (+36d) | 2014-05-19 → 2014-06-24 (+36d) |  |  | 75d → 44d |  |
| DUKHCONP1BZ4PLRF4350 | Installation of Rain water Pipes | 2014-05-21 → 2014-06-21 (+31d) | 2014-06-07 → 2014-07-07 (+30d) |  |  | 68d → 42d |  |
| DUKHCONP1BZ4PLRF4355 | Roof Water Tank Installation & Connections | 2014-08-09 → 2014-09-04 (+26d) | 2014-09-06 → 2014-10-02 (+26d) |  |  | 8d → -15d |  |
| 20 | **AC WORKS** | 2014-03-16 → 2014-04-21 (+36d) | 2014-09-02 → 2014-09-29 (+27d) |  |  |  |  |
| 10 | **GROUND FLOOR** | 2014-03-16 → 2014-04-21 (+36d) | 2014-06-19 → 2014-07-26 (+37d) |  |  |  |  |
| DUKHCONP1BZ4ACGF4600 | Installation AC Pipes | 2014-03-16 → 2014-04-21 (+36d) | 2014-04-07 → 2014-05-13 (+36d) |  |  | 69d → 38d |  |
| DUKHCONP1BZ4ACGF4605 | Fixing of Ventilation Equipments | 2014-05-07 → 2014-06-12 (+36d) | 2014-06-04 → 2014-07-10 (+36d) |  |  | 57d → 26d |  |
| DUKHCONP1BZ4ACGF4610 | Fixing of Split AC | 2014-05-28 → 2014-07-03 (+36d) | 2014-06-19 → 2014-07-26 (+37d) |  |  | 57d → 26d |  |
| 15 | **FIRST FLOORS** | 2014-04-30 → 2014-05-27 (+27d) | 2014-08-21 → 2014-09-17 (+27d) |  |  |  |  |
| DUKHCONP1BZ4ACFF4615 | Installation AC Pipes | 2014-04-30 → 2014-05-27 (+27d) | 2014-05-22 → 2014-06-18 (+27d) |  |  | 35d → 12d |  |
| DUKHCONP1BZ4ACFF4620 | Fixing of Ventilation Equipments | 2014-07-06 → 2014-08-05 (+30d) | 2014-08-06 → 2014-09-02 (+27d) |  |  | 6d → -17d |  |
| DUKHCONP1BZ4ACFF4625 | Fixing of Split AC | 2014-07-27 → 2014-08-26 (+30d) | 2014-08-21 → 2014-09-17 (+27d) |  |  | 6d → -17d |  |
| 20 | **ROOF** | 2014-05-12 → 2014-06-08 (+27d) | 2014-09-02 → 2014-09-29 (+27d) |  |  |  |  |
| DUKHCONP1BZ4ACRF4630 | Installation of Refrigerant Pipes | 2014-05-12 → 2014-06-08 (+27d) | 2014-06-09 → 2014-07-06 (+27d) |  |  | 76d → 53d |  |
| DUKHCONP1BZ4ACRF4635 | Installation of Condensing Unit | 2014-08-05 → 2014-09-01 (+27d) | 2014-09-02 → 2014-09-29 (+27d) |  |  | 11d → -12d |  |
| 25 | **EXTERNAL WORKS** | 2014-03-18 → 2014-04-17 (+30d) | 2014-09-28 → 2014-10-16 (+18d) |  |  |  |  |
| 10 | **MISCELLANEOUS** | 2014-03-18 → 2014-04-17 (+30d) | 2014-09-28 → 2014-10-16 (+18d) |  |  |  |  |
| DUKHCONP1BZ4MSEX5020 | Construction Entrance Ramp | 2014-03-22 → 2014-04-17 (+26d) | 2014-04-19 → 2014-05-15 (+26d) |  |  | 58d → 35d |  |
| DUKHCONP1BZ4MSEX5000 | Construction of Manholes | 2014-03-18 → 2014-04-23 (+36d) | 2014-04-15 → 2014-05-21 (+36d) |  |  | 32d → 1d |  |
| DUKHCONP1BZ4MSEX5025 | SS.Handrails and Balustrades | 2014-04-08 → 2014-05-05 (+27d) | 2014-04-30 → 2014-05-27 (+27d) |  |  | 61d → 38d |  |
| DUKHCONP1BZ4MSEX5005 | Construction of Soak pit, Chambers | 2014-04-01 → 2014-05-07 (+36d) | 2014-04-29 → 2014-06-04 (+36d) |  |  | 32d → 1d |  |
| DUKHCONP1BZ4MSEX5015 | Construction of grease Trap | 2014-04-21 → 2014-05-27 (+36d) | 2014-05-13 → 2014-06-18 (+36d) |  |  | 32d → 1d |  |
| DUKHCONP1BZ4MSEX5010 | Telephone cable laying | 2014-05-14 → 2014-06-19 (+36d) | 2014-06-11 → 2014-07-17 (+36d) |  |  | 32d → 1d |  |
| DUKHCONP1BZ4MSEX5335 | Aluminum Roll-up Shutter with 2m Wall | 2014-08-31 → 2014-09-16 (+16d) | 2014-09-28 → 2014-10-16 (+18d) |  |  | 14d → 0d |  |
| 15 | **WATER TANK ENCLOSURE** | 2014-04-16 → 2014-05-11 (+25d) | 2014-07-23 → 2014-08-20 (+28d) |  |  |  |  |
| DUKHCONP1BZ4WEEX5030 | Excavation | 2014-04-16 → 2014-05-11 (+25d) | 2014-05-08 → 2014-06-02 (+25d) |  |  | 40d → 19d |  |
| DUKHCONP1BZ4WEEX5035 | Construction of Raft | 2014-04-22 → 2014-05-17 (+25d) | 2014-05-20 → 2014-06-14 (+25d) |  |  | 43d → 22d |  |
| DUKHCONP1BZ4WEEX5040 | Block works & Plastering | 2014-05-04 → 2014-05-28 (+24d) | 2014-06-01 → 2014-06-25 (+24d) |  |  | 43d → 22d |  |
| DUKHCONP1BZ4WEEX5045 | Flooring & Painting | 2014-05-15 → 2014-06-09 (+25d) | 2014-06-12 → 2014-07-07 (+25d) |  |  | 43d → 22d |  |
| DUKHCONP1BZ4WEEX5050 | Installation of Steel Gate | 2014-06-02 → 2014-06-26 (+24d) | 2014-06-24 → 2014-07-19 (+25d) |  |  | 43d → 22d |  |
| DUKHCONP1BZ4WEEX5060 | Structural steel & SS Shed cover installation | 2014-06-14 → 2014-07-08 (+24d) | 2014-07-12 → 2014-08-09 (+28d) |  |  | 43d → 22d |  |
| DUKHCONP1BZ4WEEX5065 | Install. of Water Tank,Chiller,Pump & Meter | 2014-06-25 → 2014-07-20 (+25d) | 2014-07-23 → 2014-08-20 (+28d) |  |  | 43d → 22d |  |
| 20 | **HARD LANDSCAPING** | 2014-04-16 → 2014-05-13 (+27d) | 2014-06-03 → 2014-06-30 (+27d) |  |  |  |  |
| DUKHCONP1BZ4HDEX5090 | kerb works | 2014-04-16 → 2014-05-13 (+27d) | 2014-05-08 → 2014-06-04 (+27d) |  |  | 61d → 38d |  |
| DUKHCONP1BZ4HDEX5095 | Cobble Stone Works | 2014-04-28 → 2014-05-25 (+27d) | 2014-05-20 → 2014-06-16 (+27d) |  |  | 61d → 38d |  |
| DUKHCONP1BZ4HDEX5100 | Interlock works | 2014-05-12 → 2014-06-08 (+27d) | 2014-06-03 → 2014-06-30 (+27d) |  |  | 61d → 38d |  |
| 25 | **SOFT LANDSCAPING** | 2014-05-24 → 2014-06-19 (+26d) | 2014-07-02 → 2014-07-29 (+27d) |  |  |  |  |
| DUKHCONP1BZ4SLEX5105 | Laying of Grass/ green area | 2014-05-24 → 2014-06-19 (+26d) | 2014-06-21 → 2014-07-17 (+26d) |  |  | 61d → 38d |  |
| DUKHCONP1BZ4SLEX5110 | Laying of Palm tree | 2014-06-04 → 2014-07-01 (+27d) | 2014-07-02 → 2014-07-29 (+27d) |  |  | 61d → 38d |  |
| 30 | **TESTING AND COMMISSIONING** | 2014-09-25 → 2014-10-25 (+30d) | 2014-10-26 → 2014-11-22 (+27d) |  |  |  |  |
| DUKHCONP1BZ4ACTC8000 | Pre-Commissioning & Testing of AC Works | 2014-09-25 → 2014-10-25 (+30d) | 2014-10-26 → 2014-11-22 (+27d) |  |  | -8d → -31d |  |
| DUKHCONP1BZ4ELTC8010 | Pre-Commissioning & Testing of Electrical Works | 2014-09-25 → 2014-10-25 (+30d) | 2014-10-26 → 2014-11-22 (+27d) |  |  | -8d → -31d |  |
| DUKHCONP1BZ4PLTC8005 | Pre-Commissioning & Testing of Plumbing Works | 2014-09-25 → 2014-10-25 (+30d) | 2014-10-26 → 2014-11-22 (+27d) |  |  | -8d → -31d |  |
| 30 | **ZONE - 5 (5 Twin Villas)** |  | 2014-11-24 → 2014-12-22 (+28d) |  |  |  |  |
| 10 | **STRUCTURAL WORKS** |  | 2014-06-01 → 2014-07-02 (+31d) |  |  |  |  |
| 10 | **SUB STRUCTURE** |  | 2014-01-14 → 2014-02-20 (+37d) |  |  |  |  |
| 10 | **UPTO GRADE SLAB** |  | 2014-01-14 → 2014-02-20 (+37d) |  |  |  |  |
| DUKHCONP1BZ5STUG1000 | Footing Excavation | 2013-08-25 A | 2013-09-22 A |  | 0% → 100% | 0d → none |  |
| DUKHCONP1BZ5STUG1005 | Footing Antitermite | 2013-09-05 A | 2013-10-01 A |  | 0% → 100% | 0d → none |  |
| DUKHCONP1BZ5STUG1010 | Footing Blinding | 2013-09-10 A | 2013-10-06 A |  | 0% → 100% | 0d → none | resources BLINDING MASON SK [748 h]; LABOR- SUBCONTRACTOR [561 h]; BLINDING QTY [935 Sqm] → CONCRETE MASON SK [748 h]; LABOR- SUBCONTRACTOR [561 h]; BLINDING QTY [935 Sqm] |
| DUKHCONP1BZ5STUG1015 | Footing Waterproofing & Screed | 2013-09-16 A | 2013-10-14 A |  | 0% → 100% | 0d → none |  |
| DUKHCONP1BZ5STUG1020 | Construction of foundations | 2013-10-01 A | 2013-10-26 A |  | 0% → 100% | 0d → none |  |
| DUKHCONP1BZ5STUG1025 | Construction of neck of columns | 2013-10-10 → 2013-11-02 (+23d) | 2013-11-10 → 2013-11-27 (+17d) | 25d → 23d |  | 0d → -17d |  |
| DUKHCONP1BZ5STUG1030 | Waterproofing Footing & Neck Column | 2013-10-22 → 2013-11-11 (+20d) | 2013-11-19 → 2013-12-09 (+20d) |  |  | 0d → -17d |  |
| DUKHCONP1BZ5STUG1035 | Backfilling Upto Grade Beam Bottom | 2013-11-03 → 2013-11-23 (+20d) | 2013-12-01 → 2013-12-22 (+21d) |  |  | 0d → -17d |  |
| DUKHCONP1BZ5STUG1040 | Construction of Grade Beams | 2013-11-19 → 2013-12-09 (+20d) | 2013-12-17 → 2014-01-07 (+21d) |  |  | 0d → -17d | resources BLINDING MASON SK [401 h]; SCREED MASON SK [401 h]; STEEL FIXERS SK [2027 h]; CARPENTERS SK [2640 h]; CONCRETE MASON SK [400 h]; LABOR- SUBCONTRACTOR [4251.75 h]; BLINDING QTY [501 Sqm]; SCREED QTY [501 Sqm]; REINFORCEMENT BARS QTY [25326 kg]; FORMWORK QTY [1320 Sqm]; CONCRETE QTY [200 Cum] → CONCRETE MASON SK [401 h]; SCREED MASON SK [401 h]; STEEL FIXERS SK [2027 h]; CARPENTERS SK [2640 h]; CONCRETE MASON SK [400 h]; LABOR- SUBCONTRACTOR [4251.75 h]; BLINDING QTY [501 Sqm]; SCREED QTY [501 Sqm]; REINFORCEMENT BARS QTY [25326 kg]; FORMWORK QTY [1320 Sqm]; CONCRETE QTY [200 Cum] |
| DUKHCONP1BZ5STUG1045 | Construction of slab on grade | 2013-12-16 → 2014-01-22 (+37d) | 2014-01-14 → 2014-02-20 (+37d) |  |  | 0d → -31d | resources BLINDING MASON SK [1524 h]; SCREED MASON SK [1523 h]; STEEL FIXERS SK [616 h]; CONCRETE MASON SK [620 h]; LABOR- SUBCONTRACTOR [2641.5 h]; BLINDING QTY [1904 Sqm]; SCREED QTY [1903 Sqm]; CONCRETE QTY [310 Cum]; WELDED WIRE MESH [2310 Sqm] → CONCRETE MASON SK [1524 h]; SCREED MASON SK [1523 h]; STEEL FIXERS SK [616 h]; CONCRETE MASON SK [620 h]; LABOR- SUBCONTRACTOR [2641.5 h]; BLINDING QTY [1904 Sqm]; SCREED QTY [1903 Sqm]; CONCRETE QTY [310 Cum]; WELDED WIRE MESH [2310 Sqm] |

| ID | Task | Start | Finish | Total float |
| --- | --- | --- | --- | --- |
| 15 | **SUPERSTRUCTURE** | 2014-01-02 → 2014-02-08 (+37d) | 2014-06-01 → 2014-07-02 (+31d) |  |
| 10 | **GROUND FLOOR** | 2014-01-02 → 2014-02-08 (+37d) | 2014-02-27 → 2014-04-05 (+37d) |  |
| DUKHCONP1BZ5STGF2000 | Column-Rebar & Formwork | 2014-01-02 → 2014-02-08 (+37d) | 2014-01-30 → 2014-03-09 (+38d) | 0d → -31d |
| DUKHCONP1BZ5STGF2005 | Column-Concrete | 2014-01-12 → 2014-02-18 (+37d) | 2014-02-06 → 2014-03-16 (+38d) | 0d → -31d |
| DUKHCONP1BZ5STGF2010 | Beam, Stairs ,Slab-Rebar & Formwork | 2014-01-26 → 2014-03-04 (+37d) | 2014-02-24 → 2014-04-01 (+36d) | 0d → -31d |
| DUKHCONP1BZ5STGF2015 | Beam, Stairs ,Slab-Concrete | 2014-02-12 → 2014-03-20 (+36d) | 2014-02-27 → 2014-04-05 (+37d) | 0d → -31d |
| 15 | **FIRST FLOORS** | 2014-02-15 → 2014-03-23 (+36d) | 2014-03-31 → 2014-05-06 (+36d) |  |
| DUKHCONP1BZ5STFF2020 | Column-Rebar & Formwork | 2014-02-15 → 2014-03-23 (+36d) | 2014-03-15 → 2014-04-20 (+36d) | 0d → -31d |
| DUKHCONP1BZ5STFF2025 | Column-Concrete | 2014-02-24 → 2014-04-01 (+36d) | 2014-03-22 → 2014-04-27 (+36d) | 0d → -31d |
| DUKHCONP1BZ5STFF2030 | Beam, Stairs ,Slab-Rebar & Formwork | 2014-02-27 → 2014-04-05 (+37d) | 2014-03-27 → 2014-05-03 (+37d) | 0d → -31d |
| DUKHCONP1BZ5STFF2035 | Beam, Stairs ,Slab-Concrete | 2014-03-16 → 2014-04-21 (+36d) | 2014-03-31 → 2014-05-06 (+36d) | 0d → -31d |
| 20 | **ROOF** | 2014-03-22 → 2014-04-27 (+36d) | 2014-06-01 → 2014-07-02 (+31d) |  |
| DUKHCONP1BZ5STRF2040 | Column-Rebar & Formwork | 2014-03-22 → 2014-04-27 (+36d) | 2014-04-10 → 2014-05-17 (+37d) | 9d → -22d |
| DUKHCONP1BZ5STRF2045 | Column-Concrete | 2014-03-25 → 2014-04-30 (+36d) | 2014-04-13 → 2014-05-19 (+36d) | 14d → -17d |
| DUKHCONP1BZ5STRF2050 | Slab-Rebar & Formwork - Head Room | 2014-03-27 → 2014-05-03 (+37d) | 2014-04-19 → 2014-05-25 (+36d) | 14d → -17d |
| DUKHCONP1BZ5STRF2055 | Slab-Concrete-Head room | 2014-04-10 → 2014-05-17 (+37d) | 2014-04-24 → 2014-05-31 (+37d) | 14d → -17d |
| DUKHCONP1BZ5STRF2060 | Construction of Parapets | 2014-04-17 → 2014-05-24 (+37d) | 2014-05-15 → 2014-06-21 (+37d) | 62d → 31d |
| DUKHCONP1BZ5STRF2065 | Construction of up stands/Plinth | 2014-05-04 → 2014-06-04 (+31d) | 2014-06-01 → 2014-07-02 (+31d) | 67d → 40d |
| 15 | **FINISHING WORKS** | 2014-03-09 → 2014-04-14 (+36d) | 2014-10-26 → 2014-11-22 (+27d) |  |
| 10 | **INTERNAL FINISHES** | 2014-03-09 → 2014-04-14 (+36d) | 2014-10-26 → 2014-11-22 (+27d) |  |
| 10 | **GROUND FLOOR** | 2014-03-09 → 2014-04-14 (+36d) | 2014-08-21 → 2014-09-27 (+37d) |  |
| DUKHCONP1BZ5ARGF3000 | Block work | 2014-03-09 → 2014-04-14 (+36d) | 2014-04-06 → 2014-05-12 (+36d) | 38d → 7d |
| DUKHCONP1BZ5ARGF3005 | Plastering work | 2014-03-31 → 2014-05-06 (+36d) | 2014-04-28 → 2014-06-03 (+36d) | 38d → 7d |
| DUKHCONP1BZ5ARGF3010 | Flooring screed | 2014-04-08 → 2014-05-14 (+36d) | 2014-05-01 → 2014-06-07 (+37d) | 46d → 15d |
| DUKHCONP1BZ5ARGF3030 | Paint First coat | 2014-04-16 → 2014-05-22 (+36d) | 2014-05-14 → 2014-06-19 (+36d) | 52d → 21d |
| DUKHCONP1BZ5ARGF3015 | Wet area waterproofing & Protection Screed | 2014-04-17 → 2014-05-24 (+37d) | 2014-05-04 → 2014-06-09 (+36d) | 38d → 7d |
| DUKHCONP1BZ5ARGF3020 | Ceramic Wall Tiling | 2014-04-23 → 2014-05-29 (+36d) | 2014-05-21 → 2014-06-26 (+36d) | 38d → 7d |
| DUKHCONP1BZ5ARGF3025 | Porcelain Tile flooring | 2014-04-29 → 2014-06-04 (+36d) | 2014-05-27 → 2014-07-02 (+36d) | 38d → 7d |
| DUKHCONP1BZ5ARGF3045 | Fixing of Suspension systems | 2014-05-17 → 2014-06-22 (+36d) | 2014-06-08 → 2014-07-14 (+36d) | 38d → 7d |
| DUKHCONP1BZ5ARGF3035 | Slate Tile Flooring & Skirting | 2014-05-19 → 2014-06-24 (+36d) | 2014-06-04 → 2014-07-10 (+36d) | 48d → 17d |
| DUKHCONP1BZ5ARGF3055 | Aluminum tile false ceiling | 2014-05-25 → 2014-06-30 (+36d) | 2014-06-22 → 2014-07-28 (+36d) | 41d → 10d |
| DUKHCONP1BZ5ARGF3040 | Cobble Tile flooring | 2014-05-26 → 2014-07-01 (+36d) | 2014-06-11 → 2014-07-17 (+36d) | 46d → 15d |
| DUKHCONP1BZ5ARGF3060 | Gypsum board false ceiling | 2014-05-28 → 2014-07-03 (+36d) | 2014-06-25 → 2014-07-31 (+36d) | 38d → 7d |
| DUKHCONP1BZ5ARGF3050 | Granite - Stair case flooring & Skirting | 2014-06-03 → 2014-07-09 (+36d) | 2014-06-25 → 2014-07-31 (+36d) | 46d → 15d |
| DUKHCONP1BZ5ARGF3065 | Wooden door & PVC Door | 2014-06-17 → 2014-07-23 (+36d) | 2014-07-03 → 2014-08-12 (+40d) | 46d → 15d |
| DUKHCONP1BZ5ARGF3070 | Aluminum doors | 2014-06-23 → 2014-07-29 (+36d) | 2014-07-09 → 2014-08-18 (+40d) | 46d → 15d |
| DUKHCONP1BZ5ARGF3075 | Carpentry & Joinery Works | 2014-06-29 → 2014-08-07 (+39d) | 2014-07-21 → 2014-08-30 (+40d) | 46d → 15d |
| DUKHCONP1BZ5ARGF3080 | Aluminum windows | 2014-06-30 → 2014-08-09 (+40d) | 2014-07-22 → 2014-08-31 (+40d) | 56d → 25d |
| DUKHCONP1BZ5ARGF3085 | S.S.Balustrade | 2014-07-07 → 2014-08-16 (+40d) | 2014-07-29 → 2014-09-07 (+40d) | 51d → 20d |
| DUKHCONP1BZ5ARGF3090 | Installation of Granite Counter Top | 2014-07-12 → 2014-08-20 (+39d) | 2014-07-28 → 2014-09-06 (+40d) | 46d → 15d |
| DUKHCONP1BZ5ARGF3095 | Final Painting | 2014-07-21 → 2014-08-30 (+40d) | 2014-08-21 → 2014-09-27 (+37d) | 46d → 15d |
| 15 | **FIRST FLOORS** | 2014-04-19 → 2014-05-15 (+26d) | 2014-10-26 → 2014-11-22 (+27d) |  |
| DUKHCONP1BZ5ARFF3300 | Block work | 2014-04-19 → 2014-05-15 (+26d) | 2014-05-17 → 2014-06-12 (+26d) | -8d → -31d |
| DUKHCONP1BZ5ARFF3305 | Plastering work | 2014-05-15 → 2014-06-11 (+27d) | 2014-06-12 → 2014-07-09 (+27d) | -8d → -31d |
| DUKHCONP1BZ5ARFF3310 | Flooring screed | 2014-05-24 → 2014-06-19 (+26d) | 2014-06-16 → 2014-07-13 (+27d) | 9d → -14d |
| DUKHCONP1BZ5ARFF3330 | Paint First coat | 2014-06-01 → 2014-06-28 (+27d) | 2014-06-29 → 2014-07-26 (+27d) | 18d → -5d |
| DUKHCONP1BZ5ARFF3315 | Wet area waterproofing | 2014-06-05 → 2014-07-02 (+27d) | 2014-06-22 → 2014-07-19 (+27d) | -8d → -31d |
| DUKHCONP1BZ5ARFF3320 | Ceramic Wall Tiling | 2014-06-15 → 2014-07-12 (+27d) | 2014-07-13 → 2014-08-12 (+30d) | -8d → -31d |
| DUKHCONP1BZ5ARFF3325 | Porcelain Tile flooring | 2014-06-24 → 2014-07-21 (+27d) | 2014-07-22 → 2014-08-21 (+30d) | -8d → -31d |
| DUKHCONP1BZ5ARFF3335 | Slate Tile Flooring & Skirting | 2014-07-12 → 2014-08-11 (+30d) | 2014-07-28 → 2014-08-27 (+30d) | 11d → -12d |
| DUKHCONP1BZ5ARFF3345 | Fixing of Suspension systems | 2014-07-15 → 2014-08-14 (+30d) | 2014-08-10 → 2014-09-06 (+27d) | -8d → -31d |
| DUKHCONP1BZ5ARFF3350 | Granite - Stair case flooring & Skirting | 2014-07-15 → 2014-08-14 (+30d) | 2014-08-10 → 2014-09-06 (+27d) | 3d → -20d |
| DUKHCONP1BZ5ARFF3360 | Gypsum board false ceiling | 2014-07-27 → 2014-08-26 (+30d) | 2014-08-27 → 2014-09-23 (+27d) | -8d → -31d |
| DUKHCONP1BZ5ARFF3365 | Wooden door | 2014-08-14 → 2014-09-10 (+27d) | 2014-08-31 → 2014-09-27 (+27d) | -8d → -31d |
| DUKHCONP1BZ5ARFF3370 | Aluminum Door | 2014-08-23 → 2014-09-18 (+26d) | 2014-09-14 → 2014-10-13 (+29d) | -8d → -31d |
| DUKHCONP1BZ5ARFF3380 | Aluminum windows | 2014-08-30 → 2014-09-25 (+26d) | 2014-09-21 → 2014-10-20 (+29d) | 5d → -18d |
| DUKHCONP1BZ5ARFF3375 | Carpentry & Joinery Works | 2014-08-31 → 2014-09-27 (+27d) | 2014-09-28 → 2014-10-27 (+29d) | -8d → -31d |
| DUKHCONP1BZ5ARFF3385 | Handrail & Balustrade | 2014-09-14 → 2014-10-13 (+29d) | 2014-10-06 → 2014-11-04 (+29d) | -8d → -31d |
| DUKHCONP1BZ5ARFF3390 | Installation of Granite Counter Top | 2014-09-14 → 2014-10-13 (+29d) | 2014-10-06 → 2014-11-04 (+29d) | -6d → -29d |
| DUKHCONP1BZ5ARFF3395 | Final Painting | 2014-09-25 → 2014-10-25 (+30d) | 2014-10-26 → 2014-11-22 (+27d) | -8d → -31d |
| 20 | **ROOF** | 2014-05-05 → 2014-06-10 (+36d) | 2014-07-19 → 2014-08-27 (+39d) |  |
| DUKHCONP1BZ5ARRF3600 | Block work | 2014-05-05 → 2014-06-10 (+36d) | 2014-05-27 → 2014-07-02 (+36d) | 67d → 36d |
| DUKHCONP1BZ5ARRF3605 | Plastering work | 2014-05-17 → 2014-06-22 (+36d) | 2014-06-08 → 2014-07-14 (+36d) | 67d → 36d |
| DUKHCONP1BZ5ARRF3610 | Flooring screed | 2014-06-03 → 2014-07-09 (+36d) | 2014-06-19 → 2014-07-26 (+37d) | 67d → 36d |
| DUKHCONP1BZ5ARRF3695 | Painting -Storage area | 2014-06-15 → 2014-07-21 (+36d) | 2014-07-07 → 2014-08-16 (+40d) | 67d → 36d |
| DUKHCONP1BZ5ARRF3620 | Epoxy Painting -Storage area | 2014-07-02 → 2014-08-11 (+40d) | 2014-07-19 → 2014-08-27 (+39d) | 67d → 36d |
| 15 | **EXTERNAL FINISHES** | 2014-05-15 → 2014-06-16 (+32d) | 2014-07-27 → 2014-09-02 (+37d) |  |
| 10 | **ROOF** | 2014-05-15 → 2014-06-16 (+32d) | 2014-07-24 → 2014-09-02 (+40d) |  |
| DUKHCONP1BZ5ARRF3630 | Leveling Screed for Waterproofing | 2014-05-15 → 2014-06-16 (+32d) | 2014-06-12 → 2014-07-14 (+32d) | 67d → 40d |
| DUKHCONP1BZ5ARRF3635 | Laying of Waterproofing Membrane | 2014-05-19 → 2014-06-19 (+31d) | 2014-06-16 → 2014-07-17 (+31d) | 67d → 40d |

| ID | Task | Start | Finish | Total float |
| --- | --- | --- | --- | --- |
| DUKHCONP1BZ5ARRF3640 | Installation of Insulation & Protection | 2014-05-24 → 2014-06-24 (+31d) | 2014-06-21 → 2014-07-22 (+31d) | 67d → 40d |
| DUKHCONP1BZ5ARRF3645 | Lime Stone Chips & Paving slab Installation | 2014-05-28 → 2014-06-29 (+32d) | 2014-06-25 → 2014-07-27 (+32d) | 67d → 40d |
| DUKHCONP1BZ5ARRF3650 | Install. of Gal. Frame & Aluminum Slat Screen | 2014-06-05 → 2014-07-07 (+32d) | 2014-07-03 → 2014-08-07 (+35d) | 67d → 40d |
| DUKHCONP1BZ5ARRF3655 | Installation of Pumps Protection cabinets | 2014-06-21 → 2014-07-22 (+31d) | 2014-07-13 → 2014-08-17 (+35d) | 67d → 40d |
| DUKHCONP1BZ5ARRF3660 | Installation of Access Ladder | 2014-07-08 → 2014-08-17 (+40d) | 2014-07-24 → 2014-09-02 (+40d) | 67d → 36d |
| 15 | **ELEVATION** | 2014-05-31 → 2014-06-30 (+30d) | 2014-07-27 → 2014-08-30 (+34d) |  |
| DUKHCONP1BZ5AREL3665 | External Plastering | 2014-05-31 → 2014-06-30 (+30d) | 2014-06-28 → 2014-07-28 (+30d) | 65d → 39d |
| DUKHCONP1BZ5AREL3670 | External stone cladding works | 2014-06-17 → 2014-07-17 (+30d) | 2014-07-09 → 2014-08-12 (+34d) | 65d → 39d |
| DUKHCONP1BZ5AREL3675 | GRC works | 2014-06-23 → 2014-07-23 (+30d) | 2014-07-15 → 2014-08-18 (+34d) | 65d → 39d |
| DUKHCONP1BZ5AREL3680 | External Painting | 2014-07-05 → 2014-08-07 (+33d) | 2014-07-27 → 2014-08-30 (+34d) | 65d → 39d |
| 20 | **MEP WORKS** | 2013-12-07 → 2013-12-28 (+21d) | 2014-10-26 → 2014-11-22 (+27d) |  |
| 10 | **ELECTRICAL WORKS** | 2014-03-15 → 2014-04-20 (+36d) | 2014-10-26 → 2014-11-22 (+27d) |  |
| 10 | **GROUND FLOOR** | 2014-03-15 → 2014-04-20 (+36d) | 2014-07-21 → 2014-08-30 (+40d) |  |
| DUKHCONP1BZ5ELGF4000 | Fixing of wall conduits & switch socket boxes | 2014-03-15 → 2014-04-20 (+36d) | 2014-04-12 → 2014-05-18 (+36d) | 47d → 16d |
| DUKHCONP1BZ5ELGF4005 | Cable tray & trunking installation | 2014-03-26 → 2014-05-01 (+36d) | 2014-04-17 → 2014-05-24 (+37d) | 65d → 34d |
| DUKHCONP1BZ5ELGF4010 | Installation of wiring & Main Cabling | 2014-04-03 → 2014-05-10 (+37d) | 2014-05-01 → 2014-06-07 (+37d) | 65d → 34d |
| DUKHCONP1BZ5ELGF4015 | Install. of CAMS & Fire Fighting Accessories | 2014-06-05 → 2014-07-12 (+37d) | 2014-07-03 → 2014-08-12 (+40d) | 60d → 29d |
| DUKHCONP1BZ5ELGF4020 | Installation of DBS,MCCB Accessories. | 2014-06-11 → 2014-07-17 (+36d) | 2014-07-03 → 2014-08-12 (+40d) | 38d → 7d |
| DUKHCONP1BZ5ELGF4025 | Installation of Lighting fixtures & Accessories | 2014-06-23 → 2014-07-29 (+36d) | 2014-07-21 → 2014-08-30 (+40d) | 40d → 9d |
| DUKHCONP1BZ5ELGF4030 | Installation of Telephone System | 2014-06-23 → 2014-07-29 (+36d) | 2014-07-15 → 2014-08-24 (+40d) | 38d → 7d |
| 15 | **FIRST FLOORS** | 2014-04-24 → 2014-05-21 (+27d) | 2014-09-24 → 2014-10-23 (+29d) |  |
| DUKHCONP1BZ5ELFF4035 | Fixing of wall conduits & switch socket boxes | 2014-04-24 → 2014-05-21 (+27d) | 2014-05-22 → 2014-06-18 (+27d) | 5d → -18d |
| DUKHCONP1BZ5ELFF4040 | Cable tray & trunking installation | 2014-05-06 → 2014-06-02 (+27d) | 2014-05-28 → 2014-06-24 (+27d) | 35d → 12d |
| DUKHCONP1BZ5ELFF4045 | Installation of wiring & Main Cabling | 2014-05-14 → 2014-06-10 (+27d) | 2014-06-11 → 2014-07-08 (+27d) | 35d → 12d |
| DUKHCONP1BZ5ELFF4050 | Installation of Telephone System | 2014-08-05 → 2014-09-01 (+27d) | 2014-09-02 → 2014-09-29 (+27d) | 14d → -9d |
| DUKHCONP1BZ5ELFF4055 | Install. of CAMS & Fire Fighting Accessories | 2014-08-07 → 2014-09-03 (+27d) | 2014-09-04 → 2014-10-01 (+27d) | 34d → 11d |
| DUKHCONP1BZ5ELFF4060 | Installation of DBS,MCCB Accessories. | 2014-08-14 → 2014-09-10 (+27d) | 2014-09-06 → 2014-10-02 (+26d) | -8d → -31d |
| DUKHCONP1BZ5ELFF4065 | Installation of Lighting fixtures & Accessories | 2014-08-27 → 2014-09-23 (+27d) | 2014-09-24 → 2014-10-23 (+29d) | -8d → -31d |
| 20 | **ROOF** | 2014-09-16 → 2014-10-15 (+29d) | 2014-10-26 → 2014-11-22 (+27d) |  |
| DUKHCONP1BZ5ELRF4070 | Installation of Isolator | 2014-09-16 → 2014-10-15 (+29d) | 2014-10-06 → 2014-11-04 (+29d) | -8d → -31d |
| DUKHCONP1BZ5ELRF4075 | Installation of TV Dish Antenna | 2014-09-28 → 2014-10-27 (+29d) | 2014-10-26 → 2014-11-22 (+27d) | -8d → -31d |
| 15 | **PLUMBING, DRAINAGE & FIRE FIGHTING WORKS** | 2013-12-07 → 2013-12-28 (+21d) | 2014-10-05 → 2014-11-03 (+29d) |  |
| 10 | **GROUND FLOOR** | 2013-12-07 → 2013-12-28 (+21d) | 2014-07-21 → 2014-08-30 (+40d) |  |
| DUKHCONP1BZ5PLUG4300 | Drainage / Storm Pipes in Grade Slab | 2013-12-07 → 2013-12-28 (+21d) | 2013-12-30 → 2014-01-19 (+20d) | 0d → -17d |
| DUKHCONP1BZ5PLGF4305 | Installation of Plumbing pipes & testing | 2014-03-25 → 2014-04-30 (+36d) | 2014-04-14 → 2014-05-20 (+36d) | 38d → 7d |
| DUKHCONP1BZ5PLGF4310 | Installation of Drainage pipes &testing | 2014-03-25 → 2014-04-30 (+36d) | 2014-04-14 → 2014-05-20 (+36d) | 41d → 10d |
| DUKHCONP1BZ5PLGF4315 | Sanitary Fittings & Accessories | 2014-06-23 → 2014-07-29 (+36d) | 2014-07-15 → 2014-08-24 (+40d) | 70d → 39d |
| DUKHCONP1BZ5PLGF4320 | Installation of Water Heater | 2014-07-05 → 2014-08-13 (+39d) | 2014-07-21 → 2014-08-30 (+40d) | 70d → 39d |
| 15 | **FIRST FLOORS** | 2014-05-06 → 2014-06-02 (+27d) | 2014-09-17 → 2014-10-16 (+29d) |  |
| DUKHCONP1BZ5PLFF4325 | Installation of Plumbing pipes & testing | 2014-05-06 → 2014-06-02 (+27d) | 2014-05-26 → 2014-06-22 (+27d) | -8d → -31d |
| DUKHCONP1BZ5PLFF4330 | Installation of Drainage pipes & testing | 2014-05-06 → 2014-06-02 (+27d) | 2014-05-26 → 2014-06-22 (+27d) | 19d → -4d |
| DUKHCONP1BZ5PLFF4335 | Sanitary Fittings & Accessories | 2014-08-20 → 2014-09-16 (+27d) | 2014-09-11 → 2014-10-08 (+27d) | 8d → -15d |
| DUKHCONP1BZ5PLFF4340 | Installation of Water Heater | 2014-09-01 → 2014-09-28 (+27d) | 2014-09-17 → 2014-10-16 (+29d) | 8d → -15d |
| 20 | **ROOF** | 2014-06-02 → 2014-07-08 (+36d) | 2014-10-05 → 2014-11-03 (+29d) |  |
| DUKHCONP1BZ5PLRF4345 | Installation of Plumbing pipes & fittings | 2014-06-02 → 2014-07-08 (+36d) | 2014-06-17 → 2014-07-23 (+36d) | 75d → 44d |
| DUKHCONP1BZ5PLRF4350 | Installation of Rain water Pipes | 2014-06-19 → 2014-07-20 (+31d) | 2014-07-06 → 2014-08-09 (+34d) | 68d → 42d |
| DUKHCONP1BZ5PLRF4355 | Roof Water Tank Installation & Connections | 2014-09-07 → 2014-10-04 (+27d) | 2014-10-05 → 2014-11-03 (+29d) | 8d → -15d |
| 20 | **AC WORKS** | 2014-04-14 → 2014-05-20 (+36d) | 2014-10-01 → 2014-10-30 (+29d) |  |
| 10 | **GROUND FLOOR** | 2014-04-14 → 2014-05-20 (+36d) | 2014-07-19 → 2014-08-27 (+39d) |  |
| DUKHCONP1BZ5ACGF4600 | Installation AC Pipes | 2014-04-14 → 2014-05-20 (+36d) | 2014-05-06 → 2014-06-11 (+36d) | 69d → 38d |
| DUKHCONP1BZ5ACGF4605 | Fixing of Ventilation Equipments | 2014-06-05 → 2014-07-12 (+37d) | 2014-07-03 → 2014-08-12 (+40d) | 57d → 26d |
| DUKHCONP1BZ5ACGF4610 | Fixing of Split AC | 2014-06-26 → 2014-08-05 (+40d) | 2014-07-19 → 2014-08-27 (+39d) | 57d → 26d |
| 15 | **FIRST FLOORS** | 2014-05-29 → 2014-06-25 (+27d) | 2014-09-20 → 2014-10-19 (+29d) |  |
| DUKHCONP1BZ5ACFF4615 | Installation AC Pipes | 2014-05-29 → 2014-06-25 (+27d) | 2014-06-21 → 2014-07-17 (+26d) | 35d → 12d |
| DUKHCONP1BZ5ACFF4620 | Fixing of Ventilation Equipments | 2014-08-07 → 2014-09-03 (+27d) | 2014-09-04 → 2014-10-01 (+27d) | 6d → -17d |
| DUKHCONP1BZ5ACFF4625 | Fixing of Split AC | 2014-08-28 → 2014-09-24 (+27d) | 2014-09-20 → 2014-10-19 (+29d) | 6d → -17d |
| 20 | **ROOF** | 2014-06-10 → 2014-07-07 (+27d) | 2014-10-01 → 2014-10-30 (+29d) |  |
| DUKHCONP1BZ5ACRF4630 | Installation of Refrigerant Pipes | 2014-06-10 → 2014-07-07 (+27d) | 2014-07-08 → 2014-08-07 (+30d) | 76d → 53d |
| DUKHCONP1BZ5ACRF4635 | Installation of Condensing Unit | 2014-09-03 → 2014-09-30 (+27d) | 2014-10-01 → 2014-10-30 (+29d) | 11d → -12d |
| 25 | **EXTERNAL WORKS** | 2014-04-16 → 2014-05-17 (+31d) | 2014-10-29 → 2014-11-15 (+17d) |  |
| 10 | **MISCELLANEOUS** | 2014-04-16 → 2014-05-17 (+31d) | 2014-10-29 → 2014-11-15 (+17d) |  |
| DUKHCONP1BZ5MSEX5020 | Construction Entrance Ramp | 2014-04-20 → 2014-05-17 (+27d) | 2014-05-18 → 2014-06-14 (+27d) | 58d → 35d |
| DUKHCONP1BZ5MSEX5000 | Construction of Manholes | 2014-04-16 → 2014-05-22 (+36d) | 2014-05-14 → 2014-06-19 (+36d) | 32d → 1d |
| DUKHCONP1BZ5MSEX5025 | SS.Handrails and Balustrades | 2014-05-07 → 2014-06-03 (+27d) | 2014-05-29 → 2014-06-25 (+27d) | 60d → 37d |
| DUKHCONP1BZ5MSEX5005 | Construction of Soak pit, Chambers | 2014-04-30 → 2014-06-05 (+36d) | 2014-05-28 → 2014-07-03 (+36d) | 32d → 1d |
| DUKHCONP1BZ5MSEX5015 | Construction of grease Trap | 2014-05-20 → 2014-06-25 (+36d) | 2014-06-11 → 2014-07-17 (+36d) | 32d → 1d |
| DUKHCONP1BZ5MSEX5010 | Telephone cable laying | 2014-06-12 → 2014-07-19 (+37d) | 2014-07-10 → 2014-08-19 (+40d) | 32d → 1d |
| DUKHCONP1BZ5MSEX5335 | Aluminum Roll-up Shutter with 2m Wall | 2014-09-29 → 2014-10-18 (+19d) | 2014-10-29 → 2014-11-15 (+17d) | 14d → 0d |
| 15 | **WATER TANK ENCLOSURE** | 2014-05-10 → 2014-06-03 (+24d) | 2014-08-25 → 2014-09-18 (+24d) |  |
| DUKHCONP1BZ5WEEX5030 | Excavation | 2014-05-10 → 2014-06-03 (+24d) | 2014-06-01 → 2014-06-25 (+24d) | 40d → 19d |

| ID | Task | Start | Finish | Complete | Total float | Other |
| --- | --- | --- | --- | --- | --- | --- |
| DUKHCONP1BZ5WEEX5035 | Construction of Raft | 2014-05-21 → 2014-06-15 (+25d) | 2014-06-18 → 2014-07-13 (+25d) |  | 40d → 19d |  |
| DUKHCONP1BZ5WEEX5040 | Block works & Plastering | 2014-06-02 → 2014-06-26 (+24d) | 2014-06-30 → 2014-07-24 (+24d) |  | 48d → 27d |  |
| DUKHCONP1BZ5WEEX5045 | Flooring & Painting | 2014-06-14 → 2014-07-08 (+24d) | 2014-07-12 → 2014-08-09 (+28d) |  | 48d → 27d |  |
| DUKHCONP1BZ5WEEX5050 | Installation of Steel Gate | 2014-07-01 → 2014-07-26 (+25d) | 2014-07-23 → 2014-08-20 (+28d) |  | 48d → 27d |  |
| DUKHCONP1BZ5WEEX5060 | Structural steel & SS Shed cover installation | 2014-07-13 → 2014-08-10 (+28d) | 2014-08-13 → 2014-09-07 (+25d) |  | 43d → 22d |  |
| DUKHCONP1BZ5WEEX5065 | Install. of Water Tank,Chiller,Pump & Meter | 2014-07-24 → 2014-08-21 (+28d) | 2014-08-25 → 2014-09-18 (+24d) |  | 43d → 22d |  |
| 20 | **HARD LANDSCAPING** | 2014-05-15 → 2014-06-11 (+27d) | 2014-07-03 → 2014-07-30 (+27d) |  |  |  |
| DUKHCONP1BZ5HDEX5090 | kerb works | 2014-05-15 → 2014-06-11 (+27d) | 2014-06-07 → 2014-07-03 (+26d) |  | 60d → 37d |  |
| DUKHCONP1BZ5HDEX5095 | Cobble Stone Works | 2014-05-27 → 2014-06-23 (+27d) | 2014-06-18 → 2014-07-15 (+27d) |  | 60d → 37d |  |
| DUKHCONP1BZ5HDEX5100 | Interlock works | 2014-06-11 → 2014-07-08 (+27d) | 2014-07-03 → 2014-07-30 (+27d) |  | 60d → 37d |  |
| 25 | **SOFT LANDSCAPING** | 2014-06-23 → 2014-07-20 (+27d) | 2014-08-05 → 2014-09-01 (+27d) |  |  |  |
| DUKHCONP1BZ5SLEX5105 | Laying of Grass/ green area | 2014-06-23 → 2014-07-20 (+27d) | 2014-07-21 → 2014-08-20 (+30d) |  | 60d → 37d |  |
| DUKHCONP1BZ5SLEX5110 | Laying of Palm tree | 2014-07-05 → 2014-07-31 (+26d) | 2014-08-05 → 2014-09-01 (+27d) |  | 60d → 37d |  |
| 30 | **TESTING AND COMMISSIONING** | 2014-10-27 → 2014-11-23 (+27d) | 2014-11-24 → 2014-12-22 (+28d) |  |  |  |
| DUKHCONP1BZ5ACTC8000 | Pre-Commissioning & Testing of AC Works | 2014-10-27 → 2014-11-23 (+27d) | 2014-11-24 → 2014-12-22 (+28d) |  | -8d → -31d |  |
| DUKHCONP1BZ5ELTC8010 | Pre-Commissioning & Testing of Electrical Works | 2014-10-27 → 2014-11-23 (+27d) | 2014-11-24 → 2014-12-22 (+28d) |  | -8d → -31d |  |
| DUKHCONP1BZ5PLTC8005 | Pre-Commissioning & Testing of Plumbing Works | 2014-10-27 → 2014-11-23 (+27d) | 2014-11-24 → 2014-12-22 (+28d) |  | -8d → -31d |  |
| 35 | **ZONE - 6 (5 Twin Villas)** |  | 2014-12-24 → 2015-01-20 (+27d) |  |  |  |
| 10 | **STRUCTURAL WORKS** |  | 2014-06-30 → 2014-07-31 (+31d) |  |  |  |
| 10 | **SUB STRUCTURE** |  | 2014-02-13 → 2014-03-22 (+37d) |  |  |  |
| 10 | **UPTO GRADE SLAB** |  | 2014-02-13 → 2014-03-22 (+37d) |  |  |  |
| DUKHCONP1BZ6STUG1000 | Footing Excavation | 2013-09-23 A | 2013-10-23 A | 0% → 100% | 0d → none |  |
| DUKHCONP1BZ6STUG1005 | Footing Antitermite | 2013-10-05 A | 2013-11-02 A | 0% → 100% | 0d → none |  |
| DUKHCONP1BZ6STUG1010 | Footing Blinding | 2013-10-09 A |  | 0% → 78% |  | resources BLINDING MASON SK [748 h]; LABOR- SUBCONTRACTOR [561 h]; BLINDING QTY [935 Sqm] → CONCRETE MASON SK [748 h]; LABOR- SUBCONTRACTOR [561 h]; BLINDING QTY [935 Sqm] |
| DUKHCONP1BZ6STUG1015 | Footing Waterproofing & Screed | 2013-10-15 A |  | 0% → 52% |  |  |
| DUKHCONP1BZ6STUG1025 | Construction of neck of columns | 2013-11-11 → 2013-11-28 (+17d) | 2013-12-09 → 2013-12-28 (+19d) |  | 0d → -15d |  |
| DUKHCONP1BZ6STUG1030 | Waterproofing Footing & Neck Column | 2013-11-20 → 2013-12-08 (+18d) | 2013-12-19 → 2014-01-06 (+18d) |  | 0d → -15d |  |
| DUKHCONP1BZ6STUG1035 | Backfilling Upto Grade Beam Bottom | 2013-12-02 → 2013-12-23 (+21d) | 2013-12-31 → 2014-01-20 (+20d) |  | 0d → -17d |  |
| DUKHCONP1BZ6STUG1040 | Construction of Grade Beams | 2013-12-19 → 2014-01-08 (+20d) | 2014-01-16 → 2014-02-05 (+20d) |  | 0d → -17d | resources BLINDING MASON SK [401 h]; SCREED MASON SK [401 h]; STEEL FIXERS SK [2027 h]; CARPENTERS SK [2640 h]; CONCRETE MASON SK [400 h]; LABOR- SUBCONTRACTOR [4251.75 h]; BLINDING QTY [501 Sqm]; SCREED QTY [501 Sqm]; REINFORCEMENT BARS QTY [25326 kg]; FORMWORK QTY [1320 Sqm]; CONCRETE QTY [200 Cum] → CONCRETE MASON SK [401 h]; SCREED MASON SK [401 h]; STEEL FIXERS SK [2027 h]; CARPENTERS SK [2640 h]; CONCRETE MASON SK [400 h]; LABOR- SUBCONTRACTOR [4251.75 h]; BLINDING QTY [501 Sqm]; SCREED QTY [501 Sqm]; REINFORCEMENT BARS QTY [25326 kg]; FORMWORK QTY [1320 Sqm]; CONCRETE QTY [200 Cum] |
| DUKHCONP1BZ6STUG1045 | Construction of slab on grade | 2014-01-15 → 2014-02-22 (+38d) | 2014-02-13 → 2014-03-22 (+37d) |  | 0d → -31d | resources BLINDING MASON SK [1524 h]; SCREED MASON SK [1523 h]; STEEL FIXERS SK [616 h]; CONCRETE MASON SK [620 h]; LABOR- SUBCONTRACTOR [2641.5 h]; BLINDING QTY [1904 Sqm]; SCREED QTY [1903 Sqm]; CONCRETE QTY [310 Cum]; WELDED WIRE MESH [2310 Sqm] → CONCRETE MASON SK [1524 h]; SCREED MASON SK [1523 h]; STEEL FIXERS SK [616 h]; CONCRETE MASON SK [620 h]; LABOR- SUBCONTRACTOR [2641.5 h]; BLINDING QTY [1904 Sqm]; SCREED QTY [1903 Sqm]; CONCRETE QTY [310 Cum]; WELDED WIRE MESH [2310 Sqm] |
| 15 | **SUPERSTRUCTURE** | 2014-02-01 → 2014-03-10 (+37d) | 2014-06-30 → 2014-07-31 (+31d) |  |  |  |
| 10 | **GROUND FLOOR** | 2014-02-01 → 2014-03-10 (+37d) | 2014-03-29 → 2014-05-04 (+36d) |  |  |  |
| DUKHCONP1BZ6STGF2000 | Column-Rebar & Formwork | 2014-02-01 → 2014-03-10 (+37d) | 2014-03-02 → 2014-04-07 (+36d) |  | 0d → -31d |  |
| DUKHCONP1BZ6STGF2005 | Column-Concrete | 2014-02-10 → 2014-03-19 (+37d) | 2014-03-09 → 2014-04-14 (+36d) |  | 0d → -31d |  |
| DUKHCONP1BZ6STGF2010 | Beam, Stairs ,Slab-Rebar & Formwork | 2014-02-25 → 2014-04-02 (+36d) | 2014-03-25 → 2014-04-30 (+36d) |  | 0d → -31d |  |
| DUKHCONP1BZ6STGF2015 | Beam, Stairs ,Slab-Concrete | 2014-03-13 → 2014-04-19 (+37d) | 2014-03-29 → 2014-05-04 (+36d) |  | 0d → -31d |  |
| 15 | **FIRST FLOORS** | 2014-03-16 → 2014-04-21 (+36d) | 2014-04-29 → 2014-06-04 (+36d) |  |  |  |
| DUKHCONP1BZ6STFF2020 | Column-Rebar & Formwork | 2014-03-16 → 2014-04-21 (+36d) | 2014-04-13 → 2014-05-19 (+36d) |  | 0d → -31d |  |
| DUKHCONP1BZ6STFF2025 | Column-Concrete | 2014-03-25 → 2014-04-30 (+36d) | 2014-04-20 → 2014-05-26 (+36d) |  | 0d → -31d |  |
| DUKHCONP1BZ6STFF2030 | Beam, Stairs ,Slab-Rebar & Formwork | 2014-03-29 → 2014-05-04 (+36d) | 2014-04-26 → 2014-06-01 (+36d) |  | 0d → -31d |  |
| DUKHCONP1BZ6STFF2035 | Beam, Stairs ,Slab-Concrete | 2014-04-14 → 2014-05-20 (+36d) | 2014-04-29 → 2014-06-04 (+36d) |  | 0d → -31d |  |
| 20 | **ROOF** | 2014-04-20 → 2014-05-26 (+36d) | 2014-06-30 → 2014-07-31 (+31d) |  |  |  |
| DUKHCONP1BZ6STRF2040 | Column-Rebar & Formwork | 2014-04-20 → 2014-05-26 (+36d) | 2014-05-10 → 2014-06-15 (+36d) |  | 2d → -29d |  |
| DUKHCONP1BZ6STRF2045 | Column-Concrete | 2014-04-23 → 2014-05-29 (+36d) | 2014-05-12 → 2014-06-17 (+36d) |  | 2d → -29d |  |
| DUKHCONP1BZ6STRF2050 | Slab-Rebar & Formwork - Head Room | 2014-04-26 → 2014-06-01 (+36d) | 2014-05-18 → 2014-06-23 (+36d) |  | 2d → -29d |  |
| DUKHCONP1BZ6STRF2055 | Slab-Concrete-Head room | 2014-05-10 → 2014-06-15 (+36d) | 2014-05-24 → 2014-06-29 (+36d) |  | 2d → -29d |  |
| DUKHCONP1BZ6STRF2060 | Construction of Parapets | 2014-05-17 → 2014-06-22 (+36d) | 2014-06-14 → 2014-07-20 (+36d) |  | 62d → 31d |  |
| DUKHCONP1BZ6STRF2065 | Construction of up stands/Plinth | 2014-06-02 → 2014-07-03 (+31d) | 2014-06-30 → 2014-07-31 (+31d) |  | 67d → 40d |  |
| 15 | **FINISHING WORKS** | 2014-04-07 → 2014-05-13 (+36d) | 2014-11-24 → 2014-12-22 (+28d) |  |  |  |
| 10 | **INTERNAL FINISHES** | 2014-04-07 → 2014-05-13 (+36d) | 2014-11-24 → 2014-12-22 (+28d) |  |  |  |
| 10 | **GROUND FLOOR** | 2014-04-07 → 2014-05-13 (+36d) | 2014-09-20 → 2014-10-28 (+38d) |  |  |  |
| DUKHCONP1BZ6ARGF3000 | Block work | 2014-04-07 → 2014-05-13 (+36d) | 2014-05-05 → 2014-06-10 (+36d) |  | 38d → 7d |  |
| DUKHCONP1BZ6ARGF3005 | Plastering work | 2014-04-29 → 2014-06-04 (+36d) | 2014-05-27 → 2014-07-02 (+36d) |  | 38d → 7d |  |
| DUKHCONP1BZ6ARGF3010 | Flooring screed | 2014-05-07 → 2014-06-12 (+36d) | 2014-05-31 → 2014-07-06 (+36d) |  | 46d → 15d |  |
| DUKHCONP1BZ6ARGF3030 | Paint First coat | 2014-05-15 → 2014-06-21 (+37d) | 2014-06-12 → 2014-07-19 (+37d) |  | 52d → 21d |  |
| DUKHCONP1BZ6ARGF3015 | Wet area waterproofing & Protection Screed | 2014-05-17 → 2014-06-22 (+36d) | 2014-06-02 → 2014-07-08 (+36d) |  | 38d → 7d |  |
| DUKHCONP1BZ6ARGF3020 | Ceramic Wall Tiling | 2014-05-22 → 2014-06-28 (+37d) | 2014-06-19 → 2014-07-26 (+37d) |  | 38d → 7d |  |
| DUKHCONP1BZ6ARGF3025 | Porcelain Tile flooring | 2014-05-28 → 2014-07-03 (+36d) | 2014-06-25 → 2014-07-31 (+36d) |  | 38d → 7d |  |
| DUKHCONP1BZ6ARGF3045 | Fixing of Suspension systems | 2014-06-15 → 2014-07-21 (+36d) | 2014-07-07 → 2014-08-16 (+40d) |  | 38d → 7d |  |
| DUKHCONP1BZ6ARGF3035 | Slate Tile Flooring & Skirting | 2014-06-17 → 2014-07-23 (+36d) | 2014-07-03 → 2014-08-12 (+40d) |  | 48d → 17d |  |
| DUKHCONP1BZ6ARGF3055 | Aluminum tile false ceiling | 2014-06-23 → 2014-07-29 (+36d) | 2014-07-21 → 2014-08-30 (+40d) |  | 41d → 10d |  |
| DUKHCONP1BZ6ARGF3040 | Cobble Tile flooring | 2014-06-24 → 2014-07-30 (+36d) | 2014-07-10 → 2014-08-19 (+40d) |  | 46d → 15d |  |
| DUKHCONP1BZ6ARGF3060 | Gypsum board false ceiling | 2014-06-26 → 2014-08-05 (+40d) | 2014-07-24 → 2014-09-02 (+40d) |  | 38d → 7d |  |
| DUKHCONP1BZ6ARGF3050 | Granite - Stair case flooring & Skirting | 2014-07-02 → 2014-08-11 (+40d) | 2014-07-24 → 2014-09-02 (+40d) |  | 46d → 15d |  |
| DUKHCONP1BZ6ARGF3065 | Wooden door & PVC Door | 2014-07-16 → 2014-08-25 (+40d) | 2014-08-05 → 2014-09-10 (+36d) |  | 46d → 15d |  |
| DUKHCONP1BZ6ARGF3070 | Aluminum doors | 2014-07-22 → 2014-08-31 (+40d) | 2014-08-11 → 2014-09-16 (+36d) |  | 46d → 15d |  |
| DUKHCONP1BZ6ARGF3075 | Carpentry & Joinery Works | 2014-07-28 → 2014-09-06 (+40d) | 2014-08-23 → 2014-09-28 (+36d) |  | 46d → 15d |  |
| DUKHCONP1BZ6ARGF3080 | Aluminum windows | 2014-07-29 → 2014-09-07 (+40d) | 2014-08-24 → 2014-09-29 (+36d) |  | 56d → 25d |  |
| DUKHCONP1BZ6ARGF3085 | S.S.Balustrade | 2014-08-09 → 2014-09-14 (+36d) | 2014-08-31 → 2014-10-06 (+36d) |  | 51d → 20d |  |
| DUKHCONP1BZ6ARGF3090 | Installation of Granite Counter Top | 2014-08-13 → 2014-09-18 (+36d) | 2014-08-30 → 2014-10-05 (+36d) |  | 46d → 15d |  |

| ID | Task | Start | Finish | Total float |
| --- | --- | --- | --- | --- |
| DUKHCONP1BZ6ARGF3095 | Final Painting | 2014-08-23 → 2014-09-28 (+36d) | 2014-09-20 → 2014-10-28 (+38d) | 46d → 15d |
| 15 | **FIRST FLOORS** | 2014-05-18 → 2014-06-14 (+27d) | 2014-11-24 → 2014-12-22 (+28d) |  |
| DUKHCONP1BZ6ARFF3300 | Block work | 2014-05-18 → 2014-06-14 (+27d) | 2014-06-15 → 2014-07-12 (+27d) | -8d → -31d |
| DUKHCONP1BZ6ARFF3305 | Plastering work | 2014-06-14 → 2014-07-10 (+26d) | 2014-07-12 → 2014-08-11 (+30d) | -8d → -31d |
| DUKHCONP1BZ6ARFF3310 | Flooring screed | 2014-06-22 → 2014-07-19 (+27d) | 2014-07-15 → 2014-08-14 (+30d) | 9d → -14d |
| DUKHCONP1BZ6ARFF3330 | Paint First coat | 2014-06-30 → 2014-07-27 (+27d) | 2014-07-28 → 2014-08-27 (+30d) | 18d → -5d |
| DUKHCONP1BZ6ARFF3315 | Wet area waterproofing | 2014-07-05 → 2014-07-31 (+26d) | 2014-07-21 → 2014-08-20 (+30d) | -8d → -31d |
| DUKHCONP1BZ6ARFF3320 | Ceramic Wall Tiling | 2014-07-14 → 2014-08-13 (+30d) | 2014-08-14 → 2014-09-10 (+27d) | -8d → -31d |
| DUKHCONP1BZ6ARFF3325 | Porcelain Tile flooring | 2014-07-23 → 2014-08-23 (+31d) | 2014-08-24 → 2014-09-20 (+27d) | -8d → -31d |
| DUKHCONP1BZ6ARFF3335 | Slate Tile Flooring & Skirting | 2014-08-13 → 2014-09-09 (+27d) | 2014-08-30 → 2014-09-25 (+26d) | 11d → -12d |
| DUKHCONP1BZ6ARFF3345 | Fixing of Suspension systems | 2014-08-17 → 2014-09-13 (+27d) | 2014-09-08 → 2014-10-05 (+27d) | -8d → -31d |
| DUKHCONP1BZ6ARFF3350 | Granite - Stair case flooring & Skirting | 2014-08-17 → 2014-09-13 (+27d) | 2014-09-08 → 2014-10-05 (+27d) | 3d → -20d |
| DUKHCONP1BZ6ARFF3360 | Gypsum board false ceiling | 2014-08-28 → 2014-09-24 (+27d) | 2014-09-25 → 2014-10-25 (+30d) | -8d → -31d |
| DUKHCONP1BZ6ARFF3365 | Wooden door | 2014-09-13 → 2014-10-12 (+29d) | 2014-09-29 → 2014-10-28 (+29d) | -8d → -31d |
| DUKHCONP1BZ6ARFF3370 | Aluminum Door | 2014-09-21 → 2014-10-20 (+29d) | 2014-10-15 → 2014-11-11 (+27d) | -8d → -31d |
| DUKHCONP1BZ6ARFF3380 | Aluminum windows | 2014-09-28 → 2014-10-27 (+29d) | 2014-10-22 → 2014-11-18 (+27d) | 5d → -18d |
| DUKHCONP1BZ6ARFF3375 | Carpentry & Joinery Works | 2014-09-29 → 2014-10-28 (+29d) | 2014-10-29 → 2014-11-25 (+27d) | -8d → -31d |
| DUKHCONP1BZ6ARFF3385 | Handrail & Balustrade | 2014-10-15 → 2014-11-11 (+27d) | 2014-11-06 → 2014-12-03 (+27d) | -8d → -31d |
| DUKHCONP1BZ6ARFF3390 | Installation of Granite Counter Top | 2014-10-15 → 2014-11-11 (+27d) | 2014-11-06 → 2014-12-03 (+27d) | -6d → -29d |
| DUKHCONP1BZ6ARFF3395 | Final Painting | 2014-10-27 → 2014-11-23 (+27d) | 2014-11-24 → 2014-12-22 (+28d) | -8d → -31d |
| 20 | **ROOF** | 2014-06-03 → 2014-07-09 (+36d) | 2014-08-20 → 2014-09-25 (+36d) |  |
| DUKHCONP1BZ6ARRF3600 | Block work | 2014-06-03 → 2014-07-09 (+36d) | 2014-06-25 → 2014-07-31 (+36d) | 67d → 36d |
| DUKHCONP1BZ6ARRF3605 | Plastering work | 2014-06-15 → 2014-07-21 (+36d) | 2014-07-07 → 2014-08-16 (+40d) | 67d → 36d |
| DUKHCONP1BZ6ARRF3610 | Flooring screed | 2014-07-02 → 2014-08-11 (+40d) | 2014-07-19 → 2014-08-27 (+39d) | 67d → 36d |
| DUKHCONP1BZ6ARRF3695 | Painting -Storage area | 2014-07-14 → 2014-08-23 (+40d) | 2014-08-09 → 2014-09-14 (+36d) | 67d → 36d |
| DUKHCONP1BZ6ARRF3620 | Epoxy Painting -Storage area | 2014-07-31 → 2014-09-09 (+40d) | 2014-08-20 → 2014-09-25 (+36d) | 67d → 36d |
| 15 | **EXTERNAL FINISHES** | 2014-06-14 → 2014-07-15 (+31d) | 2014-08-28 → 2014-10-01 (+34d) |  |
| 10 | **ROOF** | 2014-06-14 → 2014-07-15 (+31d) | 2014-08-26 → 2014-10-01 (+36d) |  |
| DUKHCONP1BZ6ARRF3630 | Leveling Screed for Waterproofing | 2014-06-14 → 2014-07-15 (+31d) | 2014-07-12 → 2014-08-16 (+35d) | 67d → 40d |
| DUKHCONP1BZ6ARRF3635 | Laying of Waterproofing Membrane | 2014-06-17 → 2014-07-19 (+32d) | 2014-07-15 → 2014-08-19 (+35d) | 67d → 40d |
| DUKHCONP1BZ6ARRF3640 | Installation of Insulation & Protection | 2014-06-22 → 2014-07-23 (+31d) | 2014-07-20 → 2014-08-24 (+35d) | 67d → 40d |
| DUKHCONP1BZ6ARRF3645 | Lime Stone Chips & Paving slab Installation | 2014-06-26 → 2014-07-28 (+32d) | 2014-07-24 → 2014-08-28 (+35d) | 67d → 40d |
| DUKHCONP1BZ6ARRF3650 | Install. of Gal. Frame & Aluminum Slat Screen | 2014-07-05 → 2014-08-09 (+35d) | 2014-08-05 → 2014-09-06 (+32d) | 67d → 40d |
| DUKHCONP1BZ6ARRF3655 | Installation of Pumps Protection cabinets | 2014-07-20 → 2014-08-24 (+35d) | 2014-08-14 → 2014-09-15 (+32d) | 67d → 40d |
| DUKHCONP1BZ6ARRF3660 | Installation of Access Ladder | 2014-08-10 → 2014-09-15 (+36d) | 2014-08-26 → 2014-10-01 (+36d) | 67d → 36d |
| 15 | **ELEVATION** | 2014-06-29 → 2014-07-29 (+30d) | 2014-08-28 → 2014-09-28 (+31d) |  |
| DUKHCONP1BZ6AREL3665 | External Plastering | 2014-06-29 → 2014-07-29 (+30d) | 2014-07-27 → 2014-08-30 (+34d) | 65d → 39d |
| DUKHCONP1BZ6AREL3670 | External stone cladding works | 2014-07-16 → 2014-08-19 (+34d) | 2014-08-11 → 2014-09-10 (+30d) | 65d → 39d |
| DUKHCONP1BZ6AREL3675 | GRC works | 2014-07-22 → 2014-08-25 (+34d) | 2014-08-17 → 2014-09-16 (+30d) | 65d → 39d |
| DUKHCONP1BZ6AREL3680 | External Painting | 2014-08-06 → 2014-09-06 (+31d) | 2014-08-28 → 2014-09-28 (+31d) | 65d → 39d |
| 20 | **MEP WORKS** | 2014-01-06 → 2014-01-26 (+20d) | 2014-11-24 → 2014-12-22 (+28d) |  |
| 10 | **ELECTRICAL WORKS** | 2014-04-13 → 2014-05-19 (+36d) | 2014-11-24 → 2014-12-22 (+28d) |  |
| 10 | **GROUND FLOOR** | 2014-04-13 → 2014-05-19 (+36d) | 2014-08-23 → 2014-09-28 (+36d) |  |
| DUKHCONP1BZ6ELGF4000 | Fixing of wall conduits & switch socket boxes | 2014-04-13 → 2014-05-19 (+36d) | 2014-05-11 → 2014-06-16 (+36d) | 47d → 16d |
| DUKHCONP1BZ6ELGF4005 | Cable tray & trunking installation | 2014-04-24 → 2014-05-31 (+37d) | 2014-05-17 → 2014-06-22 (+36d) | 65d → 34d |
| DUKHCONP1BZ6ELGF4010 | Installation of wiring & Main Cabling | 2014-05-03 → 2014-06-08 (+36d) | 2014-05-31 → 2014-07-06 (+36d) | 65d → 34d |
| DUKHCONP1BZ6ELGF4015 | Install. of CAMS & Fire Fighting Accessories | 2014-07-05 → 2014-08-13 (+39d) | 2014-08-05 → 2014-09-10 (+36d) | 60d → 29d |
| DUKHCONP1BZ6ELGF4020 | Installation of DBS,MCCB Accessories. | 2014-07-10 → 2014-08-19 (+40d) | 2014-08-05 → 2014-09-10 (+36d) | 38d → 7d |
| DUKHCONP1BZ6ELGF4025 | Installation of Lighting fixtures & Accessories | 2014-07-22 → 2014-08-31 (+40d) | 2014-08-23 → 2014-09-28 (+36d) | 40d → 9d |
| DUKHCONP1BZ6ELGF4030 | Installation of Telephone System | 2014-07-22 → 2014-08-31 (+40d) | 2014-08-17 → 2014-09-22 (+36d) | 38d → 7d |
| 15 | **FIRST FLOORS** | 2014-05-24 → 2014-06-19 (+26d) | 2014-10-26 → 2014-11-22 (+27d) |  |
| DUKHCONP1BZ6ELFF4035 | Fixing of wall conduits & switch socket boxes | 2014-05-24 → 2014-06-19 (+26d) | 2014-06-21 → 2014-07-17 (+26d) | 5d → -18d |
| DUKHCONP1BZ6ELFF4040 | Cable tray & trunking installation | 2014-06-04 → 2014-07-01 (+27d) | 2014-06-26 → 2014-07-23 (+27d) | 35d → 12d |
| DUKHCONP1BZ6ELFF4045 | Installation of wiring & Main Cabling | 2014-06-12 → 2014-07-09 (+27d) | 2014-07-10 → 2014-08-10 (+31d) | 35d → 12d |
| DUKHCONP1BZ6ELFF4050 | Installation of Telephone System | 2014-09-03 → 2014-09-30 (+27d) | 2014-10-01 → 2014-10-30 (+29d) | 14d → -9d |
| DUKHCONP1BZ6ELFF4055 | Install. of CAMS & Fire Fighting Accessories | 2014-09-06 → 2014-10-02 (+26d) | 2014-10-04 → 2014-11-02 (+29d) | 34d → 11d |
| DUKHCONP1BZ6ELFF4060 | Installation of DBS,MCCB Accessories. | 2014-09-13 → 2014-10-12 (+29d) | 2014-10-05 → 2014-11-03 (+29d) | -8d → -31d |
| DUKHCONP1BZ6ELFF4065 | Installation of Lighting fixtures & Accessories | 2014-09-25 → 2014-10-25 (+30d) | 2014-10-26 → 2014-11-22 (+27d) | -8d → -31d |
| 20 | **ROOF** | 2014-10-18 → 2014-11-13 (+26d) | 2014-11-24 → 2014-12-22 (+28d) |  |
| DUKHCONP1BZ6ELRF4070 | Installation of Isolator | 2014-10-18 → 2014-11-13 (+26d) | 2014-11-06 → 2014-12-03 (+27d) | -8d → -31d |
| DUKHCONP1BZ6ELRF4075 | Installation of TV Dish Antenna | 2014-10-29 → 2014-11-25 (+27d) | 2014-11-24 → 2014-12-22 (+28d) | -8d → -31d |
| 15 | **PLUMBING, DRAINAGE & FIRE FIGHTING WORKS** | 2014-01-06 → 2014-01-26 (+20d) | 2014-11-05 → 2014-12-02 (+27d) |  |
| 10 | **GROUND FLOOR** | 2014-01-06 → 2014-01-26 (+20d) | 2014-08-23 → 2014-09-28 (+36d) |  |
| DUKHCONP1BZ6PLUG4300 | Drainage / Storm Pipes in Grade Slab | 2014-01-06 → 2014-01-26 (+20d) | 2014-01-28 → 2014-02-18 (+21d) | 0d → -17d |
| DUKHCONP1BZ6PLGF4305 | Installation of Plumbing pipes & testing | 2014-04-23 → 2014-05-29 (+36d) | 2014-05-13 → 2014-06-18 (+36d) | 38d → 7d |
| DUKHCONP1BZ6PLGF4310 | Installation of Drainage pipes &testing | 2014-04-23 → 2014-05-29 (+36d) | 2014-05-13 → 2014-06-18 (+36d) | 41d → 10d |
| DUKHCONP1BZ6PLGF4315 | Sanitary Fittings & Accessories | 2014-07-22 → 2014-08-31 (+40d) | 2014-08-17 → 2014-09-22 (+36d) | 70d → 39d |
| DUKHCONP1BZ6PLGF4320 | Installation of Water Heater | 2014-08-06 → 2014-09-11 (+36d) | 2014-08-23 → 2014-09-28 (+36d) | 70d → 39d |
| 15 | **FIRST FLOORS** | 2014-06-04 → 2014-07-01 (+27d) | 2014-10-19 → 2014-11-15 (+27d) |  |
| DUKHCONP1BZ6PLFF4325 | Installation of Plumbing pipes & testing | 2014-06-04 → 2014-07-01 (+27d) | 2014-06-24 → 2014-07-21 (+27d) | -8d → -31d |

| ID | Task | Start | Finish | Total float |
| --- | --- | --- | --- | --- |
| DUKHCONP1BZ6PLFF4330 | Installation of Drainage pipes & testing | 2014-06-04 → 2014-07-01 (+27d) | 2014-06-24 → 2014-07-21 (+27d) | 19d → -4d |
| DUKHCONP1BZ6PLFF4335 | Sanitary Fittings & Accessories | 2014-09-18 → 2014-10-18 (+30d) | 2014-10-13 → 2014-11-09 (+27d) | 8d → -15d |
| DUKHCONP1BZ6PLFF4340 | Installation of Water Heater | 2014-09-30 → 2014-10-29 (+29d) | 2014-10-19 → 2014-11-15 (+27d) | 8d → -15d |
| 20 | **ROOF** | 2014-07-01 → 2014-08-10 (+40d) | 2014-11-05 → 2014-12-02 (+27d) |  |
| DUKHCONP1BZ6PLRF4345 | Installation of Plumbing pipes & fittings | 2014-07-01 → 2014-08-10 (+40d) | 2014-07-16 → 2014-08-25 (+40d) | 75d → 44d |
| DUKHCONP1BZ6PLRF4350 | Installation of Rain water Pipes | 2014-07-19 → 2014-08-21 (+33d) | 2014-08-07 → 2014-09-07 (+31d) | 68d → 42d |
| DUKHCONP1BZ6PLRF4355 | Roof Water Tank Installation & Connections | 2014-10-06 → 2014-11-04 (+29d) | 2014-11-05 → 2014-12-02 (+27d) | 8d → -15d |
| 20 | **AC WORKS** | 2014-05-13 → 2014-06-18 (+36d) | 2014-11-02 → 2014-11-29 (+27d) |  |
| 10 | **GROUND FLOOR** | 2014-05-13 → 2014-06-18 (+36d) | 2014-08-20 → 2014-09-25 (+36d) |  |
| DUKHCONP1BZ6ACGF4600 | Installation AC Pipes | 2014-05-13 → 2014-06-18 (+36d) | 2014-06-04 → 2014-07-10 (+36d) | 69d → 38d |
| DUKHCONP1BZ6ACGF4605 | Fixing of Ventilation Equipments | 2014-07-05 → 2014-08-13 (+39d) | 2014-08-05 → 2014-09-10 (+36d) | 57d → 26d |
| DUKHCONP1BZ6ACGF4610 | Fixing of Split AC | 2014-07-26 → 2014-09-03 (+39d) | 2014-08-20 → 2014-09-25 (+36d) | 57d → 26d |
| 15 | **FIRST FLOORS** | 2014-06-28 → 2014-07-24 (+26d) | 2014-10-21 → 2014-11-17 (+27d) |  |
| DUKHCONP1BZ6ACFF4615 | Installation AC Pipes | 2014-06-28 → 2014-07-24 (+26d) | 2014-07-20 → 2014-08-19 (+30d) | 35d → 12d |
| DUKHCONP1BZ6ACFF4620 | Fixing of Ventilation Equipments | 2014-09-06 → 2014-10-02 (+26d) | 2014-10-04 → 2014-11-02 (+29d) | 6d → -17d |
| DUKHCONP1BZ6ACFF4625 | Fixing of Split AC | 2014-09-27 → 2014-10-26 (+29d) | 2014-10-21 → 2014-11-17 (+27d) | 6d → -17d |
| 20 | **ROOF** | 2014-07-09 → 2014-08-09 (+31d) | 2014-11-02 → 2014-11-29 (+27d) |  |
| DUKHCONP1BZ6ACRF4630 | Installation of Refrigerant Pipes | 2014-07-09 → 2014-08-09 (+31d) | 2014-08-10 → 2014-09-06 (+27d) | 76d → 53d |
| DUKHCONP1BZ6ACRF4635 | Installation of Condensing Unit | 2014-10-02 → 2014-11-01 (+30d) | 2014-11-02 → 2014-11-29 (+27d) | 11d → -12d |
| 25 | **EXTERNAL WORKS** | 2014-05-19 → 2014-06-15 (+27d) | 2014-11-27 → 2014-12-14 (+17d) |  |
| 10 | **MISCELLANEOUS** | 2014-05-19 → 2014-06-15 (+27d) | 2014-11-27 → 2014-12-14 (+17d) |  |
| DUKHCONP1BZ6MSEX5020 | Construction Entrance Ramp | 2014-05-19 → 2014-06-15 (+27d) | 2014-06-16 → 2014-07-13 (+27d) | 58d → 35d |
| DUKHCONP1BZ6MSEX5000 | Construction of Manholes | 2014-05-21 → 2014-06-26 (+36d) | 2014-06-18 → 2014-07-24 (+36d) | 27d → -4d |
| DUKHCONP1BZ6MSEX5025 | SS.Handrails and Balustrades | 2014-06-08 → 2014-07-05 (+27d) | 2014-06-30 → 2014-07-27 (+27d) | 58d → 35d |
| DUKHCONP1BZ6MSEX5005 | Construction of Soak pit, Chambers | 2014-06-04 → 2014-07-10 (+36d) | 2014-07-02 → 2014-08-11 (+40d) | 27d → -4d |
| DUKHCONP1BZ6MSEX5015 | Construction of grease Trap | 2014-06-24 → 2014-07-30 (+36d) | 2014-07-16 → 2014-08-25 (+40d) | 27d → -4d |
| DUKHCONP1BZ6MSEX5010 | Telephone cable laying | 2014-07-17 → 2014-08-26 (+40d) | 2014-08-18 → 2014-09-23 (+36d) | 27d → -4d |
| DUKHCONP1BZ6MSEX5335 | Aluminum Roll-up Shutter with 2m Wall | 2014-10-30 → 2014-11-16 (+17d) | 2014-11-27 → 2014-12-14 (+17d) | 14d → 0d |
| 15 | **WATER TANK ENCLOSURE** | 2014-06-19 → 2014-07-14 (+25d) | 2014-09-27 → 2014-10-23 (+26d) |  |
| DUKHCONP1BZ6WEEX5030 | Excavation | 2014-06-19 → 2014-07-14 (+25d) | 2014-07-12 → 2014-08-09 (+28d) | 40d → 19d |
| DUKHCONP1BZ6WEEX5035 | Construction of Raft | 2014-07-01 → 2014-07-26 (+25d) | 2014-07-29 → 2014-08-26 (+28d) | 40d → 19d |
| DUKHCONP1BZ6WEEX5040 | Block works & Plastering | 2014-07-10 → 2014-08-07 (+28d) | 2014-08-11 → 2014-09-04 (+24d) | 40d → 19d |
| DUKHCONP1BZ6WEEX5045 | Flooring & Painting | 2014-07-22 → 2014-08-19 (+28d) | 2014-08-23 → 2014-09-16 (+24d) | 40d → 19d |
| DUKHCONP1BZ6WEEX5050 | Installation of Steel Gate | 2014-08-12 → 2014-09-06 (+25d) | 2014-09-03 → 2014-09-28 (+25d) | 40d → 19d |
| DUKHCONP1BZ6WEEX5060 | Structural steel & SS Shed cover installation | 2014-08-18 → 2014-09-11 (+24d) | 2014-09-15 → 2014-10-12 (+27d) | 40d → 19d |
| DUKHCONP1BZ6WEEX5065 | Install. of Water Tank,Chiller,Pump & Meter | 2014-08-30 → 2014-09-23 (+24d) | 2014-09-27 → 2014-10-23 (+26d) | 40d → 19d |
| 20 | **HARD LANDSCAPING** | 2014-06-16 → 2014-07-13 (+27d) | 2014-08-07 → 2014-09-03 (+27d) |  |
| DUKHCONP1BZ6HDEX5090 | kerb works | 2014-06-16 → 2014-07-13 (+27d) | 2014-07-08 → 2014-08-07 (+30d) | 58d → 35d |
| DUKHCONP1BZ6HDEX5095 | Cobble Stone Works | 2014-06-28 → 2014-07-24 (+26d) | 2014-07-20 → 2014-08-19 (+30d) | 58d → 35d |
| DUKHCONP1BZ6HDEX5100 | Interlock works | 2014-07-13 → 2014-08-12 (+30d) | 2014-08-07 → 2014-09-03 (+27d) | 58d → 35d |
| 25 | **SOFT LANDSCAPING** | 2014-07-24 → 2014-08-24 (+31d) | 2014-09-06 → 2014-10-02 (+26d) |  |
| DUKHCONP1BZ6SLEX5105 | Laying of Grass/ green area | 2014-07-24 → 2014-08-24 (+31d) | 2014-08-25 → 2014-09-21 (+27d) | 58d → 35d |
| DUKHCONP1BZ6SLEX5110 | Laying of Palm tree | 2014-08-09 → 2014-09-04 (+26d) | 2014-09-06 → 2014-10-02 (+26d) | 58d → 35d |
| 30 | **TESTING AND COMMISSIONING** | 2014-11-25 → 2014-12-23 (+28d) | 2014-12-24 → 2015-01-20 (+27d) |  |
| DUKHCONP1BZ6ACTC8000 | Pre-Commissioning & Testing of AC Works | 2014-11-25 → 2014-12-23 (+28d) | 2014-12-24 → 2015-01-20 (+27d) | -8d → -31d |
| DUKHCONP1BZ6ELTC8010 | Pre-Commissioning & Testing of Electrical Works | 2014-11-25 → 2014-12-23 (+28d) | 2014-12-24 → 2015-01-20 (+27d) | -8d → -31d |
| DUKHCONP1BZ6PLTC8005 | Pre-Commissioning & Testing of Plumbing Works | 2014-11-25 → 2014-12-23 (+28d) | 2014-12-24 → 2015-01-20 (+27d) | -8d → -31d |
| L30 | **PACKAGE-1B INFRASTRUCTURE WORKS** | 2013-12-08 → 2013-12-25 (+17d) | 2015-01-14 → 2015-01-31 (+17d) |  |
| 10 | **ZONE - 1** | 2013-12-08 → 2013-12-25 (+17d) | 2014-08-23 → 2014-09-08 (+16d) |  |
| 10 | **INFRASTRUCTURE WORKS** | 2013-12-08 → 2013-12-25 (+17d) | 2014-08-23 → 2014-09-08 (+16d) |  |
| 10 | **DRAINAGE LINES** | 2013-12-08 → 2013-12-25 (+17d) | 2014-01-27 → 2014-02-13 (+17d) |  |
| DUKHCONI1BZ1DRGL5115 | Excavation for Drainage line | 2013-12-08 → 2013-12-25 (+17d) | 2014-01-06 → 2014-01-22 (+16d) | -11d → -25d |
| DUKHCONI1BZ1DRGL5120 | Laying of Drainage line | 2013-12-15 → 2014-01-01 (+17d) | 2014-01-13 → 2014-01-29 (+16d) | -11d → -25d |
| DUKHCONI1BZ1DRGL5125 | Testing of Drainage line | 2013-12-24 → 2014-01-09 (+16d) | 2014-01-21 → 2014-02-06 (+16d) | -11d → -25d |
| DUKHCONI1BZ1DRGL5130 | Backfilling Drainage line | 2014-01-11 → 2014-01-27 (+16d) | 2014-01-27 → 2014-02-13 (+17d) | -11d → -25d |
| 15 | **MANHOLES & SOAKAWAY** | 2014-01-11 → 2014-01-27 (+16d) | 2014-04-02 → 2014-04-19 (+17d) |  |
| DUKHCONI1BZ1SAGL5135 | Construction of manholes Drainage | 2014-01-11 → 2014-01-27 (+16d) | 2014-02-08 → 2014-02-25 (+17d) | 48d → 34d |
| DUKHCONI1BZ1SAGL5140 | Construction of soakaways | 2014-01-11 → 2014-01-27 (+16d) | 2014-02-08 → 2014-02-25 (+17d) | -11d → -25d |
| DUKHCONI1BZ1SAGL5145 | Construction of Road gullies | 2014-02-09 → 2014-02-26 (+17d) | 2014-03-10 → 2014-03-26 (+16d) | -11d → -25d |
| DUKHCONI1BZ1SAGL5150 | Connection with existing sewer manhole | 2014-03-11 → 2014-03-27 (+16d) | 2014-04-02 → 2014-04-19 (+17d) | 23d → 9d |
| 20 | **WATER SUPPLY SYSTEM** | 2014-01-22 → 2014-02-08 (+17d) | 2014-04-08 → 2014-04-24 (+16d) |  |
| DUKHCONI1BZ1WSGL5155 | Excavation for water line | 2014-01-22 → 2014-02-08 (+17d) | 2014-02-20 → 2014-03-09 (+17d) | -11d → -25d |
| DUKHCONI1BZ1WSGL5160 | Laying of water line | 2014-01-28 → 2014-02-15 (+18d) | 2014-02-26 → 2014-03-15 (+17d) | -11d → -25d |
| DUKHCONI1BZ1WSGL5165 | Testing of potable water line | 2014-02-03 → 2014-02-20 (+17d) | 2014-03-04 → 2014-03-20 (+16d) | -11d → -25d |
| DUKHCONI1BZ1WSGL5170 | Backfilling potable water line | 2014-02-09 → 2014-02-26 (+17d) | 2014-03-10 → 2014-03-26 (+16d) | -11d → -25d |
| DUKHCONI1BZ1WSGL5175 | Construction of valve chambers & Thrust Blocks | 2014-02-16 → 2014-03-04 (+16d) | 2014-03-16 → 2014-04-01 (+16d) | 18d → 4d |
| DUKHCONI1BZ1WSGL5180 | Installation of meter ,Accessories & Connection | 2014-03-17 → 2014-04-02 (+16d) | 2014-04-08 → 2014-04-24 (+16d) | 18d → 4d |
| 25 | **FIREFIGHTING LINES** | 2014-02-16 → 2014-03-04 (+16d) | 2014-04-16 → 2014-05-03 (+17d) |  |
| DUKHCONI1BZ1FFGL5185 | Excavation for firefighting line | 2014-02-16 → 2014-03-04 (+16d) | 2014-03-16 → 2014-04-01 (+16d) | -11d → -25d |
| DUKHCONI1BZ1FFGL5190 | Laying of firefighting line | 2014-02-24 → 2014-03-12 (+16d) | 2014-03-24 → 2014-04-09 (+16d) | -11d → -25d |

| ID | Task | Start | Finish | Total float |
| --- | --- | --- | --- | --- |
| DUKHCONI1BZ1FFGL5195 | Testing of firefighting line | 2014-03-02 → 2014-03-18 (+16d) | 2014-03-30 → 2014-04-15 (+16d) | -11d → -25d |
| DUKHCONI1BZ1FFGL5200 | Backfilling firefighting line | 2014-03-08 → 2014-03-24 (+16d) | 2014-04-05 → 2014-04-21 (+16d) | -11d → -25d |
| DUKHCONI1BZ1FFGL5205 | Construction of valve chambers & Thrust Blocks | 2014-03-13 → 2014-03-30 (+17d) | 2014-04-10 → 2014-04-27 (+17d) | 11d → -3d |
| DUKHCONI1BZ1FFGL5210 | Connection with existing Firewater System | 2014-03-19 → 2014-04-05 (+17d) | 2014-04-16 → 2014-05-03 (+17d) | 11d → -3d |
| 30 | **ELECTRICAL LINES** | 2014-03-16 → 2014-04-01 (+16d) | 2014-05-08 → 2014-05-25 (+17d) |  |
| DUKHCONI1BZ1ELGL5215 | Excavation Cable Trenches & Duct Banks | 2014-03-16 → 2014-04-01 (+16d) | 2014-04-13 → 2014-04-29 (+16d) | -11d → -25d |
| DUKHCONI1BZ1ELGL5220 | Laying of electrical cables | 2014-03-22 → 2014-04-07 (+16d) | 2014-04-19 → 2014-05-05 (+16d) | -8d → -22d |
| DUKHCONI1BZ1ELGL5225 | Backfilling Electrical trench | 2014-03-30 → 2014-04-15 (+16d) | 2014-04-27 → 2014-05-13 (+16d) | -8d → -22d |
| DUKHCONI1BZ1ELGL5230 | Construction of Submain Board & Feeder Pillar | 2014-04-10 → 2014-04-27 (+17d) | 2014-05-08 → 2014-05-25 (+17d) | 68d → 54d |
| 35 | **STREET LIGHTING** | 2014-03-16 → 2014-04-01 (+16d) | 2014-06-07 → 2014-06-23 (+16d) |  |
| DUKHCONI1BZ1STGL5235 | Excavation for Street lighting | 2014-03-16 → 2014-04-01 (+16d) | 2014-04-13 → 2014-04-29 (+16d) | -11d → -25d |
| DUKHCONI1BZ1STGL5240 | Construction of Duct Banks | 2014-03-22 → 2014-04-07 (+16d) | 2014-04-19 → 2014-05-05 (+16d) | -11d → -25d |
| DUKHCONI1BZ1STGL5245 | Construction of Foundation | 2014-03-22 → 2014-04-07 (+16d) | 2014-04-19 → 2014-05-05 (+16d) | -11d → -25d |
| DUKHCONI1BZ1STGL5250 | Backfilling Street Lighting | 2014-03-27 → 2014-04-13 (+17d) | 2014-04-24 → 2014-05-11 (+17d) | -11d → -25d |
| DUKHCONI1BZ1STGL5255 | Installation of light Post | 2014-04-08 → 2014-04-24 (+16d) | 2014-05-06 → 2014-05-22 (+16d) | 88d → 74d |
| DUKHCONI1BZ1STGL5260 | Electrical Works | 2014-05-10 → 2014-05-26 (+16d) | 2014-06-07 → 2014-06-23 (+16d) | 68d → 54d |
| 40 | **IRRIGATION LINES** | 2014-04-28 → 2014-05-14 (+16d) | 2014-07-02 → 2014-07-19 (+17d) |  |
| DUKHCONI1BZ1IRGL5265 | Excavation for irrigation line | 2014-04-28 → 2014-05-14 (+16d) | 2014-05-26 → 2014-06-11 (+16d) | -4d → -18d |
| DUKHCONI1BZ1IRGL5270 | Laying of irrigationline | 2014-05-04 → 2014-05-20 (+16d) | 2014-06-01 → 2014-06-17 (+16d) | -4d → -18d |
| DUKHCONI1BZ1IRGL5275 | Testing of irrigation line | 2014-05-10 → 2014-05-26 (+16d) | 2014-06-07 → 2014-06-23 (+16d) | -4d → -18d |
| DUKHCONI1BZ1IRGL5280 | Backfilling irrigation line | 2014-05-15 → 2014-06-01 (+17d) | 2014-06-12 → 2014-06-29 (+17d) | -4d → -18d |
| DUKHCONI1BZ1IRGL5285 | Construction of Thrust Blocks,Pull boxes | 2014-05-27 → 2014-06-12 (+16d) | 2014-06-24 → 2014-07-10 (+16d) | 11d → -3d |
| DUKHCONI1BZ1IRGL5290 | Irrigation Fittings (Nozzle,Values) | 2014-06-04 → 2014-06-21 (+17d) | 2014-07-02 → 2014-07-19 (+17d) | 11d → -3d |
| 45 | **TELECOMMUNICATION LINES** | 2014-04-08 → 2014-04-24 (+16d) | 2014-05-24 → 2014-06-09 (+16d) |  |
| DUKHCONI1BZ1TCGL5295 | Excavation Telecommunication trenches | 2014-04-08 → 2014-04-24 (+16d) | 2014-04-30 → 2014-05-17 (+17d) | -11d → -25d |
| DUKHCONI1BZ1TCGL5300 | Laying of cables | 2014-04-14 → 2014-04-30 (+16d) | 2014-05-06 → 2014-05-22 (+16d) | -11d → -25d |
| DUKHCONI1BZ1TCGL5305 | Backfilling telecommunication trench | 2014-04-20 → 2014-05-06 (+16d) | 2014-05-12 → 2014-05-28 (+16d) | -11d → -25d |
| DUKHCONI1BZ1TCGL5310 | Connection & Installation | 2014-05-01 → 2014-05-18 (+17d) | 2014-05-24 → 2014-06-09 (+16d) | 80d → 66d |
| 50 | **BOUNDARY WALL** | 2014-04-08 → 2014-04-24 (+16d) | 2014-07-02 → 2014-07-19 (+17d) |  |
| DUKHCONI1BZ1BWGL5315 | Construction of Boundary Wall (Ht-3m) | 2014-04-08 → 2014-04-24 (+16d) | 2014-05-06 → 2014-05-22 (+16d) | 14d → 0d |
| DUKHCONI1BZ1BWGL5320 | Install.Steel Gate,Entance Barrier (3m Wall) | 2014-04-24 → 2014-05-11 (+17d) | 2014-05-22 → 2014-06-08 (+17d) | 14d → 0d |
| DUKHCONI1BZ1BWGL5325 | Const. of Villa Front Boundary Wall (Ht-2m) | 2014-05-24 → 2014-06-09 (+16d) | 2014-06-21 → 2014-07-07 (+16d) | 14d → 0d |
| DUKHCONI1BZ1BWGL5330 | Const. of Blockwork fence Wall (Ht-1.85m) | 2014-06-04 → 2014-06-21 (+17d) | 2014-07-02 → 2014-07-19 (+17d) | 77d → 63d |
| 55 | **ROAD WORKS** | 2014-05-13 → 2014-05-29 (+16d) | 2014-07-27 → 2014-08-16 (+20d) |  |
| DUKHCONI1BZ1RWGL6000 | Excavation & Earth Filling | 2014-05-13 → 2014-05-29 (+16d) | 2014-05-24 → 2014-06-09 (+16d) | -11d → -25d |
| DUKHCONI1BZ1RWGL6005 | Laying of Sub Grade | 2014-05-25 → 2014-06-10 (+16d) | 2014-06-22 → 2014-07-08 (+16d) | -11d → -25d |
| DUKHCONI1BZ1RWGL6010 | Laying of Precast Kerbs | 2014-06-05 → 2014-06-22 (+17d) | 2014-07-03 → 2014-07-20 (+17d) | -11d → -25d |
| DUKHCONI1BZ1RWGL6015 | Laying of Granular Sub Base Coarse | 2014-06-17 → 2014-07-03 (+16d) | 2014-07-09 → 2014-07-26 (+17d) | -11d → -25d |
| DUKHCONI1BZ1RWGL6020 | Laying of Road Base Asphalt Concrete | 2014-07-10 → 2014-07-27 (+17d) | 2014-07-15 → 2014-07-31 (+16d) | 41d → 27d |
| DUKHCONI1BZ1RWGL6025 | Laying of Asphalt Wearing Coarse | 2014-07-16 → 2014-08-05 (+20d) | 2014-07-21 → 2014-08-10 (+20d) | 56d → 42d |
| DUKHCONI1BZ1RWGL6030 | Traffic Signage & Road Marking | 2014-07-22 → 2014-08-11 (+20d) | 2014-07-27 → 2014-08-16 (+20d) | 56d → 42d |
| 60 | **PARKING SHED** | 2014-06-23 → 2014-07-09 (+16d) | 2014-08-23 → 2014-09-08 (+16d) |  |
| DUKHCONI1BZ1PSGL7000 | Excavation | 2014-06-23 → 2014-07-09 (+16d) | 2014-07-09 → 2014-07-26 (+17d) | 46d → 32d |
| DUKHCONI1BZ1PSGL7005 | Foundation casting | 2014-07-05 → 2014-07-21 (+16d) | 2014-07-21 → 2014-08-10 (+20d) | 41d → 27d |
| DUKHCONI1BZ1PSGL7010 | Column, Frame& Fabrics Erection | 2014-07-16 → 2014-08-05 (+20d) | 2014-08-17 → 2014-09-02 (+16d) | 41d → 27d |
| DUKHCONI1BZ1PSGL7015 | Electrical Works-Parking Shed | 2014-07-22 → 2014-08-11 (+20d) | 2014-08-23 → 2014-09-08 (+16d) | 41d → 27d |
| 65 | **HARD LANDSCAPING** | 2014-05-13 → 2014-05-29 (+16d) | 2014-08-05 → 2014-08-21 (+16d) |  |
| DUKHCONI1BZ1HDGL7020 | Precast Concrete Kerbs works | 2014-05-13 → 2014-05-29 (+16d) | 2014-06-04 → 2014-06-21 (+17d) | 0d → -14d |
| DUKHCONI1BZ1HDGL7025 | Interlocking for Walkways | 2014-05-25 → 2014-06-10 (+16d) | 2014-06-22 → 2014-07-08 (+16d) | 0d → -14d |
| DUKHCONI1BZ1HDGL7030 | Construction of Retaining wall | 2014-06-05 → 2014-06-22 (+17d) | 2014-07-03 → 2014-07-20 (+17d) | 0d → -14d |
| DUKHCONI1BZ1HDGL7035 | Construction of Wash Stone Boulders | 2014-06-05 → 2014-06-22 (+17d) | 2014-07-03 → 2014-07-20 (+17d) | 0d → -14d |
| DUKHCONI1BZ1HDGL7040 | Construction of Speed Humps | 2014-07-22 → 2014-08-11 (+20d) | 2014-08-05 → 2014-08-21 (+16d) | 80d → 66d |
| 70 | **SOFT LANDSCAPING** | 2014-06-17 → 2014-07-03 (+16d) | 2014-08-11 → 2014-08-27 (+16d) |  |
| DUKHCONI1BZ1SLGL7200 | Excavation | 2014-06-17 → 2014-07-03 (+16d) | 2014-07-15 → 2014-07-31 (+16d) | 0d → -14d |
| DUKHCONI1BZ1SLGL7205 | Sweet Soil Laying | 2014-06-29 → 2014-07-15 (+16d) | 2014-07-27 → 2014-08-16 (+20d) | 0d → -14d |
| DUKHCONI1BZ1SLGL7210 | Plantation works | 2014-07-10 → 2014-07-27 (+17d) | 2014-08-11 → 2014-08-27 (+16d) | 30d → 16d |
| 15 | **ZONE - 2** | 2014-01-19 → 2014-02-04 (+16d) | 2014-10-08 → 2014-10-27 (+19d) |  |
| 10 | **INFRASTRUCTURE WORKS** | 2014-01-19 → 2014-02-04 (+16d) | 2014-10-08 → 2014-10-27 (+19d) |  |
| 10 | **DRAINAGE LINES** | 2014-01-19 → 2014-02-04 (+16d) | 2014-03-10 → 2014-03-26 (+16d) |  |
| DUKHCONI1BZ2DRGL5115 | Excavation for Drainage line | 2014-01-19 → 2014-02-04 (+16d) | 2014-02-17 → 2014-03-05 (+16d) | -6d → -20d |
| DUKHCONI1BZ2DRGL5120 | Laying of Drainage line | 2014-01-26 → 2014-02-12 (+17d) | 2014-02-24 → 2014-03-12 (+16d) | -6d → -20d |
| DUKHCONI1BZ2DRGL5125 | Testing of Drainage line | 2014-02-03 → 2014-02-20 (+17d) | 2014-03-04 → 2014-03-20 (+16d) | -6d → -20d |
| DUKHCONI1BZ2DRGL5130 | Backfilling Drainage line | 2014-02-22 → 2014-03-10 (+16d) | 2014-03-10 → 2014-03-26 (+16d) | -6d → -20d |
| 15 | **MANHOLES & SOAKAWAY** | 2014-02-22 → 2014-03-10 (+16d) | 2014-05-13 → 2014-05-29 (+16d) |  |
| DUKHCONI1BZ2SAGL5135 | Construction of manholes Drainage | 2014-02-22 → 2014-03-10 (+16d) | 2014-03-22 → 2014-04-07 (+16d) | 53d → 39d |
| DUKHCONI1BZ2SAGL5140 | Construction of soakaways | 2014-02-22 → 2014-03-10 (+16d) | 2014-03-22 → 2014-04-07 (+16d) | -6d → -20d |
| DUKHCONI1BZ2SAGL5145 | Construction of Road gullies | 2014-03-23 → 2014-04-08 (+16d) | 2014-04-20 → 2014-05-06 (+16d) | -6d → -20d |
| DUKHCONI1BZ2SAGL5150 | Connection with existing sewer manhole | 2014-04-21 → 2014-05-07 (+16d) | 2014-05-13 → 2014-05-29 (+16d) | 28d → 14d |
| 20 | **WATER SUPPLY SYSTEM** | 2014-03-11 → 2014-03-27 (+16d) | 2014-05-25 → 2014-06-10 (+16d) |  |
| DUKHCONI1BZ2WSGL5155 | Excavation for water line | 2014-03-11 → 2014-03-27 (+16d) | 2014-04-08 → 2014-04-24 (+16d) | -11d → -25d |

| ID | Task | Start | Finish | Total float |
| --- | --- | --- | --- | --- |
| DUKHCONI1BZ2WSGL5160 | Laying of water line | 2014-03-17 → 2014-04-02 (+16d) | 2014-04-14 → 2014-04-30 (+16d) | -11d → -25d |
| DUKHCONI1BZ2WSGL5165 | Testing of potable water line | 2014-03-23 → 2014-04-08 (+16d) | 2014-04-20 → 2014-05-06 (+16d) | -11d → -25d |
| DUKHCONI1BZ2WSGL5170 | Backfilling potable water line | 2014-03-29 → 2014-04-14 (+16d) | 2014-04-26 → 2014-05-12 (+16d) | -11d → -25d |
| DUKHCONI1BZ2WSGL5175 | Construction of valve chambers & Thrust Blocks | 2014-04-03 → 2014-04-20 (+17d) | 2014-05-01 → 2014-05-18 (+17d) | 18d → 4d |
| DUKHCONI1BZ2WSGL5180 | Installation of meter ,Accessories & Connection | 2014-05-03 → 2014-05-19 (+16d) | 2014-05-25 → 2014-06-10 (+16d) | 18d → 4d |
| 25 | **FIREFIGHTING LINES** | 2014-04-03 → 2014-04-20 (+17d) | 2014-06-02 → 2014-06-18 (+16d) |  |
| DUKHCONI1BZ2FFGL5185 | Excavation for firefighting line | 2014-04-03 → 2014-04-20 (+17d) | 2014-05-01 → 2014-05-18 (+17d) | -11d → -25d |
| DUKHCONI1BZ2FFGL5190 | Laying of firefighting line | 2014-04-12 → 2014-04-28 (+16d) | 2014-05-10 → 2014-05-26 (+16d) | -11d → -25d |
| DUKHCONI1BZ2FFGL5195 | Testing of firefighting line | 2014-04-17 → 2014-05-04 (+17d) | 2014-05-15 → 2014-06-01 (+17d) | -11d → -25d |
| DUKHCONI1BZ2FFGL5200 | Backfilling firefighting line | 2014-04-23 → 2014-05-10 (+17d) | 2014-05-21 → 2014-06-07 (+17d) | -11d → -25d |
| DUKHCONI1BZ2FFGL5205 | Construction of valve chambers & Thrust Blocks | 2014-04-29 → 2014-05-15 (+16d) | 2014-05-27 → 2014-06-12 (+16d) | 11d → -3d |
| DUKHCONI1BZ2FFGL5210 | Connection with existing Firewater System | 2014-05-05 → 2014-05-21 (+16d) | 2014-06-02 → 2014-06-18 (+16d) | 11d → -3d |
| 30 | **ELECTRICAL LINES** | 2014-05-01 → 2014-05-18 (+17d) | 2014-06-24 → 2014-07-10 (+16d) |  |
| DUKHCONI1BZ2ELGL5215 | Excavation Cable Trenches & Duct Banks | 2014-05-01 → 2014-05-18 (+17d) | 2014-05-29 → 2014-06-15 (+17d) | -11d → -25d |
| DUKHCONI1BZ2ELGL5220 | Laying of electrical cables | 2014-05-07 → 2014-05-24 (+17d) | 2014-06-04 → 2014-06-21 (+17d) | -8d → -22d |
| DUKHCONI1BZ2ELGL5225 | Backfilling Electrical trench | 2014-05-15 → 2014-06-01 (+17d) | 2014-06-12 → 2014-06-29 (+17d) | -8d → -22d |
| DUKHCONI1BZ2ELGL5230 | Construction of Submain Board & Feeder Pillar | 2014-05-27 → 2014-06-12 (+16d) | 2014-06-24 → 2014-07-10 (+16d) | 53d → 39d |
| 35 | **STREET LIGHTING** | 2014-05-01 → 2014-05-18 (+17d) | 2014-07-23 → 2014-08-12 (+20d) |  |
| DUKHCONI1BZ2STGL5235 | Excavation for Street lighting | 2014-05-01 → 2014-05-18 (+17d) | 2014-05-29 → 2014-06-15 (+17d) | -11d → -25d |
| DUKHCONI1BZ2STGL5240 | Construction of Duct Banks | 2014-05-07 → 2014-05-24 (+17d) | 2014-06-04 → 2014-06-21 (+17d) | -11d → -25d |
| DUKHCONI1BZ2STGL5245 | Construction of Foundation | 2014-05-07 → 2014-05-24 (+17d) | 2014-06-04 → 2014-06-21 (+17d) | -11d → -25d |
| DUKHCONI1BZ2STGL5250 | Backfilling Street Lighting | 2014-05-13 → 2014-05-29 (+16d) | 2014-06-10 → 2014-06-26 (+16d) | -11d → -25d |
| DUKHCONI1BZ2STGL5255 | Installation of light Post | 2014-05-25 → 2014-06-10 (+16d) | 2014-06-22 → 2014-07-08 (+16d) | 73d → 59d |
| DUKHCONI1BZ2STGL5260 | Electrical Works | 2014-06-25 → 2014-07-12 (+17d) | 2014-07-23 → 2014-08-12 (+20d) | 53d → 39d |
| 40 | **IRRIGATION LINES** | 2014-06-14 → 2014-06-30 (+16d) | 2014-08-21 → 2014-09-07 (+17d) |  |
| DUKHCONI1BZ2IRGL5265 | Excavation for irrigation line | 2014-06-14 → 2014-06-30 (+16d) | 2014-07-12 → 2014-07-28 (+16d) | -4d → -18d |
| DUKHCONI1BZ2IRGL5270 | Laying of irrigationline | 2014-06-19 → 2014-07-06 (+17d) | 2014-07-17 → 2014-08-06 (+20d) | -4d → -18d |
| DUKHCONI1BZ2IRGL5275 | Testing of irrigation line | 2014-06-25 → 2014-07-12 (+17d) | 2014-07-23 → 2014-08-12 (+20d) | -4d → -18d |
| DUKHCONI1BZ2IRGL5280 | Backfilling irrigation line | 2014-07-01 → 2014-07-17 (+16d) | 2014-07-29 → 2014-08-18 (+20d) | -4d → -18d |
| DUKHCONI1BZ2IRGL5285 | Construction of Thrust Blocks,Pull boxes | 2014-07-13 → 2014-07-29 (+16d) | 2014-08-13 → 2014-08-30 (+17d) | 6d → -8d |
| DUKHCONI1BZ2IRGL5290 | Irrigation Fittings (Nozzle,Values) | 2014-07-21 → 2014-08-10 (+20d) | 2014-08-21 → 2014-09-07 (+17d) | 6d → -8d |
| 45 | **TELECOMMUNICATION LINES** | 2014-05-25 → 2014-06-10 (+16d) | 2014-07-09 → 2014-07-26 (+17d) |  |
| DUKHCONI1BZ2TCGL5295 | Excavation Telecommunication trenches | 2014-05-25 → 2014-06-10 (+16d) | 2014-06-16 → 2014-07-02 (+16d) | -11d → -25d |
| DUKHCONI1BZ2TCGL5300 | Laying of cables | 2014-05-31 → 2014-06-16 (+16d) | 2014-06-22 → 2014-07-08 (+16d) | -11d → -25d |
| DUKHCONI1BZ2TCGL5305 | Backfilling telecommunication trench | 2014-06-05 → 2014-06-22 (+17d) | 2014-06-28 → 2014-07-14 (+16d) | -11d → -25d |
| DUKHCONI1BZ2TCGL5310 | Connection & Installation | 2014-06-17 → 2014-07-03 (+16d) | 2014-07-09 → 2014-07-26 (+17d) | 60d → 46d |
| 50 | **BOUNDARY WALL** | 2014-05-25 → 2014-06-10 (+16d) | 2014-08-21 → 2014-09-07 (+17d) |  |
| DUKHCONI1BZ2BWGL5315 | Construction of Boundary Wall (Ht-3m) | 2014-05-25 → 2014-06-10 (+16d) | 2014-06-22 → 2014-07-08 (+16d) | 24d → 10d |
| DUKHCONI1BZ2BWGL5320 | Install.Steel Gate,Entance Barrier (3m Wall) | 2014-06-10 → 2014-06-26 (+16d) | 2014-07-08 → 2014-07-24 (+16d) | 24d → 10d |
| DUKHCONI1BZ2BWGL5325 | Const. of Villa Front Boundary Wall (Ht-2m) | 2014-07-09 → 2014-07-26 (+17d) | 2014-08-10 → 2014-08-26 (+16d) | 24d → 10d |
| DUKHCONI1BZ2BWGL5330 | Const. of Blockwork fence Wall (Ht-1.85m) | 2014-07-21 → 2014-08-10 (+20d) | 2014-08-21 → 2014-09-07 (+17d) | 62d → 48d |
| 55 | **ROAD WORKS** | 2014-06-29 → 2014-07-15 (+16d) | 2014-09-15 → 2014-10-01 (+16d) |  |
| DUKHCONI1BZ2RWGL6000 | Excavation & Earth Filling | 2014-06-29 → 2014-07-15 (+16d) | 2014-07-09 → 2014-07-26 (+17d) | -11d → -25d |
| DUKHCONI1BZ2RWGL6005 | Laying of Sub Grade | 2014-07-10 → 2014-07-27 (+17d) | 2014-08-11 → 2014-08-27 (+16d) | -11d → -25d |
| DUKHCONI1BZ2RWGL6010 | Laying of Precast Kerbs | 2014-07-22 → 2014-08-11 (+20d) | 2014-08-23 → 2014-09-08 (+16d) | -11d → -25d |
| DUKHCONI1BZ2RWGL6015 | Laying of Granular Sub Base Coarse | 2014-08-06 → 2014-08-23 (+17d) | 2014-08-28 → 2014-09-14 (+17d) | -11d → -25d |
| DUKHCONI1BZ2RWGL6020 | Laying of Road Base Asphalt Concrete | 2014-08-30 → 2014-09-15 (+16d) | 2014-09-03 → 2014-09-20 (+17d) | 26d → 12d |
| DUKHCONI1BZ2RWGL6025 | Laying of Asphalt Wearing Coarse | 2014-09-04 → 2014-09-21 (+17d) | 2014-09-09 → 2014-09-25 (+16d) | 41d → 27d |
| DUKHCONI1BZ2RWGL6030 | Traffic Signage & Road Marking | 2014-09-10 → 2014-09-27 (+17d) | 2014-09-15 → 2014-10-01 (+16d) | 41d → 27d |
| 60 | **PARKING SHED** | 2014-08-12 → 2014-08-28 (+16d) | 2014-10-08 → 2014-10-27 (+19d) |  |
| DUKHCONI1BZ2PSGL7000 | Excavation | 2014-08-12 → 2014-08-28 (+16d) | 2014-08-28 → 2014-09-14 (+17d) | 31d → 17d |
| DUKHCONI1BZ2PSGL7005 | Foundation casting | 2014-08-24 → 2014-09-09 (+16d) | 2014-09-09 → 2014-09-25 (+16d) | 26d → 12d |
| DUKHCONI1BZ2PSGL7010 | Column, Frame& Fabrics Erection | 2014-09-04 → 2014-09-21 (+17d) | 2014-10-02 → 2014-10-21 (+19d) | 26d → 12d |
| DUKHCONI1BZ2PSGL7015 | Electrical Works-Parking Shed | 2014-09-10 → 2014-09-27 (+17d) | 2014-10-08 → 2014-10-27 (+19d) | 26d → 12d |
| 65 | **HARD LANDSCAPING** | 2014-06-29 → 2014-07-15 (+16d) | 2014-09-21 → 2014-10-07 (+16d) |  |
| DUKHCONI1BZ2HDGL7020 | Precast Concrete Kerbs works | 2014-06-29 → 2014-07-15 (+16d) | 2014-07-21 → 2014-08-10 (+20d) | -5d → -19d |
| DUKHCONI1BZ2HDGL7025 | Interlocking for Walkways | 2014-07-10 → 2014-07-27 (+17d) | 2014-08-11 → 2014-08-27 (+16d) | -5d → -19d |
| DUKHCONI1BZ2HDGL7030 | Construction of Retaining wall | 2014-07-22 → 2014-08-11 (+20d) | 2014-08-23 → 2014-09-08 (+16d) | -5d → -19d |
| DUKHCONI1BZ2HDGL7035 | Construction of Wash Stone Boulders | 2014-07-22 → 2014-08-11 (+20d) | 2014-08-23 → 2014-09-08 (+16d) | -5d → -19d |
| DUKHCONI1BZ2HDGL7040 | Construction of Speed Humps | 2014-09-10 → 2014-09-27 (+17d) | 2014-09-21 → 2014-10-07 (+16d) | 50d → 36d |
| 70 | **SOFT LANDSCAPING** | 2014-08-06 → 2014-08-23 (+17d) | 2014-09-27 → 2014-10-15 (+18d) |  |
| DUKHCONI1BZ2SLGL7200 | Excavation | 2014-08-06 → 2014-08-23 (+17d) | 2014-09-03 → 2014-09-20 (+17d) | -5d → -19d |
| DUKHCONI1BZ2SLGL7205 | Sweet Soil Laying | 2014-08-18 → 2014-09-03 (+16d) | 2014-09-15 → 2014-10-01 (+16d) | -5d → -19d |
| DUKHCONI1BZ2SLGL7210 | Plantation works | 2014-08-30 → 2014-09-15 (+16d) | 2014-09-27 → 2014-10-15 (+18d) | 15d → 1d |
| 20 | **ZONE - 3** | 2014-03-02 → 2014-03-18 (+16d) | 2014-11-26 → 2014-12-13 (+17d) |  |
| 10 | **INFRASTRUCTURE WORKS** | 2014-03-02 → 2014-03-18 (+16d) | 2014-11-26 → 2014-12-13 (+17d) |  |
| 10 | **DRAINAGE LINES** | 2014-03-02 → 2014-03-18 (+16d) | 2014-04-20 → 2014-05-06 (+16d) |  |
| DUKHCONI1BZ3DRGL5115 | Excavation for Drainage line | 2014-03-02 → 2014-03-18 (+16d) | 2014-03-30 → 2014-04-15 (+16d) | -1d → -15d |
| DUKHCONI1BZ3DRGL5120 | Laying of Drainage line | 2014-03-09 → 2014-03-25 (+16d) | 2014-04-06 → 2014-04-22 (+16d) | -1d → -15d |
| DUKHCONI1BZ3DRGL5125 | Testing of Drainage line | 2014-03-17 → 2014-04-02 (+16d) | 2014-04-14 → 2014-04-30 (+16d) | -1d → -15d |

| ID | Task | Start | Finish | Total float |
| --- | --- | --- | --- | --- |
| DUKHCONI1BZ3DRGL5130 | Backfilling Drainage line | 2014-04-03 → 2014-04-20 (+17d) | 2014-04-20 → 2014-05-06 (+16d) | -1d → -15d |
| 15 | **MANHOLES & SOAKAWAY** | 2014-04-03 → 2014-04-20 (+17d) | 2014-06-23 → 2014-07-09 (+16d) |  |
| DUKHCONI1BZ3SAGL5135 | Construction of manholes Drainage | 2014-04-03 → 2014-04-20 (+17d) | 2014-05-01 → 2014-05-18 (+17d) | 58d → 44d |
| DUKHCONI1BZ3SAGL5140 | Construction of soakaways | 2014-04-03 → 2014-04-20 (+17d) | 2014-05-01 → 2014-05-18 (+17d) | -1d → -15d |
| DUKHCONI1BZ3SAGL5145 | Construction of Road gullies | 2014-05-03 → 2014-05-19 (+16d) | 2014-05-31 → 2014-06-16 (+16d) | -1d → -15d |
| DUKHCONI1BZ3SAGL5150 | Connection with existing sewer manhole | 2014-06-01 → 2014-06-17 (+16d) | 2014-06-23 → 2014-07-09 (+16d) | 33d → 19d |
| 20 | **WATER SUPPLY SYSTEM** | 2014-04-27 → 2014-05-13 (+16d) | 2014-07-10 → 2014-07-27 (+17d) |  |
| DUKHCONI1BZ3WSGL5155 | Excavation for water line | 2014-04-27 → 2014-05-13 (+16d) | 2014-05-25 → 2014-06-10 (+16d) | -11d → -25d |
| DUKHCONI1BZ3WSGL5160 | Laying of water line | 2014-05-03 → 2014-05-19 (+16d) | 2014-05-31 → 2014-06-16 (+16d) | -11d → -25d |
| DUKHCONI1BZ3WSGL5165 | Testing of potable water line | 2014-05-08 → 2014-05-25 (+17d) | 2014-06-05 → 2014-06-22 (+17d) | -11d → -25d |
| DUKHCONI1BZ3WSGL5170 | Backfilling potable water line | 2014-05-14 → 2014-05-31 (+17d) | 2014-06-11 → 2014-06-28 (+17d) | -11d → -25d |
| DUKHCONI1BZ3WSGL5175 | Construction of valve chambers & Thrust Blocks | 2014-05-20 → 2014-06-05 (+16d) | 2014-06-17 → 2014-07-03 (+16d) | 18d → 4d |
| DUKHCONI1BZ3WSGL5180 | Installation of meter ,Accessories & Connection | 2014-06-18 → 2014-07-05 (+17d) | 2014-07-10 → 2014-07-27 (+17d) | 18d → 4d |
| 25 | **FIREFIGHTING LINES** | 2014-05-20 → 2014-06-05 (+16d) | 2014-07-19 → 2014-08-07 (+19d) |  |
| DUKHCONI1BZ3FFGL5185 | Excavation for firefighting line | 2014-05-20 → 2014-06-05 (+16d) | 2014-06-17 → 2014-07-03 (+16d) | -11d → -25d |
| DUKHCONI1BZ3FFGL5190 | Laying of firefighting line | 2014-05-28 → 2014-06-14 (+17d) | 2014-06-25 → 2014-07-12 (+17d) | -11d → -25d |
| DUKHCONI1BZ3FFGL5195 | Testing of firefighting line | 2014-06-03 → 2014-06-19 (+16d) | 2014-07-01 → 2014-07-17 (+16d) | -11d → -25d |
| DUKHCONI1BZ3FFGL5200 | Backfilling firefighting line | 2014-06-09 → 2014-06-25 (+16d) | 2014-07-07 → 2014-07-23 (+16d) | -11d → -25d |
| DUKHCONI1BZ3FFGL5205 | Construction of valve chambers & Thrust Blocks | 2014-06-15 → 2014-07-01 (+16d) | 2014-07-13 → 2014-07-29 (+16d) | 11d → -3d |
| DUKHCONI1BZ3FFGL5210 | Connection with existing Firewater System | 2014-06-21 → 2014-07-07 (+16d) | 2014-07-19 → 2014-08-07 (+19d) | 11d → -3d |
| 30 | **ELECTRICAL LINES** | 2014-06-17 → 2014-07-03 (+16d) | 2014-08-13 → 2014-08-30 (+17d) |  |
| DUKHCONI1BZ3ELGL5215 | Excavation Cable Trenches & Duct Banks | 2014-06-17 → 2014-07-03 (+16d) | 2014-07-15 → 2014-07-31 (+16d) | -11d → -25d |
| DUKHCONI1BZ3ELGL5220 | Laying of electrical cables | 2014-06-23 → 2014-07-09 (+16d) | 2014-07-21 → 2014-08-10 (+20d) | -8d → -22d |
| DUKHCONI1BZ3ELGL5225 | Backfilling Electrical trench | 2014-07-01 → 2014-07-17 (+16d) | 2014-07-29 → 2014-08-18 (+20d) | -8d → -22d |
| DUKHCONI1BZ3ELGL5230 | Construction of Submain Board & Feeder Pillar | 2014-07-13 → 2014-07-29 (+16d) | 2014-08-13 → 2014-08-30 (+17d) | 38d → 24d |
| 35 | **STREET LIGHTING** | 2014-06-17 → 2014-07-03 (+16d) | 2014-09-11 → 2014-09-28 (+17d) |  |
| DUKHCONI1BZ3STGL5235 | Excavation for Street lighting | 2014-06-17 → 2014-07-03 (+16d) | 2014-07-15 → 2014-07-31 (+16d) | -11d → -25d |
| DUKHCONI1BZ3STGL5240 | Construction of Duct Banks | 2014-06-23 → 2014-07-09 (+16d) | 2014-07-21 → 2014-08-10 (+20d) | -11d → -25d |
| DUKHCONI1BZ3STGL5245 | Construction of Foundation | 2014-06-23 → 2014-07-09 (+16d) | 2014-07-21 → 2014-08-10 (+20d) | -11d → -25d |
| DUKHCONI1BZ3STGL5250 | Backfilling Street Lighting | 2014-06-29 → 2014-07-15 (+16d) | 2014-07-27 → 2014-08-16 (+20d) | -11d → -25d |
| DUKHCONI1BZ3STGL5255 | Installation of light Post | 2014-07-10 → 2014-07-27 (+17d) | 2014-08-11 → 2014-08-27 (+16d) | 58d → 44d |
| DUKHCONI1BZ3STGL5260 | Electrical Works | 2014-08-14 → 2014-08-31 (+17d) | 2014-09-11 → 2014-09-28 (+17d) | 38d → 24d |
| 40 | **IRRIGATION LINES** | 2014-07-30 → 2014-08-19 (+20d) | 2014-10-07 → 2014-10-26 (+19d) |  |
| DUKHCONI1BZ3IRGL5265 | Excavation for irrigation line | 2014-07-30 → 2014-08-19 (+20d) | 2014-08-31 → 2014-09-16 (+16d) | -4d → -18d |
| DUKHCONI1BZ3IRGL5270 | Laying of irrigationline | 2014-08-09 → 2014-08-25 (+16d) | 2014-09-06 → 2014-09-22 (+16d) | -4d → -18d |
| DUKHCONI1BZ3IRGL5275 | Testing of irrigation line | 2014-08-14 → 2014-08-31 (+17d) | 2014-09-11 → 2014-09-28 (+17d) | -4d → -18d |
| DUKHCONI1BZ3IRGL5280 | Backfilling irrigation line | 2014-08-20 → 2014-09-06 (+17d) | 2014-09-17 → 2014-10-04 (+17d) | -4d → -18d |
| DUKHCONI1BZ3IRGL5285 | Construction of Thrust Blocks,Pull boxes | 2014-09-01 → 2014-09-17 (+16d) | 2014-09-29 → 2014-10-18 (+19d) | 1d → -13d |
| DUKHCONI1BZ3IRGL5290 | Irrigation Fittings (Nozzle,Values) | 2014-09-09 → 2014-09-25 (+16d) | 2014-10-07 → 2014-10-26 (+19d) | 1d → -13d |
| 45 | **TELECOMMUNICATION LINES** | 2014-07-10 → 2014-07-27 (+17d) | 2014-08-28 → 2014-09-14 (+17d) |  |
| DUKHCONI1BZ3TCGL5295 | Excavation Telecommunication trenches | 2014-07-10 → 2014-07-27 (+17d) | 2014-08-05 → 2014-08-21 (+16d) | -11d → -25d |
| DUKHCONI1BZ3TCGL5300 | Laying of cables | 2014-07-16 → 2014-08-05 (+20d) | 2014-08-11 → 2014-08-27 (+16d) | -11d → -25d |
| DUKHCONI1BZ3TCGL5305 | Backfilling telecommunication trench | 2014-07-22 → 2014-08-11 (+20d) | 2014-08-17 → 2014-09-02 (+16d) | -11d → -25d |
| DUKHCONI1BZ3TCGL5310 | Connection & Installation | 2014-08-06 → 2014-08-23 (+17d) | 2014-08-28 → 2014-09-14 (+17d) | 40d → 26d |
| 50 | **BOUNDARY WALL** | 2014-07-10 → 2014-07-27 (+17d) | 2014-10-07 → 2014-10-26 (+19d) |  |
| DUKHCONI1BZ3BWGL5315 | Construction of Boundary Wall (Ht-3m) | 2014-07-10 → 2014-07-27 (+17d) | 2014-08-11 → 2014-08-27 (+16d) | 34d → 20d |
| DUKHCONI1BZ3BWGL5320 | Install.Steel Gate,Entance Barrier (3m Wall) | 2014-07-27 → 2014-08-16 (+20d) | 2014-08-27 → 2014-09-13 (+17d) | 34d → 20d |
| DUKHCONI1BZ3BWGL5325 | Const. of Villa Front Boundary Wall (Ht-2m) | 2014-08-28 → 2014-09-14 (+17d) | 2014-09-25 → 2014-10-14 (+19d) | 34d → 20d |
| DUKHCONI1BZ3BWGL5330 | Const. of Blockwork fence Wall (Ht-1.85m) | 2014-09-09 → 2014-09-25 (+16d) | 2014-10-07 → 2014-10-26 (+19d) | 47d → 33d |
| 55 | **ROAD WORKS** | 2014-08-18 → 2014-09-03 (+16d) | 2014-11-03 → 2014-11-19 (+16d) |  |
| DUKHCONI1BZ3RWGL6000 | Excavation & Earth Filling | 2014-08-18 → 2014-09-03 (+16d) | 2014-08-28 → 2014-09-14 (+17d) | -11d → -25d |
| DUKHCONI1BZ3RWGL6005 | Laying of Sub Grade | 2014-08-30 → 2014-09-15 (+16d) | 2014-09-27 → 2014-10-15 (+18d) | -11d → -25d |
| DUKHCONI1BZ3RWGL6010 | Laying of Precast Kerbs | 2014-09-10 → 2014-09-27 (+17d) | 2014-10-08 → 2014-10-27 (+19d) | -11d → -25d |
| DUKHCONI1BZ3RWGL6015 | Laying of Granular Sub Base Coarse | 2014-09-22 → 2014-10-08 (+16d) | 2014-10-16 → 2014-11-02 (+17d) | -11d → -25d |
| DUKHCONI1BZ3RWGL6020 | Laying of Road Base Asphalt Concrete | 2014-10-18 → 2014-11-03 (+16d) | 2014-10-22 → 2014-11-08 (+17d) | 11d → -3d |
| DUKHCONI1BZ3RWGL6025 | Laying of Asphalt Wearing Coarse | 2014-10-23 → 2014-11-09 (+17d) | 2014-10-28 → 2014-11-13 (+16d) | 20d → 6d |
| DUKHCONI1BZ3RWGL6030 | Traffic Signage & Road Marking | 2014-10-29 → 2014-11-15 (+17d) | 2014-11-03 → 2014-11-19 (+16d) | 26d → 12d |
| 60 | **PARKING SHED** | 2014-09-28 → 2014-10-16 (+18d) | 2014-11-26 → 2014-12-13 (+17d) |  |
| DUKHCONI1BZ3PSGL7000 | Excavation | 2014-09-28 → 2014-10-16 (+18d) | 2014-10-16 → 2014-11-02 (+17d) | 16d → 2d |
| DUKHCONI1BZ3PSGL7005 | Foundation casting | 2014-10-12 → 2014-10-28 (+16d) | 2014-10-28 → 2014-11-13 (+16d) | 11d → -3d |
| DUKHCONI1BZ3PSGL7010 | Column, Frame& Fabrics Erection | 2014-10-23 → 2014-11-09 (+17d) | 2014-11-20 → 2014-12-07 (+17d) | 11d → -3d |
| DUKHCONI1BZ3PSGL7015 | Electrical Works-Parking Shed | 2014-10-29 → 2014-11-15 (+17d) | 2014-11-26 → 2014-12-13 (+17d) | 11d → -3d |
| 65 | **HARD LANDSCAPING** | 2014-08-18 → 2014-09-03 (+16d) | 2014-11-09 → 2014-11-25 (+16d) |  |
| DUKHCONI1BZ3HDGL7020 | Precast Concrete Kerbs works | 2014-08-18 → 2014-09-03 (+16d) | 2014-09-09 → 2014-09-25 (+16d) | -10d → -24d |
| DUKHCONI1BZ3HDGL7025 | Interlocking for Walkways | 2014-08-30 → 2014-09-15 (+16d) | 2014-09-27 → 2014-10-15 (+18d) | -10d → -24d |
| DUKHCONI1BZ3HDGL7030 | Construction of Retaining wall | 2014-09-10 → 2014-09-27 (+17d) | 2014-10-08 → 2014-10-27 (+19d) | -10d → -24d |
| DUKHCONI1BZ3HDGL7035 | Construction of Wash Stone Boulders | 2014-09-10 → 2014-09-27 (+17d) | 2014-10-08 → 2014-10-27 (+19d) | -10d → -24d |
| DUKHCONI1BZ3HDGL7040 | Construction of Speed Humps | 2014-10-29 → 2014-11-15 (+17d) | 2014-11-09 → 2014-11-25 (+16d) | 20d → 6d |
| 70 | **SOFT LANDSCAPING** | 2014-09-22 → 2014-10-08 (+16d) | 2014-11-15 → 2014-12-01 (+16d) |  |
| DUKHCONI1BZ3SLGL7200 | Excavation | 2014-09-22 → 2014-10-08 (+16d) | 2014-10-22 → 2014-11-08 (+17d) | -10d → -24d |

| ID | Task | Start | Finish | Total float |
| --- | --- | --- | --- | --- |
| DUKHCONI1BZ3SLGL7205 | Sweet Soil Laying | 2014-10-04 → 2014-10-22 (+18d) | 2014-11-03 → 2014-11-19 (+16d) | -10d → -24d |
| DUKHCONI1BZ3SLGL7210 | Plantation works | 2014-10-18 → 2014-11-03 (+16d) | 2014-11-15 → 2014-12-01 (+16d) | 0d → -14d |
| 25 | **ZONE - 4** | 2014-04-12 → 2014-04-28 (+16d) | 2015-01-14 → 2015-01-31 (+17d) |  |
| 10 | **INFRASTRUCTURE WORKS** | 2014-04-12 → 2014-04-28 (+16d) | 2015-01-14 → 2015-01-31 (+17d) |  |
| 10 | **DRAINAGE LINES** | 2014-04-12 → 2014-04-28 (+16d) | 2014-05-31 → 2014-06-16 (+16d) |  |
| DUKHCONI1BZ4DRGL5115 | Excavation for Drainage line | 2014-04-12 → 2014-04-28 (+16d) | 2014-05-10 → 2014-05-26 (+16d) | 4d → -10d |
| DUKHCONI1BZ4DRGL5120 | Laying of Drainage line | 2014-04-19 → 2014-05-05 (+16d) | 2014-05-17 → 2014-06-02 (+16d) | 4d → -10d |
| DUKHCONI1BZ4DRGL5125 | Testing of Drainage line | 2014-04-27 → 2014-05-13 (+16d) | 2014-05-25 → 2014-06-10 (+16d) | 4d → -10d |
| DUKHCONI1BZ4DRGL5130 | Backfilling Drainage line | 2014-05-14 → 2014-05-31 (+17d) | 2014-05-31 → 2014-06-16 (+16d) | 4d → -10d |
| 15 | **MANHOLES & SOAKAWAY** | 2014-05-14 → 2014-05-31 (+17d) | 2014-08-06 → 2014-08-23 (+17d) |  |
| DUKHCONI1BZ4SAGL5135 | Construction of manholes Drainage | 2014-05-14 → 2014-05-31 (+17d) | 2014-06-11 → 2014-06-28 (+17d) | 63d → 49d |
| DUKHCONI1BZ4SAGL5140 | Construction of soakaways | 2014-05-14 → 2014-05-31 (+17d) | 2014-06-11 → 2014-06-28 (+17d) | 4d → -10d |
| DUKHCONI1BZ4SAGL5145 | Construction of Road gullies | 2014-06-12 → 2014-06-29 (+17d) | 2014-07-10 → 2014-07-27 (+17d) | 4d → -10d |
| DUKHCONI1BZ4SAGL5150 | Connection with existing sewer manhole | 2014-07-12 → 2014-07-28 (+16d) | 2014-08-06 → 2014-08-23 (+17d) | 38d → 24d |
| 20 | **WATER SUPPLY SYSTEM** | 2014-06-12 → 2014-06-29 (+17d) | 2014-08-30 → 2014-09-15 (+16d) |  |
| DUKHCONI1BZ4WSGL5155 | Excavation for water line | 2014-06-12 → 2014-06-29 (+17d) | 2014-07-10 → 2014-07-27 (+17d) | -11d → -25d |
| DUKHCONI1BZ4WSGL5160 | Laying of water line | 2014-06-18 → 2014-07-05 (+17d) | 2014-07-16 → 2014-08-05 (+20d) | -11d → -25d |
| DUKHCONI1BZ4WSGL5165 | Testing of potable water line | 2014-06-24 → 2014-07-10 (+16d) | 2014-07-22 → 2014-08-11 (+20d) | -11d → -25d |
| DUKHCONI1BZ4WSGL5170 | Backfilling potable water line | 2014-06-30 → 2014-07-16 (+16d) | 2014-07-28 → 2014-08-17 (+20d) | -11d → -25d |
| DUKHCONI1BZ4WSGL5175 | Construction of valve chambers & Thrust Blocks | 2014-07-06 → 2014-07-22 (+16d) | 2014-08-06 → 2014-08-23 (+17d) | 18d → 4d |
| DUKHCONI1BZ4WSGL5180 | Installation of meter ,Accessories & Connection | 2014-08-07 → 2014-08-24 (+17d) | 2014-08-30 → 2014-09-15 (+16d) | 18d → 4d |
| 25 | **FIREFIGHTING LINES** | 2014-07-06 → 2014-07-22 (+16d) | 2014-09-07 → 2014-09-23 (+16d) |  |
| DUKHCONI1BZ4FFGL5185 | Excavation for firefighting line | 2014-07-06 → 2014-07-22 (+16d) | 2014-08-06 → 2014-08-23 (+17d) | -11d → -25d |
| DUKHCONI1BZ4FFGL5190 | Laying of firefighting line | 2014-07-14 → 2014-07-30 (+16d) | 2014-08-14 → 2014-08-31 (+17d) | -11d → -25d |
| DUKHCONI1BZ4FFGL5195 | Testing of firefighting line | 2014-07-20 → 2014-08-09 (+20d) | 2014-08-20 → 2014-09-06 (+17d) | -11d → -25d |
| DUKHCONI1BZ4FFGL5200 | Backfilling firefighting line | 2014-07-26 → 2014-08-14 (+19d) | 2014-08-26 → 2014-09-11 (+16d) | -11d → -25d |
| DUKHCONI1BZ4FFGL5205 | Construction of valve chambers & Thrust Blocks | 2014-07-31 → 2014-08-20 (+20d) | 2014-09-01 → 2014-09-17 (+16d) | 11d → -3d |
| DUKHCONI1BZ4FFGL5210 | Connection with existing Firewater System | 2014-08-10 → 2014-08-26 (+16d) | 2014-09-07 → 2014-09-23 (+16d) | 11d → -3d |
| 30 | **ELECTRICAL LINES** | 2014-08-06 → 2014-08-23 (+17d) | 2014-09-29 → 2014-10-18 (+19d) |  |
| DUKHCONI1BZ4ELGL5215 | Excavation Cable Trenches & Duct Banks | 2014-08-06 → 2014-08-23 (+17d) | 2014-09-03 → 2014-09-20 (+17d) | -11d → -25d |
| DUKHCONI1BZ4ELGL5220 | Laying of electrical cables | 2014-08-12 → 2014-08-28 (+16d) | 2014-09-09 → 2014-09-25 (+16d) | -4d → -18d |
| DUKHCONI1BZ4ELGL5225 | Backfilling Electrical trench | 2014-08-20 → 2014-09-06 (+17d) | 2014-09-17 → 2014-10-04 (+17d) | -4d → -18d |
| DUKHCONI1BZ4ELGL5230 | Construction of Submain Board & Feeder Pillar | 2014-09-01 → 2014-09-17 (+16d) | 2014-09-29 → 2014-10-18 (+19d) | 23d → 9d |
| 35 | **STREET LIGHTING** | 2014-08-06 → 2014-08-23 (+17d) | 2014-10-30 → 2014-11-16 (+17d) |  |
| DUKHCONI1BZ4STGL5235 | Excavation for Street lighting | 2014-08-06 → 2014-08-23 (+17d) | 2014-09-03 → 2014-09-20 (+17d) | -11d → -25d |
| DUKHCONI1BZ4STGL5240 | Construction of Duct Banks | 2014-08-12 → 2014-08-28 (+16d) | 2014-09-09 → 2014-09-25 (+16d) | -11d → -25d |
| DUKHCONI1BZ4STGL5245 | Construction of Foundation | 2014-08-12 → 2014-08-28 (+16d) | 2014-09-09 → 2014-09-25 (+16d) | -11d → -25d |
| DUKHCONI1BZ4STGL5250 | Backfilling Street Lighting | 2014-08-18 → 2014-09-03 (+16d) | 2014-09-15 → 2014-10-01 (+16d) | -11d → -25d |
| DUKHCONI1BZ4STGL5255 | Installation of light Post | 2014-08-30 → 2014-09-15 (+16d) | 2014-09-27 → 2014-10-15 (+18d) | 43d → 29d |
| DUKHCONI1BZ4STGL5260 | Electrical Works | 2014-09-30 → 2014-10-19 (+19d) | 2014-10-30 → 2014-11-16 (+17d) | 23d → 9d |
| 40 | **IRRIGATION LINES** | 2014-09-18 → 2014-10-05 (+17d) | 2014-11-25 → 2014-12-11 (+16d) |  |
| DUKHCONI1BZ4IRGL5265 | Excavation for irrigation line | 2014-09-18 → 2014-10-05 (+17d) | 2014-10-19 → 2014-11-04 (+16d) | -4d → -18d |
| DUKHCONI1BZ4IRGL5270 | Laying of irrigationline | 2014-09-24 → 2014-10-13 (+19d) | 2014-10-25 → 2014-11-10 (+16d) | -4d → -18d |
| DUKHCONI1BZ4IRGL5275 | Testing of irrigation line | 2014-09-30 → 2014-10-19 (+19d) | 2014-10-30 → 2014-11-16 (+17d) | -4d → -18d |
| DUKHCONI1BZ4IRGL5280 | Backfilling irrigation line | 2014-10-06 → 2014-10-25 (+19d) | 2014-11-05 → 2014-11-22 (+17d) | -4d → -18d |
| DUKHCONI1BZ4IRGL5285 | Construction of Thrust Blocks,Pull boxes | 2014-10-20 → 2014-11-05 (+16d) | 2014-11-17 → 2014-12-03 (+16d) | -4d → -18d |
| DUKHCONI1BZ4IRGL5290 | Irrigation Fittings (Nozzle,Values) | 2014-10-28 → 2014-11-13 (+16d) | 2014-11-25 → 2014-12-11 (+16d) | -4d → -18d |
| 45 | **TELECOMMUNICATION LINES** | 2014-08-30 → 2014-09-15 (+16d) | 2014-10-16 → 2014-11-02 (+17d) |  |
| DUKHCONI1BZ4TCGL5295 | Excavation Telecommunication trenches | 2014-08-30 → 2014-09-15 (+16d) | 2014-09-21 → 2014-10-07 (+16d) | -11d → -25d |
| DUKHCONI1BZ4TCGL5300 | Laying of cables | 2014-09-04 → 2014-09-21 (+17d) | 2014-09-27 → 2014-10-15 (+18d) | -11d → -25d |
| DUKHCONI1BZ4TCGL5305 | Backfilling telecommunication trench | 2014-09-10 → 2014-09-27 (+17d) | 2014-10-02 → 2014-10-21 (+19d) | -11d → -25d |
| DUKHCONI1BZ4TCGL5310 | Connection & Installation | 2014-09-22 → 2014-10-08 (+16d) | 2014-10-16 → 2014-11-02 (+17d) | 20d → 6d |
| 50 | **BOUNDARY WALL** | 2014-08-30 → 2014-09-15 (+16d) | 2014-11-25 → 2014-12-11 (+16d) |  |
| DUKHCONI1BZ4BWGL5315 | Construction of Boundary Wall (Ht-3m) | 2014-08-30 → 2014-09-15 (+16d) | 2014-09-27 → 2014-10-15 (+18d) | 19d → 5d |
| DUKHCONI1BZ4BWGL5320 | Install.Steel Gate,Entance Barrier (3m Wall) | 2014-09-15 → 2014-10-01 (+16d) | 2014-10-15 → 2014-11-01 (+17d) | 19d → 5d |
| DUKHCONI1BZ4BWGL5325 | Const. of Villa Front Boundary Wall (Ht-2m) | 2014-10-16 → 2014-11-02 (+17d) | 2014-11-13 → 2014-11-30 (+17d) | 19d → 5d |
| DUKHCONI1BZ4BWGL5330 | Const. of Blockwork fence Wall (Ht-1.85m) | 2014-10-28 → 2014-11-13 (+16d) | 2014-11-25 → 2014-12-11 (+16d) | 32d → 18d |
| 55 | **ROAD WORKS** | 2014-10-04 → 2014-10-22 (+18d) | 2014-12-22 → 2015-01-07 (+16d) |  |
| DUKHCONI1BZ4RWGL6000 | Excavation & Earth Filling | 2014-10-04 → 2014-10-22 (+18d) | 2014-10-16 → 2014-11-02 (+17d) | -11d → -25d |
| DUKHCONI1BZ4RWGL6005 | Laying of Sub Grade | 2014-10-18 → 2014-11-03 (+16d) | 2014-11-15 → 2014-12-01 (+16d) | -11d → -25d |
| DUKHCONI1BZ4RWGL6010 | Laying of Precast Kerbs | 2014-10-29 → 2014-11-15 (+17d) | 2014-11-26 → 2014-12-13 (+17d) | -11d → -25d |
| DUKHCONI1BZ4RWGL6015 | Laying of Granular Sub Base Coarse | 2014-11-10 → 2014-11-26 (+16d) | 2014-12-02 → 2014-12-20 (+18d) | -11d → -25d |
| DUKHCONI1BZ4RWGL6020 | Laying of Road Base Asphalt Concrete | 2014-12-03 → 2014-12-21 (+18d) | 2014-12-09 → 2014-12-27 (+18d) | -11d → -25d |
| DUKHCONI1BZ4RWGL6025 | Laying of Asphalt Wearing Coarse | 2014-12-10 → 2014-12-28 (+18d) | 2014-12-15 → 2015-01-01 (+17d) | -11d → -25d |
| DUKHCONI1BZ4RWGL6030 | Traffic Signage & Road Marking | 2014-12-16 → 2015-01-03 (+18d) | 2014-12-22 → 2015-01-07 (+16d) | 10d → -4d |
| 60 | **PARKING SHED** | 2014-11-16 → 2014-12-02 (+16d) | 2015-01-14 → 2015-01-31 (+17d) |  |
| DUKHCONI1BZ4PSGL7000 | Excavation | 2014-11-16 → 2014-12-02 (+16d) | 2014-12-02 → 2014-12-20 (+18d) | 1d → -13d |
| DUKHCONI1BZ4PSGL7005 | Foundation casting | 2014-11-27 → 2014-12-14 (+17d) | 2014-12-14 → 2014-12-31 (+17d) | -4d → -18d |
| DUKHCONI1BZ4PSGL7010 | Column, Frame& Fabrics Erection | 2014-12-10 → 2014-12-28 (+18d) | 2015-01-08 → 2015-01-25 (+17d) | -5d → -19d |
| DUKHCONI1BZ4PSGL7015 | Electrical Works-Parking Shed | 2014-12-16 → 2015-01-03 (+18d) | 2015-01-14 → 2015-01-31 (+17d) | -5d → -19d |

| ID | Task | Start | Finish | Total float | Other |
| --- | --- | --- | --- | --- | --- |
| 65 | **HARD LANDSCAPING** | 2014-10-04 → 2014-10-22 (+18d) | 2014-12-28 → 2015-01-13 (+16d) |  |  |
| DUKHCONI1BZ4HDGL7020 | Precast Concrete Kerbs works | 2014-10-04 → 2014-10-22 (+18d) | 2014-10-28 → 2014-11-13 (+16d) | -11d → -25d |  |
| DUKHCONI1BZ4HDGL7025 | Interlocking for Walkways | 2014-10-18 → 2014-11-03 (+16d) | 2014-11-15 → 2014-12-01 (+16d) | -11d → -25d |  |
| DUKHCONI1BZ4HDGL7030 | Construction of Retaining wall | 2014-10-29 → 2014-11-15 (+17d) | 2014-11-26 → 2014-12-13 (+17d) | -11d → -25d |  |
| DUKHCONI1BZ4HDGL7035 | Construction of Wash Stone Boulders | 2014-10-29 → 2014-11-15 (+17d) | 2014-11-26 → 2014-12-13 (+17d) | -11d → -25d |  |
| DUKHCONI1BZ4HDGL7040 | Construction of Speed Humps | 2014-12-16 → 2015-01-03 (+18d) | 2014-12-28 → 2015-01-13 (+16d) | -11d → -25d |  |
| 70 | **SOFT LANDSCAPING** | 2014-11-05 → 2014-11-22 (+17d) | 2014-12-28 → 2015-01-13 (+16d) |  |  |
| DUKHCONI1BZ4SLGL7200 | Excavation for Landscaping | 2014-11-05 → 2014-11-22 (+17d) | 2014-12-03 → 2014-12-21 (+18d) | -11d → -25d |  |
| DUKHCONI1BZ4SLGL7205 | Sweet Soil Laying | 2014-11-17 → 2014-12-03 (+16d) | 2014-12-15 → 2015-01-01 (+17d) | -11d → -25d |  |
| DUKHCONI1BZ4SLGL7210 | Plantation works | 2014-11-29 → 2014-12-15 (+16d) | 2014-12-28 → 2015-01-13 (+16d) | -11d → -25d |  |
| 30 | **SECONDARY BUILDINGS** | 2014-05-10 → 2014-06-15 (+36d) | 2014-12-11 → 2015-01-18 (+38d) |  |  |
| 10 | **INFRASTRUCTURE WORKS** | 2014-05-10 → 2014-06-15 (+36d) | 2014-12-11 → 2015-01-18 (+38d) |  |  |
| 10 | **IRRIGATION WATER TANK & PUMP ROOM** | 2014-05-10 → 2014-06-15 (+36d) | 2014-11-17 → 2014-12-03 (+16d) |  |  |
| DUKHCONI1BSBIWGL7400 | Excavation | 2014-05-10 → 2014-06-15 (+36d) | 2014-05-26 → 2014-07-01 (+36d) | 2d → -29d |  |
| DUKHCONI1BSBIWGL7405 | Blinding & base waterproofing | 2014-05-27 → 2014-07-02 (+36d) | 2014-06-07 → 2014-07-13 (+36d) | 2d → -29d | resources BLINDING MASON SK [64 h]; LABOR- SUBCONTRACTOR [48 h]; LABOR- SUBCONTRACTOR [24 h]; BLINDING QTY [78 Sqm]; WATERPROOFING QTY [78 Sqm]; WATERPROOFING SPECIALIST SK [64 h] → CONCRETE MASON SK [64 h]; LABOR- SUBCONTRACTOR [48 h]; LABOR- SUBCONTRACTOR [24 h]; BLINDING QTY [78 Sqm]; WATERPROOFING QTY [78 Sqm]; WATERPROOFING SPECIALIST SK [64 h] |
| DUKHCONI1BSBIWGL7410 | Construction of Raft slab | 2014-06-08 → 2014-07-14 (+36d) | 2014-06-18 → 2014-07-24 (+36d) | 2d → -29d |  |
| DUKHCONI1BSBIWGL7415 | Construction of RCC Wall | 2014-06-19 → 2014-07-26 (+37d) | 2014-07-17 → 2014-08-26 (+40d) | 2d → -29d |  |
| DUKHCONI1BSBIWGL7420 | Construction of Roof Slab | 2014-07-19 → 2014-08-27 (+39d) | 2014-08-13 → 2014-09-18 (+36d) | 43d → 12d |  |
| DUKHCONI1BSBIWGL7425 | Waterproofing & Backfilling | 2014-08-14 → 2014-09-20 (+37d) | 2014-08-31 → 2014-10-06 (+36d) | 43d → 12d |  |
| DUKHCONI1BSBIWGL7430 | Floor screed | 2014-09-01 → 2014-10-07 (+36d) | 2014-09-06 → 2014-10-14 (+38d) | 43d → 12d |  |
| DUKHCONI1BSBIWGL7950 | Laying of Interlock | 2014-09-01 → 2014-10-07 (+36d) | 2014-09-11 → 2014-10-20 (+39d) | 58d → 27d |  |
| DUKHCONI1BSBIWGL7440 | Plumbing , Drainage & Firefighting works | 2014-09-08 → 2014-10-15 (+37d) | 2014-10-06 → 2014-11-12 (+37d) | 42d → 12d |  |
| DUKHCONI1BSBIWGL7445 | AC Works | 2014-09-08 → 2014-10-15 (+37d) | 2014-10-06 → 2014-11-12 (+37d) | 42d → 12d |  |
| DUKHCONI1BSBIWGL7450 | Electrical Works | 2014-09-30 → 2014-10-19 (+19d) | 2014-10-30 → 2014-11-16 (+17d) | 23d → 9d |  |
| DUKHCONI1BSBIWGL7435 | Installation of Boundary Fences | 2014-09-13 → 2014-10-21 (+38d) | 2014-09-29 → 2014-11-06 (+38d) | 58d → 27d |  |
| DUKHCONI1BSBIWGL7455 | Internal epoxy coating & Painting | 2014-11-01 → 2014-11-17 (+16d) | 2014-11-05 → 2014-11-22 (+17d) | 23d → 9d |  |
| DUKHCONI1BSBIWGL7460 | Installation of Steel Ladder | 2014-11-06 → 2014-11-23 (+17d) | 2014-11-11 → 2014-11-27 (+16d) | 23d → 9d |  |
| DUKHCONI1BSBIWGL7465 | Installation of G.I Handrails | 2014-11-12 → 2014-11-29 (+17d) | 2014-11-17 → 2014-12-03 (+16d) | 23d → 9d |  |
| 15 | **TELECOMMUNICATION ROOM** | 2014-07-19 → 2014-08-27 (+39d) | 2014-12-10 → 2015-01-06 (+27d) |  |  |
| DUKHCONI1BSBTRGL7600 | Excavation | 2014-07-19 → 2014-08-27 (+39d) | 2014-07-29 → 2014-09-07 (+40d) | 2d → -29d |  |
| DUKHCONI1BSBTRGL7605 | Construction of foundation & Grade slab | 2014-07-30 → 2014-09-08 (+40d) | 2014-08-25 → 2014-09-30 (+36d) | 12d → -19d |  |
| DUKHCONI1BSBTRGL7610 | Construction Column,Beams & Roof Slab | 2014-08-26 → 2014-10-01 (+36d) | 2014-09-17 → 2014-10-26 (+39d) | 12d → -19d |  |
| DUKHCONI1BSBTRGL7615 | Finishing Works | 2014-10-15 → 2014-11-20 (+36d) | 2014-11-12 → 2014-12-20 (+38d) | 12d → -19d |  |
| DUKHCONI1BSBTRGL7620 | Plumbing , Drainage & Firefighting works | 2014-11-06 → 2014-12-02 (+26d) | 2014-12-04 → 2014-12-31 (+27d) | 3d → -19d |  |
| DUKHCONI1BSBTRGL7625 | AC Works | 2014-11-06 → 2014-12-02 (+26d) | 2014-12-04 → 2014-12-31 (+27d) | 3d → -19d |  |
| DUKHCONI1BSBTRGL7630 | Electrical Works-Telecom Room | 2014-11-06 → 2014-12-02 (+26d) | 2014-12-04 → 2014-12-31 (+27d) | 3d → -19d |  |
| DUKHCONI1BSBTRGL7635 | Final Paintings | 2014-12-06 → 2015-01-01 (+26d) | 2014-12-10 → 2015-01-06 (+27d) | 3d → -19d |  |
| 20 | **GUARD HOUSE** | 2014-07-30 → 2014-09-08 (+40d) | 2014-12-11 → 2015-01-18 (+38d) |  |  |
| DUKHCONI1BSBGHGL7800 | Excavation | 2014-07-30 → 2014-09-08 (+40d) | 2014-08-13 → 2014-09-18 (+36d) | 2d → -29d |  |
| DUKHCONI1BSBGHGL7805 | Construction of foundation & Grade slab | 2014-08-14 → 2014-09-20 (+37d) | 2014-09-06 → 2014-10-14 (+38d) | 2d → -29d |  |
| DUKHCONI1BSBGHGL7810 | Construction Column,Beams & Roof Slab | 2014-09-07 → 2014-10-15 (+38d) | 2014-09-29 → 2014-11-06 (+38d) | 2d → -29d |  |
| DUKHCONI1BSBGHGL7815 | Finishing Works | 2014-10-27 → 2014-12-02 (+36d) | 2014-11-24 → 2014-12-31 (+37d) | 2d → -29d |  |
| DUKHCONI1BSBGHGL7820 | Plumbing , Drainage & Firefighting works | 2014-11-08 → 2014-12-14 (+36d) | 2014-12-06 → 2015-01-12 (+37d) | 2d → -29d |  |
| DUKHCONI1BSBGHGL7825 | AC Works | 2014-11-08 → 2014-12-14 (+36d) | 2014-12-06 → 2015-01-12 (+37d) | 2d → -29d |  |
| DUKHCONI1BSBGHGL7830 | Electrical Works-Telecom Room | 2014-11-08 → 2014-12-14 (+36d) | 2014-12-06 → 2015-01-12 (+37d) | 2d → -29d |  |
| DUKHCONI1BSBGHGL7835 | Final Paintings | 2014-12-07 → 2015-01-13 (+37d) | 2014-12-11 → 2015-01-18 (+38d) | 2d → -29d |  |
| 25 | **GAZEBO** | 2014-09-10 → 2014-09-27 (+17d) | 2014-11-09 → 2014-11-25 (+16d) |  |  |
| DUKHCONI1BSBGZGL7900 | Construction of Concrete structure | 2014-09-10 → 2014-09-27 (+17d) | 2014-10-02 → 2014-10-21 (+19d) | -6d → -20d |  |
| DUKHCONI1BSBGZGL7905 | Installation of Wooden Works | 2014-09-22 → 2014-10-08 (+16d) | 2014-10-22 → 2014-11-08 (+17d) | -6d → -20d |  |
| DUKHCONI1BSBGZGL7915 | Park Benches Installation | 2014-09-22 → 2014-10-08 (+16d) | 2014-10-08 → 2014-10-27 (+19d) | 4d → -10d |  |
| DUKHCONI1BSBGZGL7910 | Electrical Works-Gazebo | 2014-10-23 → 2014-11-09 (+17d) | 2014-11-09 → 2014-11-25 (+16d) | -6d → -20d |  |
| L35 | **PACKAGE-2A** |  | 2014-07-26 → 2014-08-11 (+16d) |  |  |
| 05 | **MOCK UP VILLA** |  | 2014-02-10 → 2014-02-24 (+14d) |  |  |
| 15 | **FINISHING WORKS** |  | 2014-02-04 → 2014-02-18 (+14d) |  |  |
| 10 | **INTERNAL FINISHES** | 2013-11-05 → 2013-11-02 (-3d) | 2014-02-04 → 2014-02-18 (+14d) |  |  |
| 10 | **GROUND FLOOR** | 2013-11-05 → 2013-11-02 (-3d) | 2014-02-04 → 2014-02-18 (+14d) |  |  |
| DUKHCONP2AMKARGF3075 | Carpentry & Joinery Works | 2013-12-16 → 2013-11-02 (-44d) | 2013-12-28 → 2013-11-12 (-46d) | 16d → 54d |  |
| DUKHCONP2AMKARGF3000 | Block work | 2013-11-05 → 2013-11-18 (+13d) | 2013-11-11 → 2013-11-24 (+13d) | -57d → -68d |  |
| DUKHCONP2AMKARGF3005 | Plastering work | 2013-11-18 → 2013-12-01 (+13d) | 2013-11-25 → 2013-12-08 (+13d) | -51d → -62d |  |
| DUKHCONP2AMKARGF3010 | Flooring screed | 2013-11-21 → 2013-12-04 (+13d) | 2013-11-28 → 2013-12-11 (+13d) | -42d → -53d |  |
| DUKHCONP2AMKARGF3015 | Wet area waterproofing & Protection Screed | 2013-11-25 → 2013-12-08 (+13d) | 2013-11-30 → 2013-12-12 (+12d) | -42d → -53d |  |
| DUKHCONP2AMKARGF3020 | Ceramic Wall Tiling | 2013-12-01 → 2013-12-14 (+13d) | 2013-12-07 → 2013-12-21 (+14d) | -37d → -48d |  |
| DUKHCONP2AMKARGF3030 | Paint First coat | 2013-12-04 → 2013-12-17 (+13d) | 2013-12-09 → 2013-12-23 (+14d) | -48d → -59d |  |
| DUKHCONP2AMKARGF3025 | Porcelain Tile flooring | 2013-12-08 → 2013-12-22 (+14d) | 2013-12-14 → 2013-12-28 (+14d) | -37d → -48d |  |
| DUKHCONP2AMKARGF3040 | Cobble Tile flooring | 2013-12-15 → 2013-12-29 (+14d) | 2013-12-21 → 2014-01-02 (+12d) | -11d → -22d |  |
| DUKHCONP2AMKARGF3045 | Fixing of Suspension systems | 2013-12-15 → 2013-12-29 (+14d) | 2013-12-23 → 2014-01-05 (+13d) | -37d → -48d |  |
| DUKHCONP2AMKARGF3035 | Slate Tile Flooring & Skirting | 2013-12-22 → 2014-01-04 (+13d) | 2013-12-26 → 2014-01-08 (+13d) | -11d → -22d |  |
| DUKHCONP2AMKARGF3060 | Gypsum board false ceiling | 2013-12-24 → 2014-01-06 (+13d) | 2014-01-01 → 2014-01-14 (+13d) | -37d → -48d |  |
| DUKHCONP2AMKARGF3065 | Wooden door | 2014-01-02 → 2014-01-15 (+13d) | 2014-01-09 → 2014-01-22 (+13d) | -37d → -48d |  |
| DUKHCONP2AMKARGF3080 | Aluminum windows | 2014-01-11 → 2014-01-23 (+12d) | 2014-01-18 → 2014-01-30 (+12d) | 3d → -8d |  |

| ID | Task | Start | Finish | Complete | Total float |
| --- | --- | --- | --- | --- | --- |
| DUKHCONP2AMKARGF3090 | Installation of Granite Counter Top | 2014-01-19 → 2014-02-01 (+13d) | 2014-01-26 → 2014-02-08 (+13d) |  | 3d → -8d |
| DUKHCONP2AMKARGF3095 | Final Painting | 2014-01-28 → 2014-02-10 (+13d) | 2014-02-04 → 2014-02-18 (+14d) |  | 35d → 24d |
| 15 | **EXTERNAL FINISHES** | 2013-11-02 → 2013-11-14 (+12d) | 2013-12-12 → 2013-12-26 (+14d) |  |  |
| 10 | **ROOF** | 2013-11-02 → 2013-11-14 (+12d) | 2013-11-28 → 2013-12-11 (+13d) |  |  |
| DUKHCONP2AMKARRF3625 | Laying of Pitched Roof | 2013-11-02 → 2013-11-14 (+12d) | 2013-11-09 → 2013-11-21 (+12d) |  | -33d → -44d |
| DUKHCONP2AMKARRF3630 | Leveling Screed for Waterproofing | 2013-11-10 → 2013-11-23 (+13d) | 2013-11-11 → 2013-11-24 (+13d) |  | -33d → -44d |
| DUKHCONP2AMKARRF3635 | Laying of Waterproofing Membrane | 2013-11-12 → 2013-11-25 (+13d) | 2013-11-16 → 2013-11-28 (+12d) |  | -33d → -44d |
| DUKHCONP2AMKARRF3640 | Installation of Insulation & Protection | 2013-11-17 → 2013-11-30 (+13d) | 2013-11-20 → 2013-12-03 (+13d) |  | -33d → -44d |
| DUKHCONP2AMKARRF3645 | Lime Stone Chips & Paving slab Installation | 2013-11-21 → 2013-12-04 (+13d) | 2013-11-23 → 2013-12-05 (+12d) |  | -33d → -44d |
| DUKHCONP2AMKARRF3660 | Installation of Access Ladder | 2013-11-24 → 2013-12-07 (+13d) | 2013-11-28 → 2013-12-11 (+13d) |  | 32d → 21d |
| 15 | **ELEVATION** | 2013-11-24 → 2013-12-07 (+13d) | 2013-12-12 → 2013-12-26 (+14d) |  |  |
| DUKHCONP2AMKAREL3665 | External Plastering | 2013-11-24 → 2013-12-07 (+13d) | 2013-12-04 → 2013-12-17 (+13d) |  | -33d → -44d |
| DUKHCONP2AMKAREL3680 | External Painting | 2013-12-05 → 2013-12-19 (+14d) | 2013-12-12 → 2013-12-26 (+14d) |  | -25d → -36d |
| 20 | **MEP WORKS** | 2013-11-12 → 2013-11-25 (+13d) | 2014-01-29 → 2014-02-12 (+14d) |  |  |
| 10 | **ELECTRICAL WORKS** | 2013-11-12 → 2013-11-25 (+13d) | 2014-01-27 → 2014-02-09 (+13d) |  |  |
| 10 | **GROUND FLOOR** | 2013-11-12 → 2013-11-25 (+13d) | 2014-01-13 → 2014-01-26 (+13d) |  |  |
| DUKHCONP2AMKELGF4000 | Fixing of wall conduits & switch socket boxes | 2013-11-12 → 2013-11-25 (+13d) | 2013-11-17 → 2013-11-30 (+13d) |  | -51d → -62d |
| DUKHCONP2AMKELGF4005 | Cable tray & trunking installation | 2013-11-26 → 2013-12-09 (+13d) | 2013-12-01 → 2013-12-14 (+13d) |  | -48d → -59d |
| DUKHCONP2AMKELGF4010 | Installation of wiring & Main Cabling | 2013-12-02 → 2013-12-15 (+13d) | 2013-12-07 → 2013-12-21 (+14d) |  | -31d → -42d |
| DUKHCONP2AMKELGF4020 | Installation of DBS,MCCB Accessories. | 2014-01-02 → 2014-01-15 (+13d) | 2014-01-07 → 2014-01-20 (+13d) |  | 4d → -7d |
| DUKHCONP2AMKELGF4015 | Install. of CAMS & Fire Fighting Accessories | 2014-01-06 → 2014-01-19 (+13d) | 2014-01-13 → 2014-01-26 (+13d) |  | 4d → -7d |
| DUKHCONP2AMKELGF4025 | Installation of Lighting fixtures & Accessories | 2014-01-08 → 2014-01-21 (+13d) | 2014-01-13 → 2014-01-26 (+13d) |  | 4d → -7d |
| DUKHCONP2AMKELGF4030 | Installation of Telephone System | 2014-01-08 → 2014-01-21 (+13d) | 2014-01-13 → 2014-01-26 (+13d) |  | 35d → 24d |
| 20 | **ROOF** | 2014-01-14 → 2014-01-27 (+13d) | 2014-01-27 → 2014-02-09 (+13d) |  |  |
| DUKHCONP2AMKELRF4070 | Installation of Isolator | 2014-01-14 → 2014-01-27 (+13d) | 2014-01-19 → 2014-02-01 (+13d) |  | 35d → 24d |
| DUKHCONP2AMKELRF4075 | Installation of TV Dish Antenna | 2014-01-20 → 2014-02-02 (+13d) | 2014-01-27 → 2014-02-09 (+13d) |  | 35d → 24d |
| 15 | **PLUMBING, DRAINAGE & FIRE FIGHTING WORKS** | 2013-11-12 → 2013-11-25 (+13d) | 2014-01-29 → 2014-02-12 (+14d) |  |  |
| 10 | **GROUND FLOOR** | 2013-11-12 → 2013-11-25 (+13d) | 2014-01-23 → 2014-02-05 (+13d) |  |  |
| DUKHCONP2AMKPLGF4305 | Installation of Plumbing pipes & testing | 2013-11-12 → 2013-11-25 (+13d) | 2013-11-17 → 2013-11-30 (+13d) |  | -49d → -60d |
| DUKHCONP2AMKPLGF4310 | Installation of Drainage pipes &testing | 2013-11-12 → 2013-11-25 (+13d) | 2013-11-17 → 2013-11-30 (+13d) |  | -48d → -59d |
| DUKHCONP2AMKPLGF4315 | Sanitary Fittings & Accessories | 2014-01-11 → 2014-01-23 (+12d) | 2014-01-18 → 2014-01-30 (+12d) |  | -37d → -48d |
| DUKHCONP2AMKPLGF4320 | Installation of Water Heater | 2014-01-19 → 2014-02-01 (+13d) | 2014-01-23 → 2014-02-05 (+13d) |  | -37d → -48d |
| 20 | **ROOF** | 2014-01-25 → 2014-02-06 (+12d) | 2014-01-29 → 2014-02-12 (+14d) |  |  |
| DUKHCONP2AMKPLRF4350 | Installation of Rain water Pipes | 2014-01-25 → 2014-02-06 (+12d) | 2014-01-29 → 2014-02-12 (+14d) |  | -37d → -48d |
| 20 | **AC WORKS** | 2013-11-26 → 2013-12-09 (+13d) | 2014-01-26 → 2014-02-08 (+13d) |  |  |
| 10 | **GROUND FLOOR** | 2013-11-26 → 2013-12-09 (+13d) | 2014-01-16 → 2014-01-29 (+13d) |  |  |
| DUKHCONP2AMKACGF4600 | Installation AC Pipes | 2013-11-26 → 2013-12-09 (+13d) | 2013-12-01 → 2013-12-14 (+13d) |  | -22d → -33d |
| DUKHCONP2AMKACGF4605 | Fixing of Ventilation Equipments | 2014-01-02 → 2014-01-15 (+13d) | 2014-01-07 → 2014-01-20 (+13d) |  | 30d → 19d |
| DUKHCONP2AMKACGF4610 | Fixing of Split AC | 2014-01-08 → 2014-01-21 (+13d) | 2014-01-16 → 2014-01-29 (+13d) |  | 36d → 25d |
| 20 | **ROOF** | 2013-12-02 → 2013-12-15 (+13d) | 2014-01-26 → 2014-02-08 (+13d) |  |  |
| DUKHCONP2AMKACRF4630 | Installation of Refrigerant Pipes | 2013-12-02 → 2013-12-15 (+13d) | 2013-12-07 → 2013-12-21 (+14d) |  | 25d → 14d |
| DUKHCONP2AMKACRF4635 | Installation of Condensing Unit | 2014-01-18 → 2014-01-30 (+12d) | 2014-01-26 → 2014-02-08 (+13d) |  | 36d → 25d |
| 25 | **EXTERNAL WORKS** | 2013-11-18 → 2013-12-01 (+13d) | 2014-02-10 → 2014-02-24 (+14d) |  |  |
| 10 | **MISCELLANEOUS** | 2013-11-18 → 2013-12-01 (+13d) | 2013-12-19 → 2014-01-01 (+13d) |  |  |
| DUKHCONP2AMKMSEX5000 | Construction of Manholes | 2013-11-18 → 2013-12-01 (+13d) | 2013-11-25 → 2013-12-08 (+13d) |  | -48d → -59d |
| DUKHCONP2AMKMSEX5005 | Construction of Soak pit, Chambers | 2013-11-26 → 2013-12-09 (+13d) | 2013-12-03 → 2013-12-16 (+13d) |  | -48d → -59d |
| DUKHCONP2AMKMSEX5015 | Construction of grease Trap | 2013-12-04 → 2013-12-17 (+13d) | 2013-12-11 → 2013-12-25 (+14d) |  | -48d → -59d |
| DUKHCONP2AMKMSEX5020 | Construction Entrance Ramp | 2013-12-05 → 2013-12-19 (+14d) | 2013-12-12 → 2013-12-26 (+14d) |  | -33d → -44d |
| DUKHCONP2AMKMSEX5025 | SS.Handrails and Balustrades | 2013-12-14 → 2013-12-28 (+14d) | 2013-12-19 → 2014-01-01 (+13d) |  | -25d → -36d |
| 15 | **WATER TANK ENCLOSURE** | 2013-12-04 → 2013-12-17 (+13d) | 2014-02-10 → 2014-02-24 (+14d) |  |  |
| DUKHCONP2AMKWEEX5030 | Excavation | 2013-12-04 → 2013-12-17 (+13d) | 2013-12-08 → 2013-12-22 (+14d) |  | -48d → -59d |
| DUKHCONP2AMKWEEX5035 | Construction of Raft | 2013-12-09 → 2013-12-23 (+14d) | 2013-12-16 → 2013-12-30 (+14d) |  | -38d → -49d |
| DUKHCONP2AMKWEEX5040 | Block works & Plastering | 2013-12-17 → 2013-12-31 (+14d) | 2013-12-25 → 2014-01-07 (+13d) |  | -37d → -48d |
| DUKHCONP2AMKWEEX5045 | Flooring & Painting | 2013-12-26 → 2014-01-08 (+13d) | 2014-01-02 → 2014-01-15 (+13d) |  | -34d → -45d |
| DUKHCONP2AMKWEEX5050 | Installation of Steel Gate | 2014-01-04 → 2014-01-16 (+12d) | 2014-01-08 → 2014-01-21 (+13d) |  | -29d → -40d |
| DUKHCONP2AMKWEEX5060 | Structural steel & SS Shed cover installation | 2014-01-09 → 2014-01-22 (+13d) | 2014-01-20 → 2014-02-02 (+13d) |  | -29d → -40d |
| DUKHCONP2AMKWEEX5065 | Install. of Water Tank,Chiller,Pump & Meter | 2014-01-30 → 2014-02-13 (+14d) | 2014-02-10 → 2014-02-24 (+14d) |  | -37d → -48d |
| 20 | **HARD LANDSCAPING** | 2013-12-21 → 2014-01-02 (+12d) | 2014-01-06 → 2014-01-19 (+13d) |  |  |
| DUKHCONP2AMKHDEX5090 | kerb works | 2013-12-21 → 2014-01-02 (+12d) | 2013-12-25 → 2014-01-07 (+13d) |  | -23d → -34d |
| DUKHCONP2AMKHDEX5095 | Cobble Stone Works | 2013-12-26 → 2014-01-08 (+13d) | 2013-12-31 → 2014-01-13 (+13d) |  | -18d → -29d |
| DUKHCONP2AMKHDEX5100 | Interlock works | 2014-01-01 → 2014-01-14 (+13d) | 2014-01-06 → 2014-01-19 (+13d) |  | -10d → -21d |
| 25 | **SOFT LANDSCAPING** | 2014-01-07 → 2014-01-20 (+13d) | 2014-01-22 → 2014-02-04 (+13d) |  |  |
| DUKHCONP2AMKSLEX5105 | Laying of Grass/ green area | 2014-01-07 → 2014-01-20 (+13d) | 2014-01-14 → 2014-01-27 (+13d) |  | -7d → -18d |
| DUKHCONP2AMKSLEX5110 | Laying of Palm tree | 2014-01-15 → 2014-01-28 (+13d) | 2014-01-22 → 2014-02-04 (+13d) |  | 36d → 25d |
| 10 | **ZONE - 1 (3 Twin Villas)** |  | 2014-06-24 → 2014-07-07 (+13d) |  |  |
| 10 | **STRUCTURAL WORKS** |  | 2013-11-18 → 2013-12-01 (+13d) |  |  |
| 10 | **SUB STRUCTURE** |  | 2013-09-15 → 2013-09-28 (+13d) |  |  |
| 10 | **UPTO GRADE SLAB** |  | 2013-09-15 → 2013-09-28 (+13d) |  |  |
| DUKHCONP2AZ1STUG1020 | Construction of foundations |  | 2013-06-27 A | 0% → 100% | -63d → none |
| DUKHCONP2AZ1STUG1025 | Construction of neck of columns |  | 2013-07-07 → 2013-06-29 A (-8d) | 0% → 100% | -63d → none |

| ID | Task | Start | Finish | Complete | Total float | Other |
| --- | --- | --- | --- | --- | --- | --- |
| DUKHCONP2AZ1STUG1030 | Waterproofing Footing & Neck Column | 2013-06-24 A | 2013-07-16 A | 0% → 100% | -63d → none |  |
| DUKHCONP2AZ1STUG1035 | Backfilling Upto Grade Beam Bottom | 2013-07-06 A | 2013-07-28 A | 0% → 100% | -63d → none |  |
| DUKHCONP2AZ1STUG1040 | Construction of Grade Beams | 2013-07-17 A | 2013-08-18 A | 0% → 100% | -63d → none |  |
| DUKHCONP2AZ1STUG1045 | Construction of slab on grade | 2013-08-18 → 2013-08-31 A (+13d) | 2013-09-15 → 2013-09-28 A (+13d) | 0% → 100% | -63d → none | resources BLINDING MASON SK [508 h]; STEEL FIXERS SK [205 h]; CONCRETE MASON SK [168 h]; LABOR- SUBCONTRACTOR [660.75 h]; BLINDING QTY [634 Sqm]; CONCRETE QTY [84 Cum]; WELDED WIRE MESH [768 Sqm] → CONCRETE MASON SK [593.09 h]; STEEL FIXERS SK [239.34 h]; CONCRETE MASON SK [196.14 h]; LABOR- SUBCONTRACTOR [771.43 h]; BLINDING QTY [634 Sqm]; CONCRETE QTY [84 Cum]; WELDED WIRE MESH [768 Sqm] |
| 15 | **SUPERSTRUCTURE** | 2013-09-04 → 2013-09-17 (+13d) | 2013-11-18 → 2013-12-01 (+13d) |  |  |  |
| 10 | **GROUND FLOOR** | 2013-09-04 → 2013-09-17 (+13d) | 2013-10-28 → 2013-11-10 (+13d) |  |  |  |
| DUKHCONP2AZ1STGF2000 | Column-Rebar & Formwork | 2013-09-04 → 2013-09-17 A (+13d) | 2013-09-26 → 2013-10-09 A (+13d) | 0% → 100% | -63d → none |  |
| DUKHCONP2AZ1STGF2005 | Column-Concrete | 2013-09-15 → 2013-09-28 A (+13d) | 2013-10-01 → 2013-10-14 A (+13d) | 0% → 100% | -63d → none |  |
| DUKHCONP2AZ1STGF2010 | Beam, Stairs ,Slab-Rebar & Formwork | 2013-09-23 → 2013-10-06 A (+13d) | 2013-10-23 → 2013-11-05 (+13d) | 0% → 84% | -63d → -74d |  |
| DUKHCONP2AZ1STGF2015 | Beam, Stairs ,Slab-Concrete | 2013-10-09 → 2013-10-24 A (+15d) | 2013-10-28 → 2013-11-10 (+13d) | 0% → 47% | -63d → -74d |  |
| 20 | **ROOF** | 2013-10-20 → 2013-11-02 (+13d) | 2013-11-18 → 2013-12-01 (+13d) |  |  |  |
| DUKHCONP2AZ1STRF2060 | Construction of Parapets | 2013-10-20 → 2013-11-02 (+13d) | 2013-11-11 → 2013-11-24 (+13d) |  | -63d → -74d |  |
| DUKHCONP2AZ1STRF2065 | Construction of up stands/Plinth | 2013-10-27 → 2013-11-09 (+13d) | 2013-11-18 → 2013-12-01 (+13d) |  | -33d → -44d |  |
| 15 | **FINISHING WORKS** | 2013-11-10 → 2013-11-23 (+13d) | 2014-05-20 → 2014-06-02 (+13d) |  |  |  |
| 10 | **INTERNAL FINISHES** | 2013-11-12 → 2013-11-25 (+13d) | 2014-05-20 → 2014-06-02 (+13d) |  |  |  |
| 10 | **GROUND FLOOR** | 2013-11-12 → 2013-11-25 (+13d) | 2014-05-20 → 2014-06-02 (+13d) |  |  |  |
| DUKHCONP2AZ1ARGF3000 | Block work | 2013-11-12 → 2013-11-25 (+13d) | 2013-12-10 → 2013-12-24 (+14d) |  | -57d → -68d |  |
| DUKHCONP2AZ1ARGF3005 | Plastering work | 2013-12-03 → 2013-12-16 (+13d) | 2014-01-01 → 2014-01-14 (+13d) |  | -57d → -68d |  |
| DUKHCONP2AZ1ARGF3010 | Flooring screed | 2013-12-15 → 2013-12-29 (+14d) | 2014-01-07 → 2014-01-20 (+13d) |  | -38d → -49d |  |
| DUKHCONP2AZ1ARGF3015 | Wet area waterproofing & Protection Screed | 2013-12-17 → 2013-12-31 (+14d) | 2014-01-09 → 2014-01-22 (+13d) |  | -56d → -67d |  |
| DUKHCONP2AZ1ARGF3030 | Paint First coat | 2013-12-22 → 2014-01-04 (+13d) | 2014-01-13 → 2014-01-26 (+13d) |  | -57d → -68d |  |
| DUKHCONP2AZ1ARGF3020 | Ceramic Wall Tiling | 2014-01-06 → 2014-01-19 (+13d) | 2014-01-22 → 2014-02-04 (+13d) |  | -56d → -67d |  |
| DUKHCONP2AZ1ARGF3025 | Porcelain Tile flooring | 2014-01-22 → 2014-02-04 (+13d) | 2014-02-15 → 2014-02-27 (+12d) |  | -56d → -67d |  |
| DUKHCONP2AZ1ARGF3035 | Slate Tile Flooring & Skirting | 2014-02-09 → 2014-02-23 (+14d) | 2014-03-02 → 2014-03-15 (+13d) |  | -48d → -59d |  |
| DUKHCONP2AZ1ARGF3045 | Fixing of Suspension systems | 2014-02-15 → 2014-02-27 (+12d) | 2014-03-03 → 2014-03-16 (+13d) |  | -56d → -67d |  |
| DUKHCONP2AZ1ARGF3040 | Cobble Tile flooring | 2014-03-01 → 2014-03-13 (+12d) | 2014-03-17 → 2014-03-30 (+13d) |  | -32d → -43d |  |
| DUKHCONP2AZ1ARGF3060 | Gypsum board false ceiling | 2014-03-03 → 2014-03-16 (+13d) | 2014-03-25 → 2014-04-07 (+13d) |  | -56d → -67d |  |
| DUKHCONP2AZ1ARGF3065 | Wooden door | 2014-03-15 → 2014-03-27 (+12d) | 2014-03-31 → 2014-04-13 (+13d) |  | -56d → -67d |  |
| DUKHCONP2AZ1ARGF3075 | Carpentry & Joinery Works | 2014-03-20 → 2014-04-02 (+13d) | 2014-04-09 → 2014-04-22 (+13d) |  | -53d → -64d |  |
| DUKHCONP2AZ1ARGF3090 | Installation of Granite Counter Top | 2014-03-31 → 2014-04-13 (+13d) | 2014-04-16 → 2014-04-29 (+13d) |  | -50d → -61d |  |
| DUKHCONP2AZ1ARGF3080 | Aluminum windows | 2014-04-01 → 2014-04-14 (+13d) | 2014-04-21 → 2014-05-04 (+13d) |  | -19d → -30d |  |
| DUKHCONP2AZ1ARGF3095 | Final Painting | 2014-04-22 → 2014-05-05 (+13d) | 2014-05-20 → 2014-06-02 (+13d) |  | -29d → -40d |  |
| 15 | **EXTERNAL FINISHES** | 2013-11-10 → 2013-11-23 (+13d) | 2014-02-08 → 2014-02-22 (+14d) |  |  |  |
| 10 | **ROOF** | 2013-11-10 → 2013-11-23 (+13d) | 2014-01-11 → 2014-01-23 (+12d) |  |  |  |
| DUKHCONP2AZ1ARRF3625 | Laying of Pitched Roof | 2013-11-10 → 2013-11-23 (+13d) | 2013-12-08 → 2013-12-22 (+14d) |  | -33d → -44d |  |
| DUKHCONP2AZ1ARRF3630 | Leveling Screed for Waterproofing | 2013-11-24 → 2013-12-07 (+13d) | 2013-12-14 → 2013-12-28 (+14d) |  | -33d → -44d |  |
| DUKHCONP2AZ1ARRF3635 | Laying of Waterproofing Membrane | 2013-11-30 → 2013-12-12 (+12d) | 2013-12-21 → 2014-01-02 (+12d) |  | -28d → -39d |  |
| DUKHCONP2AZ1ARRF3640 | Installation of Insulation & Protection | 2013-12-04 → 2013-12-17 (+13d) | 2013-12-25 → 2014-01-07 (+13d) |  | -28d → -39d |  |
| DUKHCONP2AZ1ARRF3645 | Lime Stone Chips & Paving slab Installation | 2013-12-12 → 2013-12-26 (+14d) | 2014-01-02 → 2014-01-15 (+13d) |  | -28d → -39d |  |
| DUKHCONP2AZ1ARRF3660 | Installation of Access Ladder | 2013-12-19 → 2014-01-01 (+13d) | 2014-01-11 → 2014-01-23 (+12d) |  | 16d → 5d |  |
| 15 | **ELEVATION** | 2013-12-25 → 2014-01-07 (+13d) | 2014-02-08 → 2014-02-22 (+14d) |  |  |  |
| DUKHCONP2AZ1AREL3665 | External Plastering | 2013-12-25 → 2014-01-07 (+13d) | 2014-01-22 → 2014-02-04 (+13d) |  | -28d → -39d |  |
| DUKHCONP2AZ1AREL3680 | External Painting | 2014-01-16 → 2014-01-29 (+13d) | 2014-02-08 → 2014-02-22 (+14d) |  | 2d → -9d |  |
| 20 | **MEP WORKS** |  | 2014-05-14 → 2014-05-27 (+13d) |  |  |  |
| 10 | **ELECTRICAL WORKS** | 2013-11-26 → 2013-12-09 (+13d) | 2014-05-10 → 2014-05-22 (+12d) |  |  |  |
| 10 | **GROUND FLOOR** | 2013-11-26 → 2013-12-09 (+13d) | 2014-04-14 → 2014-04-27 (+13d) |  |  |  |
| DUKHCONP2AZ1ELGF4000 | Fixing of wall conduits & switch socket boxes | 2013-11-26 → 2013-12-09 (+13d) | 2013-12-19 → 2014-01-01 (+13d) |  | -56d → -67d |  |
| DUKHCONP2AZ1ELGF4005 | Cable tray & trunking installation | 2013-12-04 → 2013-12-17 (+13d) | 2013-12-28 → 2014-01-09 (+12d) |  | -50d → -61d |  |
| DUKHCONP2AZ1ELGF4010 | Installation of wiring & Main Cabling | 2013-12-12 → 2013-12-26 (+14d) | 2014-01-05 → 2014-01-18 (+13d) |  | -22d → -33d |  |
| DUKHCONP2AZ1ELGF4020 | Installation of DBS,MCCB Accessories. | 2014-03-11 → 2014-03-24 (+13d) | 2014-04-02 → 2014-04-15 (+13d) |  | -15d → -26d |  |
| DUKHCONP2AZ1ELGF4015 | Install. of CAMS & Fire Fighting Accessories | 2014-03-19 → 2014-04-01 (+13d) | 2014-04-10 → 2014-04-23 (+13d) |  | -50d → -61d |  |
| DUKHCONP2AZ1ELGF4025 | Installation of Lighting fixtures & Accessories | 2014-03-23 → 2014-04-05 (+13d) | 2014-04-14 → 2014-04-27 (+13d) |  | -15d → -26d |  |
| DUKHCONP2AZ1ELGF4030 | Installation of Telephone System | 2014-03-23 → 2014-04-05 (+13d) | 2014-04-14 → 2014-04-27 (+13d) |  | -12d → -23d |  |
| 20 | **ROOF** | 2014-04-06 → 2014-04-19 (+13d) | 2014-05-10 → 2014-05-22 (+12d) |  |  |  |
| DUKHCONP2AZ1ELRF4070 | Installation of Isolator | 2014-04-06 → 2014-04-19 (+13d) | 2014-04-26 → 2014-05-08 (+12d) |  | -15d → -26d |  |
| DUKHCONP2AZ1ELRF4075 | Installation of TV Dish Antenna | 2014-04-17 → 2014-04-30 (+13d) | 2014-05-10 → 2014-05-22 (+12d) |  | -15d → -26d |  |
| 15 | **PLUMBING, DRAINAGE & FIRE FIGHTING WORKS** |  | 2014-04-29 → 2014-05-12 (+13d) |  |  |  |
| 10 | **GROUND FLOOR** |  | 2014-04-29 → 2014-05-12 (+13d) |  |  |  |
| DUKHCONP2AZ1PLUG4300 | Drainage / Storm Pipes in Grade Slab | 2013-08-05 A | 2013-08-31 A | 0% → 100% | -63d → none |  |
| DUKHCONP2AZ1PLGF4305 | Installation of Plumbing pipes & testing | 2013-11-27 → 2013-12-10 (+13d) | 2013-12-21 → 2014-01-02 (+12d) |  | -57d → -68d |  |
| DUKHCONP2AZ1PLGF4310 | Installation of Drainage pipes &testing | 2013-11-30 → 2013-12-12 (+12d) | 2013-12-21 → 2014-01-02 (+12d) |  | -33d → -44d |  |
| DUKHCONP2AZ1PLGF4315 | Sanitary Fittings & Accessories | 2014-03-20 → 2014-04-02 (+13d) | 2014-04-12 → 2014-04-24 (+12d) |  | -56d → -67d |  |
| DUKHCONP2AZ1PLGF4320 | Installation of Water Heater | 2014-04-13 → 2014-04-26 (+13d) | 2014-04-29 → 2014-05-12 (+13d) |  | -1d → -12d |  |
| 20 | **ROOF** | 2014-01-30 → 2014-02-13 (+14d) | 2014-02-17 → 2014-03-02 (+13d) |  |  |  |
| DUKHCONP2AZ1PLRF4350 | Installation of Rain water Pipes | 2014-01-30 → 2014-02-13 (+14d) | 2014-02-17 → 2014-03-02 (+13d) |  | -32d → -43d |  |
| 20 | **AC WORKS** | 2013-12-17 → 2013-12-31 (+14d) | 2014-05-14 → 2014-05-27 (+13d) |  |  |  |
| 10 | **GROUND FLOOR** | 2013-12-17 → 2013-12-31 (+14d) | 2014-05-03 → 2014-05-15 (+12d) |  |  |  |
| DUKHCONP2AZ1ACGF4600 | Installation AC Pipes | 2013-12-17 → 2013-12-31 (+14d) | 2014-01-09 → 2014-01-22 (+13d) |  | -35d → -46d |  |
| DUKHCONP2AZ1ACGF4605 | Fixing of Ventilation Equipments | 2014-03-19 → 2014-04-01 (+13d) | 2014-04-16 → 2014-04-29 (+13d) |  | -29d → -40d |  |
| DUKHCONP2AZ1ACGF4610 | Fixing of Split AC | 2014-04-10 → 2014-04-23 (+13d) | 2014-05-03 → 2014-05-15 (+12d) |  | -29d → -40d |  |

| ID | Task | Start | Finish | Complete | Total float | Other |
| --- | --- | --- | --- | --- | --- | --- |
| 20 | **ROOF** | 2014-01-04 → 2014-01-16 (+12d) | 2014-05-14 → 2014-05-27 (+13d) |  |  |  |
| DUKHCONP2AZ1ACRF4630 | Installation of Refrigerant Pipes | 2014-01-04 → 2014-01-16 (+12d) | 2014-01-26 → 2014-02-08 (+13d) |  | 3d → -8d |  |
| DUKHCONP2AZ1ACRF4635 | Installation of Condensing Unit | 2014-04-16 → 2014-04-29 (+13d) | 2014-05-14 → 2014-05-27 (+13d) |  | -24d → -35d |  |
| 25 | **EXTERNAL WORKS** | 2013-12-05 → 2013-12-19 (+14d) | 2014-06-24 → 2014-07-07 (+13d) |  |  |  |
| 10 | **MISCELLANEOUS** | 2013-12-05 → 2013-12-19 (+14d) | 2014-06-24 → 2014-07-07 (+13d) |  |  |  |
| DUKHCONP2AZ1MSEX5020 | Construction Entrance Ramp | 2013-12-05 → 2013-12-19 (+14d) | 2013-12-29 → 2014-01-11 (+13d) |  | -33d → -44d |  |
| DUKHCONP2AZ1MSEX5055 | Installation Steel Door | 2013-12-11 → 2013-12-25 (+14d) | 2014-01-04 → 2014-01-16 (+12d) |  | -28d → -39d |  |
| DUKHCONP2AZ1MSEX5000 | Construction of Manholes | 2013-12-14 → 2013-12-28 (+14d) | 2014-01-12 → 2014-01-25 (+13d) |  | -21d → -32d |  |
| DUKHCONP2AZ1MSEX5025 | SS.Handrails and Balustrades | 2013-12-24 → 2014-01-06 (+13d) | 2014-01-15 → 2014-01-28 (+13d) |  | -28d → -39d |  |
| DUKHCONP2AZ1MSEX5005 | Construction of Soak pit, Chambers | 2013-12-29 → 2014-01-11 (+13d) | 2014-01-26 → 2014-02-08 (+13d) |  | -21d → -32d |  |
| DUKHCONP2AZ1MSEX5015 | Construction of grease Trap | 2014-01-18 → 2014-01-30 (+12d) | 2014-02-09 → 2014-02-23 (+14d) |  | -21d → -32d |  |
| DUKHCONP2AZ1MSEX5010 | Telephone cable laying | 2014-02-10 → 2014-02-24 (+14d) | 2014-03-11 → 2014-03-24 (+13d) |  | -3d → -14d |  |
| DUKHCONP2AZ1MSEX5335 | Aluminum Roll-up Shutter with 2m Wall | 2014-05-27 → 2014-06-09 (+13d) | 2014-06-24 → 2014-07-07 (+13d) |  | -34d → -45d |  |
| 15 | **WATER TANK ENCLOSURE** | 2013-12-09 → 2013-12-23 (+14d) | 2014-03-16 → 2014-03-29 (+13d) |  |  |  |
| DUKHCONP2AZ1WEEX5030 | Excavation | 2013-12-09 → 2013-12-23 (+14d) | 2014-01-01 → 2014-01-14 (+13d) |  | -48d → -59d |  |
| DUKHCONP2AZ1WEEX5035 | Construction of Raft | 2013-12-17 → 2013-12-31 (+14d) | 2014-01-15 → 2014-01-28 (+13d) |  | -38d → -49d |  |
| DUKHCONP2AZ1WEEX5040 | Block works & Plastering | 2013-12-28 → 2014-01-09 (+12d) | 2014-01-25 → 2014-02-06 (+12d) |  | -38d → -49d |  |
| DUKHCONP2AZ1WEEX5045 | Flooring & Painting | 2014-01-08 → 2014-01-21 (+13d) | 2014-02-05 → 2014-02-19 (+14d) |  | -38d → -49d |  |
| DUKHCONP2AZ1WEEX5050 | Installation of Steel Gate | 2014-01-26 → 2014-02-08 (+13d) | 2014-02-18 → 2014-03-03 (+13d) |  | -38d → -49d |  |
| DUKHCONP2AZ1WEEX5060 | Structural steel & SS Shed cover installation | 2014-02-01 → 2014-02-15 (+14d) | 2014-03-02 → 2014-03-15 (+13d) |  | -38d → -49d |  |
| DUKHCONP2AZ1WEEX5065 | Install. of Water Tank,Chiller,Pump & Meter | 2014-02-13 → 2014-02-26 (+13d) | 2014-03-13 → 2014-03-26 (+13d) |  | -38d → -49d |  |
| DUKHCONP2AZ1WEEX5070 | Installation ladder for water Tank | 2014-02-22 → 2014-03-06 (+12d) | 2014-03-16 → 2014-03-29 (+13d) |  | -28d → -39d |  |
| 20 | **HARD LANDSCAPING** | 2014-01-01 → 2014-01-14 (+13d) | 2014-02-20 → 2014-03-05 (+13d) |  |  |  |
| DUKHCONP2AZ1HDEX5090 | kerb works | 2014-01-01 → 2014-01-14 (+13d) | 2014-01-23 → 2014-02-05 (+13d) |  | -28d → -39d |  |
| DUKHCONP2AZ1HDEX5095 | Cobble Stone Works | 2014-01-13 → 2014-01-26 (+13d) | 2014-02-04 → 2014-02-18 (+14d) |  | -28d → -39d |  |
| DUKHCONP2AZ1HDEX5100 | Interlock works | 2014-01-28 → 2014-02-10 (+13d) | 2014-02-20 → 2014-03-05 (+13d) |  | -28d → -39d |  |
| 25 | **SOFT LANDSCAPING** | 2014-02-09 → 2014-02-23 (+14d) | 2014-03-16 → 2014-03-29 (+13d) |  |  |  |
| DUKHCONP2AZ1SLEX5105 | Laying of Grass/ green area | 2014-02-09 → 2014-02-23 (+14d) | 2014-03-04 → 2014-03-17 (+13d) |  | -28d → -39d |  |
| DUKHCONP2AZ1SLEX5110 | Laying of Palm tree | 2014-02-22 → 2014-03-06 (+12d) | 2014-03-16 → 2014-03-29 (+13d) |  | 12d → 1d |  |
| 30 | **TESTING AND COMMISSIONING** | 2014-05-21 → 2014-06-03 (+13d) | 2014-06-18 → 2014-07-01 (+13d) |  |  |  |
| DUKHCONP2AZ1ACTC8000 | Pre-Commissioning & Testing of AC Works | 2014-05-21 → 2014-06-03 (+13d) | 2014-06-18 → 2014-07-01 (+13d) |  | -4d → -15d |  |
| DUKHCONP2AZ1ELTC8010 | Pre-Commissioning & Testing of Electrical Works | 2014-05-21 → 2014-06-03 (+13d) | 2014-06-18 → 2014-07-01 (+13d) |  | -4d → -15d |  |
| DUKHCONP2AZ1PLTC8005 | Pre-Commissioning & Testing of Plumbing Works | 2014-05-21 → 2014-06-03 (+13d) | 2014-06-18 → 2014-07-01 (+13d) |  | -4d → -15d |  |
| 15 | **ZONE - 2 (3 Twin Villas)** |  | 2014-07-26 → 2014-08-11 (+16d) |  |  |  |
| 10 | **STRUCTURAL WORKS** |  | 2013-12-11 → 2013-12-25 (+14d) |  |  |  |
| 10 | **SUB STRUCTURE** |  | 2013-10-02 → 2013-10-03 (+1d) |  |  |  |
| 10 | **UPTO GRADE SLAB** |  | 2013-10-02 → 2013-10-03 (+1d) |  |  |  |
| DUKHCONP2AZ2STUG1005 | Footing Antitermite |  | 2013-05-02 A | 70% → 100% | -4d → none |  |
| DUKHCONP2AZ2STUG1010 | Footing Blinding | 2013-04-27 A | 2013-05-05 A | 0% → 100% | -4d → none |  |
| DUKHCONP2AZ2STUG1015 | Footing Waterproofing & Screed | 2013-05-02 A | 2013-05-11 A | 0% → 100% | -4d → none |  |
| DUKHCONP2AZ2STUG1020 | Construction of foundations | 2013-06-29 A | 2013-07-21 A | 0% → 100% | -45d → none |  |
| DUKHCONP2AZ2STUG1025 | Construction of neck of columns | 2013-07-08 A | 2013-07-30 A | 0% → 100% | -45d → none |  |
| DUKHCONP2AZ2STUG1030 | Waterproofing Footing & Neck Column | 2013-07-17 A | 2013-08-08 A | 0% → 100% | -45d → none |  |
| DUKHCONP2AZ2STUG1035 | Backfilling Upto Grade Beam Bottom | 2013-07-29 A | 2013-08-24 A | 0% → 100% | -45d → none |  |
| DUKHCONP2AZ2STUG1040 | Construction of Grade Beams | 2013-08-13 A | 2013-09-10 A | 0% → 100% | -45d → none | resources BLINDING MASON SK [74 h]; STEEL FIXERS SK [183 h]; CARPENTERS SK [1024 h]; CONCRETE MASON SK [156 h]; LABOR- SUBCONTRACTOR [1077.75 h]; BLINDING QTY [92 Sqm]; REINFORCEMENT BARS QTY [2287 kg]; FORMWORK QTY [512 Sqm]; CONCRETE QTY [78 Cum] → CONCRETE MASON SK [74 h]; STEEL FIXERS SK [183 h]; CARPENTERS SK [1024 h]; CONCRETE MASON SK [156 h]; LABOR- SUBCONTRACTOR [1077.75 h]; BLINDING QTY [92 Sqm]; REINFORCEMENT BARS QTY [2287 kg]; FORMWORK QTY [512 Sqm]; CONCRETE QTY [78 Cum] |
| DUKHCONP2AZ2STUG1045 | Construction of slab on grade | 2013-09-04 A | 2013-10-02 → 2013-10-03 A (+1d) | 0% → 100% | -45d → none | resources BLINDING MASON SK [508 h]; STEEL FIXERS SK [205 h]; CONCRETE MASON SK [168 h]; LABOR- SUBCONTRACTOR [660.75 h]; BLINDING QTY [634 Sqm]; CONCRETE QTY [84 Cum]; WELDED WIRE MESH [768 Sqm] → CONCRETE MASON SK [508 h]; STEEL FIXERS SK [205 h]; CONCRETE MASON SK [168 h]; LABOR- SUBCONTRACTOR [660.75 h]; BLINDING QTY [634 Sqm]; CONCRETE QTY [84 Cum]; WELDED WIRE MESH [768 Sqm] |
| 15 | **SUPERSTRUCTURE** | 2013-09-28 → 2013-10-10 (+12d) | 2013-12-11 → 2013-12-25 (+14d) |  |  |  |
| 10 | **GROUND FLOOR** | 2013-09-28 → 2013-10-10 (+12d) | 2013-11-20 → 2013-12-03 (+13d) |  |  |  |
| DUKHCONP2AZ2STGF2000 | Column-Rebar & Formwork | 2013-09-28 → 2013-10-10 A (+12d) | 2013-10-22 → 2013-11-04 (+13d) | 0% → 85% | -50d → -61d |  |
| DUKHCONP2AZ2STGF2005 | Column-Concrete | 2013-10-08 → 2013-10-23 A (+15d) | 2013-10-27 → 2013-11-09 (+13d) | 0% → 53% | -50d → -61d |  |
| DUKHCONP2AZ2STGF2010 | Beam, Stairs ,Slab-Rebar & Formwork | 2013-10-16 → 2013-10-31 A (+15d) | 2013-11-16 → 2013-11-28 (+12d) | 0% → 4% | -50d → -61d |  |
| DUKHCONP2AZ2STGF2015 | Beam, Stairs ,Slab-Concrete | 2013-11-04 → 2013-11-17 (+13d) | 2013-11-20 → 2013-12-03 (+13d) |  | -50d → -61d |  |
| 20 | **ROOF** | 2013-11-12 → 2013-11-25 (+13d) | 2013-12-11 → 2013-12-25 (+14d) |  |  |  |
| DUKHCONP2AZ2STRF2060 | Construction of Parapets | 2013-11-12 → 2013-11-25 (+13d) | 2013-12-04 → 2013-12-17 (+13d) |  | -44d → -55d |  |
| DUKHCONP2AZ2STRF2065 | Construction of up stands/Plinth | 2013-11-19 → 2013-12-02 (+13d) | 2013-12-11 → 2013-12-25 (+14d) |  | -21d → -32d |  |
| 15 | **FINISHING WORKS** | 2013-11-28 → 2013-12-11 (+13d) | 2014-06-18 → 2014-07-01 (+13d) |  |  |  |
| 10 | **INTERNAL FINISHES** | 2013-11-28 → 2013-12-11 (+13d) | 2014-06-18 → 2014-07-01 (+13d) |  |  |  |
| 10 | **GROUND FLOOR** | 2013-11-28 → 2013-12-11 (+13d) | 2014-06-18 → 2014-07-01 (+13d) |  |  |  |
| DUKHCONP2AZ2ARGF3000 | Block work | 2013-11-28 → 2013-12-11 (+13d) | 2013-12-28 → 2014-01-09 (+12d) |  | -50d → -61d |  |
| DUKHCONP2AZ2ARGF3005 | Plastering work | 2013-12-19 → 2014-01-01 (+13d) | 2014-01-16 → 2014-01-29 (+13d) |  | -50d → -61d |  |
| DUKHCONP2AZ2ARGF3015 | Wet area waterproofing & Protection Screed | 2014-01-02 → 2014-01-15 (+13d) | 2014-01-25 → 2014-02-06 (+12d) |  | -49d → -60d |  |
| DUKHCONP2AZ2ARGF3010 | Flooring screed | 2014-01-08 → 2014-01-21 (+13d) | 2014-01-30 → 2014-02-13 (+14d) |  | -38d → -49d |  |
| DUKHCONP2AZ2ARGF3030 | Paint First coat | 2014-01-14 → 2014-01-27 (+13d) | 2014-02-05 → 2014-02-19 (+14d) |  | -57d → -68d |  |
| DUKHCONP2AZ2ARGF3020 | Ceramic Wall Tiling | 2014-01-21 → 2014-02-03 (+13d) | 2014-02-06 → 2014-02-20 (+14d) |  | -49d → -60d |  |
| DUKHCONP2AZ2ARGF3025 | Porcelain Tile flooring | 2014-02-16 → 2014-03-01 (+13d) | 2014-03-10 → 2014-03-23 (+13d) |  | -56d → -67d |  |
| DUKHCONP2AZ2ARGF3035 | Slate Tile Flooring & Skirting | 2014-03-05 → 2014-03-18 (+13d) | 2014-03-25 → 2014-04-07 (+13d) |  | -50d → -61d |  |
| DUKHCONP2AZ2ARGF3045 | Fixing of Suspension systems | 2014-03-10 → 2014-03-23 (+13d) | 2014-03-26 → 2014-04-08 (+13d) |  | -56d → -67d |  |
| DUKHCONP2AZ2ARGF3040 | Cobble Tile flooring | 2014-03-24 → 2014-04-06 (+13d) | 2014-04-09 → 2014-04-22 (+13d) |  | -37d → -48d |  |
| DUKHCONP2AZ2ARGF3060 | Gypsum board false ceiling | 2014-03-26 → 2014-04-08 (+13d) | 2014-04-17 → 2014-04-30 (+13d) |  | -56d → -67d |  |
| DUKHCONP2AZ2ARGF3065 | Wooden door | 2014-04-07 → 2014-04-20 (+13d) | 2014-04-23 → 2014-05-06 (+13d) |  | -56d → -67d |  |

| ID | Task | Start | Finish | Complete | Total float |
| --- | --- | --- | --- | --- | --- |
| DUKHCONP2AZ2ARGF3075 | Carpentry & Joinery Works | 2014-04-13 → 2014-04-26 (+13d) | 2014-05-03 → 2014-05-15 (+12d) |  | -55d → -66d |
| DUKHCONP2AZ2ARGF3090 | Installation of Granite Counter Top | 2014-04-23 → 2014-05-06 (+13d) | 2014-05-10 → 2014-05-22 (+12d) |  | -55d → -66d |
| DUKHCONP2AZ2ARGF3080 | Aluminum windows | 2014-04-24 → 2014-05-07 (+13d) | 2014-05-14 → 2014-05-27 (+13d) |  | -14d → -25d |
| DUKHCONP2AZ2ARGF3095 | Final Painting | 2014-05-21 → 2014-06-03 (+13d) | 2014-06-18 → 2014-07-01 (+13d) |  | -29d → -40d |
| 15 | **EXTERNAL FINISHES** | 2013-12-15 → 2013-12-29 (+14d) | 2014-03-16 → 2014-03-29 (+13d) |  |  |
| 10 | **ROOF** | 2013-12-15 → 2013-12-29 (+14d) | 2014-02-16 → 2014-03-01 (+13d) |  |  |
| DUKHCONP2AZ2ARRF3625 | Laying of Pitched Roof | 2013-12-15 → 2013-12-29 (+14d) | 2014-01-13 → 2014-01-26 (+13d) |  | -33d → -44d |
| DUKHCONP2AZ2ARRF3630 | Leveling Screed for Waterproofing | 2013-12-30 → 2014-01-12 (+13d) | 2014-01-19 → 2014-02-01 (+13d) |  | -33d → -44d |
| DUKHCONP2AZ2ARRF3635 | Laying of Waterproofing Membrane | 2014-01-05 → 2014-01-18 (+13d) | 2014-01-25 → 2014-02-06 (+12d) |  | -33d → -44d |
| DUKHCONP2AZ2ARRF3640 | Installation of Insulation & Protection | 2014-01-09 → 2014-01-22 (+13d) | 2014-01-29 → 2014-02-12 (+14d) |  | -33d → -44d |
| DUKHCONP2AZ2ARRF3645 | Lime Stone Chips & Paving slab Installation | 2014-01-18 → 2014-01-30 (+12d) | 2014-02-06 → 2014-02-20 (+14d) |  | -33d → -44d |
| DUKHCONP2AZ2ARRF3660 | Installation of Access Ladder | 2014-01-23 → 2014-02-05 (+13d) | 2014-02-16 → 2014-03-01 (+13d) |  | 6d → -5d |
| 15 | **ELEVATION** | 2014-01-29 → 2014-02-12 (+14d) | 2014-03-16 → 2014-03-29 (+13d) |  |  |
| DUKHCONP2AZ2AREL3665 | External Plastering | 2014-01-29 → 2014-02-12 (+14d) | 2014-02-27 → 2014-03-12 (+13d) |  | -33d → -44d |
| DUKHCONP2AZ2AREL3680 | External Painting | 2014-02-22 → 2014-03-06 (+12d) | 2014-03-16 → 2014-03-29 (+13d) |  | -8d → -19d |
| 20 | **MEP WORKS** |  | 2014-06-12 → 2014-06-25 (+13d) |  |  |
| 10 | **ELECTRICAL WORKS** | 2013-12-12 → 2013-12-26 (+14d) | 2014-06-02 → 2014-06-15 (+13d) |  |  |
| 10 | **GROUND FLOOR** | 2013-12-12 → 2013-12-26 (+14d) | 2014-05-07 → 2014-05-20 (+13d) |  |  |
| DUKHCONP2AZ2ELGF4000 | Fixing of wall conduits & switch socket boxes | 2013-12-12 → 2013-12-26 (+14d) | 2014-01-05 → 2014-01-18 (+13d) |  | -50d → -61d |
| DUKHCONP2AZ2ELGF4005 | Cable tray & trunking installation | 2013-12-29 → 2014-01-11 (+13d) | 2014-01-20 → 2014-02-02 (+13d) |  | -50d → -61d |
| DUKHCONP2AZ2ELGF4010 | Installation of wiring & Main Cabling | 2014-01-06 → 2014-01-19 (+13d) | 2014-01-28 → 2014-02-10 (+13d) |  | -22d → -33d |
| DUKHCONP2AZ2ELGF4020 | Installation of DBS,MCCB Accessories. | 2014-04-03 → 2014-04-16 (+13d) | 2014-04-26 → 2014-05-08 (+12d) |  | -15d → -26d |
| DUKHCONP2AZ2ELGF4015 | Install. of CAMS & Fire Fighting Accessories | 2014-04-12 → 2014-04-24 (+12d) | 2014-05-04 → 2014-05-17 (+13d) |  | -50d → -61d |
| DUKHCONP2AZ2ELGF4025 | Installation of Lighting fixtures & Accessories | 2014-04-15 → 2014-04-28 (+13d) | 2014-05-07 → 2014-05-20 (+13d) |  | -15d → -26d |
| DUKHCONP2AZ2ELGF4030 | Installation of Telephone System | 2014-04-15 → 2014-04-28 (+13d) | 2014-05-07 → 2014-05-20 (+13d) |  | -12d → -23d |
| 20 | **ROOF** | 2014-04-29 → 2014-05-12 (+13d) | 2014-06-02 → 2014-06-15 (+13d) |  |  |
| DUKHCONP2AZ2ELRF4070 | Installation of Isolator | 2014-04-29 → 2014-05-12 (+13d) | 2014-05-19 → 2014-06-01 (+13d) |  | -15d → -26d |
| DUKHCONP2AZ2ELRF4075 | Installation of TV Dish Antenna | 2014-05-11 → 2014-05-24 (+13d) | 2014-06-02 → 2014-06-15 (+13d) |  | -15d → -26d |
| 15 | **PLUMBING, DRAINAGE & FIRE FIGHTING WORKS** |  | 2014-05-17 → 2014-05-29 (+12d) |  |  |
| 10 | **GROUND FLOOR** |  | 2014-05-17 → 2014-05-29 (+12d) |  |  |
| DUKHCONP2AZ2PLUG4300 | Drainage / Storm Pipes in Grade Slab | 2013-08-27 A | 2013-09-18 A | 0% → 100% | -45d → none |
| DUKHCONP2AZ2PLGF4305 | Installation of Plumbing pipes & testing | 2013-12-12 → 2013-12-26 (+14d) | 2014-01-05 → 2014-01-18 (+13d) |  | -50d → -61d |
| DUKHCONP2AZ2PLGF4310 | Installation of Drainage pipes &testing | 2013-12-22 → 2014-01-04 (+13d) | 2014-01-11 → 2014-01-23 (+12d) |  | -31d → -42d |
| DUKHCONP2AZ2PLGF4315 | Sanitary Fittings & Accessories | 2014-04-13 → 2014-04-26 (+13d) | 2014-05-05 → 2014-05-18 (+13d) |  | -56d → -67d |
| DUKHCONP2AZ2PLGF4320 | Installation of Water Heater | 2014-04-30 → 2014-05-13 (+13d) | 2014-05-17 → 2014-05-29 (+12d) |  | -1d → -12d |
| 20 | **ROOF** | 2014-02-19 → 2014-03-04 (+13d) | 2014-03-08 → 2014-03-20 (+12d) |  |  |
| DUKHCONP2AZ2PLRF4350 | Installation of Rain water Pipes | 2014-02-19 → 2014-03-04 (+13d) | 2014-03-08 → 2014-03-20 (+12d) |  | -23d → -34d |
| 20 | **AC WORKS** | 2014-01-11 → 2014-01-23 (+12d) | 2014-06-12 → 2014-06-25 (+13d) |  |  |
| 10 | **GROUND FLOOR** | 2014-01-11 → 2014-01-23 (+12d) | 2014-05-26 → 2014-06-08 (+13d) |  |  |
| DUKHCONP2AZ2ACGF4600 | Installation AC Pipes | 2014-01-11 → 2014-01-23 (+12d) | 2014-02-02 → 2014-02-16 (+14d) |  | -35d → -46d |
| DUKHCONP2AZ2ACGF4605 | Fixing of Ventilation Equipments | 2014-04-12 → 2014-04-24 (+12d) | 2014-05-10 → 2014-05-22 (+12d) |  | -24d → -35d |
| DUKHCONP2AZ2ACGF4610 | Fixing of Split AC | 2014-05-04 → 2014-05-17 (+13d) | 2014-05-26 → 2014-06-08 (+13d) |  | -24d → -35d |
| 20 | **ROOF** | 2014-02-03 → 2014-02-17 (+14d) | 2014-06-12 → 2014-06-25 (+13d) |  |  |
| DUKHCONP2AZ2ACRF4630 | Installation of Refrigerant Pipes | 2014-02-03 → 2014-02-17 (+14d) | 2014-02-26 → 2014-03-11 (+13d) |  | -3d → -14d |
| DUKHCONP2AZ2ACRF4635 | Installation of Condensing Unit | 2014-05-15 → 2014-05-28 (+13d) | 2014-06-12 → 2014-06-25 (+13d) |  | -24d → -35d |
| 25 | **EXTERNAL WORKS** | 2013-12-30 → 2014-01-12 (+13d) | 2014-07-26 → 2014-08-11 (+16d) |  |  |
| 10 | **MISCELLANEOUS** | 2013-12-30 → 2014-01-12 (+13d) | 2014-07-26 → 2014-08-11 (+16d) |  |  |
| DUKHCONP2AZ2MSEX5020 | Construction Entrance Ramp | 2013-12-30 → 2014-01-12 (+13d) | 2014-01-21 → 2014-02-03 (+13d) |  | -33d → -44d |
| DUKHCONP2AZ2MSEX5055 | Installation Steel Door | 2014-01-11 → 2014-01-23 (+12d) | 2014-02-02 → 2014-02-16 (+14d) |  | -33d → -44d |
| DUKHCONP2AZ2MSEX5000 | Construction of Manholes | 2014-01-13 → 2014-01-26 (+13d) | 2014-02-10 → 2014-02-24 (+14d) |  | -21d → -32d |
| DUKHCONP2AZ2MSEX5025 | SS.Handrails and Balustrades | 2014-01-22 → 2014-02-04 (+13d) | 2014-02-15 → 2014-02-27 (+12d) |  | -33d → -44d |
| DUKHCONP2AZ2MSEX5005 | Construction of Soak pit, Chambers | 2014-01-27 → 2014-02-09 (+13d) | 2014-02-25 → 2014-03-10 (+13d) |  | -21d → -32d |
| DUKHCONP2AZ2MSEX5015 | Construction of grease Trap | 2014-02-17 → 2014-03-02 (+13d) | 2014-03-11 → 2014-03-24 (+13d) |  | -21d → -32d |
| DUKHCONP2AZ2MSEX5010 | Telephone cable laying | 2014-03-12 → 2014-03-25 (+13d) | 2014-04-09 → 2014-04-22 (+13d) |  | -8d → -19d |
| DUKHCONP2AZ2MSEX5335 | Aluminum Roll-up Shutter with 2m Wall | 2014-06-28 → 2014-07-10 (+12d) | 2014-07-26 → 2014-08-11 (+16d) |  | -36d → -47d |
| 15 | **WATER TANK ENCLOSURE** | 2014-01-02 → 2014-01-15 (+13d) | 2014-04-14 → 2014-04-27 (+13d) |  |  |
| DUKHCONP2AZ2WEEX5030 | Excavation | 2014-01-02 → 2014-01-15 (+13d) | 2014-01-25 → 2014-02-06 (+12d) |  | -48d → -59d |
| DUKHCONP2AZ2WEEX5035 | Construction of Raft | 2014-01-08 → 2014-01-21 (+13d) | 2014-02-05 → 2014-02-19 (+14d) |  | -31d → -42d |
| DUKHCONP2AZ2WEEX5040 | Block works & Plastering | 2014-01-18 → 2014-01-30 (+12d) | 2014-02-16 → 2014-03-01 (+13d) |  | -31d → -42d |
| DUKHCONP2AZ2WEEX5045 | Flooring & Painting | 2014-01-29 → 2014-02-12 (+14d) | 2014-02-27 → 2014-03-12 (+13d) |  | -31d → -42d |
| DUKHCONP2AZ2WEEX5050 | Installation of Steel Gate | 2014-02-19 → 2014-03-04 (+13d) | 2014-03-13 → 2014-03-26 (+13d) |  | -33d → -44d |
| DUKHCONP2AZ2WEEX5060 | Structural steel & SS Shed cover installation | 2014-02-25 → 2014-03-10 (+13d) | 2014-03-25 → 2014-04-07 (+13d) |  | -33d → -44d |
| DUKHCONP2AZ2WEEX5065 | Install. of Water Tank,Chiller,Pump & Meter | 2014-03-15 → 2014-03-27 (+12d) | 2014-04-12 → 2014-04-24 (+12d) |  | -38d → -49d |
| DUKHCONP2AZ2WEEX5070 | Installation ladder for water Tank | 2014-03-23 → 2014-04-05 (+13d) | 2014-04-14 → 2014-04-27 (+13d) |  | -33d → -44d |
| 20 | **HARD LANDSCAPING** | 2014-01-30 → 2014-02-13 (+14d) | 2014-03-22 → 2014-04-03 (+12d) |  |  |
| DUKHCONP2AZ2HDEX5090 | kerb works | 2014-01-30 → 2014-02-13 (+14d) | 2014-02-23 → 2014-03-08 (+13d) |  | -33d → -44d |
| DUKHCONP2AZ2HDEX5095 | Cobble Stone Works | 2014-02-12 → 2014-02-25 (+13d) | 2014-03-06 → 2014-03-19 (+13d) |  | -33d → -44d |
| DUKHCONP2AZ2HDEX5100 | Interlock works | 2014-02-27 → 2014-03-12 (+13d) | 2014-03-22 → 2014-04-03 (+12d) |  | -33d → -44d |
| 25 | **SOFT LANDSCAPING** | 2014-03-11 → 2014-03-24 (+13d) | 2014-04-14 → 2014-04-27 (+13d) |  |  |
| DUKHCONP2AZ2SLEX5105 | Laying of Grass/ green area | 2014-03-11 → 2014-03-24 (+13d) | 2014-04-02 → 2014-04-15 (+13d) |  | -33d → -44d |

| ID | Task | Start | Finish | Total float |
| --- | --- | --- | --- | --- |
| DUKHCONP2AZ2SLEX5110 | Laying of Palm tree | 2014-03-23 → 2014-04-05 (+13d) | 2014-04-14 → 2014-04-27 (+13d) | 7d → -4d |
| 30 | **TESTING AND COMMISSIONING** | 2014-06-19 → 2014-07-02 (+13d) | 2014-07-17 → 2014-07-30 (+13d) |  |
| DUKHCONP2AZ2ACTC8000 | Pre-Commissioning & Testing of AC Works | 2014-06-19 → 2014-07-02 (+13d) | 2014-07-17 → 2014-07-30 (+13d) | -29d → -40d |
| DUKHCONP2AZ2ELTC8010 | Pre-Commissioning & Testing of Electrical Works | 2014-06-19 → 2014-07-02 (+13d) | 2014-07-17 → 2014-07-30 (+13d) | -29d → -40d |
| DUKHCONP2AZ2PLTC8005 | Pre-Commissioning & Testing of Plumbing Works | 2014-06-19 → 2014-07-02 (+13d) | 2014-07-17 → 2014-07-30 (+13d) | -29d → -40d |
| L40 | **PACKAGE-2A INFRASTRUCTURE WORKS** | 2013-11-12 → 2013-11-25 (+13d) | 2014-09-16 → 2014-09-29 (+13d) |  |
| 10 | **ZONE - 1** | 2013-11-12 → 2013-11-25 (+13d) | 2014-07-24 → 2014-08-10 (+17d) |  |
| 10 | **INFRASTRUCTURE WORKS** | 2013-11-12 → 2013-11-25 (+13d) | 2014-07-24 → 2014-08-10 (+17d) |  |
| 10 | **DRAINAGE LINES** | 2013-11-12 → 2013-11-25 (+13d) | 2014-01-01 → 2014-01-14 (+13d) |  |
| DUKHCONI2AZ1DRGL5115 | Excavation for Drainage line | 2013-11-12 → 2013-11-25 (+13d) | 2013-12-10 → 2013-12-24 (+14d) | -63d → -74d |
| DUKHCONI2AZ1DRGL5120 | Laying of Drainage line | 2013-11-19 → 2013-12-02 (+13d) | 2013-12-17 → 2013-12-31 (+14d) | -63d → -74d |
| DUKHCONI2AZ1DRGL5125 | Testing of Drainage line | 2013-11-27 → 2013-12-10 (+13d) | 2013-12-26 → 2014-01-08 (+13d) | -63d → -74d |
| DUKHCONI2AZ1DRGL5130 | Backfilling Drainage line | 2013-12-15 → 2013-12-29 (+14d) | 2014-01-01 → 2014-01-14 (+13d) | -63d → -74d |
| 15 | **MANHOLES & SOAKAWAY** | 2013-12-15 → 2013-12-29 (+14d) | 2014-03-08 → 2014-03-20 (+12d) |  |
| DUKHCONI2AZ1SAGL5135 | Construction of manholes Drainage | 2013-12-15 → 2013-12-29 (+14d) | 2014-01-13 → 2014-01-26 (+13d) | -1d → -12d |
| DUKHCONI2AZ1SAGL5140 | Construction of soakaways | 2013-12-15 → 2013-12-29 (+14d) | 2014-01-13 → 2014-01-26 (+13d) | -62d → -73d |
| DUKHCONI2AZ1SAGL5145 | Construction of Road gullies | 2014-01-14 → 2014-01-27 (+13d) | 2014-02-12 → 2014-02-25 (+13d) | -62d → -73d |
| DUKHCONI2AZ1SAGL5150 | Connection with existing sewer manhole | 2014-02-13 → 2014-02-26 (+13d) | 2014-03-08 → 2014-03-20 (+12d) | -26d → -37d |
| 20 | **WATER SUPPLY SYSTEM** | 2013-12-28 → 2014-01-09 (+12d) | 2014-03-13 → 2014-03-26 (+13d) |  |
| DUKHCONI2AZ1WSGL5155 | Excavation for water line | 2013-12-28 → 2014-01-09 (+12d) | 2014-01-25 → 2014-02-06 (+12d) | -62d → -73d |
| DUKHCONI2AZ1WSGL5160 | Laying of water line | 2014-01-02 → 2014-01-15 (+13d) | 2014-01-30 → 2014-02-13 (+14d) | -62d → -73d |
| DUKHCONI2AZ1WSGL5165 | Testing of potable water line | 2014-01-08 → 2014-01-21 (+13d) | 2014-02-05 → 2014-02-19 (+14d) | -62d → -73d |
| DUKHCONI2AZ1WSGL5170 | Backfilling potable water line | 2014-01-14 → 2014-01-27 (+13d) | 2014-02-12 → 2014-02-25 (+13d) | -62d → -73d |
| DUKHCONI2AZ1WSGL5175 | Construction of valve chambers & Thrust Blocks | 2014-01-20 → 2014-02-02 (+13d) | 2014-02-18 → 2014-03-03 (+13d) | -31d → -42d |
| DUKHCONI2AZ1WSGL5180 | Installation of meter ,Accessories & Connection | 2014-02-19 → 2014-03-04 (+13d) | 2014-03-13 → 2014-03-26 (+13d) | -31d → -42d |
| 25 | **FIREFIGHTING LINES** | 2014-01-20 → 2014-02-02 (+13d) | 2014-03-22 → 2014-04-03 (+12d) |  |
| DUKHCONI2AZ1FFGL5185 | Excavation for firefighting line | 2014-01-20 → 2014-02-02 (+13d) | 2014-02-18 → 2014-03-03 (+13d) | -62d → -73d |
| DUKHCONI2AZ1FFGL5190 | Laying of firefighting line | 2014-01-28 → 2014-02-10 (+13d) | 2014-02-26 → 2014-03-11 (+13d) | -62d → -73d |
| DUKHCONI2AZ1FFGL5195 | Testing of firefighting line | 2014-02-03 → 2014-02-17 (+14d) | 2014-03-04 → 2014-03-17 (+13d) | -62d → -73d |
| DUKHCONI2AZ1FFGL5200 | Backfilling firefighting line | 2014-02-09 → 2014-02-23 (+14d) | 2014-03-10 → 2014-03-23 (+13d) | -62d → -73d |
| DUKHCONI2AZ1FFGL5205 | Construction of valve chambers & Thrust Blocks | 2014-02-16 → 2014-03-01 (+13d) | 2014-03-16 → 2014-03-29 (+13d) | -38d → -49d |
| DUKHCONI2AZ1FFGL5210 | Connection with existing Firewater System | 2014-02-22 → 2014-03-06 (+12d) | 2014-03-22 → 2014-04-03 (+12d) | -38d → -49d |
| 30 | **ELECTRICAL LINES** | 2014-02-18 → 2014-03-03 (+13d) | 2014-04-13 → 2014-04-26 (+13d) |  |
| DUKHCONI2AZ1ELGL5215 | Excavation Cable Trenches & Duct Banks | 2014-02-18 → 2014-03-03 (+13d) | 2014-03-18 → 2014-03-31 (+13d) | -60d → -71d |
| DUKHCONI2AZ1ELGL5220 | Laying of electrical cables | 2014-02-24 → 2014-03-09 (+13d) | 2014-03-24 → 2014-04-06 (+13d) | -57d → -68d |
| DUKHCONI2AZ1ELGL5225 | Backfilling Electrical trench | 2014-03-04 → 2014-03-17 (+13d) | 2014-04-01 → 2014-04-14 (+13d) | -57d → -68d |
| DUKHCONI2AZ1ELGL5230 | Construction of Submain Board & Feeder Pillar | 2014-03-16 → 2014-03-29 (+13d) | 2014-04-13 → 2014-04-26 (+13d) | -12d → -23d |
| 35 | **STREET LIGHTING** | 2014-02-18 → 2014-03-03 (+13d) | 2014-05-12 → 2014-05-25 (+13d) |  |
| DUKHCONI2AZ1STGL5235 | Excavation for Street lighting | 2014-02-18 → 2014-03-03 (+13d) | 2014-03-18 → 2014-03-31 (+13d) | -60d → -71d |
| DUKHCONI2AZ1STGL5240 | Construction of Duct Banks | 2014-02-24 → 2014-03-09 (+13d) | 2014-03-24 → 2014-04-06 (+13d) | -60d → -71d |
| DUKHCONI2AZ1STGL5245 | Construction of Foundation | 2014-02-24 → 2014-03-09 (+13d) | 2014-03-24 → 2014-04-06 (+13d) | -60d → -71d |
| DUKHCONI2AZ1STGL5250 | Backfilling Street Lighting | 2014-03-02 → 2014-03-15 (+13d) | 2014-03-30 → 2014-04-12 (+13d) | -60d → -71d |
| DUKHCONI2AZ1STGL5255 | Installation of light Post | 2014-03-13 → 2014-03-26 (+13d) | 2014-04-10 → 2014-04-23 (+13d) | 8d → -3d |
| DUKHCONI2AZ1STGL5260 | Electrical Works | 2014-04-14 → 2014-04-27 (+13d) | 2014-05-12 → 2014-05-25 (+13d) | -12d → -23d |
| 40 | **IRRIGATION LINES** | 2014-04-02 → 2014-04-15 (+13d) | 2014-06-07 → 2014-06-19 (+12d) |  |
| DUKHCONI2AZ1IRGL5265 | Excavation for irrigation line | 2014-04-02 → 2014-04-15 (+13d) | 2014-04-30 → 2014-05-13 (+13d) | -34d → -45d |
| DUKHCONI2AZ1IRGL5270 | Laying of irrigationline | 2014-04-08 → 2014-04-21 (+13d) | 2014-05-06 → 2014-05-19 (+13d) | -34d → -45d |
| DUKHCONI2AZ1IRGL5275 | Testing of irrigation line | 2014-04-14 → 2014-04-27 (+13d) | 2014-05-12 → 2014-05-25 (+13d) | -34d → -45d |
| DUKHCONI2AZ1IRGL5280 | Backfilling irrigation line | 2014-04-20 → 2014-05-03 (+13d) | 2014-05-18 → 2014-05-31 (+13d) | -34d → -45d |
| DUKHCONI2AZ1IRGL5285 | Construction of Thrust Blocks,Pull boxes | 2014-05-01 → 2014-05-14 (+13d) | 2014-05-29 → 2014-06-11 (+13d) | -29d → -40d |
| DUKHCONI2AZ1IRGL5290 | Irrigation Fittings (Nozzle,Values) | 2014-05-10 → 2014-05-22 (+12d) | 2014-06-07 → 2014-06-19 (+12d) | -29d → -40d |
| 45 | **TELECOMMUNICATION LINES** | 2014-03-13 → 2014-03-26 (+13d) | 2014-04-28 → 2014-05-11 (+13d) |  |
| DUKHCONI2AZ1TCGL5295 | Excavation Telecommunication trenches | 2014-03-13 → 2014-03-26 (+13d) | 2014-04-05 → 2014-04-17 (+12d) | -60d → -71d |
| DUKHCONI2AZ1TCGL5300 | Laying of cables | 2014-03-19 → 2014-04-01 (+13d) | 2014-04-10 → 2014-04-23 (+13d) | -60d → -71d |
| DUKHCONI2AZ1TCGL5305 | Backfilling telecommunication trench | 2014-03-25 → 2014-04-07 (+13d) | 2014-04-16 → 2014-04-29 (+13d) | -60d → -71d |
| DUKHCONI2AZ1TCGL5310 | Connection & Installation | 2014-04-06 → 2014-04-19 (+13d) | 2014-04-28 → 2014-05-11 (+13d) | 5d → -6d |
| 50 | **BOUNDARY WALL** | 2014-03-13 → 2014-03-26 (+13d) | 2014-06-07 → 2014-06-19 (+12d) |  |
| DUKHCONI2AZ1BWGL5315 | Construction of Boundary Wall (Ht-3m) | 2014-03-13 → 2014-03-26 (+13d) | 2014-04-10 → 2014-04-23 (+13d) | -34d → -45d |
| DUKHCONI2AZ1BWGL5320 | Install.Steel Gate,Entance Barrier (3m Wall) | 2014-03-30 → 2014-04-12 (+13d) | 2014-04-27 → 2014-05-10 (+13d) | -34d → -45d |
| DUKHCONI2AZ1BWGL5325 | Const. of Villa Front Boundary Wall (Ht-2m) | 2014-04-28 → 2014-05-11 (+13d) | 2014-05-26 → 2014-06-08 (+13d) | -34d → -45d |
| DUKHCONI2AZ1BWGL5330 | Const. of Blockwork fence Wall (Ht-1.85m) | 2014-05-10 → 2014-05-22 (+12d) | 2014-06-07 → 2014-06-19 (+12d) | -6d → -17d |
| 55 | **ROAD WORKS** | 2014-04-17 → 2014-04-30 (+13d) | 2014-07-01 → 2014-07-14 (+13d) |  |
| DUKHCONI2AZ1RWGL6000 | Excavation & Earth Filling | 2014-04-17 → 2014-04-30 (+13d) | 2014-04-28 → 2014-05-11 (+13d) | -60d → -71d |
| DUKHCONI2AZ1RWGL6005 | Laying of Sub Grade | 2014-04-29 → 2014-05-12 (+13d) | 2014-05-27 → 2014-06-09 (+13d) | -60d → -71d |
| DUKHCONI2AZ1RWGL6010 | Laying of Precast Kerbs | 2014-05-11 → 2014-05-24 (+13d) | 2014-06-08 → 2014-06-21 (+13d) | -60d → -71d |
| DUKHCONI2AZ1RWGL6015 | Laying of Granular Sub Base Coarse | 2014-05-22 → 2014-06-04 (+13d) | 2014-06-14 → 2014-06-26 (+12d) | -60d → -71d |
| DUKHCONI2AZ1RWGL6020 | Laying of Road Base Asphalt Concrete | 2014-06-15 → 2014-06-28 (+13d) | 2014-06-19 → 2014-07-02 (+13d) | -42d → -53d |
| DUKHCONI2AZ1RWGL6025 | Laying of Asphalt Wearing Coarse | 2014-06-21 → 2014-07-03 (+12d) | 2014-06-25 → 2014-07-08 (+13d) | -30d → -41d |
| DUKHCONI2AZ1RWGL6030 | Traffic Signage & Road Marking | 2014-06-26 → 2014-07-09 (+13d) | 2014-07-01 → 2014-07-14 (+13d) | -27d → -38d |
| 60 | **PARKING SHED** | 2014-05-28 → 2014-06-10 (+13d) | 2014-07-24 → 2014-08-10 (+17d) |  |

| ID | Task | Start | Finish | Total float |
| --- | --- | --- | --- | --- |
| DUKHCONI2AZ1PSGL7000 | Excavation | 2014-05-28 → 2014-06-10 (+13d) | 2014-06-14 → 2014-06-26 (+12d) | -37d → -48d |
| DUKHCONI2AZ1PSGL7005 | Foundation casting | 2014-06-09 → 2014-06-22 (+13d) | 2014-06-25 → 2014-07-08 (+13d) | -42d → -53d |
| DUKHCONI2AZ1PSGL7010 | Column, Frame& Fabrics Erection | 2014-06-21 → 2014-07-03 (+12d) | 2014-07-19 → 2014-07-31 (+12d) | -42d → -53d |
| DUKHCONI2AZ1PSGL7015 | Electrical Works-Parking Shed | 2014-06-26 → 2014-07-09 (+13d) | 2014-07-24 → 2014-08-10 (+17d) | -42d → -53d |
| 65 | **HARD LANDSCAPING** | 2014-04-17 → 2014-04-30 (+13d) | 2014-07-07 → 2014-07-20 (+13d) |  |
| DUKHCONI2AZ1HDGL7020 | Precast Concrete Kerbs works | 2014-04-17 → 2014-04-30 (+13d) | 2014-05-10 → 2014-05-22 (+12d) | -40d → -51d |
| DUKHCONI2AZ1HDGL7025 | Interlocking for Walkways | 2014-04-29 → 2014-05-12 (+13d) | 2014-05-27 → 2014-06-09 (+13d) | -40d → -51d |
| DUKHCONI2AZ1HDGL7030 | Construction of Retaining wall | 2014-05-11 → 2014-05-24 (+13d) | 2014-06-08 → 2014-06-21 (+13d) | -40d → -51d |
| DUKHCONI2AZ1HDGL7035 | Construction of Wash Stone Boulders | 2014-05-11 → 2014-05-24 (+13d) | 2014-06-08 → 2014-06-21 (+13d) | -40d → -51d |
| DUKHCONI2AZ1HDGL7040 | Construction of Speed Humps | 2014-06-26 → 2014-07-09 (+13d) | 2014-07-07 → 2014-07-20 (+13d) | -30d → -41d |
| 70 | **SOFT LANDSCAPING** | 2014-05-22 → 2014-06-04 (+13d) | 2014-07-13 → 2014-07-26 (+13d) |  |
| DUKHCONI2AZ1SLGL7200 | Excavation | 2014-05-22 → 2014-06-04 (+13d) | 2014-06-19 → 2014-07-02 (+13d) | -40d → -51d |
| DUKHCONI2AZ1SLGL7205 | Sweet Soil Laying | 2014-06-03 → 2014-06-16 (+13d) | 2014-07-01 → 2014-07-14 (+13d) | -40d → -51d |
| DUKHCONI2AZ1SLGL7210 | Plantation works | 2014-06-15 → 2014-06-28 (+13d) | 2014-07-13 → 2014-07-26 (+13d) | -30d → -41d |
| 15 | **ZONE - 2** | 2014-01-02 → 2014-01-15 (+13d) | 2014-09-16 → 2014-09-29 (+13d) |  |
| 10 | **INFRASTRUCTURE WORKS** | 2014-01-02 → 2014-01-15 (+13d) | 2014-09-16 → 2014-09-29 (+13d) |  |
| 10 | **DRAINAGE LINES** | 2014-01-02 → 2014-01-15 (+13d) | 2014-02-22 → 2014-03-06 (+12d) |  |
| DUKHCONI2AZ2DRGL5115 | Excavation for Drainage line | 2014-01-02 → 2014-01-15 (+13d) | 2014-01-30 → 2014-02-13 (+14d) | -63d → -74d |
| DUKHCONI2AZ2DRGL5120 | Laying of Drainage line | 2014-01-09 → 2014-01-22 (+13d) | 2014-02-06 → 2014-02-20 (+14d) | -63d → -74d |
| DUKHCONI2AZ2DRGL5125 | Testing of Drainage line | 2014-01-18 → 2014-01-30 (+12d) | 2014-02-16 → 2014-03-01 (+13d) | -63d → -74d |
| DUKHCONI2AZ2DRGL5130 | Backfilling Drainage line | 2014-02-04 → 2014-02-18 (+14d) | 2014-02-22 → 2014-03-06 (+12d) | -63d → -74d |
| 15 | **MANHOLES & SOAKAWAY** | 2014-02-04 → 2014-02-18 (+14d) | 2014-04-27 → 2014-05-10 (+13d) |  |
| DUKHCONI2AZ2SAGL5135 | Construction of manholes Drainage | 2014-02-04 → 2014-02-18 (+14d) | 2014-03-05 → 2014-03-18 (+13d) | -4d → -15d |
| DUKHCONI2AZ2SAGL5140 | Construction of soakaways | 2014-02-04 → 2014-02-18 (+14d) | 2014-03-05 → 2014-03-18 (+13d) | -63d → -74d |
| DUKHCONI2AZ2SAGL5145 | Construction of Road gullies | 2014-03-06 → 2014-03-19 (+13d) | 2014-04-03 → 2014-04-16 (+13d) | -63d → -74d |
| DUKHCONI2AZ2SAGL5150 | Connection with existing sewer manhole | 2014-04-05 → 2014-04-17 (+12d) | 2014-04-27 → 2014-05-10 (+13d) | -29d → -40d |
| 20 | **WATER SUPPLY SYSTEM** | 2014-02-16 → 2014-03-01 (+13d) | 2014-05-03 → 2014-05-15 (+12d) |  |
| DUKHCONI2AZ2WSGL5155 | Excavation for water line | 2014-02-16 → 2014-03-01 (+13d) | 2014-03-16 → 2014-03-29 (+13d) | -62d → -73d |
| DUKHCONI2AZ2WSGL5160 | Laying of water line | 2014-02-22 → 2014-03-06 (+12d) | 2014-03-22 → 2014-04-03 (+12d) | -62d → -73d |
| DUKHCONI2AZ2WSGL5165 | Testing of potable water line | 2014-02-27 → 2014-03-12 (+13d) | 2014-03-27 → 2014-04-09 (+13d) | -62d → -73d |
| DUKHCONI2AZ2WSGL5170 | Backfilling potable water line | 2014-03-06 → 2014-03-19 (+13d) | 2014-04-03 → 2014-04-16 (+13d) | -63d → -74d |
| DUKHCONI2AZ2WSGL5175 | Construction of valve chambers & Thrust Blocks | 2014-03-12 → 2014-03-25 (+13d) | 2014-04-09 → 2014-04-22 (+13d) | -34d → -45d |
| DUKHCONI2AZ2WSGL5180 | Installation of meter ,Accessories & Connection | 2014-04-10 → 2014-04-23 (+13d) | 2014-05-03 → 2014-05-15 (+12d) | -34d → -45d |
| 25 | **FIREFIGHTING LINES** | 2014-03-12 → 2014-03-25 (+13d) | 2014-05-11 → 2014-05-24 (+13d) |  |
| DUKHCONI2AZ2FFGL5185 | Excavation for firefighting line | 2014-03-12 → 2014-03-25 (+13d) | 2014-04-09 → 2014-04-22 (+13d) | -63d → -74d |
| DUKHCONI2AZ2FFGL5190 | Laying of firefighting line | 2014-03-20 → 2014-04-02 (+13d) | 2014-04-17 → 2014-04-30 (+13d) | -63d → -74d |
| DUKHCONI2AZ2FFGL5195 | Testing of firefighting line | 2014-03-26 → 2014-04-08 (+13d) | 2014-04-23 → 2014-05-06 (+13d) | -63d → -74d |
| DUKHCONI2AZ2FFGL5200 | Backfilling firefighting line | 2014-04-01 → 2014-04-14 (+13d) | 2014-04-29 → 2014-05-12 (+13d) | -63d → -74d |
| DUKHCONI2AZ2FFGL5205 | Construction of valve chambers & Thrust Blocks | 2014-04-07 → 2014-04-20 (+13d) | 2014-05-05 → 2014-05-18 (+13d) | -41d → -52d |
| DUKHCONI2AZ2FFGL5210 | Connection with existing Firewater System | 2014-04-13 → 2014-04-26 (+13d) | 2014-05-11 → 2014-05-24 (+13d) | -41d → -52d |
| 30 | **ELECTRICAL LINES** | 2014-04-09 → 2014-04-22 (+13d) | 2014-06-02 → 2014-06-15 (+13d) |  |
| DUKHCONI2AZ2ELGL5215 | Excavation Cable Trenches & Duct Banks | 2014-04-09 → 2014-04-22 (+13d) | 2014-05-07 → 2014-05-20 (+13d) | -63d → -74d |
| DUKHCONI2AZ2ELGL5220 | Laying of electrical cables | 2014-04-15 → 2014-04-28 (+13d) | 2014-05-13 → 2014-05-26 (+13d) | -50d → -61d |
| DUKHCONI2AZ2ELGL5225 | Backfilling Electrical trench | 2014-04-23 → 2014-05-06 (+13d) | 2014-05-21 → 2014-06-03 (+13d) | -50d → -61d |
| DUKHCONI2AZ2ELGL5230 | Construction of Submain Board & Feeder Pillar | 2014-05-05 → 2014-05-18 (+13d) | 2014-06-02 → 2014-06-15 (+13d) | -30d → -41d |
| 35 | **STREET LIGHTING** | 2014-04-09 → 2014-04-22 (+13d) | 2014-07-01 → 2014-07-14 (+13d) |  |
| DUKHCONI2AZ2STGL5235 | Excavation for Street lighting | 2014-04-09 → 2014-04-22 (+13d) | 2014-05-07 → 2014-05-20 (+13d) | -63d → -74d |
| DUKHCONI2AZ2STGL5240 | Construction of Duct Banks | 2014-04-15 → 2014-04-28 (+13d) | 2014-05-13 → 2014-05-26 (+13d) | -63d → -74d |
| DUKHCONI2AZ2STGL5245 | Construction of Foundation | 2014-04-15 → 2014-04-28 (+13d) | 2014-05-13 → 2014-05-26 (+13d) | -63d → -74d |
| DUKHCONI2AZ2STGL5250 | Backfilling Street Lighting | 2014-04-21 → 2014-05-04 (+13d) | 2014-05-19 → 2014-06-01 (+13d) | -63d → -74d |
| DUKHCONI2AZ2STGL5255 | Installation of light Post | 2014-05-03 → 2014-05-15 (+12d) | 2014-05-31 → 2014-06-12 (+12d) | -10d → -21d |
| DUKHCONI2AZ2STGL5260 | Electrical Works | 2014-06-03 → 2014-06-16 (+13d) | 2014-07-01 → 2014-07-14 (+13d) | -30d → -41d |
| 40 | **IRRIGATION LINES** | 2014-05-22 → 2014-06-04 (+13d) | 2014-07-27 → 2014-08-12 (+16d) |  |
| DUKHCONI2AZ2IRGL5265 | Excavation for irrigation line | 2014-05-22 → 2014-06-04 (+13d) | 2014-06-19 → 2014-07-02 (+13d) | -37d → -48d |
| DUKHCONI2AZ2IRGL5270 | Laying of irrigationline | 2014-05-28 → 2014-06-10 (+13d) | 2014-06-25 → 2014-07-08 (+13d) | -37d → -48d |
| DUKHCONI2AZ2IRGL5275 | Testing of irrigation line | 2014-06-03 → 2014-06-16 (+13d) | 2014-07-01 → 2014-07-14 (+13d) | -37d → -48d |
| DUKHCONI2AZ2IRGL5280 | Backfilling irrigation line | 2014-06-09 → 2014-06-22 (+13d) | 2014-07-07 → 2014-07-20 (+13d) | -37d → -48d |
| DUKHCONI2AZ2IRGL5285 | Construction of Thrust Blocks,Pull boxes | 2014-06-21 → 2014-07-03 (+12d) | 2014-07-19 → 2014-07-31 (+12d) | -37d → -48d |
| DUKHCONI2AZ2IRGL5290 | Irrigation Fittings (Nozzle,Values) | 2014-06-29 → 2014-07-12 (+13d) | 2014-07-27 → 2014-08-12 (+16d) | -37d → -48d |
| 45 | **TELECOMMUNICATION LINES** | 2014-05-03 → 2014-05-15 (+12d) | 2014-06-17 → 2014-06-30 (+13d) |  |
| DUKHCONI2AZ2TCGL5295 | Excavation Telecommunication trenches | 2014-05-03 → 2014-05-15 (+12d) | 2014-05-25 → 2014-06-07 (+13d) | -63d → -74d |
| DUKHCONI2AZ2TCGL5300 | Laying of cables | 2014-05-08 → 2014-05-21 (+13d) | 2014-05-31 → 2014-06-12 (+12d) | -63d → -74d |
| DUKHCONI2AZ2TCGL5305 | Backfilling telecommunication trench | 2014-05-14 → 2014-05-27 (+13d) | 2014-06-05 → 2014-06-18 (+13d) | -63d → -74d |
| DUKHCONI2AZ2TCGL5310 | Connection & Installation | 2014-05-26 → 2014-06-08 (+13d) | 2014-06-17 → 2014-06-30 (+13d) | -18d → -29d |
| 50 | **BOUNDARY WALL** | 2014-05-03 → 2014-05-15 (+12d) | 2014-07-26 → 2014-08-11 (+16d) |  |
| DUKHCONI2AZ2BWGL5315 | Construction of Boundary Wall (Ht-3m) | 2014-05-03 → 2014-05-15 (+12d) | 2014-05-31 → 2014-06-12 (+12d) | -36d → -47d |
| DUKHCONI2AZ2BWGL5320 | Install.Steel Gate,Entance Barrier (3m Wall) | 2014-05-18 → 2014-05-31 (+13d) | 2014-06-15 → 2014-06-28 (+13d) | -36d → -47d |
| DUKHCONI2AZ2BWGL5325 | Const. of Villa Front Boundary Wall (Ht-2m) | 2014-06-16 → 2014-06-29 (+13d) | 2014-07-14 → 2014-07-27 (+13d) | -36d → -47d |
| DUKHCONI2AZ2BWGL5330 | Const. of Blockwork fence Wall (Ht-1.85m) | 2014-06-28 → 2014-07-10 (+12d) | 2014-07-26 → 2014-08-11 (+16d) | -23d → -34d |
| 55 | **ROAD WORKS** | 2014-06-07 → 2014-06-19 (+12d) | 2014-08-24 → 2014-09-06 (+13d) |  |

| ID | Task | Start | Finish | Complete | Total float | Other |
| --- | --- | --- | --- | --- | --- | --- |
| DUKHCONI2AZ2RWGL6000 | Excavation & Earth Filling | 2014-06-07 → 2014-06-19 (+12d) | 2014-06-17 → 2014-06-30 (+13d) |  | -63d → -74d |  |
| DUKHCONI2AZ2RWGL6005 | Laying of Sub Grade | 2014-06-18 → 2014-07-01 (+13d) | 2014-07-16 → 2014-07-29 (+13d) |  | -63d → -74d |  |
| DUKHCONI2AZ2RWGL6010 | Laying of Precast Kerbs | 2014-06-30 → 2014-07-13 (+13d) | 2014-07-28 → 2014-08-13 (+16d) |  | -63d → -74d |  |
| DUKHCONI2AZ2RWGL6015 | Laying of Granular Sub Base Coarse | 2014-07-12 → 2014-07-24 (+12d) | 2014-08-06 → 2014-08-19 (+13d) |  | -63d → -74d |  |
| DUKHCONI2AZ2RWGL6020 | Laying of Road Base Asphalt Concrete | 2014-08-07 → 2014-08-20 (+13d) | 2014-08-12 → 2014-08-25 (+13d) |  | -63d → -74d |  |
| DUKHCONI2AZ2RWGL6025 | Laying of Asphalt Wearing Coarse | 2014-08-13 → 2014-08-26 (+13d) | 2014-08-18 → 2014-08-31 (+13d) |  | -63d → -74d |  |
| DUKHCONI2AZ2RWGL6030 | Traffic Signage & Road Marking | 2014-08-19 → 2014-09-01 (+13d) | 2014-08-24 → 2014-09-06 (+13d) |  | -45d → -56d |  |
| 60 | **PARKING SHED** | 2014-07-17 → 2014-07-30 (+13d) | 2014-09-16 → 2014-09-29 (+13d) |  |  |  |
| DUKHCONI2AZ2PSGL7000 | Excavation | 2014-07-17 → 2014-07-30 (+13d) | 2014-08-06 → 2014-08-19 (+13d) |  | -55d → -66d |  |
| DUKHCONI2AZ2PSGL7005 | Foundation casting | 2014-07-29 → 2014-08-14 (+16d) | 2014-08-18 → 2014-08-31 (+13d) |  | -60d → -71d |  |
| DUKHCONI2AZ2PSGL7010 | Column, Frame& Fabrics Erection | 2014-08-13 → 2014-08-26 (+13d) | 2014-09-10 → 2014-09-23 (+13d) |  | -60d → -71d |  |
| DUKHCONI2AZ2PSGL7015 | Electrical Works-Parking Shed | 2014-08-19 → 2014-09-01 (+13d) | 2014-09-16 → 2014-09-29 (+13d) |  | -60d → -71d |  |
| 65 | **HARD LANDSCAPING** | 2014-06-07 → 2014-06-19 (+12d) | 2014-08-30 → 2014-09-11 (+12d) |  |  |  |
| DUKHCONI2AZ2HDGL7020 | Precast Concrete Kerbs works | 2014-06-07 → 2014-06-19 (+12d) | 2014-06-29 → 2014-07-12 (+13d) |  | -48d → -59d |  |
| DUKHCONI2AZ2HDGL7025 | Interlocking for Walkways | 2014-06-18 → 2014-07-01 (+13d) | 2014-07-16 → 2014-07-29 (+13d) |  | -48d → -59d |  |
| DUKHCONI2AZ2HDGL7030 | Construction of Retaining wall | 2014-06-30 → 2014-07-13 (+13d) | 2014-07-28 → 2014-08-13 (+16d) |  | -48d → -59d |  |
| DUKHCONI2AZ2HDGL7035 | Construction of Wash Stone Boulders | 2014-06-30 → 2014-07-13 (+13d) | 2014-07-28 → 2014-08-13 (+16d) |  | -48d → -59d |  |
| DUKHCONI2AZ2HDGL7040 | Construction of Speed Humps | 2014-08-19 → 2014-09-01 (+13d) | 2014-08-30 → 2014-09-11 (+12d) |  | -63d → -74d |  |
| 70 | **SOFT LANDSCAPING** | 2014-07-12 → 2014-07-24 (+12d) | 2014-09-04 → 2014-09-17 (+13d) |  |  |  |
| DUKHCONI2AZ2SLGL7200 | Excavation for Landscaping | 2014-07-12 → 2014-07-24 (+12d) | 2014-08-12 → 2014-08-25 (+13d) |  | -48d → -59d |  |
| DUKHCONI2AZ2SLGL7205 | Sweet Soil Laying | 2014-07-23 → 2014-08-09 (+17d) | 2014-08-24 → 2014-09-06 (+13d) |  | -48d → -59d |  |
| DUKHCONI2AZ2SLGL7210 | Plantation works | 2014-08-07 → 2014-08-20 (+13d) | 2014-09-04 → 2014-09-17 (+13d) |  | -48d → -59d |  |
| 30 | **SECONDARY BUILDINGS** | 2014-01-26 → 2014-02-08 (+13d) | 2014-07-24 → 2014-08-10 (+17d) |  |  |  |
| 10 | **INFRASTRUCTURE WORKS** | 2014-01-26 → 2014-02-08 (+13d) | 2014-07-24 → 2014-08-10 (+17d) |  |  |  |
| 10 | **IRRIGATION WATER TANK & PUMP ROOM** | 2014-01-26 → 2014-02-08 (+13d) | 2014-07-24 → 2014-08-10 (+17d) |  |  |  |
| DUKHCONI2ASBIWGL7400 | Excavation | 2014-01-26 → 2014-02-08 (+13d) | 2014-02-12 → 2014-02-25 (+13d) |  | -35d → -46d |  |
| DUKHCONI2ASBIWGL7405 | Blinding & base waterproofing | 2014-02-13 → 2014-02-26 (+13d) | 2014-02-24 → 2014-03-09 (+13d) |  | -35d → -46d | resources BLINDING MASON SK [64 h]; LABOR- SUBCONTRACTOR [48 h]; LABOR- SUBCONTRACTOR [24 h]; BLINDING QTY [78 Sqm]; WATERPROOFING QTY [78 Sqm]; WATERPROOFING SPECIALIST SK [64 h] → CONCRETE MASON SK [64 h]; LABOR- SUBCONTRACTOR [48 h]; LABOR- SUBCONTRACTOR [24 h]; BLINDING QTY [78 Sqm]; WATERPROOFING QTY [78 Sqm]; WATERPROOFING SPECIALIST SK [64 h] |
| DUKHCONI2ASBIWGL7410 | Construction of Raft slab | 2014-02-25 → 2014-03-10 (+13d) | 2014-03-08 → 2014-03-20 (+12d) |  | -35d → -46d |  |
| DUKHCONI2ASBIWGL7415 | Construction of RCC Wall | 2014-03-09 → 2014-03-22 (+13d) | 2014-04-06 → 2014-04-19 (+13d) |  | -35d → -46d |  |
| DUKHCONI2ASBIWGL7420 | Construction of Roof Slab | 2014-04-07 → 2014-04-20 (+13d) | 2014-04-29 → 2014-05-12 (+13d) |  | -35d → -46d |  |
| DUKHCONI2ASBIWGL7425 | Waterproofing & Backfilling | 2014-04-30 → 2014-05-13 (+13d) | 2014-05-17 → 2014-05-29 (+12d) |  | -29d → -40d |  |
| DUKHCONI2ASBIWGL7950 | Laying of Interlock | 2014-05-18 → 2014-05-31 (+13d) | 2014-05-28 → 2014-06-10 (+13d) |  | -6d → -17d |  |
| DUKHCONI2ASBIWGL7430 | Floor screed | 2014-05-25 → 2014-06-07 (+13d) | 2014-05-29 → 2014-06-11 (+13d) |  | -35d → -46d |  |
| DUKHCONI2ASBIWGL7435 | Installation of Boundary Fences | 2014-05-29 → 2014-06-11 (+13d) | 2014-06-15 → 2014-06-28 (+13d) |  | -6d → -17d |  |
| DUKHCONI2ASBIWGL7440 | Plumbing , Drainage & Firefighting works | 2014-05-31 → 2014-06-12 (+12d) | 2014-06-28 → 2014-07-10 (+12d) |  | -35d → -46d |  |
| DUKHCONI2ASBIWGL7445 | AC Works | 2014-05-31 → 2014-06-12 (+12d) | 2014-06-28 → 2014-07-10 (+12d) |  | -35d → -46d |  |
| DUKHCONI2ASBIWGL7450 | Electrical Works | 2014-06-09 → 2014-06-22 (+13d) | 2014-07-07 → 2014-07-20 (+13d) |  | -35d → -46d |  |
| DUKHCONI2ASBIWGL7455 | Internal epoxy coating & Painting | 2014-07-08 → 2014-07-21 (+13d) | 2014-07-13 → 2014-07-26 (+13d) |  | -35d → -46d |  |
| DUKHCONI2ASBIWGL7460 | Installation of Steel Ladder | 2014-07-14 → 2014-07-27 (+13d) | 2014-07-19 → 2014-07-31 (+12d) |  | -35d → -46d |  |
| DUKHCONI2ASBIWGL7465 | Installation of G.I Handrails | 2014-07-20 → 2014-08-05 (+16d) | 2014-07-24 → 2014-08-10 (+17d) |  | -35d → -46d |  |
| 25 | **GAZEBO** | 2014-05-11 → 2014-05-24 (+13d) | 2014-07-07 → 2014-07-20 (+13d) |  |  |  |
| DUKHCONI2ASBGZGL7900 | Construction of Concrete structure | 2014-05-11 → 2014-05-24 (+13d) | 2014-06-02 → 2014-06-15 (+13d) |  | -40d → -51d |  |
| DUKHCONI2ASBGZGL7905 | Installation of Wooden Works | 2014-05-22 → 2014-06-04 (+13d) | 2014-06-19 → 2014-07-02 (+13d) |  | -40d → -51d |  |
| DUKHCONI2ASBGZGL7915 | Park Benches Installation | 2014-05-22 → 2014-06-04 (+13d) | 2014-06-08 → 2014-06-21 (+13d) |  | -30d → -41d |  |
| DUKHCONI2ASBGZGL7910 | Electrical Works-Gazebo | 2014-06-21 → 2014-07-03 (+12d) | 2014-07-07 → 2014-07-20 (+13d) |  | -40d → -51d |  |
| 20 | **ZONE - 3 (3 Twin Villas)** |  | 2014-07-13 → 2014-07-26 (+13d) |  |  |  |
| 10 | **STRUCTURAL WORKS** |  | 2014-01-05 → 2014-01-18 (+13d) |  |  |  |
| 10 | **SUB STRUCTURE** |  | 2013-07-29 → 2013-07-26 (-3d) |  |  |  |
| 10 | **UPTO GRADE SLAB** |  | 2013-07-29 → 2013-07-26 (-3d) |  |  |  |
| DUKHCONP2BZ3STUG1010 | Footing Blinding |  | 2013-05-05 A | 60% → 100% | -16d → none |  |
| DUKHCONP2BZ3STUG1015 | Footing Waterproofing & Screed |  | 2013-05-11 A | 35% → 100% | -16d → none |  |
| DUKHCONP2BZ3STUG1020 | Construction of foundations | 2013-04-28 A | 2013-05-20 A | 0% → 100% | -16d → none |  |
| DUKHCONP2BZ3STUG1025 | Construction of neck of columns | 2013-05-07 A | 2013-05-29 A | 0% → 100% | -16d → none |  |
| DUKHCONP2BZ3STUG1030 | Waterproofing Footing & Neck Column | 2013-05-16 A | 2013-06-08 A | 0% → 100% | -16d → none |  |
| DUKHCONP2BZ3STUG1035 | Backfilling Upto Grade Beam Bottom | 2013-05-28 A | 2013-06-19 A | 0% → 100% | -16d → none |  |
| DUKHCONP2BZ3STUG1040 | Construction of Grade Beams | 2013-06-09 A | 2013-07-07 A | 0% → 100% | -16d → none |  |
| DUKHCONP2BZ3STUG1045 | Construction of slab on grade | 2013-07-01 A | 2013-07-29 → 2013-07-26 A (-3d) | 0% → 100% | -14d → none |  |
| 15 | **SUPERSTRUCTURE** |  | 2014-01-05 → 2014-01-18 (+13d) |  |  |  |
| DUKHCONP2BZ3STGF2000 | Column-Rebar & Formwork | 2013-07-18 A | 2013-08-13 A | 0% → 100% | -14d → none |  |
| DUKHCONP2BZ3STGF2005 | Column-Concrete | 2013-07-29 A | 2013-08-18 A | 0% → 100% | -14d → none |  |
| DUKHCONP2BZ3STGF2010 | Beam, Stairs ,Slab-Rebar & Formwork | 2013-08-06 A | 2013-09-07 A | 0% → 100% | -14d → none |  |
| DUKHCONP2BZ3STGF2015 | Beam, Stairs ,Slab-Concrete | 2013-08-26 A | 2013-09-11 A | 0% → 100% | -14d → none |  |
| 20 | **ROOF** | 2013-12-05 → 2013-12-19 (+14d) | 2014-01-05 → 2014-01-18 (+13d) |  |  |  |
| DUKHCONP2BZ3STRF2060 | Construction of Parapets | 2013-12-05 → 2013-12-19 (+14d) | 2013-12-29 → 2014-01-11 (+13d) |  | -44d → -55d |  |
| DUKHCONP2BZ3STRF2065 | Construction of up stands/Plinth | 2013-12-12 → 2013-12-26 (+14d) | 2014-01-05 → 2014-01-18 (+13d) |  | -37d → -48d |  |
| 15 | **FINISHING WORKS** |  | 2014-06-14 → 2014-06-26 (+12d) |  |  |  |
| 10 | **INTERNAL FINISHES** |  | 2014-06-14 → 2014-06-26 (+12d) |  |  |  |
| 10 | **GROUND FLOOR** |  | 2014-06-14 → 2014-06-26 (+12d) |  |  |  |
| DUKHCONP2BZ3ARGF3000 | Block work | 2013-09-19 A | 2013-10-20 A | 0% → 100% | -14d → none |  |
| DUKHCONP2BZ3ARGF3005 | Plastering work | 2013-10-09 A |  | 0% → 72% |  |  |

| ID | Task | Start | Finish | Complete | Total float |
| --- | --- | --- | --- | --- | --- |
| DUKHCONP2BZ3ARGF3010 | Flooring screed | 2013-10-23 → 2013-11-02 (+10d) | 2013-11-14 → 2013-11-24 (+10d) |  | 19d → 11d |
| DUKHCONP2BZ3ARGF3015 | Wet area waterproofing & Protection Screed | 2013-10-26 → 2013-11-02 (+7d) | 2013-11-17 → 2013-11-24 (+7d) |  | 1d → -5d |
| DUKHCONP2BZ3ARGF3020 | Ceramic Wall Tiling | 2013-11-13 → 2013-11-20 (+7d) | 2013-11-30 → 2013-12-07 (+7d) |  | 1d → -5d |
| DUKHCONP2BZ3ARGF3025 | Porcelain Tile flooring | 2013-11-30 → 2013-12-07 (+7d) | 2013-12-23 → 2013-12-30 (+7d) |  | 1d → -5d |
| DUKHCONP2BZ3ARGF3030 | Paint First coat | 2014-02-06 → 2014-02-20 (+14d) | 2014-03-02 → 2014-03-15 (+13d) |  | -57d → -68d |
| DUKHCONP2BZ3ARGF3045 | Fixing of Suspension systems | 2014-03-02 → 2014-03-15 (+13d) | 2014-03-18 → 2014-03-31 (+13d) |  | -57d → -68d |
| DUKHCONP2BZ3ARGF3060 | Gypsum board false ceiling | 2014-03-18 → 2014-03-31 (+13d) | 2014-04-09 → 2014-04-22 (+13d) |  | -57d → -68d |
| DUKHCONP2BZ3ARGF3035 | Slate Tile Flooring & Skirting | 2014-03-26 → 2014-04-08 (+13d) | 2014-04-15 → 2014-04-28 (+13d) |  | -50d → -61d |
| DUKHCONP2BZ3ARGF3065 | Wooden door | 2014-04-07 → 2014-04-20 (+13d) | 2014-04-23 → 2014-05-06 (+13d) |  | -46d → -57d |
| DUKHCONP2BZ3ARGF3075 | Carpentry & Joinery Works | 2014-04-13 → 2014-04-26 (+13d) | 2014-05-03 → 2014-05-15 (+12d) |  | -46d → -57d |
| DUKHCONP2BZ3ARGF3040 | Cobble Tile flooring | 2014-04-14 → 2014-04-27 (+13d) | 2014-04-30 → 2014-05-13 (+13d) |  | -40d → -51d |
| DUKHCONP2BZ3ARGF3080 | Aluminum windows | 2014-04-24 → 2014-05-07 (+13d) | 2014-05-14 → 2014-05-27 (+13d) |  | -14d → -25d |
| DUKHCONP2BZ3ARGF3090 | Installation of Granite Counter Top | 2014-05-11 → 2014-05-24 (+13d) | 2014-05-27 → 2014-06-09 (+13d) |  | -55d → -66d |
| DUKHCONP2BZ3ARGF3095 | Final Painting | 2014-05-17 → 2014-05-29 (+12d) | 2014-06-14 → 2014-06-26 (+12d) |  | -25d → -36d |
| 15 | **EXTERNAL FINISHES** | 2014-01-14 → 2014-01-27 (+13d) | 2014-04-14 → 2014-04-27 (+13d) |  |  |
| 10 | **ROOF** | 2014-01-14 → 2014-01-27 (+13d) | 2014-03-17 → 2014-03-30 (+13d) |  |  |
| DUKHCONP2BZ3ARRF3625 | Laying of Pitched Roof | 2014-01-14 → 2014-01-27 (+13d) | 2014-02-12 → 2014-02-25 (+13d) |  | -33d → -44d |
| DUKHCONP2BZ3ARRF3630 | Leveling Screed for Waterproofing | 2014-01-28 → 2014-02-10 (+13d) | 2014-02-18 → 2014-03-03 (+13d) |  | -33d → -44d |
| DUKHCONP2BZ3ARRF3635 | Laying of Waterproofing Membrane | 2014-02-03 → 2014-02-17 (+14d) | 2014-02-24 → 2014-03-09 (+13d) |  | -33d → -44d |
| DUKHCONP2BZ3ARRF3640 | Installation of Insulation & Protection | 2014-02-08 → 2014-02-22 (+14d) | 2014-03-01 → 2014-03-13 (+12d) |  | -33d → -44d |
| DUKHCONP2BZ3ARRF3645 | Lime Stone Chips & Paving slab Installation | 2014-02-17 → 2014-03-02 (+13d) | 2014-03-09 → 2014-03-22 (+13d) |  | -33d → -44d |
| DUKHCONP2BZ3ARRF3660 | Installation of Access Ladder | 2014-02-23 → 2014-03-08 (+13d) | 2014-03-17 → 2014-03-30 (+13d) |  | 1d → -10d |
| 15 | **ELEVATION** | 2014-03-01 → 2014-03-13 (+12d) | 2014-04-14 → 2014-04-27 (+13d) |  |  |
| DUKHCONP2BZ3AREL3665 | External Plastering | 2014-03-01 → 2014-03-13 (+12d) | 2014-03-29 → 2014-04-10 (+12d) |  | -33d → -44d |
| DUKHCONP2BZ3AREL3680 | External Painting | 2014-03-23 → 2014-04-05 (+13d) | 2014-04-14 → 2014-04-27 (+13d) |  | -13d → -24d |
| 20 | **MEP WORKS** |  | 2014-06-03 → 2014-06-16 (+13d) |  |  |
| 10 | **ELECTRICAL WORKS** |  | 2014-05-27 → 2014-06-09 (+13d) |  |  |
| 10 | **GROUND FLOOR** |  | 2014-05-27 → 2014-06-09 (+13d) |  |  |
| DUKHCONP2BZ3ELGF4000 | Fixing of wall conduits & switch socket boxes | 2013-10-03 A | 2013-10-28 A | 0% → 100% | -11d → none |
| DUKHCONP2BZ3ELGF4005 | Cable tray & trunking installation | 2014-01-21 → 2014-02-03 (+13d) | 2014-02-13 → 2014-02-26 (+13d) |  | -50d → -61d |
| DUKHCONP2BZ3ELGF4010 | Installation of wiring & Main Cabling | 2014-01-29 → 2014-02-12 (+14d) | 2014-02-22 → 2014-03-06 (+12d) |  | -50d → -61d |
| DUKHCONP2BZ3ELGF4020 | Installation of DBS,MCCB Accessories. | 2014-03-26 → 2014-04-08 (+13d) | 2014-04-17 → 2014-04-30 (+13d) |  | -48d → -59d |
| DUKHCONP2BZ3ELGF4025 | Installation of Lighting fixtures & Accessories | 2014-04-07 → 2014-04-20 (+13d) | 2014-04-29 → 2014-05-12 (+13d) |  | -48d → -59d |
| DUKHCONP2BZ3ELGF4030 | Installation of Telephone System | 2014-04-07 → 2014-04-20 (+13d) | 2014-04-29 → 2014-05-12 (+13d) |  | -45d → -56d |
| DUKHCONP2BZ3ELGF4015 | Install. of CAMS & Fire Fighting Accessories | 2014-05-05 → 2014-05-18 (+13d) | 2014-05-27 → 2014-06-09 (+13d) |  | -50d → -61d |
| 20 | **ROOF** | 2014-04-21 → 2014-05-04 (+13d) | 2014-05-25 → 2014-06-07 (+13d) |  |  |
| DUKHCONP2BZ3ELRF4070 | Installation of Isolator | 2014-04-21 → 2014-05-04 (+13d) | 2014-05-11 → 2014-05-24 (+13d) |  | -48d → -59d |
| DUKHCONP2BZ3ELRF4075 | Installation of TV Dish Antenna | 2014-05-03 → 2014-05-15 (+12d) | 2014-05-25 → 2014-06-07 (+13d) |  | -48d → -59d |
| 15 | **PLUMBING, DRAINAGE & FIRE FIGHTING WORKS** |  | 2014-06-03 → 2014-06-16 (+13d) |  |  |
| 10 | **GROUND FLOOR** |  | 2014-06-03 → 2014-06-16 (+13d) |  |  |
| DUKHCONP2BZ3PLUG4300 | Drainage / Storm Pipes in Grade Slab | 2013-06-23 A | 2013-07-15 A | 0% → 100% | -14d → none |
| DUKHCONP2BZ3PLGF4305 | Installation of Plumbing pipes & testing | 2013-10-03 A | 2013-10-28 A | 0% → 100% | -11d → none |
| DUKHCONP2BZ3PLGF4310 | Installation of Drainage pipes &testing | 2013-10-06 A | 2013-10-28 A | 0% → 100% | 14d → none |
| DUKHCONP2BZ3PLGF4315 | Sanitary Fittings & Accessories | 2014-05-06 → 2014-05-19 (+13d) | 2014-05-28 → 2014-06-10 (+13d) |  | -56d → -67d |
| DUKHCONP2BZ3PLGF4320 | Installation of Water Heater | 2014-05-18 → 2014-05-31 (+13d) | 2014-06-03 → 2014-06-16 (+13d) |  | -16d → -27d |
| 20 | **ROOF** | 2014-03-20 → 2014-04-02 (+13d) | 2014-04-06 → 2014-04-19 (+13d) |  |  |
| DUKHCONP2BZ3PLRF4350 | Installation of Rain water Pipes | 2014-03-20 → 2014-04-02 (+13d) | 2014-04-06 → 2014-04-19 (+13d) |  | -23d → -34d |
| 20 | **AC WORKS** | 2014-02-03 → 2014-02-17 (+14d) | 2014-05-24 → 2014-06-05 (+12d) |  |  |
| 10 | **GROUND FLOOR** | 2014-02-03 → 2014-02-17 (+14d) | 2014-05-18 → 2014-05-31 (+13d) |  |  |
| DUKHCONP2BZ3ACGF4600 | Installation AC Pipes | 2014-02-03 → 2014-02-17 (+14d) | 2014-02-26 → 2014-03-11 (+13d) |  | -35d → -46d |
| DUKHCONP2BZ3ACGF4605 | Fixing of Ventilation Equipments | 2014-04-03 → 2014-04-16 (+13d) | 2014-05-01 → 2014-05-14 (+13d) |  | -47d → -58d |
| DUKHCONP2BZ3ACGF4610 | Fixing of Split AC | 2014-04-26 → 2014-05-08 (+12d) | 2014-05-18 → 2014-05-31 (+13d) |  | -47d → -58d |
| 20 | **ROOF** | 2014-03-05 → 2014-03-18 (+13d) | 2014-05-24 → 2014-06-05 (+12d) |  |  |
| DUKHCONP2BZ3ACRF4630 | Installation of Refrigerant Pipes | 2014-03-05 → 2014-03-18 (+13d) | 2014-03-27 → 2014-04-09 (+13d) |  | -8d → -19d |
| DUKHCONP2BZ3ACRF4635 | Installation of Condensing Unit | 2014-05-01 → 2014-05-14 (+13d) | 2014-05-24 → 2014-06-05 (+12d) |  | -47d → -58d |
| 25 | **EXTERNAL WORKS** | 2013-12-19 → 2014-01-01 (+13d) | 2014-05-13 → 2014-05-26 (+13d) |  |  |
| 10 | **MISCELLANEOUS** | 2013-12-19 → 2014-01-01 (+13d) | 2014-03-16 → 2014-03-29 (+13d) |  |  |
| DUKHCONP2BZ3MSEX5000 | Construction of Manholes | 2013-12-19 → 2014-01-01 (+13d) | 2014-01-16 → 2014-01-29 (+13d) |  | -37d → -48d |
| DUKHCONP2BZ3MSEX5005 | Construction of Soak pit, Chambers | 2014-01-02 → 2014-01-15 (+13d) | 2014-01-30 → 2014-02-13 (+14d) |  | -27d → -38d |
| DUKHCONP2BZ3MSEX5015 | Construction of grease Trap | 2014-01-22 → 2014-02-04 (+13d) | 2014-02-15 → 2014-02-27 (+12d) |  | -27d → -38d |
| DUKHCONP2BZ3MSEX5020 | Construction Entrance Ramp | 2014-01-22 → 2014-02-04 (+13d) | 2014-02-15 → 2014-02-27 (+12d) |  | -33d → -44d |
| DUKHCONP2BZ3MSEX5055 | Installation Steel Door | 2014-02-03 → 2014-02-17 (+14d) | 2014-02-26 → 2014-03-11 (+13d) |  | -33d → -44d |
| DUKHCONP2BZ3MSEX5010 | Telephone cable laying | 2014-02-16 → 2014-03-01 (+13d) | 2014-03-16 → 2014-03-29 (+13d) |  | -27d → -38d |
| DUKHCONP2BZ3MSEX5025 | SS.Handrails and Balustrades | 2014-02-16 → 2014-03-01 (+13d) | 2014-03-10 → 2014-03-23 (+13d) |  | -33d → -44d |
| 15 | **WATER TANK ENCLOSURE** | 2014-01-26 → 2014-02-08 (+13d) | 2014-05-13 → 2014-05-26 (+13d) |  |  |
| DUKHCONP2BZ3WEEX5030 | Excavation | 2014-01-26 → 2014-02-08 (+13d) | 2014-02-18 → 2014-03-03 (+13d) |  | -48d → -59d |
| DUKHCONP2BZ3WEEX5035 | Construction of Raft | 2014-02-03 → 2014-02-17 (+14d) | 2014-03-04 → 2014-03-17 (+13d) |  | -48d → -59d |
| DUKHCONP2BZ3WEEX5040 | Block works & Plastering | 2014-02-13 → 2014-02-26 (+13d) | 2014-03-13 → 2014-03-26 (+13d) |  | -28d → -39d |
| DUKHCONP2BZ3WEEX5045 | Flooring & Painting | 2014-02-25 → 2014-03-10 (+13d) | 2014-03-25 → 2014-04-07 (+13d) |  | -28d → -39d |
| DUKHCONP2BZ3MSEX5335 | Aluminum Roll-up Shutter with 2m Wall | 2014-02-16 → 2014-03-12 (+24d) | 2014-03-16 → 2014-04-09 (+24d) |  | 27d → 6d |

| ID | Task | Start | Finish | Duration | Complete | Total float | Other |
| --- | --- | --- | --- | --- | --- | --- | --- |
| DUKHCONP2BZ3WEEX5050 | Installation of Steel Gate | 2014-03-15 → 2014-03-27 (+12d) | 2014-04-06 → 2014-04-19 (+13d) |  |  | -28d → -39d |  |
| DUKHCONP2BZ3WEEX5060 | Structural steel & SS Shed cover installation | 2014-03-20 → 2014-04-02 (+13d) | 2014-04-17 → 2014-04-30 (+13d) |  |  | -28d → -39d |  |
| DUKHCONP2BZ3WEEX5065 | Install. of Water Tank,Chiller,Pump & Meter | 2014-04-13 → 2014-04-26 (+13d) | 2014-05-11 → 2014-05-24 (+13d) |  |  | -38d → -49d |  |
| DUKHCONP2BZ3WEEX5070 | Installation ladder for water Tank | 2014-04-21 → 2014-05-04 (+13d) | 2014-05-13 → 2014-05-26 (+13d) |  |  | -38d → -49d |  |
| 20 | **HARD LANDSCAPING** | 2014-02-24 → 2014-03-09 (+13d) | 2014-04-14 → 2014-04-27 (+13d) |  |  |  |  |
| DUKHCONP2BZ3HDEX5090 | kerb works | 2014-02-24 → 2014-03-09 (+13d) | 2014-03-18 → 2014-03-31 (+13d) |  |  | -33d → -44d |  |
| DUKHCONP2BZ3HDEX5095 | Cobble Stone Works | 2014-03-08 → 2014-03-20 (+12d) | 2014-03-30 → 2014-04-12 (+13d) |  |  | -33d → -44d |  |
| DUKHCONP2BZ3HDEX5100 | Interlock works | 2014-03-23 → 2014-04-05 (+13d) | 2014-04-14 → 2014-04-27 (+13d) |  |  | -33d → -44d |  |
| 25 | **SOFT LANDSCAPING** | 2014-04-03 → 2014-04-16 (+13d) | 2014-05-07 → 2014-05-20 (+13d) |  |  |  |  |
| DUKHCONP2BZ3SLEX5105 | Laying of Grass/ green area | 2014-04-03 → 2014-04-16 (+13d) | 2014-04-26 → 2014-05-08 (+12d) |  |  | -33d → -44d |  |
| DUKHCONP2BZ3SLEX5110 | Laying of Palm tree | 2014-04-15 → 2014-04-28 (+13d) | 2014-05-07 → 2014-05-20 (+13d) |  |  | 7d → -4d |  |
| 30 | **TESTING AND COMMISSIONING** | 2014-06-15 → 2014-06-28 (+13d) | 2014-07-13 → 2014-07-26 (+13d) |  |  |  |  |
| DUKHCONP2BZ3ACTC8000 | Pre-Commissioning & Testing of AC Works | 2014-06-15 → 2014-06-28 (+13d) | 2014-07-13 → 2014-07-26 (+13d) |  |  | -25d → -36d |  |
| DUKHCONP2BZ3ELTC8010 | Pre-Commissioning & Testing of Electrical Works | 2014-06-15 → 2014-06-28 (+13d) | 2014-07-13 → 2014-07-26 (+13d) |  |  | -25d → -36d |  |
| DUKHCONP2BZ3PLTC8005 | Pre-Commissioning & Testing of Plumbing Works | 2014-06-15 → 2014-06-28 (+13d) | 2014-07-13 → 2014-07-26 (+13d) |  |  | -25d → -36d |  |
| 25 | **ZONE- 4 (3 Twin Villas)** |  | 2014-07-30 → 2014-08-16 (+17d) |  |  |  |  |
| 10 | **STRUCTURAL WORKS** |  | 2014-01-28 → 2014-02-10 (+13d) |  |  |  |  |
| 10 | **SUB STRUCTURE** |  | 2013-09-02 → 2013-09-07 (+5d) |  |  |  |  |
| 10 | **UPTO GRADE SLAB** |  | 2013-09-02 → 2013-09-07 (+5d) |  |  |  |  |
| DUKHCONP2BZ4STUG1000 | Footing Excavation | 2013-04-27 A | 2013-05-25 A |  | 0% → 100% | -15d → none |  |
| DUKHCONP2BZ4STUG1005 | Footing Antitermite | 2013-05-08 A | 2013-05-30 A |  | 0% → 100% | -15d → none |  |
| DUKHCONP2BZ4STUG1010 | Footing Blinding | 2013-05-11 A | 2013-06-02 → 2013-06-01 A (-1d) |  | 0% → 100% | -15d → none |  |
| DUKHCONP2BZ4STUG1015 | Footing Waterproofing & Screed | 2013-05-16 A | 2013-06-08 A |  | 0% → 100% | -15d → none |  |
| DUKHCONP2BZ4STUG1020 | Construction of foundations | 2013-05-26 → 2013-06-01 A (+6d) | 2013-06-17 A | 20d → 15d | 0% → 100% | -15d → none |  |
| DUKHCONP2BZ4STUG1025 | Construction of neck of columns | 2013-06-04 → 2013-06-10 A (+6d) | 2013-06-26 → 2013-07-02 A (+6d) |  | 0% → 100% | -15d → none |  |
| DUKHCONP2BZ4STUG1030 | Waterproofing Footing & Neck Column | 2013-06-13 → 2013-06-19 A (+6d) | 2013-07-06 → 2013-07-11 A (+5d) |  | 0% → 100% | -15d → none |  |
| DUKHCONP2BZ4STUG1035 | Backfilling Upto Grade Beam Bottom | 2013-06-25 → 2013-07-01 A (+6d) | 2013-07-17 → 2013-07-23 A (+6d) |  | 0% → 100% | -15d → none |  |
| DUKHCONP2BZ4STUG1040 | Construction of Grade Beams | 2013-07-08 → 2013-07-13 A (+5d) | 2013-08-05 → 2013-08-13 A (+8d) |  | 0% → 100% | -16d → none |  |
| DUKHCONP2BZ4STUG1045 | Construction of slab on grade | 2013-08-01 → 2013-08-06 A (+5d) | 2013-09-02 → 2013-09-07 A (+5d) |  | 0% → 100% | -16d → none | resources BLINDING MASON SK [508 h]; STEEL FIXERS SK [205 h]; CONCRETE MASON SK [168 h]; LABOR- SUBCONTRACTOR [660.75 h]; BLINDING QTY [634 Sqm]; CONCRETE QTY [84 Cum]; WELDED WIRE MESH [768 Sqm] → CONCRETE MASON SK [508 h]; STEEL FIXERS SK [205 h]; CONCRETE MASON SK [168 h]; LABOR- SUBCONTRACTOR [660.75 h]; BLINDING QTY [634 Sqm]; CONCRETE QTY [84 Cum]; WELDED WIRE MESH [768 Sqm] |
| 15 | **SUPERSTRUCTURE** | 2013-08-22 → 2013-08-27 (+5d) | 2014-01-28 → 2014-02-10 (+13d) |  |  |  |  |
| 10 | **GROUND FLOOR** | 2013-08-22 → 2013-08-27 (+5d) | 2013-10-13 → 2013-10-20 (+7d) |  |  |  |  |
| DUKHCONP2BZ4STGF2000 | Column-Rebar & Formwork | 2013-08-22 → 2013-08-27 A (+5d) | 2013-09-14 → 2013-09-18 A (+4d) |  | 0% → 100% | -16d → none |  |
| DUKHCONP2BZ4STGF2005 | Column-Concrete | 2013-09-02 → 2013-09-07 A (+5d) | 2013-09-18 → 2013-09-23 A (+5d) |  | 0% → 100% | -16d → none |  |
| DUKHCONP2BZ4STGF2010 | Beam, Stairs ,Slab-Rebar & Formwork | 2013-09-10 → 2013-09-15 A (+5d) | 2013-10-08 → 2013-10-13 A (+5d) |  | 0% → 100% | -16d → none |  |
| DUKHCONP2BZ4STGF2015 | Beam, Stairs ,Slab-Concrete | 2013-09-26 → 2013-10-01 A (+5d) | 2013-10-13 → 2013-10-20 A (+7d) |  | 0% → 100% | -16d → none |  |
| 20 | **ROOF** | 2013-12-30 → 2014-01-12 (+13d) | 2014-01-28 → 2014-02-10 (+13d) |  |  |  |  |
| DUKHCONP2BZ4STRF2060 | Construction of Parapets | 2013-12-30 → 2014-01-12 (+13d) | 2014-01-21 → 2014-02-03 (+13d) |  |  | -44d → -55d |  |
| DUKHCONP2BZ4STRF2065 | Construction of up stands/Plinth | 2014-01-06 → 2014-01-19 (+13d) | 2014-01-28 → 2014-02-10 (+13d) |  |  | -32d → -43d |  |
| 15 | **FINISHING WORKS** | 2013-10-23 → 2013-11-02 (+10d) | 2014-07-01 → 2014-07-14 (+13d) |  |  |  |  |
| 10 | **INTERNAL FINISHES** | 2013-10-23 → 2013-11-02 (+10d) | 2014-07-01 → 2014-07-14 (+13d) |  |  |  |  |
| 10 | **GROUND FLOOR** | 2013-10-23 → 2013-11-02 (+10d) | 2014-07-01 → 2014-07-14 (+13d) |  |  |  |  |
| DUKHCONP2BZ4ARGF3000 | Block work | 2013-10-23 → 2013-11-02 (+10d) | 2013-11-20 → 2013-11-30 (+10d) |  |  | -16d → -24d |  |
| DUKHCONP2BZ4ARGF3005 | Plastering work | 2013-11-16 → 2013-11-25 (+9d) | 2013-12-14 → 2013-12-24 (+10d) |  |  | -16d → -24d |  |
| DUKHCONP2BZ4ARGF3010 | Flooring screed | 2013-11-27 → 2013-12-07 (+10d) | 2013-12-21 → 2013-12-30 (+9d) |  |  | 9d → 1d |  |
| DUKHCONP2BZ4ARGF3015 | Wet area waterproofing & Protection Screed | 2013-12-02 → 2013-12-11 (+9d) | 2013-12-25 → 2014-01-04 (+10d) |  |  | -11d → -19d |  |
| DUKHCONP2BZ4ARGF3020 | Ceramic Wall Tiling | 2013-12-22 → 2013-12-31 (+9d) | 2014-01-07 → 2014-01-16 (+9d) |  |  | -11d → -19d |  |
| DUKHCONP2BZ4ARGF3025 | Porcelain Tile flooring | 2014-01-07 → 2014-01-16 (+9d) | 2014-01-29 → 2014-02-08 (+10d) |  |  | -11d → -19d |  |
| DUKHCONP2BZ4ARGF3030 | Paint First coat | 2014-03-03 → 2014-03-16 (+13d) | 2014-03-25 → 2014-04-07 (+13d) |  |  | -57d → -68d |  |
| DUKHCONP2BZ4ARGF3045 | Fixing of Suspension systems | 2014-03-25 → 2014-04-07 (+13d) | 2014-04-10 → 2014-04-23 (+13d) |  |  | -57d → -68d |  |
| DUKHCONP2BZ4ARGF3060 | Gypsum board false ceiling | 2014-04-10 → 2014-04-23 (+13d) | 2014-05-03 → 2014-05-15 (+12d) |  |  | -57d → -68d |  |
| DUKHCONP2BZ4ARGF3035 | Slate Tile Flooring & Skirting | 2014-04-16 → 2014-04-29 (+13d) | 2014-05-06 → 2014-05-19 (+13d) |  |  | -50d → -61d |  |
| DUKHCONP2BZ4ARGF3065 | Wooden door | 2014-04-28 → 2014-05-11 (+13d) | 2014-05-14 → 2014-05-27 (+13d) |  |  | -46d → -57d |  |
| DUKHCONP2BZ4ARGF3075 | Carpentry & Joinery Works | 2014-05-04 → 2014-05-17 (+13d) | 2014-05-24 → 2014-06-05 (+12d) |  |  | -46d → -57d |  |
| DUKHCONP2BZ4ARGF3040 | Cobble Tile flooring | 2014-05-05 → 2014-05-18 (+13d) | 2014-05-21 → 2014-06-03 (+13d) |  |  | -43d → -54d |  |
| DUKHCONP2BZ4ARGF3080 | Aluminum windows | 2014-05-15 → 2014-05-28 (+13d) | 2014-06-04 → 2014-06-17 (+13d) |  |  | -32d → -43d |  |
| DUKHCONP2BZ4ARGF3090 | Installation of Granite Counter Top | 2014-05-28 → 2014-06-10 (+13d) | 2014-06-14 → 2014-06-26 (+12d) |  |  | -55d → -66d |  |
| DUKHCONP2BZ4ARGF3095 | Final Painting | 2014-06-03 → 2014-06-16 (+13d) | 2014-07-01 → 2014-07-14 (+13d) |  |  | -40d → -51d |  |
| 15 | **EXTERNAL FINISHES** | 2014-02-13 → 2014-02-26 (+13d) | 2014-05-13 → 2014-05-26 (+13d) |  |  |  |  |
| 10 | **ROOF** | 2014-02-13 → 2014-02-26 (+13d) | 2014-04-15 → 2014-04-28 (+13d) |  |  |  |  |
| DUKHCONP2BZ4ARRF3625 | Laying of Pitched Roof | 2014-02-13 → 2014-02-26 (+13d) | 2014-03-13 → 2014-03-26 (+13d) |  |  | -33d → -44d |  |
| DUKHCONP2BZ4ARRF3630 | Leveling Screed for Waterproofing | 2014-02-27 → 2014-03-12 (+13d) | 2014-03-19 → 2014-04-01 (+13d) |  |  | -33d → -44d |  |
| DUKHCONP2BZ4ARRF3635 | Laying of Waterproofing Membrane | 2014-03-05 → 2014-03-18 (+13d) | 2014-03-25 → 2014-04-07 (+13d) |  |  | -33d → -44d |  |
| DUKHCONP2BZ4ARRF3640 | Installation of Insulation & Protection | 2014-03-10 → 2014-03-23 (+13d) | 2014-03-30 → 2014-04-12 (+13d) |  |  | -33d → -44d |  |
| DUKHCONP2BZ4ARRF3645 | Lime Stone Chips & Paving slab Installation | 2014-03-18 → 2014-03-31 (+13d) | 2014-04-07 → 2014-04-20 (+13d) |  |  | -33d → -44d |  |
| DUKHCONP2BZ4ARRF3660 | Installation of Access Ladder | 2014-03-24 → 2014-04-06 (+13d) | 2014-04-15 → 2014-04-28 (+13d) |  |  | -4d → -15d |  |
| 15 | **ELEVATION** | 2014-03-30 → 2014-04-12 (+13d) | 2014-05-13 → 2014-05-26 (+13d) |  |  |  |  |
| DUKHCONP2BZ4AREL3665 | External Plastering | 2014-03-30 → 2014-04-12 (+13d) | 2014-04-27 → 2014-05-10 (+13d) |  |  | -33d → -44d |  |
| DUKHCONP2BZ4AREL3680 | External Painting | 2014-04-21 → 2014-05-04 (+13d) | 2014-05-13 → 2014-05-26 (+13d) |  |  | -18d → -29d |  |
| 20 | **MEP WORKS** | 2013-07-23 → 2013-07-28 (+5d) | 2014-06-26 → 2014-07-09 (+13d) |  |  |  |  |
| 10 | **ELECTRICAL WORKS** | 2013-11-06 → 2013-11-16 (+10d) | 2014-06-19 → 2014-07-02 (+13d) |  |  |  |  |

| ID | Task | Start | Finish | Duration | Complete | Total float |
| --- | --- | --- | --- | --- | --- | --- |
| 10 | **GROUND FLOOR** | 2013-11-06 → 2013-11-16 (+10d) | 2014-06-19 → 2014-07-02 (+13d) |  |  |  |
| DUKHCONP2BZ4ELGF4000 | Fixing of wall conduits & switch socket boxes | 2013-11-06 → 2013-11-16 (+10d) | 2013-11-28 → 2013-12-08 (+10d) |  |  | -13d → -21d |
| DUKHCONP2BZ4ELGF4005 | Cable tray & trunking installation | 2014-02-15 → 2014-02-27 (+12d) | 2014-03-09 → 2014-03-22 (+13d) |  |  | -50d → -61d |
| DUKHCONP2BZ4ELGF4010 | Installation of wiring & Main Cabling | 2014-02-23 → 2014-03-08 (+13d) | 2014-03-17 → 2014-03-30 (+13d) |  |  | -50d → -61d |
| DUKHCONP2BZ4ELGF4020 | Installation of DBS,MCCB Accessories. | 2014-04-19 → 2014-05-01 (+12d) | 2014-05-11 → 2014-05-24 (+13d) |  |  | -48d → -59d |
| DUKHCONP2BZ4ELGF4025 | Installation of Lighting fixtures & Accessories | 2014-04-30 → 2014-05-13 (+13d) | 2014-05-22 → 2014-06-04 (+13d) |  |  | -48d → -59d |
| DUKHCONP2BZ4ELGF4030 | Installation of Telephone System | 2014-04-30 → 2014-05-13 (+13d) | 2014-05-22 → 2014-06-04 (+13d) |  |  | -45d → -56d |
| DUKHCONP2BZ4ELGF4015 | Install. of CAMS & Fire Fighting Accessories | 2014-05-28 → 2014-06-10 (+13d) | 2014-06-19 → 2014-07-02 (+13d) |  |  | -50d → -61d |
| 20 | **ROOF** | 2014-05-14 → 2014-05-27 (+13d) | 2014-06-17 → 2014-06-30 (+13d) |  |  |  |
| DUKHCONP2BZ4ELRF4070 | Installation of Isolator | 2014-05-14 → 2014-05-27 (+13d) | 2014-06-03 → 2014-06-16 (+13d) |  |  | -48d → -59d |
| DUKHCONP2BZ4ELRF4075 | Installation of TV Dish Antenna | 2014-05-26 → 2014-06-08 (+13d) | 2014-06-17 → 2014-06-30 (+13d) |  |  | -48d → -59d |
| 15 | **PLUMBING, DRAINAGE & FIRE FIGHTING WORKS** | 2013-07-23 → 2013-07-28 (+5d) | 2014-06-26 → 2014-07-09 (+13d) |  |  |  |
| 10 | **GROUND FLOOR** | 2013-07-23 → 2013-07-28 (+5d) | 2014-06-26 → 2014-07-09 (+13d) |  |  |  |
| DUKHCONP2BZ4PLUG4300 | Drainage / Storm Pipes in Grade Slab | 2013-07-23 → 2013-07-28 A (+5d) | 2013-08-18 → 2013-08-22 A (+4d) |  | 0% → 100% | -16d → none |
| DUKHCONP2BZ4PLGF4305 | Installation of Plumbing pipes & testing | 2013-11-06 → 2013-11-16 (+10d) | 2013-11-28 → 2013-12-08 (+10d) |  |  | -16d → -24d |
| DUKHCONP2BZ4PLGF4310 | Installation of Drainage pipes &testing | 2013-11-09 → 2013-11-18 (+9d) | 2013-11-28 → 2013-12-08 (+10d) |  |  | 12d → 4d |
| DUKHCONP2BZ4PLGF4315 | Sanitary Fittings & Accessories | 2014-05-29 → 2014-06-11 (+13d) | 2014-06-21 → 2014-07-03 (+12d) |  |  | -56d → -67d |
| DUKHCONP2BZ4PLGF4320 | Installation of Water Heater | 2014-06-10 → 2014-06-23 (+13d) | 2014-06-26 → 2014-07-09 (+13d) |  |  | -36d → -47d |
| 20 | **ROOF** | 2014-04-19 → 2014-05-01 (+12d) | 2014-05-05 → 2014-05-18 (+13d) |  |  |  |
| DUKHCONP2BZ4PLRF4350 | Installation of Rain water Pipes | 2014-04-19 → 2014-05-01 (+12d) | 2014-05-05 → 2014-05-18 (+13d) |  |  | -33d → -44d |
| 20 | **AC WORKS** | 2014-02-27 → 2014-03-12 (+13d) | 2014-06-16 → 2014-06-29 (+13d) |  |  |  |
| 10 | **GROUND FLOOR** | 2014-02-27 → 2014-03-12 (+13d) | 2014-06-10 → 2014-06-23 (+13d) |  |  |  |
| DUKHCONP2BZ4ACGF4600 | Installation AC Pipes | 2014-02-27 → 2014-03-12 (+13d) | 2014-03-22 → 2014-04-03 (+12d) |  |  | -35d → -46d |
| DUKHCONP2BZ4ACGF4605 | Fixing of Ventilation Equipments | 2014-04-27 → 2014-05-10 (+13d) | 2014-05-25 → 2014-06-07 (+13d) |  |  | -47d → -58d |
| DUKHCONP2BZ4ACGF4610 | Fixing of Split AC | 2014-05-19 → 2014-06-01 (+13d) | 2014-06-10 → 2014-06-23 (+13d) |  |  | -47d → -58d |
| 20 | **ROOF** | 2014-04-03 → 2014-04-16 (+13d) | 2014-06-16 → 2014-06-29 (+13d) |  |  |  |
| DUKHCONP2BZ4ACRF4630 | Installation of Refrigerant Pipes | 2014-04-03 → 2014-04-16 (+13d) | 2014-04-26 → 2014-05-08 (+12d) |  |  | -13d → -24d |
| DUKHCONP2BZ4ACRF4635 | Installation of Condensing Unit | 2014-05-25 → 2014-06-07 (+13d) | 2014-06-16 → 2014-06-29 (+13d) |  |  | -47d → -58d |
| 25 | **EXTERNAL WORKS** | 2014-01-18 → 2014-01-30 (+12d) | 2014-06-05 → 2014-06-18 (+13d) |  |  |  |
| 10 | **MISCELLANEOUS** | 2014-01-18 → 2014-01-30 (+12d) | 2014-04-14 → 2014-04-27 (+13d) |  |  |  |
| DUKHCONP2BZ4MSEX5000 | Construction of Manholes | 2014-01-18 → 2014-01-30 (+12d) | 2014-02-16 → 2014-03-01 (+13d) |  |  | -37d → -48d |
| DUKHCONP2BZ4MSEX5005 | Construction of Soak pit, Chambers | 2014-02-01 → 2014-02-15 (+14d) | 2014-03-02 → 2014-03-15 (+13d) |  |  | -32d → -43d |
| DUKHCONP2BZ4MSEX5020 | Construction Entrance Ramp | 2014-02-16 → 2014-03-01 (+13d) | 2014-03-10 → 2014-03-23 (+13d) |  |  | -33d → -44d |
| DUKHCONP2BZ4MSEX5015 | Construction of grease Trap | 2014-02-22 → 2014-03-06 (+12d) | 2014-03-16 → 2014-03-29 (+13d) |  |  | -32d → -43d |
| DUKHCONP2BZ4MSEX5055 | Installation Steel Door | 2014-02-27 → 2014-03-12 (+13d) | 2014-03-22 → 2014-04-03 (+12d) |  |  | -33d → -44d |
| DUKHCONP2BZ4MSEX5025 | SS.Handrails and Balustrades | 2014-03-11 → 2014-03-24 (+13d) | 2014-04-02 → 2014-04-15 (+13d) |  |  | -33d → -44d |
| DUKHCONP2BZ4MSEX5010 | Telephone cable laying | 2014-03-17 → 2014-03-30 (+13d) | 2014-04-14 → 2014-04-27 (+13d) |  |  | -32d → -43d |
| 15 | **WATER TANK ENCLOSURE** | 2014-03-05 → 2014-03-18 (+13d) | 2014-06-05 → 2014-06-18 (+13d) |  |  |  |
| DUKHCONP2BZ4WEEX5030 | Excavation | 2014-03-05 → 2014-03-18 (+13d) | 2014-03-27 → 2014-04-09 (+13d) |  |  | -48d → -59d |
| DUKHCONP2BZ4WEEX5035 | Construction of Raft | 2014-03-11 → 2014-03-24 (+13d) | 2014-04-08 → 2014-04-21 (+13d) |  |  | -48d → -59d |
| DUKHCONP2BZ4WEEX5040 | Block works & Plastering | 2014-03-20 → 2014-04-02 (+13d) | 2014-04-17 → 2014-04-30 (+13d) |  |  | -43d → -54d |
| DUKHCONP2BZ4WEEX5045 | Flooring & Painting | 2014-04-01 → 2014-04-14 (+13d) | 2014-04-29 → 2014-05-12 (+13d) |  |  | -43d → -54d |
| DUKHCONP2BZ4MSEX5335 | Aluminum Roll-up Shutter with 2m Wall | 2014-04-06 → 2014-04-30 (+24d) | 2014-05-04 → 2014-05-28 (+24d) |  |  | 10d → -11d |
| DUKHCONP2BZ4WEEX5050 | Installation of Steel Gate | 2014-04-19 → 2014-05-01 (+12d) | 2014-05-11 → 2014-05-24 (+13d) |  |  | -43d → -54d |
| DUKHCONP2BZ4WEEX5060 | Structural steel & SS Shed cover installation | 2014-04-24 → 2014-05-07 (+13d) | 2014-05-22 → 2014-06-04 (+13d) |  |  | -43d → -54d |
| DUKHCONP2BZ4WEEX5065 | Install. of Water Tank,Chiller,Pump & Meter | 2014-05-06 → 2014-05-19 (+13d) | 2014-06-03 → 2014-06-16 (+13d) |  |  | -43d → -54d |
| DUKHCONP2BZ4WEEX5070 | Installation ladder for water Tank | 2014-05-14 → 2014-05-27 (+13d) | 2014-06-05 → 2014-06-18 (+13d) |  |  | -38d → -49d |
| 20 | **HARD LANDSCAPING** | 2014-03-19 → 2014-04-01 (+13d) | 2014-05-07 → 2014-05-20 (+13d) |  |  |  |
| DUKHCONP2BZ4HDEX5090 | kerb works | 2014-03-19 → 2014-04-01 (+13d) | 2014-04-10 → 2014-04-23 (+13d) |  |  | -33d → -44d |
| DUKHCONP2BZ4HDEX5095 | Cobble Stone Works | 2014-03-31 → 2014-04-13 (+13d) | 2014-04-22 → 2014-05-05 (+13d) |  |  | -33d → -44d |
| DUKHCONP2BZ4HDEX5100 | Interlock works | 2014-04-15 → 2014-04-28 (+13d) | 2014-05-07 → 2014-05-20 (+13d) |  |  | -33d → -44d |
| 25 | **SOFT LANDSCAPING** | 2014-04-27 → 2014-05-10 (+13d) | 2014-05-31 → 2014-06-12 (+12d) |  |  |  |
| DUKHCONP2BZ4SLEX5105 | Laying of Grass/ green area | 2014-04-27 → 2014-05-10 (+13d) | 2014-05-19 → 2014-06-01 (+13d) |  |  | -33d → -44d |
| DUKHCONP2BZ4SLEX5110 | Laying of Palm tree | 2014-05-08 → 2014-05-21 (+13d) | 2014-05-31 → 2014-06-12 (+12d) |  |  | -33d → -44d |
| 30 | **TESTING AND COMMISSIONING** | 2014-07-02 → 2014-07-15 (+13d) | 2014-07-30 → 2014-08-16 (+17d) |  |  |  |
| DUKHCONP2BZ4ACTC8000 | Pre-Commissioning & Testing of AC Works | 2014-07-02 → 2014-07-15 (+13d) | 2014-07-30 → 2014-08-16 (+17d) |  |  | -40d → -51d |
| DUKHCONP2BZ4ELTC8010 | Pre-Commissioning & Testing of Electrical Works | 2014-07-02 → 2014-07-15 (+13d) | 2014-07-30 → 2014-08-16 (+17d) |  |  | -40d → -51d |
| DUKHCONP2BZ4PLTC8005 | Pre-Commissioning & Testing of Plumbing Works | 2014-07-02 → 2014-07-15 (+13d) | 2014-07-30 → 2014-08-16 (+17d) |  |  | -40d → -51d |
| 30 | **ZONE - 5 (3 Twin Villas)** | 2013-05-26 → 2013-06-01 (+6d) |  |  |  |  |
| 10 | **STRUCTURAL WORKS** | 2013-05-26 → 2013-06-01 (+6d) | 2014-02-22 → 2014-03-06 (+12d) |  |  |  |
| 10 | **SUB STRUCTURE** | 2013-05-26 → 2013-06-01 (+6d) | 2013-09-29 → 2013-10-03 (+4d) |  |  |  |
| 10 | **UPTO GRADE SLAB** | 2013-05-26 → 2013-06-01 (+6d) | 2013-09-29 → 2013-10-03 (+4d) |  |  |  |
| DUKHCONP2BZ5STUG1000 | Footing Excavation | 2013-05-26 → 2013-06-01 A (+6d) | 2013-06-23 A | 25d → 20d | 0% → 100% | -13d → none |
| DUKHCONP2BZ5STUG1005 | Footing Antitermite | 2013-06-06 A | 2013-06-29 A |  | 0% → 100% | -13d → none |
| DUKHCONP2BZ5STUG1010 | Footing Blinding | 2013-06-09 A | 2013-07-01 A |  | 0% → 100% | -13d → none |
| DUKHCONP2BZ5STUG1015 | Footing Waterproofing & Screed | 2013-06-15 A | 2013-07-07 A |  | 0% → 100% | -13d → none |
| DUKHCONP2BZ5STUG1020 | Construction of foundations | 2013-06-24 A | 2013-07-16 A |  | 0% → 100% | -13d → none |
| DUKHCONP2BZ5STUG1025 | Construction of neck of columns | 2013-07-03 A | 2013-07-25 A |  | 0% → 100% | -13d → none |
| DUKHCONP2BZ5STUG1030 | Waterproofing Footing & Neck Column | 2013-07-13 A | 2013-08-04 A |  | 0% → 100% | -13d → none |
| DUKHCONP2BZ5STUG1035 | Backfilling Upto Grade Beam Bottom | 2013-07-24 A | 2013-08-19 A |  | 0% → 100% | -13d → none |

| ID | Task | Start | Finish | Complete | Total float | Other |
| --- | --- | --- | --- | --- | --- | --- |
| DUKHCONP2BZ5STUG1040 | Construction of Grade Beams | 2013-08-06 → 2013-08-14 A (+8d) | 2013-09-07 → 2013-08-31 A (-7d) | 0% → 100% | -14d → none | resources BLINDING MASON SK [74 h]; STEEL FIXERS SK [183 h]; CARPENTERS SK [1024 h]; CONCRETE MASON SK [48 h]; LABOR- SUBCONTRACTOR [996.75 h]; BLINDING QTY [92 Sqm]; REINFORCEMENT BARS QTY [2286 kg]; FORMWORK QTY [512 Sqm]; CONCRETE QTY [24 Cum] → CONCRETE MASON SK [74 h]; STEEL FIXERS SK [183 h]; CARPENTERS SK [1024 h]; CONCRETE MASON SK [48 h]; LABOR- SUBCONTRACTOR [996.75 h]; BLINDING QTY [92 Sqm]; REINFORCEMENT BARS QTY [2286 kg]; FORMWORK QTY [512 Sqm]; CONCRETE QTY [24 Cum] |
| DUKHCONP2BZ5STUG1045 | Construction of slab on grade | 2013-09-01 → 2013-09-05 A (+4d) | 2013-09-29 → 2013-10-03 A (+4d) | 0% → 100% | -14d → none | resources BLINDING MASON SK [508 h]; STEEL FIXERS SK [205 h]; CONCRETE MASON SK [168 h]; LABOR- SUBCONTRACTOR [660.75 h]; BLINDING QTY [634 Sqm]; CONCRETE QTY [84 Cum]; WELDED WIRE MESH [768 Sqm] → CONCRETE MASON SK [508 h]; STEEL FIXERS SK [205 h]; CONCRETE MASON SK [168 h]; LABOR- SUBCONTRACTOR [660.75 h]; BLINDING QTY [634 Sqm]; CONCRETE QTY [84 Cum]; WELDED WIRE MESH [768 Sqm] |
| 15 | **SUPERSTRUCTURE** | 2013-09-18 → 2013-09-23 (+5d) | 2014-02-22 → 2014-03-06 (+12d) |  |  |  |
| 10 | **GROUND FLOOR** | 2013-09-18 → 2013-09-23 (+5d) | 2013-11-11 → 2013-12-04 (+23d) |  |  |  |
| DUKHCONP2BZ5STGF2000 | Column-Rebar & Formwork | 2013-09-18 → 2013-09-23 A (+5d) | 2013-10-10 → 2013-10-15 A (+5d) | 0% → 100% | -14d → none |  |
| DUKHCONP2BZ5STGF2005 | Column-Concrete | 2013-09-29 → 2013-10-03 A (+4d) | 2013-10-15 → 2013-10-22 A (+7d) | 0% → 100% | -14d → none |  |
| DUKHCONP2BZ5STGF2010 | Beam, Stairs ,Slab-Rebar & Formwork | 2013-10-07 → 2013-11-02 (+26d) | 2013-11-06 → 2013-11-30 (+24d) |  | -14d → -34d |  |
| DUKHCONP2BZ5STGF2015 | Beam, Stairs ,Slab-Concrete | 2013-10-26 → 2013-11-18 (+23d) | 2013-11-11 → 2013-12-04 (+23d) |  | -14d → -34d |  |
| 20 | **ROOF** | 2014-01-22 → 2014-02-04 (+13d) | 2014-02-22 → 2014-03-06 (+12d) |  |  |  |
| DUKHCONP2BZ5STRF2060 | Construction of Parapets | 2014-01-22 → 2014-02-04 (+13d) | 2014-02-15 → 2014-02-27 (+12d) |  | -44d → -55d |  |
| DUKHCONP2BZ5STRF2065 | Construction of up stands/Plinth | 2014-01-29 → 2014-02-12 (+14d) | 2014-02-22 → 2014-03-06 (+12d) |  | -27d → -38d |  |
| 15 | **FINISHING WORKS** | 2013-11-21 → 2013-12-12 (+21d) | 2014-07-21 → 2014-08-06 (+16d) |  |  |  |
| 10 | **INTERNAL FINISHES** | 2013-11-21 → 2013-12-12 (+21d) | 2014-07-21 → 2014-08-06 (+16d) |  |  |  |
| 10 | **GROUND FLOOR** | 2013-11-21 → 2013-12-12 (+21d) | 2014-07-21 → 2014-08-06 (+16d) |  |  |  |
| DUKHCONP2BZ5ARGF3000 | Block work | 2013-11-21 → 2013-12-12 (+21d) | 2013-12-21 → 2014-01-11 (+21d) |  | -16d → -34d |  |
| DUKHCONP2BZ5ARGF3005 | Plastering work | 2013-12-15 → 2014-01-06 (+22d) | 2014-01-13 → 2014-02-03 (+21d) |  | -16d → -34d |  |
| DUKHCONP2BZ5ARGF3010 | Flooring screed | 2013-12-28 → 2014-01-18 (+21d) | 2014-01-19 → 2014-02-09 (+21d) |  | 4d → -14d |  |
| DUKHCONP2BZ5ARGF3015 | Wet area waterproofing & Protection Screed | 2014-01-01 → 2014-01-22 (+21d) | 2014-01-23 → 2014-02-15 (+23d) |  | -16d → -34d |  |
| DUKHCONP2BZ5ARGF3020 | Ceramic Wall Tiling | 2014-01-20 → 2014-02-10 (+21d) | 2014-02-05 → 2014-02-27 (+22d) |  | -16d → -34d |  |
| DUKHCONP2BZ5ARGF3025 | Porcelain Tile flooring | 2014-02-05 → 2014-02-27 (+22d) | 2014-03-01 → 2014-03-22 (+21d) |  | -16d → -34d |  |
| DUKHCONP2BZ5ARGF3030 | Paint First coat | 2014-03-26 → 2014-04-08 (+13d) | 2014-04-17 → 2014-04-30 (+13d) |  | -57d → -68d |  |
| DUKHCONP2BZ5ARGF3045 | Fixing of Suspension systems | 2014-04-17 → 2014-04-30 (+13d) | 2014-05-04 → 2014-05-17 (+13d) |  | -57d → -68d |  |
| DUKHCONP2BZ5ARGF3060 | Gypsum board false ceiling | 2014-05-04 → 2014-05-17 (+13d) | 2014-05-26 → 2014-06-08 (+13d) |  | -57d → -68d |  |
| DUKHCONP2BZ5ARGF3035 | Slate Tile Flooring & Skirting | 2014-05-07 → 2014-05-20 (+13d) | 2014-05-27 → 2014-06-09 (+13d) |  | -50d → -61d |  |
| DUKHCONP2BZ5ARGF3065 | Wooden door | 2014-05-19 → 2014-06-01 (+13d) | 2014-06-04 → 2014-06-17 (+13d) |  | -50d → -61d |  |
| DUKHCONP2BZ5ARGF3075 | Carpentry & Joinery Works | 2014-05-25 → 2014-06-07 (+13d) | 2014-06-14 → 2014-06-26 (+12d) |  | -46d → -57d |  |
| DUKHCONP2BZ5ARGF3040 | Cobble Tile flooring | 2014-05-26 → 2014-06-08 (+13d) | 2014-06-11 → 2014-06-24 (+13d) |  | -46d → -57d |  |
| DUKHCONP2BZ5ARGF3080 | Aluminum windows | 2014-06-05 → 2014-06-18 (+13d) | 2014-06-25 → 2014-07-08 (+13d) |  | -50d → -61d |  |
| DUKHCONP2BZ5ARGF3090 | Installation of Granite Counter Top | 2014-06-15 → 2014-06-28 (+13d) | 2014-07-01 → 2014-07-14 (+13d) |  | -55d → -66d |  |
| DUKHCONP2BZ5ARGF3095 | Final Painting | 2014-06-23 → 2014-07-06 (+13d) | 2014-07-21 → 2014-08-06 (+16d) |  | -57d → -68d |  |
| 15 | **EXTERNAL FINISHES** | 2014-03-15 → 2014-03-27 (+12d) | 2014-06-11 → 2014-06-24 (+13d) |  |  |  |
| 10 | **ROOF** | 2014-03-15 → 2014-03-27 (+12d) | 2014-05-14 → 2014-05-27 (+13d) |  |  |  |
| DUKHCONP2BZ5ARRF3625 | Laying of Pitched Roof | 2014-03-15 → 2014-03-27 (+12d) | 2014-04-12 → 2014-04-24 (+12d) |  | -33d → -44d |  |
| DUKHCONP2BZ5ARRF3630 | Leveling Screed for Waterproofing | 2014-03-29 → 2014-04-10 (+12d) | 2014-04-17 → 2014-04-30 (+13d) |  | -33d → -44d |  |
| DUKHCONP2BZ5ARRF3635 | Laying of Waterproofing Membrane | 2014-04-03 → 2014-04-16 (+13d) | 2014-04-23 → 2014-05-06 (+13d) |  | -33d → -44d |  |
| DUKHCONP2BZ5ARRF3640 | Installation of Insulation & Protection | 2014-04-08 → 2014-04-21 (+13d) | 2014-04-28 → 2014-05-11 (+13d) |  | -33d → -44d |  |
| DUKHCONP2BZ5ARRF3645 | Lime Stone Chips & Paving slab Installation | 2014-04-16 → 2014-04-29 (+13d) | 2014-05-06 → 2014-05-19 (+13d) |  | -33d → -44d |  |
| DUKHCONP2BZ5ARRF3660 | Installation of Access Ladder | 2014-04-22 → 2014-05-05 (+13d) | 2014-05-14 → 2014-05-27 (+13d) |  | -9d → -20d |  |
| 15 | **ELEVATION** | 2014-04-28 → 2014-05-11 (+13d) | 2014-06-11 → 2014-06-24 (+13d) |  |  |  |
| DUKHCONP2BZ5AREL3665 | External Plastering | 2014-04-28 → 2014-05-11 (+13d) | 2014-05-26 → 2014-06-08 (+13d) |  | -33d → -44d |  |
| DUKHCONP2BZ5AREL3680 | External Painting | 2014-05-20 → 2014-06-02 (+13d) | 2014-06-11 → 2014-06-24 (+13d) |  | -23d → -34d |  |
| 20 | **MEP WORKS** | 2013-08-24 → 2013-08-28 (+4d) | 2014-07-20 → 2014-08-05 (+16d) |  |  |  |
| 10 | **ELECTRICAL WORKS** | 2013-12-05 → 2013-12-28 (+23d) | 2014-07-13 → 2014-07-26 (+13d) |  |  |  |
| 10 | **GROUND FLOOR** | 2013-12-05 → 2013-12-28 (+23d) | 2014-07-13 → 2014-07-26 (+13d) |  |  |  |
| DUKHCONP2BZ5ELGF4000 | Fixing of wall conduits & switch socket boxes | 2013-12-05 → 2013-12-28 (+23d) | 2013-12-29 → 2014-01-19 (+21d) |  | -13d → -31d |  |
| DUKHCONP2BZ5ELGF4005 | Cable tray & trunking installation | 2014-03-10 → 2014-03-23 (+13d) | 2014-04-01 → 2014-04-14 (+13d) |  | -50d → -61d |  |
| DUKHCONP2BZ5ELGF4010 | Installation of wiring & Main Cabling | 2014-03-18 → 2014-03-31 (+13d) | 2014-04-09 → 2014-04-22 (+13d) |  | -50d → -61d |  |
| DUKHCONP2BZ5ELGF4020 | Installation of DBS,MCCB Accessories. | 2014-05-12 → 2014-05-25 (+13d) | 2014-06-03 → 2014-06-16 (+13d) |  | -48d → -59d |  |
| DUKHCONP2BZ5ELGF4025 | Installation of Lighting fixtures & Accessories | 2014-05-24 → 2014-06-05 (+12d) | 2014-06-15 → 2014-06-28 (+13d) |  | -48d → -59d |  |
| DUKHCONP2BZ5ELGF4030 | Installation of Telephone System | 2014-05-24 → 2014-06-05 (+12d) | 2014-06-15 → 2014-06-28 (+13d) |  | -45d → -56d |  |
| DUKHCONP2BZ5ELGF4015 | Install. of CAMS & Fire Fighting Accessories | 2014-06-21 → 2014-07-03 (+12d) | 2014-07-13 → 2014-07-26 (+13d) |  | -50d → -61d |  |
| 20 | **ROOF** | 2014-06-07 → 2014-06-19 (+12d) | 2014-07-10 → 2014-07-23 (+13d) |  |  |  |
| DUKHCONP2BZ5ELRF4070 | Installation of Isolator | 2014-06-07 → 2014-06-19 (+12d) | 2014-06-26 → 2014-07-09 (+13d) |  | -48d → -59d |  |
| DUKHCONP2BZ5ELRF4075 | Installation of TV Dish Antenna | 2014-06-18 → 2014-07-01 (+13d) | 2014-07-10 → 2014-07-23 (+13d) |  | -48d → -59d |  |
| 15 | **PLUMBING, DRAINAGE & FIRE FIGHTING WORKS** | 2013-08-24 → 2013-08-28 (+4d) | 2014-07-20 → 2014-08-05 (+16d) |  |  |  |
| 10 | **GROUND FLOOR** | 2013-08-24 → 2013-08-28 (+4d) | 2014-07-20 → 2014-08-05 (+16d) |  |  |  |
| DUKHCONP2BZ5PLUG4300 | Drainage / Storm Pipes in Grade Slab | 2013-08-24 → 2013-08-28 A (+4d) | 2013-09-15 → 2013-09-19 A (+4d) | 0% → 100% | -14d → none |  |
| DUKHCONP2BZ5PLGF4305 | Installation of Plumbing pipes & testing | 2013-12-05 → 2013-12-28 (+23d) | 2013-12-29 → 2014-01-19 (+21d) |  | -16d → -34d |  |
| DUKHCONP2BZ5PLGF4310 | Installation of Drainage pipes &testing | 2013-12-08 → 2013-12-30 (+22d) | 2013-12-29 → 2014-01-19 (+21d) |  | 12d → -6d |  |
| DUKHCONP2BZ5PLGF4315 | Sanitary Fittings & Accessories | 2014-06-22 → 2014-07-05 (+13d) | 2014-07-14 → 2014-07-27 (+13d) |  | -56d → -67d |  |
| DUKHCONP2BZ5PLGF4320 | Installation of Water Heater | 2014-07-03 → 2014-07-16 (+13d) | 2014-07-20 → 2014-08-05 (+16d) |  | -56d → -67d |  |
| 20 | **ROOF** | 2014-05-18 → 2014-05-31 (+13d) | 2014-06-03 → 2014-06-16 (+13d) |  |  |  |
| DUKHCONP2BZ5PLRF4350 | Installation of Rain water Pipes | 2014-05-18 → 2014-05-31 (+13d) | 2014-06-03 → 2014-06-16 (+13d) |  | -33d → -44d |  |
| 20 | **AC WORKS** | 2014-03-23 → 2014-04-05 (+13d) | 2014-07-09 → 2014-07-22 (+13d) |  |  |  |
| 10 | **GROUND FLOOR** | 2014-03-23 → 2014-04-05 (+13d) | 2014-07-03 → 2014-07-16 (+13d) |  |  |  |
| DUKHCONP2BZ5ACGF4600 | Installation AC Pipes | 2014-03-23 → 2014-04-05 (+13d) | 2014-04-14 → 2014-04-27 (+13d) |  | -35d → -46d |  |
| DUKHCONP2BZ5ACGF4605 | Fixing of Ventilation Equipments | 2014-05-20 → 2014-06-02 (+13d) | 2014-06-17 → 2014-06-30 (+13d) |  | -57d → -68d |  |
| DUKHCONP2BZ5ACGF4610 | Fixing of Split AC | 2014-06-11 → 2014-06-24 (+13d) | 2014-07-03 → 2014-07-16 (+13d) |  | -57d → -68d |  |
| 20 | **ROOF** | 2014-05-03 → 2014-05-15 (+12d) | 2014-07-09 → 2014-07-22 (+13d) |  |  |  |
| DUKHCONP2BZ5ACRF4630 | Installation of Refrigerant Pipes | 2014-05-03 → 2014-05-15 (+12d) | 2014-05-25 → 2014-06-07 (+13d) |  | -18d → -29d |  |

| ID | Task | Start | Finish | Complete | Total float |
| --- | --- | --- | --- | --- | --- |
| DUKHCONP2BZ5ACRF4635 | Installation of Condensing Unit | 2014-06-17 → 2014-06-30 (+13d) | 2014-07-09 → 2014-07-22 (+13d) |  | -47d → -58d |
| 25 | **EXTERNAL WORKS** | 2014-02-17 → 2014-03-02 (+13d) | 2014-07-10 → 2014-07-23 (+13d) |  |  |
| 10 | **MISCELLANEOUS** | 2014-02-17 → 2014-03-02 (+13d) | 2014-05-13 → 2014-05-26 (+13d) |  |  |
| DUKHCONP2BZ5MSEX5000 | Construction of Manholes | 2014-02-17 → 2014-03-02 (+13d) | 2014-03-17 → 2014-03-30 (+13d) |  | -37d → -48d |
| DUKHCONP2BZ5MSEX5005 | Construction of Soak pit, Chambers | 2014-03-03 → 2014-03-16 (+13d) | 2014-03-31 → 2014-04-13 (+13d) |  | -37d → -48d |
| DUKHCONP2BZ5MSEX5020 | Construction Entrance Ramp | 2014-03-11 → 2014-03-24 (+13d) | 2014-04-02 → 2014-04-15 (+13d) |  | -33d → -44d |
| DUKHCONP2BZ5MSEX5015 | Construction of grease Trap | 2014-03-23 → 2014-04-05 (+13d) | 2014-04-14 → 2014-04-27 (+13d) |  | -37d → -48d |
| DUKHCONP2BZ5MSEX5055 | Installation Steel Door | 2014-03-23 → 2014-04-05 (+13d) | 2014-04-14 → 2014-04-27 (+13d) |  | -33d → -44d |
| DUKHCONP2BZ5MSEX5025 | SS.Handrails and Balustrades | 2014-04-03 → 2014-04-16 (+13d) | 2014-04-26 → 2014-05-08 (+12d) |  | -33d → -44d |
| DUKHCONP2BZ5MSEX5010 | Telephone cable laying | 2014-04-15 → 2014-04-28 (+13d) | 2014-05-13 → 2014-05-26 (+13d) |  | -37d → -48d |
| 15 | **WATER TANK ENCLOSURE** | 2014-04-09 → 2014-04-22 (+13d) | 2014-07-10 → 2014-07-23 (+13d) |  |  |
| DUKHCONP2BZ5WEEX5030 | Excavation | 2014-04-09 → 2014-04-22 (+13d) | 2014-05-01 → 2014-05-14 (+13d) |  | -48d → -59d |
| DUKHCONP2BZ5WEEX5035 | Construction of Raft | 2014-04-15 → 2014-04-28 (+13d) | 2014-05-13 → 2014-05-26 (+13d) |  | -48d → -59d |
| DUKHCONP2BZ5WEEX5040 | Block works & Plastering | 2014-04-24 → 2014-05-07 (+13d) | 2014-05-22 → 2014-06-04 (+13d) |  | -48d → -59d |
| DUKHCONP2BZ5WEEX5045 | Flooring & Painting | 2014-05-06 → 2014-05-19 (+13d) | 2014-06-03 → 2014-06-16 (+13d) |  | -48d → -59d |
| DUKHCONP2BZ5MSEX5335 | Aluminum Roll-up Shutter with 2m Wall | 2014-05-05 → 2014-05-29 (+24d) | 2014-06-02 → 2014-06-26 (+24d) |  | 10d → -11d |
| DUKHCONP2BZ5WEEX5050 | Installation of Steel | 2014-05-24 → 2014-06-05 (+12d) | 2014-06-15 → 2014-06-28 (+13d) |  | -48d → -59d |
| DUKHCONP2BZ5WEEX5060 | Structural steel & SS Shed cover installation | 2014-05-29 → 2014-06-11 (+13d) | 2014-06-26 → 2014-07-09 (+13d) |  | -48d → -59d |
| DUKHCONP2BZ5WEEX5065 | Install. of Water Tank,Chiller,Pump & Meter | 2014-06-10 → 2014-06-23 (+13d) | 2014-07-08 → 2014-07-21 (+13d) |  | -48d → -59d |
| DUKHCONP2BZ5WEEX5070 | Installation ladder for water Tank | 2014-06-18 → 2014-07-01 (+13d) | 2014-07-10 → 2014-07-23 (+13d) |  | -48d → -59d |
| 20 | **HARD LANDSCAPING** | 2014-04-12 → 2014-04-24 (+12d) | 2014-05-31 → 2014-06-12 (+12d) |  |  |
| DUKHCONP2BZ5HDEX5090 | kerb works | 2014-04-12 → 2014-04-24 (+12d) | 2014-05-04 → 2014-05-17 (+13d) |  | -33d → -44d |
| DUKHCONP2BZ5HDEX5095 | Cobble Stone Works | 2014-04-23 → 2014-05-06 (+13d) | 2014-05-15 → 2014-05-28 (+13d) |  | -33d → -44d |
| DUKHCONP2BZ5HDEX5100 | Interlock works | 2014-05-08 → 2014-05-21 (+13d) | 2014-05-31 → 2014-06-12 (+12d) |  | -33d → -44d |
| 25 | **SOFT LANDSCAPING** | 2014-05-20 → 2014-06-02 (+13d) | 2014-06-23 → 2014-07-06 (+13d) |  |  |
| DUKHCONP2BZ5SLEX5105 | Laying of Grass/ green area | 2014-05-20 → 2014-06-02 (+13d) | 2014-06-11 → 2014-06-24 (+13d) |  | -33d → -44d |
| DUKHCONP2BZ5SLEX5110 | Laying of Palm tree | 2014-06-01 → 2014-06-14 (+13d) | 2014-06-23 → 2014-07-06 (+13d) |  | -33d → -44d |
| L50 | **PACKAGE-2B INFRASTRUCTURE WORKS** | 2013-08-22 → 2013-08-27 (+5d) | 2014-08-07 → 2014-08-20 (+13d) |  |  |
| 10 | **ZONE- 1** | 2013-08-22 → 2013-08-27 (+5d) | 2014-04-24 → 2014-05-19 (+25d) |  |  |
| 10 | **INFRASTRUCTURE WORKS** | 2013-08-22 → 2013-08-27 (+5d) | 2014-04-24 → 2014-05-19 (+25d) |  |  |
| 10 | **DRAINAGE LINES** | 2013-08-22 → 2013-08-27 (+5d) | 2013-10-10 → 2013-10-15 (+5d) |  |  |
| DUKHCONI2BZ1DRGL5115 | Excavation for Drainage line | 2013-08-22 → 2013-08-27 A (+5d) | 2013-09-19 → 2013-09-24 A (+5d) | 0% → 100% | 1d → none |
| DUKHCONI2BZ1DRGL5120 | Laying of Drainage line | 2013-08-29 → 2013-09-03 A (+5d) | 2013-09-26 → 2013-10-01 A (+5d) | 0% → 100% | 1d → none |
| DUKHCONI2BZ1DRGL5125 | Testing of Drainage line | 2013-09-07 → 2013-09-11 A (+4d) | 2013-10-05 → 2013-10-09 A (+4d) | 0% → 100% | 1d → none |
| DUKHCONI2BZ1DRGL5130 | Backfilling Drainage line | 2013-09-24 → 2013-09-29 A (+5d) | 2013-10-10 → 2013-10-15 A (+5d) | 0% → 100% | 1d → none |
| 15 | **MANHOLES & SOAKAWAY** | 2013-09-24 → 2013-09-29 (+5d) | 2013-12-16 → 2013-12-24 (+8d) |  |  |
| DUKHCONI2BZ1SAGL5135 | Construction of manholes Drainage | 2013-09-24 → 2013-09-29 A (+5d) | 2013-10-24 → 2013-10-29 A (+5d) | 0% → 100% | 52d → none |
| DUKHCONI2BZ1SAGL5140 | Construction of soakaways | 2013-09-24 → 2013-09-29 A (+5d) | 2013-10-24 → 2013-10-29 A (+5d) | 0% → 100% | 1d → none |
| DUKHCONI2BZ1SAGL5145 | Construction of Road gullies | 2013-10-26 → 2013-11-02 (+7d) | 2013-11-23 → 2013-11-30 (+7d) |  | 1d → -5d |
| DUKHCONI2BZ1SAGL5150 | Connection with existing sewer manhole | 2013-11-24 → 2013-12-01 (+7d) | 2013-12-16 → 2013-12-24 (+8d) |  | 27d → 21d |
| 20 | **WATER SUPPLY SYSTEM** | 2013-10-06 → 2013-11-02 (+27d) | 2013-12-23 → 2014-01-16 (+24d) |  |  |
| DUKHCONI2BZ1WSGL5155 | Excavation for water line | 2013-10-06 → 2013-11-02 (+27d) | 2013-11-05 → 2013-11-30 (+25d) |  | 1d → -20d |
| DUKHCONI2BZ1WSGL5160 | Laying of water line | 2013-10-12 → 2013-11-07 (+26d) | 2013-11-11 → 2013-12-05 (+24d) |  | 1d → -20d |
| DUKHCONI2BZ1WSGL5165 | Testing of potable water line | 2013-10-20 → 2013-11-13 (+24d) | 2013-11-17 → 2013-12-11 (+24d) |  | 1d → -20d |
| DUKHCONI2BZ1WSGL5170 | Backfilling potable water line | 2013-10-26 → 2013-11-19 (+24d) | 2013-11-23 → 2013-12-17 (+24d) |  | 1d → -20d |
| DUKHCONI2BZ1WSGL5175 | Construction of valve chambers & Thrust Blocks | 2013-10-31 → 2013-11-25 (+25d) | 2013-11-28 → 2013-12-24 (+26d) |  | 22d → 1d |
| DUKHCONI2BZ1WSGL5180 | Installation of meter ,Accessories & Connection | 2013-11-30 → 2013-12-25 (+25d) | 2013-12-23 → 2014-01-16 (+24d) |  | 22d → 1d |
| 25 | **FIREFIGHTING LINES** | 2013-10-31 → 2013-11-25 (+25d) | 2013-12-31 → 2014-01-25 (+25d) |  |  |
| DUKHCONI2BZ1FFGL5185 | Excavation for firefighting line | 2013-10-31 → 2013-11-25 (+25d) | 2013-11-28 → 2013-12-24 (+26d) |  | 1d → -20d |
| DUKHCONI2BZ1FFGL5190 | Laying of firefighting line | 2013-11-09 → 2013-12-03 (+24d) | 2013-12-07 → 2014-01-01 (+25d) |  | 1d → -20d |
| DUKHCONI2BZ1FFGL5195 | Testing of firefighting line | 2013-11-14 → 2013-12-09 (+25d) | 2013-12-12 → 2014-01-07 (+26d) |  | 1d → -20d |
| DUKHCONI2BZ1FFGL5200 | Backfilling firefighting line | 2013-11-20 → 2013-12-15 (+25d) | 2013-12-19 → 2014-01-13 (+25d) |  | 1d → -20d |
| DUKHCONI2BZ1FFGL5205 | Construction of valve chambers & Thrust Blocks | 2013-11-26 → 2013-12-22 (+26d) | 2013-12-25 → 2014-01-19 (+25d) |  | 15d → -6d |
| DUKHCONI2BZ1FFGL5210 | Connection with existing Firewater System | 2013-12-02 → 2013-12-28 (+26d) | 2013-12-31 → 2014-01-25 (+25d) |  | 15d → -6d |
| 30 | **ELECTRICAL LINES** | 2013-11-28 → 2013-12-24 (+26d) | 2014-01-22 → 2014-02-17 (+26d) |  |  |
| DUKHCONI2BZ1ELGL5215 | Excavation Cable Trenches & Duct Banks | 2013-11-28 → 2013-12-24 (+26d) | 2013-12-28 → 2014-01-21 (+24d) |  | 3d → -18d |
| DUKHCONI2BZ1ELGL5220 | Laying of electrical cables | 2013-12-04 → 2013-12-30 (+26d) | 2014-01-02 → 2014-01-27 (+25d) |  | 6d → -15d |
| DUKHCONI2BZ1ELGL5225 | Backfilling Electrical trench | 2013-12-12 → 2014-01-07 (+26d) | 2014-01-11 → 2014-02-04 (+24d) |  | 6d → -15d |
| DUKHCONI2BZ1ELGL5230 | Construction of Submain Board & Feeder Pillar | 2013-12-25 → 2014-01-19 (+25d) | 2014-01-22 → 2014-02-17 (+26d) |  | 46d → 25d |
| 35 | **STREET LIGHTING** | 2013-11-28 → 2013-12-24 (+26d) | 2014-02-22 → 2014-03-18 (+24d) |  |  |
| DUKHCONI2BZ1STGL5235 | Excavation for Street lighting | 2013-11-28 → 2013-12-24 (+26d) | 2013-12-28 → 2014-01-21 (+24d) |  | 3d → -18d |
| DUKHCONI2BZ1STGL5240 | Construction of Duct Banks | 2013-12-04 → 2013-12-30 (+26d) | 2014-01-02 → 2014-01-27 (+25d) |  | 3d → -18d |
| DUKHCONI2BZ1STGL5245 | Construction of Foundation | 2013-12-04 → 2013-12-30 (+26d) | 2014-01-02 → 2014-01-27 (+25d) |  | 3d → -18d |
| DUKHCONI2BZ1STGL5250 | Backfilling Street Lighting | 2013-12-10 → 2014-01-05 (+26d) | 2014-01-08 → 2014-02-02 (+25d) |  | 3d → -18d |
| DUKHCONI2BZ1STGL5255 | Installation of light Post | 2013-12-23 → 2014-01-16 (+24d) | 2014-01-20 → 2014-02-15 (+26d) |  | 66d → 45d |
| DUKHCONI2BZ1STGL5260 | Electrical Works | 2014-01-23 → 2014-02-18 (+26d) | 2014-02-22 → 2014-03-18 (+24d) |  | 46d → 25d |
| 40 | **IRRIGATION LINES** | 2014-01-12 → 2014-02-05 (+24d) | 2014-03-19 → 2014-04-13 (+25d) |  |  |
| DUKHCONI2BZ1IRGL5265 | Excavation for irrigation line | 2014-01-12 → 2014-02-05 (+24d) | 2014-02-09 → 2014-03-06 (+25d) |  | 14d → -7d |
| DUKHCONI2BZ1IRGL5270 | Laying of irrigationline | 2014-01-18 → 2014-02-12 (+25d) | 2014-02-16 → 2014-03-12 (+24d) |  | 14d → -7d |
| DUKHCONI2BZ1IRGL5275 | Testing of irrigation line | 2014-01-23 → 2014-02-18 (+26d) | 2014-02-22 → 2014-03-18 (+24d) |  | 14d → -7d |

| ID | Task | Start | Finish | Complete | Total float |
| --- | --- | --- | --- | --- | --- |
| DUKHCONI2BZ1IRGL5280 | Backfilling irrigation line | 2014-01-29 → 2014-02-24 (+26d) | 2014-02-27 → 2014-03-24 (+25d) |  | 14d → -7d |
| DUKHCONI2BZ1IRGL5285 | Construction of Thrust Blocks,Pull boxes | 2014-02-10 → 2014-03-08 (+26d) | 2014-03-11 → 2014-04-05 (+25d) |  | 19d → -2d |
| DUKHCONI2BZ1IRGL5290 | Irrigation Fittings (Nozzle,Values) | 2014-02-19 → 2014-03-16 (+25d) | 2014-03-19 → 2014-04-13 (+25d) |  | 19d → -2d |
| 45 | **TELECOMMUNICATION LINES** | 2013-12-23 → 2014-01-16 (+24d) | 2014-02-12 → 2014-03-09 (+25d) |  |  |
| DUKHCONI2BZ1TCGL5295 | Excavation Telecommunication trenches | 2013-12-23 → 2014-01-16 (+24d) | 2014-01-14 → 2014-02-08 (+25d) |  | 3d → -18d |
| DUKHCONI2BZ1TCGL5300 | Laying of cables | 2013-12-29 → 2014-01-22 (+24d) | 2014-01-20 → 2014-02-15 (+26d) |  | 3d → -18d |
| DUKHCONI2BZ1TCGL5305 | Backfilling telecommunication trench | 2014-01-04 → 2014-01-28 (+24d) | 2014-01-26 → 2014-02-20 (+25d) |  | 3d → -18d |
| DUKHCONI2BZ1TCGL5310 | Connection & Installation | 2014-01-20 → 2014-02-15 (+26d) | 2014-02-12 → 2014-03-09 (+25d) |  | 44d → 23d |
| 50 | **BOUNDARY WALL** | 2013-12-23 → 2014-01-16 (+24d) | 2014-03-19 → 2014-04-13 (+25d) |  |  |
| DUKHCONI2BZ1BWGL5315 | Construction of Boundary Wall (Ht-3m) | 2013-12-23 → 2014-01-16 (+24d) | 2014-01-20 → 2014-02-15 (+26d) |  | 27d → 6d |
| DUKHCONI2BZ1BWGL5320 | Install.Steel Gate,Entance Barrier (3m Wall) | 2014-01-08 → 2014-02-02 (+25d) | 2014-02-05 → 2014-03-03 (+26d) |  | 27d → 6d |
| DUKHCONI2BZ1BWGL5325 | Const. of Villa Front Boundary Wall (Ht-2m) | 2014-02-06 → 2014-03-04 (+26d) | 2014-03-08 → 2014-04-01 (+24d) |  | 27d → 6d |
| DUKHCONI2BZ1BWGL5330 | Const. of Blockwork fence Wall (Ht-1.85m) | 2014-02-19 → 2014-03-16 (+25d) | 2014-03-19 → 2014-04-13 (+25d) |  | 44d → 23d |
| 55 | **ROAD WORKS** | 2014-01-15 → 2014-02-09 (+25d) | 2014-04-01 → 2014-04-26 (+25d) |  |  |
| DUKHCONI2BZ1RWGL6000 | Excavation & Earth Filling | 2014-01-15 → 2014-02-09 (+25d) | 2014-01-26 → 2014-02-20 (+25d) |  | 3d → -18d |
| DUKHCONI2BZ1RWGL6005 | Laying of Sub Grade | 2014-01-27 → 2014-02-22 (+26d) | 2014-02-25 → 2014-03-22 (+25d) |  | 3d → -18d |
| DUKHCONI2BZ1RWGL6010 | Laying of Precast Kerbs | 2014-02-08 → 2014-03-05 (+25d) | 2014-03-09 → 2014-04-02 (+24d) |  | 3d → -18d |
| DUKHCONI2BZ1RWGL6015 | Laying of Granular Sub Base Coarse | 2014-02-20 → 2014-03-17 (+25d) | 2014-03-15 → 2014-04-08 (+24d) |  | 3d → -18d |
| DUKHCONI2BZ1RWGL6020 | Laying of Road Base Asphalt Concrete | 2014-03-16 → 2014-04-09 (+24d) | 2014-03-20 → 2014-04-14 (+25d) |  | 18d → -3d |
| DUKHCONI2BZ1RWGL6025 | Laying of Asphalt Wearing Coarse | 2014-03-22 → 2014-04-15 (+24d) | 2014-03-26 → 2014-04-20 (+25d) |  | 33d → 12d |
| DUKHCONI2BZ1RWGL6030 | Traffic Signage & Road Marking | 2014-03-27 → 2014-04-21 (+25d) | 2014-04-01 → 2014-04-26 (+25d) |  | 33d → 12d |
| 60 | **PARKING SHED** | 2014-02-26 → 2014-03-23 (+25d) | 2014-04-24 → 2014-05-19 (+25d) |  |  |
| DUKHCONI2BZ1PSGL7000 | Excavation | 2014-02-26 → 2014-03-23 (+25d) | 2014-03-15 → 2014-04-08 (+24d) |  | 23d → 2d |
| DUKHCONI2BZ1PSGL7005 | Foundation casting | 2014-03-10 → 2014-04-03 (+24d) | 2014-03-26 → 2014-04-20 (+25d) |  | 18d → -3d |
| DUKHCONI2BZ1PSGL7010 | Column, Frame& Fabrics Erection | 2014-03-22 → 2014-04-15 (+24d) | 2014-04-19 → 2014-05-13 (+24d) |  | 18d → -3d |
| DUKHCONI2BZ1PSGL7015 | Electrical Works-Parking Shed | 2014-03-27 → 2014-04-21 (+25d) | 2014-04-24 → 2014-05-19 (+25d) |  | 18d → -3d |
| 65 | **HARD LANDSCAPING** | 2014-01-15 → 2014-02-09 (+25d) | 2014-04-07 → 2014-05-01 (+24d) |  |  |
| DUKHCONI2BZ1HDGL7020 | Precast Concrete Kerbs works | 2014-01-15 → 2014-02-09 (+25d) | 2014-02-06 → 2014-03-04 (+26d) |  | 18d → -3d |
| DUKHCONI2BZ1HDGL7025 | Interlocking for Walkways | 2014-01-27 → 2014-02-22 (+26d) | 2014-02-25 → 2014-03-22 (+25d) |  | 18d → -3d |
| DUKHCONI2BZ1HDGL7030 | Construction of Retaining wall | 2014-02-08 → 2014-03-05 (+25d) | 2014-03-09 → 2014-04-02 (+24d) |  | 18d → -3d |
| DUKHCONI2BZ1HDGL7035 | Construction of Wash Stone Boulders | 2014-02-08 → 2014-03-05 (+25d) | 2014-03-09 → 2014-04-02 (+24d) |  | 18d → -3d |
| DUKHCONI2BZ1HDGL7040 | Construction of Speed Humps | 2014-03-27 → 2014-04-21 (+25d) | 2014-04-07 → 2014-05-01 (+24d) |  | 48d → 27d |
| 70 | **SOFT LANDSCAPING** | 2014-02-20 → 2014-03-17 (+25d) | 2014-04-13 → 2014-05-07 (+24d) |  |  |
| DUKHCONI2BZ1SLGL7200 | Excavation | 2014-02-20 → 2014-03-17 (+25d) | 2014-03-20 → 2014-04-14 (+25d) |  | 18d → -3d |
| DUKHCONI2BZ1SLGL7205 | Sweet Soil Laying | 2014-03-04 → 2014-03-29 (+25d) | 2014-04-01 → 2014-04-26 (+25d) |  | 18d → -3d |
| DUKHCONI2BZ1SLGL7210 | Plantation works | 2014-03-16 → 2014-04-09 (+24d) | 2014-04-13 → 2014-05-07 (+24d) |  | 28d → 7d |
| 15 | **ZONE - 2** | 2013-10-02 → 2013-10-07 (+5d) | 2014-06-12 → 2014-07-07 (+25d) |  |  |
| 10 | **INFRASTRUCTURE WORKS** | 2013-10-02 → 2013-10-07 (+5d) | 2014-06-12 → 2014-07-07 (+25d) |  |  |
| 10 | **DRAINAGE LINES** | 2013-10-02 → 2013-10-07 (+5d) | 2013-11-23 → 2013-11-27 (+4d) |  |  |
| DUKHCONI2BZ2DRGL5115 | Excavation for Drainage line | 2013-10-02 → 2013-10-07 A (+5d) | 2013-11-02 → 2013-11-06 (+4d) | 0% → 80% | 8d → 4d |
| DUKHCONI2BZ2DRGL5120 | Laying of Drainage line | 2013-10-09 → 2013-10-14 A (+5d) | 2013-11-09 → 2013-11-13 (+4d) | 0% → 56% | 8d → 4d |
| DUKHCONI2BZ2DRGL5125 | Testing of Drainage line | 2013-10-20 → 2013-10-24 A (+4d) | 2013-11-17 → 2013-11-21 (+4d) | 0% → 28% | 8d → 4d |
| DUKHCONI2BZ2DRGL5130 | Backfilling Drainage line | 2013-11-06 → 2013-11-11 (+5d) | 2013-11-23 → 2013-11-27 (+4d) |  | 8d → 4d |
| 15 | **MANHOLES & SOAKAWAY** | 2013-11-06 → 2013-11-11 (+5d) | 2014-01-27 → 2014-02-01 (+5d) |  |  |
| DUKHCONI2BZ2SAGL5135 | Construction of manholes Drainage | 2013-11-06 → 2013-11-11 (+5d) | 2013-12-04 → 2013-12-09 (+5d) |  | 57d → 53d |
| DUKHCONI2BZ2SAGL5140 | Construction of soakaways | 2013-11-06 → 2013-11-11 (+5d) | 2013-12-04 → 2013-12-09 (+5d) |  | 8d → 4d |
| DUKHCONI2BZ2SAGL5145 | Construction of Road gullies | 2013-12-05 → 2013-12-10 (+5d) | 2014-01-04 → 2014-01-08 (+4d) |  | 8d → 4d |
| DUKHCONI2BZ2SAGL5150 | Connection with existing sewer manhole | 2014-01-05 → 2014-01-09 (+4d) | 2014-01-27 → 2014-02-01 (+5d) |  | 32d → 28d |
| 20 | **WATER SUPPLY SYSTEM** | 2013-11-24 → 2013-12-19 (+25d) | 2014-02-08 → 2014-03-05 (+25d) |  |  |
| DUKHCONI2BZ2WSGL5155 | Excavation for water line | 2013-11-24 → 2013-12-19 (+25d) | 2013-12-23 → 2014-01-16 (+24d) |  | 3d → -18d |
| DUKHCONI2BZ2WSGL5160 | Laying of water line | 2013-11-30 → 2013-12-25 (+25d) | 2013-12-29 → 2014-01-22 (+24d) |  | 3d → -18d |
| DUKHCONI2BZ2WSGL5165 | Testing of potable water line | 2013-12-05 → 2013-12-31 (+26d) | 2014-01-04 → 2014-01-28 (+24d) |  | 3d → -18d |
| DUKHCONI2BZ2WSGL5170 | Backfilling potable water line | 2013-12-11 → 2014-01-06 (+26d) | 2014-01-09 → 2014-02-03 (+25d) |  | 3d → -18d |
| DUKHCONI2BZ2WSGL5175 | Construction of valve chambers & Thrust Blocks | 2013-12-17 → 2014-01-12 (+26d) | 2014-01-15 → 2014-02-09 (+25d) |  | 22d → 1d |
| DUKHCONI2BZ2WSGL5180 | Installation of meter ,Accessories & Connection | 2014-01-16 → 2014-02-10 (+25d) | 2014-02-08 → 2014-03-05 (+25d) |  | 22d → 1d |
| 25 | **FIREFIGHTING LINES** | 2013-12-21 → 2014-01-14 (+24d) | 2014-02-19 → 2014-03-16 (+25d) |  |  |
| DUKHCONI2BZ2FFGL5185 | Excavation for firefighting line | 2013-12-21 → 2014-01-14 (+24d) | 2014-01-18 → 2014-02-12 (+25d) |  | 1d → -20d |
| DUKHCONI2BZ2FFGL5190 | Laying of firefighting line | 2013-12-29 → 2014-01-22 (+24d) | 2014-01-26 → 2014-02-20 (+25d) |  | 1d → -20d |
| DUKHCONI2BZ2FFGL5195 | Testing of firefighting line | 2014-01-04 → 2014-01-28 (+24d) | 2014-02-01 → 2014-02-26 (+25d) |  | 1d → -20d |
| DUKHCONI2BZ2FFGL5200 | Backfilling firefighting line | 2014-01-09 → 2014-02-03 (+25d) | 2014-02-06 → 2014-03-04 (+26d) |  | 1d → -20d |
| DUKHCONI2BZ2FFGL5205 | Construction of valve chambers & Thrust Blocks | 2014-01-15 → 2014-02-09 (+25d) | 2014-02-13 → 2014-03-10 (+25d) |  | 13d → -8d |
| DUKHCONI2BZ2FFGL5210 | Connection with existing Firewater System | 2014-01-21 → 2014-02-16 (+26d) | 2014-02-19 → 2014-03-16 (+25d) |  | 13d → -8d |
| 30 | **ELECTRICAL LINES** | 2014-01-18 → 2014-02-12 (+25d) | 2014-03-13 → 2014-04-07 (+25d) |  |  |
| DUKHCONI2BZ2ELGL5215 | Excavation Cable Trenches & Duct Banks | 2014-01-18 → 2014-02-12 (+25d) | 2014-02-16 → 2014-03-12 (+24d) |  | 1d → -20d |
| DUKHCONI2BZ2ELGL5220 | Laying of electrical cables | 2014-01-23 → 2014-02-18 (+26d) | 2014-02-22 → 2014-03-18 (+24d) |  | 4d → -17d |
| DUKHCONI2BZ2ELGL5225 | Backfilling Electrical trench | 2014-02-01 → 2014-02-26 (+25d) | 2014-03-02 → 2014-03-26 (+24d) |  | 4d → -17d |
| DUKHCONI2BZ2ELGL5230 | Construction of Submain Board & Feeder Pillar | 2014-02-13 → 2014-03-10 (+25d) | 2014-03-13 → 2014-04-07 (+25d) |  | 29d → 8d |
| 35 | **STREET LIGHTING** | 2014-01-18 → 2014-02-12 (+25d) | 2014-04-12 → 2014-05-06 (+24d) |  |  |
| DUKHCONI2BZ2STGL5235 | Excavation for Street lighting | 2014-01-18 → 2014-02-12 (+25d) | 2014-02-16 → 2014-03-12 (+24d) |  | 1d → -20d |
| DUKHCONI2BZ2STGL5240 | Construction of Duct Banks | 2014-01-23 → 2014-02-18 (+26d) | 2014-02-22 → 2014-03-18 (+24d) |  | 1d → -20d |

| ID | Task | Start | Finish | Total float | Other |
| --- | --- | --- | --- | --- | --- |
| DUKHCONI2BZ2STGL5245 | Construction of Foundation | 2014-01-23 → 2014-02-18 (+26d) | 2014-02-22 → 2014-03-18 (+24d) | 1d → -20d |  |
| DUKHCONI2BZ2STGL5250 | Backfilling Street Lighting | 2014-01-29 → 2014-02-24 (+26d) | 2014-02-27 → 2014-03-24 (+25d) | 1d → -20d |  |
| DUKHCONI2BZ2STGL5255 | Installation of light Post | 2014-02-10 → 2014-03-08 (+26d) | 2014-03-11 → 2014-04-05 (+25d) | 49d → 28d |  |
| DUKHCONI2BZ2STGL5260 | Electrical Works | 2014-03-15 → 2014-04-08 (+24d) | 2014-04-12 → 2014-05-06 (+24d) | 29d → 8d |  |
| 40 | **IRRIGATION LINES** | 2014-03-03 → 2014-03-27 (+24d) | 2014-05-07 → 2014-06-01 (+25d) |  |  |
| DUKHCONI2BZ2IRGL5265 | Excavation for irrigation line | 2014-03-03 → 2014-03-27 (+24d) | 2014-03-31 → 2014-04-24 (+24d) | 12d → -9d |  |
| DUKHCONI2BZ2IRGL5270 | Laying of irrigationline | 2014-03-09 → 2014-04-02 (+24d) | 2014-04-06 → 2014-04-30 (+24d) | 12d → -9d |  |
| DUKHCONI2BZ2IRGL5275 | Testing of irrigation line | 2014-03-15 → 2014-04-08 (+24d) | 2014-04-12 → 2014-05-06 (+24d) | 12d → -9d |  |
| DUKHCONI2BZ2IRGL5280 | Backfilling irrigation line | 2014-03-20 → 2014-04-14 (+25d) | 2014-04-17 → 2014-05-12 (+25d) | 12d → -9d |  |
| DUKHCONI2BZ2IRGL5285 | Construction of Thrust Blocks,Pull boxes | 2014-04-01 → 2014-04-26 (+25d) | 2014-04-29 → 2014-05-24 (+25d) | 12d → -9d |  |
| DUKHCONI2BZ2IRGL5290 | Irrigation Fittings (Nozzle,Values) | 2014-04-09 → 2014-05-04 (+25d) | 2014-05-07 → 2014-06-01 (+25d) | 12d → -9d |  |
| 45 | **TELECOMMUNICATION LINES** | 2014-02-10 → 2014-03-08 (+26d) | 2014-03-29 → 2014-04-22 (+24d) |  |  |
| DUKHCONI2BZ2TCGL5295 | Excavation Telecommunication trenches | 2014-02-10 → 2014-03-08 (+26d) | 2014-03-05 → 2014-03-30 (+25d) | 1d → -20d |  |
| DUKHCONI2BZ2TCGL5300 | Laying of cables | 2014-02-17 → 2014-03-13 (+24d) | 2014-03-11 → 2014-04-05 (+25d) | 1d → -20d |  |
| DUKHCONI2BZ2TCGL5305 | Backfilling telecommunication trench | 2014-02-23 → 2014-03-19 (+24d) | 2014-03-17 → 2014-04-10 (+24d) | 1d → -20d |  |
| DUKHCONI2BZ2TCGL5310 | Connection & Installation | 2014-03-06 → 2014-03-31 (+25d) | 2014-03-29 → 2014-04-22 (+24d) | 26d → 5d |  |
| 50 | **BOUNDARY WALL** | 2014-02-10 → 2014-03-08 (+26d) | 2014-05-07 → 2014-06-01 (+25d) |  |  |
| DUKHCONI2BZ2BWGL5315 | Construction of Boundary Wall (Ht-3m) | 2014-02-10 → 2014-03-08 (+26d) | 2014-03-11 → 2014-04-05 (+25d) | 10d → -11d |  |
| DUKHCONI2BZ2BWGL5320 | Install.Steel Gate,Entance Barrier (3m Wall) | 2014-02-27 → 2014-03-24 (+25d) | 2014-03-27 → 2014-04-21 (+25d) | 10d → -11d |  |
| DUKHCONI2BZ2BWGL5325 | Const. of Villa Front Boundary Wall (Ht-2m) | 2014-03-29 → 2014-04-22 (+24d) | 2014-04-26 → 2014-05-20 (+24d) | 10d → -11d |  |
| DUKHCONI2BZ2BWGL5330 | Const. of Blockwork fence Wall (Ht-1.85m) | 2014-04-09 → 2014-05-04 (+25d) | 2014-05-07 → 2014-06-01 (+25d) | 27d → 6d |  |
| 55 | **ROAD WORKS** | 2014-03-06 → 2014-03-31 (+25d) | 2014-05-20 → 2014-06-14 (+25d) |  |  |
| DUKHCONI2BZ2RWGL6000 | Excavation & Earth Filling | 2014-03-06 → 2014-03-31 (+25d) | 2014-03-17 → 2014-04-10 (+24d) | 1d → -20d |  |
| DUKHCONI2BZ2RWGL6005 | Laying of Sub Grade | 2014-03-18 → 2014-04-12 (+25d) | 2014-04-15 → 2014-05-10 (+25d) | 1d → -20d |  |
| DUKHCONI2BZ2RWGL6010 | Laying of Precast Kerbs | 2014-03-30 → 2014-04-23 (+24d) | 2014-04-27 → 2014-05-21 (+24d) | 1d → -20d |  |
| DUKHCONI2BZ2RWGL6015 | Laying of Granular Sub Base Coarse | 2014-04-10 → 2014-05-05 (+25d) | 2014-05-03 → 2014-05-27 (+24d) | 1d → -20d |  |
| DUKHCONI2BZ2RWGL6020 | Laying of Road Base Asphalt Concrete | 2014-05-04 → 2014-05-28 (+24d) | 2014-05-08 → 2014-06-02 (+25d) | 1d → -20d |  |
| DUKHCONI2BZ2RWGL6025 | Laying of Asphalt Wearing Coarse | 2014-05-10 → 2014-06-03 (+24d) | 2014-05-14 → 2014-06-08 (+25d) | 16d → -5d |  |
| DUKHCONI2BZ2RWGL6030 | Traffic Signage & Road Marking | 2014-05-15 → 2014-06-09 (+25d) | 2014-05-20 → 2014-06-14 (+25d) | 16d → -5d |  |
| 60 | **PARKING SHED** | 2014-04-16 → 2014-05-11 (+25d) | 2014-06-12 → 2014-07-07 (+25d) |  |  |
| DUKHCONI2BZ2PSGL7000 | Excavation | 2014-04-16 → 2014-05-11 (+25d) | 2014-05-03 → 2014-05-27 (+24d) | 6d → -15d |  |
| DUKHCONI2BZ2PSGL7005 | Foundation casting | 2014-04-28 → 2014-05-22 (+24d) | 2014-05-14 → 2014-06-08 (+25d) | 1d → -20d |  |
| DUKHCONI2BZ2PSGL7010 | Column, Frame& Fabrics Erection | 2014-05-10 → 2014-06-03 (+24d) | 2014-06-07 → 2014-07-01 (+24d) | 1d → -20d |  |
| DUKHCONI2BZ2PSGL7015 | Electrical Works-Parking Shed | 2014-05-15 → 2014-06-09 (+25d) | 2014-06-12 → 2014-07-07 (+25d) | 1d → -20d |  |
| 65 | **HARD LANDSCAPING** | 2014-03-06 → 2014-03-31 (+25d) | 2014-05-26 → 2014-06-19 (+24d) |  |  |
| DUKHCONI2BZ2HDGL7020 | Precast Concrete Kerbs works | 2014-03-06 → 2014-03-31 (+25d) | 2014-03-29 → 2014-04-22 (+24d) | 11d → -10d |  |
| DUKHCONI2BZ2HDGL7025 | Interlocking for Walkways | 2014-03-18 → 2014-04-12 (+25d) | 2014-04-15 → 2014-05-10 (+25d) | 11d → -10d |  |
| DUKHCONI2BZ2HDGL7030 | Construction of Retaining wall | 2014-03-30 → 2014-04-23 (+24d) | 2014-04-27 → 2014-05-21 (+24d) | 11d → -10d |  |
| DUKHCONI2BZ2HDGL7035 | Construction of Wash Stone Boulders | 2014-03-30 → 2014-04-23 (+24d) | 2014-04-27 → 2014-05-21 (+24d) | 11d → -10d |  |
| DUKHCONI2BZ2HDGL7040 | Construction of Speed Humps | 2014-05-15 → 2014-06-09 (+25d) | 2014-05-26 → 2014-06-19 (+24d) | 16d → -5d |  |
| 70 | **SOFT LANDSCAPING** | 2014-04-10 → 2014-05-05 (+25d) | 2014-06-01 → 2014-06-25 (+24d) |  |  |
| DUKHCONI2BZ2SLGL7200 | Excavation for Landscaping | 2014-04-10 → 2014-05-05 (+25d) | 2014-05-08 → 2014-06-02 (+25d) | 11d → -10d |  |
| DUKHCONI2BZ2SLGL7205 | Sweet Soil Laying | 2014-04-22 → 2014-05-17 (+25d) | 2014-05-20 → 2014-06-14 (+25d) | 11d → -10d |  |
| DUKHCONI2BZ2SLGL7210 | Plantation works | 2014-05-04 → 2014-05-28 (+24d) | 2014-06-01 → 2014-06-25 (+24d) | 11d → -10d |  |
| 25 | **SECONDARY BUILDINGS** | 2014-02-08 → 2014-03-01 (+21d) | 2014-08-07 → 2014-08-20 (+13d) |  |  |
| 10 | **INFRASTRUCTURE WORKS** | 2014-02-08 → 2014-03-01 (+21d) | 2014-08-07 → 2014-08-20 (+13d) |  |  |
| 10 | **IRRIGATION WATER TANK & PUMP ROOM** | 2014-02-16 → 2014-03-01 (+13d) | 2014-08-07 → 2014-08-20 (+13d) |  |  |
| DUKHCONI2BSBIWGL7400 | Excavation | 2014-02-16 → 2014-03-01 (+13d) | 2014-03-04 → 2014-03-17 (+13d) | -44d → -55d |  |
| DUKHCONI2BSBIWGL7405 | Blinding & base waterproofing | 2014-03-05 → 2014-03-18 (+13d) | 2014-03-16 → 2014-03-29 (+13d) | -44d → -55d | resources BLINDING MASON SK [64 h]; LABOR- SUBCONTRACTOR [48 h]; LABOR- SUBCONTRACTOR [24 h]; BLINDING QTY [78 Sqm]; WATERPROOFING QTY [78 Sqm]; WATERPROOFING SPECIALIST SK [64 h] → CONCRETE MASON SK [64 h]; LABOR- SUBCONTRACTOR [48 h]; LABOR- SUBCONTRACTOR [24 h]; BLINDING QTY [78 Sqm]; WATERPROOFING QTY [78 Sqm]; WATERPROOFING SPECIALIST SK [64 h] |
| DUKHCONI2BSBIWGL7410 | Construction of Raft slab | 2014-03-17 → 2014-03-30 (+13d) | 2014-03-27 → 2014-04-09 (+13d) | -44d → -55d |  |
| DUKHCONI2BSBIWGL7415 | Construction of RCC Wall | 2014-03-29 → 2014-04-10 (+12d) | 2014-04-26 → 2014-05-08 (+12d) | -44d → -55d |  |
| DUKHCONI2BSBIWGL7420 | Construction of Roof Slab | 2014-04-27 → 2014-05-10 (+13d) | 2014-05-19 → 2014-06-01 (+13d) | -44d → -55d |  |
| DUKHCONI2BSBIWGL7425 | Waterproofing & Backfilling | 2014-05-20 → 2014-06-02 (+13d) | 2014-06-05 → 2014-06-18 (+13d) | -38d → -49d |  |
| DUKHCONI2BSBIWGL7950 | Laying of Interlock | 2014-06-07 → 2014-06-19 (+12d) | 2014-06-17 → 2014-06-30 (+13d) | -23d → -34d |  |
| DUKHCONI2BSBIWGL7430 | Floor screed | 2014-06-14 → 2014-06-26 (+12d) | 2014-06-18 → 2014-07-01 (+13d) | -44d → -55d |  |
| DUKHCONI2BSBIWGL7435 | Installation of Boundary Fences | 2014-06-18 → 2014-07-01 (+13d) | 2014-07-05 → 2014-07-17 (+12d) | -23d → -34d |  |
| DUKHCONI2BSBIWGL7440 | Plumbing , Drainage & Firefighting works | 2014-06-19 → 2014-07-02 (+13d) | 2014-07-17 → 2014-07-30 (+13d) | -44d → -55d |  |
| DUKHCONI2BSBIWGL7445 | AC Works | 2014-06-19 → 2014-07-02 (+13d) | 2014-07-17 → 2014-07-30 (+13d) | -44d → -55d |  |
| DUKHCONI2BSBIWGL7450 | Electrical Works | 2014-06-19 → 2014-07-02 (+13d) | 2014-07-17 → 2014-07-30 (+13d) | -44d → -55d |  |
| DUKHCONI2BSBIWGL7455 | Internal epoxy coating & Painting | 2014-07-19 → 2014-07-31 (+12d) | 2014-07-23 → 2014-08-09 (+17d) | -44d → -55d |  |
| DUKHCONI2BSBIWGL7460 | Installation of Steel Ladder | 2014-07-24 → 2014-08-10 (+17d) | 2014-07-29 → 2014-08-14 (+16d) | -44d → -55d |  |
| DUKHCONI2BSBIWGL7465 | Installation of G.I Handrails | 2014-07-30 → 2014-08-16 (+17d) | 2014-08-07 → 2014-08-20 (+13d) | -44d → -55d |  |
| 25 | **GAZEBO** | 2014-02-08 → 2014-03-05 (+25d) | 2014-04-07 → 2014-05-01 (+24d) |  |  |
| DUKHCONI2BSBGZGL7900 | Construction of Concrete structure | 2014-02-08 → 2014-03-05 (+25d) | 2014-03-03 → 2014-03-27 (+24d) | 18d → -3d |  |
| DUKHCONI2BSBGZGL7905 | Installation of Wooden Works | 2014-02-20 → 2014-03-17 (+25d) | 2014-03-20 → 2014-04-14 (+25d) | 18d → -3d |  |
| DUKHCONI2BSBGZGL7915 | Park Benches Installation | 2014-02-20 → 2014-03-17 (+25d) | 2014-03-09 → 2014-04-02 (+24d) | 28d → 7d |  |
| DUKHCONI2BSBGZGL7910 | Electrical Works-Gazebo | 2014-03-22 → 2014-04-15 (+24d) | 2014-04-07 → 2014-05-01 (+24d) | 18d → -3d |  |
| L55 | **PACKAGE-3** |  | 2014-09-15 → 2014-10-30 (+45d) |  |  |
| 05 | **MOCK UP** | 2013-09-10 → 2013-10-26 (+46d) | 2014-02-08 → 2014-03-20 (+40d) |  |  |
| 15 | **FINISHING WORKS** | 2013-09-10 → 2013-10-26 (+46d) | 2014-02-08 → 2014-03-20 (+40d) |  |  |

| ID | Task | Start | Finish | Complete | Total float |
| --- | --- | --- | --- | --- | --- |
| 10 | **INTERNAL FINISHES** | 2013-09-10 → 2013-10-26 (+46d) | 2014-02-08 → 2014-03-20 (+40d) |  |  |
| 10 | **GROUND FLOOR** | 2013-09-10 → 2013-10-26 (+46d) | 2014-02-02 → 2014-01-29 (-4d) |  |  |
| DUKHCONP03MKARGF3000 | Block work | 2013-09-10 → 2013-10-26 A (+46d) | 2013-09-16 → 2013-10-31 A (+45d) | 0% → 100% | 8d → none |
| DUKHCONP03MKARGF3005 | Plastering work | 2013-09-23 → 2013-11-07 (+45d) | 2013-09-30 → 2013-11-14 (+45d) |  | 15d → -22d |
| DUKHCONP03MKARGF3010 | Flooring screed | 2013-09-26 → 2013-11-11 (+46d) | 2013-10-03 → 2013-11-18 (+46d) |  | 24d → -13d |
| DUKHCONP03MKARGF3015 | Wet area waterproofing & Protection Screed | 2013-09-30 → 2013-11-14 (+45d) | 2013-10-05 → 2013-11-19 (+45d) |  | 24d → -13d |
| DUKHCONP03MKARGF3020 | Ceramic Wall Tiling | 2013-10-06 → 2013-11-20 (+45d) | 2013-10-12 → 2013-11-26 (+45d) |  | 24d → -13d |
| DUKHCONP03MKARGF3030 | Paint First coat | 2013-11-16 → 2013-11-24 (+8d) | 2013-11-20 → 2013-11-28 (+8d) |  | 1d → -6d |
| DUKHCONP03MKARGF3025 | Porcelain Tile flooring | 2013-10-13 → 2013-11-27 (+45d) | 2013-10-21 → 2013-12-03 (+43d) |  | 24d → -13d |
| DUKHCONP03MKARGF3040 | Cobble Tile flooring | 2013-10-22 → 2013-12-04 (+43d) | 2013-10-27 → 2013-12-09 (+43d) |  | 38d → 1d |
| DUKHCONP03MKARGF3045 | Fixing of Suspension systems | 2013-11-21 → 2013-12-04 (+13d) | 2013-11-28 → 2013-12-11 (+13d) |  | 6d → -5d |
| DUKHCONP03MKARGF3035 | Slate Tile Flooring & Skirting | 2013-10-28 → 2013-12-10 (+43d) | 2013-11-02 → 2013-12-15 (+43d) |  | 38d → 1d |
| DUKHCONP03MKARGF3050 | Granite - Stair case flooring & Skirting | 2013-12-16 → 2013-12-10 (-6d) | 2013-12-24 → 2013-12-17 (-7d) |  | 5d → 10d |
| DUKHCONP03MKARGF3055 | Aluminum tile false ceiling | 2013-12-16 → 2013-12-12 (-4d) | 2013-12-24 → 2013-12-21 (-3d) |  | -4d → -1d |
| DUKHCONP03MKARGF3060 | Gypsum board false ceiling | 2013-12-07 → 2013-12-12 (+5d) | 2013-12-14 → 2013-12-21 (+7d) |  | 3d → -2d |
| DUKHCONP03MKARGF3065 | Wooden door | 2013-12-25 → 2013-12-22 (-3d) | 2013-12-30 → 2013-12-26 (-4d) |  | 7d → 10d |
| DUKHCONP03MKARGF3070 | Aluminum doors | 2013-12-31 → 2013-12-28 (-3d) | 2014-01-05 → 2014-01-01 (-4d) |  | 7d → 10d |
| DUKHCONP03MKARGF3075 | Carpentry & Joinery Works | 2014-01-06 → 2014-01-02 (-4d) | 2014-01-16 → 2014-01-13 (-3d) |  | 7d → 10d |
| DUKHCONP03MKARGF3080 | Aluminum windows | 2014-01-06 → 2014-01-02 (-4d) | 2014-01-11 → 2014-01-07 (-4d) |  | 23d → 26d |
| DUKHCONP03MKARGF3085 | S.S.Handrails & Balustrade | 2014-01-18 → 2014-01-14 (-4d) | 2014-01-25 → 2014-01-21 (-4d) |  | 12d → 15d |
| DUKHCONP03MKARGF3090 | Installation of Granite Counter Top | 2014-01-18 → 2014-01-14 (-4d) | 2014-01-25 → 2014-01-21 (-4d) |  | 11d → 14d |
| DUKHCONP03MKARGF3095 | Final Painting | 2014-01-26 → 2014-01-22 (-4d) | 2014-02-02 → 2014-01-29 (-4d) |  | 12d → 15d |
| 15 | **FIRST FLOORS** | 2013-10-26 → 2013-12-08 (+43d) | 2014-02-02 → 2014-03-15 (+41d) |  |  |
| DUKHCONP03MKARFF3300 | Block work | 2013-10-26 → 2013-12-08 (+43d) | 2013-10-31 → 2013-12-14 (+44d) |  | -27d → -64d |
| DUKHCONP03MKARFF3305 | Plastering work | 2013-11-07 → 2013-12-22 (+45d) | 2013-11-14 → 2013-12-29 (+45d) |  | -19d → -56d |
| DUKHCONP03MKARFF3310 | Flooring screed | 2013-11-11 → 2013-12-25 (+44d) | 2013-11-18 → 2014-01-01 (+44d) |  | -5d → -42d |
| DUKHCONP03MKARFF3315 | Wet area waterproofing & Protection Screed | 2013-11-14 → 2013-12-29 (+45d) | 2013-11-19 → 2014-01-02 (+44d) |  | -5d → -42d |
| DUKHCONP03MKARFF3320 | Ceramic Wall Tiling | 2013-11-20 → 2014-01-04 (+45d) | 2013-11-26 → 2014-01-09 (+44d) |  | -3d → -40d |
| DUKHCONP03MKARFF3330 | Paint First coat | 2013-11-24 → 2014-01-07 (+44d) | 2013-11-28 → 2014-01-12 (+45d) |  | 1d → -36d |
| DUKHCONP03MKARFF3325 | Porcelain Tile flooring | 2013-11-27 → 2014-01-11 (+45d) | 2013-12-03 → 2014-01-16 (+44d) |  | -3d → -40d |
| DUKHCONP03MKARFF3335 | Slate Tile Flooring & Skirting | 2013-12-04 → 2014-01-18 (+45d) | 2013-12-09 → 2014-01-22 (+44d) |  | 17d → -20d |
| DUKHCONP03MKARFF3345 | Fixing of Suspension systems | 2013-12-04 → 2014-01-18 (+45d) | 2013-12-11 → 2014-01-25 (+45d) |  | 2d → -35d |
| DUKHCONP03MKARFF3350 | Granite - Stair case flooring & Skirting | 2013-12-16 → 2014-01-18 (+33d) | 2013-12-24 → 2014-01-25 (+32d) |  | 0d → -27d |
| DUKHCONP03MKARFF3355 | Aluminum tile false ceiling | 2013-12-16 → 2014-01-26 (+41d) | 2013-12-24 → 2014-02-02 (+40d) |  | 4d → -30d |
| DUKHCONP03MKARFF3360 | Gypsum board false ceiling | 2013-12-12 → 2014-01-26 (+45d) | 2013-12-21 → 2014-02-02 (+43d) |  | 2d → -35d |
| DUKHCONP03MKARFF3365 | Wooden door | 2013-12-25 → 2014-02-03 (+40d) | 2013-12-30 → 2014-02-08 (+40d) |  | 6d → -28d |
| DUKHCONP03MKARFF3370 | Aluminum doors | 2013-12-31 → 2014-02-09 (+40d) | 2014-01-05 → 2014-02-15 (+41d) |  | 6d → -28d |
| DUKHCONP03MKARFF3375 | Carpentry & Joinery Works | 2014-01-06 → 2014-02-16 (+41d) | 2014-01-16 → 2014-02-26 (+41d) |  | 6d → -28d |
| DUKHCONP03MKARFF3380 | Aluminum windows | 2014-01-06 → 2014-02-16 (+41d) | 2014-01-11 → 2014-02-20 (+40d) |  | 19d → -15d |
| DUKHCONP03MKARFF3385 | S.S.Handrails & Balustrade | 2014-01-18 → 2014-02-27 (+40d) | 2014-01-25 → 2014-03-06 (+40d) |  | 7d → -27d |
| DUKHCONP03MKARFF3390 | Installation of Granite Counter Top | 2014-01-18 → 2014-02-27 (+40d) | 2014-01-25 → 2014-03-06 (+40d) |  | 7d → -27d |
| DUKHCONP03MKARFF3395 | Final Painting | 2014-01-26 → 2014-03-08 (+41d) | 2014-02-02 → 2014-03-15 (+41d) |  | 7d → -27d |
| 20 | **ROOF** | 2013-11-13 → 2013-12-28 (+45d) | 2014-02-08 → 2014-03-20 (+40d) |  |  |
| DUKHCONP03MKARRF3600 | Block work | 2013-11-13 → 2013-12-28 (+45d) | 2013-11-18 → 2014-01-01 (+44d) |  | -24d → -61d |
| DUKHCONP03MKARRF3605 | Plastering work | 2013-11-17 → 2013-12-31 (+44d) | 2013-11-21 → 2014-01-05 (+45d) |  | -24d → -61d |
| DUKHCONP03MKARRF3610 | Flooring screed | 2013-12-05 → 2014-01-19 (+45d) | 2013-12-11 → 2014-01-25 (+45d) |  | 46d → 9d |
| DUKHCONP03MKARRF3695 | Painting | 2014-01-28 → 2014-03-10 (+41d) | 2014-02-02 → 2014-03-15 (+41d) |  | 7d → -27d |
| DUKHCONP03MKARRF3620 | Epoxy Painting | 2014-02-03 → 2014-03-16 (+41d) | 2014-02-08 → 2014-03-20 (+40d) |  | 17d → -17d |
| 15 | **EXTERNAL FINISHES** | 2013-11-23 → 2014-01-06 (+44d) | 2014-01-07 → 2014-02-20 (+44d) |  |  |
| 10 | **ROOF** | 2013-11-23 → 2014-01-06 (+44d) | 2014-01-05 → 2014-02-12 (+38d) |  |  |
| DUKHCONP03MKARRF3630 | Leveling Screed for Waterproofing | 2013-11-23 → 2014-01-06 (+44d) | 2013-11-24 → 2014-01-07 (+44d) |  | -24d → -61d |
| DUKHCONP03MKARRF3635 | Laying of Waterproofing Membrane | 2013-11-25 → 2014-01-08 (+44d) | 2013-11-30 → 2014-01-13 (+44d) |  | -24d → -61d |
| DUKHCONP03MKARRF3640 | Installation of Insulation & Protection | 2013-12-01 → 2014-01-14 (+44d) | 2013-12-04 → 2014-01-18 (+45d) |  | -24d → -61d |
| DUKHCONP03MKARRF3645 | Lime Stone Chips & Paving slab Installation | 2013-12-05 → 2014-01-19 (+45d) | 2013-12-09 → 2014-01-22 (+44d) |  | -24d → -61d |
| DUKHCONP03MKARRF3650 | Install. of Gal. Frame & Aluminum Slat Screen | 2013-12-16 → 2014-01-23 (+38d) | 2013-12-23 → 2014-01-29 (+37d) |  | 29d → -3d |
| DUKHCONP03MKARRF3655 | Installation of Pumps Protection cabinets | 2013-12-24 → 2014-01-30 (+37d) | 2013-12-30 → 2014-02-05 (+37d) |  | 34d → 2d |
| DUKHCONP03MKARRF3660 | Installation of Access Ladder | 2013-12-31 → 2014-02-06 (+37d) | 2014-01-05 → 2014-02-12 (+38d) |  | 46d → 14d |
| 15 | **ELEVATION** | 2013-12-10 → 2014-01-23 (+44d) | 2014-01-07 → 2014-02-20 (+44d) |  |  |
| DUKHCONP03MKAREL3665 | External Plastering | 2013-12-10 → 2014-01-23 (+44d) | 2013-12-22 → 2014-02-03 (+43d) |  | -8d → -45d |
| DUKHCONP03MKAREL3675 | GRC Panel Works | 2013-12-23 → 2014-02-04 (+43d) | 2013-12-30 → 2014-02-12 (+44d) |  | -8d → -45d |
| DUKHCONP03MKAREL3680 | External Painting | 2013-12-31 → 2014-02-13 (+44d) | 2014-01-07 → 2014-02-20 (+44d) |  | 39d → 2d |
| 20 | **MEP WORKS** | 2013-09-17 → 2013-11-02 (+46d) | 2014-01-29 → 2014-03-03 (+33d) |  |  |
| 10 | **ELECTRICAL WORKS** | 2013-09-17 → 2013-11-02 (+46d) | 2014-01-25 → 2014-03-01 (+35d) |  |  |
| 10 | **GROUND FLOOR** | 2013-09-17 → 2013-11-02 (+46d) | 2014-01-05 → 2014-01-01 (-4d) |  |  |
| DUKHCONP03MKELGF4000 | Fixing of wall conduits & switch socket boxes | 2013-09-17 → 2013-11-02 (+46d) | 2013-09-22 → 2013-11-06 (+45d) |  | 15d → -22d |
| DUKHCONP03MKELGF4005 | Cable tray & trunking installation | 2013-10-01 → 2013-11-16 (+46d) | 2013-10-06 → 2013-11-20 (+45d) |  | 33d → -4d |
| DUKHCONP03MKELGF4010 | Installation of wiring & Main Cabling | 2013-10-26 → 2013-11-21 (+26d) | 2013-10-30 → 2013-11-26 (+27d) |  | 21d → -2d |
| DUKHCONP03MKELGF4015 | Install. of CAMS & Fire Fighting Accessories | 2013-12-25 → 2013-12-22 (-3d) | 2014-01-01 → 2013-12-29 (-3d) |  | 7d → 10d |
| DUKHCONP03MKELGF4020 | Installation of DBS,MCCB Accessories. | 2013-12-25 → 2013-12-22 (-3d) | 2013-12-30 → 2013-12-26 (-4d) |  | 3d → 6d |
| DUKHCONP03MKELGF4025 | Installation of Lighting fixtures & Accessories | 2013-12-31 → 2013-12-28 (-3d) | 2014-01-05 → 2014-01-01 (-4d) |  | 9d → 12d |

| ID | Task | Start | Finish | Duration | Complete | Total float | Other |
| --- | --- | --- | --- | --- | --- | --- | --- |
| DUKHCONP03MKELGF4030 | Installation of Telephone System | 2013-12-31 → 2013-12-28 (-3d) | 2014-01-05 → 2014-01-01 (-4d) |  |  | 8d → 11d |  |
| 15 | **FIRST FLOORS** | 2013-11-02 → 2013-12-15 (+43d) | 2014-01-11 → 2014-02-15 (+35d) |  |  |  |  |
| DUKHCONP03MKELFF4035 | Fixing of wall conduits & switch socket boxes | 2013-11-02 → 2013-12-15 (+43d) | 2013-11-06 → 2013-12-21 (+45d) |  |  | -19d → -56d |  |
| DUKHCONP03MKELFF4040 | Cable tray & trunking installation | 2013-11-16 → 2013-12-30 (+44d) | 2013-11-20 → 2014-01-04 (+45d) |  |  | 3d → -34d |  |
| DUKHCONP03MKELFF4045 | Installation of wiring & Main Cabling | 2013-11-21 → 2014-01-05 (+45d) | 2013-11-26 → 2014-01-09 (+44d) |  |  | 5d → -32d |  |
| DUKHCONP03MKELFF4055 | Install. of CAMS & Fire Fighting Accessories | 2014-01-02 → 2014-02-03 (+32d) | 2014-01-09 → 2014-02-10 (+32d) |  |  | 7d → -20d |  |
| DUKHCONP03MKELFF4060 | Installation of DBS,MCCB Accessories. | 2013-12-25 → 2014-02-03 (+40d) | 2013-12-30 → 2014-02-08 (+40d) |  |  | 8d → -26d |  |
| DUKHCONP03MKELFF4050 | Installation of Telephone System | 2014-01-06 → 2014-02-09 (+34d) | 2014-01-11 → 2014-02-15 (+35d) |  |  | 13d → -16d |  |
| DUKHCONP03MKELFF4065 | Installation of Lighting fixtures & Accessories | 2014-01-06 → 2014-02-09 (+34d) | 2014-01-11 → 2014-02-15 (+35d) |  |  | 9d → -20d |  |
| 20 | **ROOF** | 2014-01-12 → 2014-02-16 (+35d) | 2014-01-25 → 2014-03-01 (+35d) |  |  |  |  |
| DUKHCONP03MKELRF4070 | Installation of Isolator | 2014-01-12 → 2014-02-16 (+35d) | 2014-01-16 → 2014-02-20 (+35d) |  |  | 21d → -8d |  |
| DUKHCONP03MKELRF4075 | Installation of TV Dish Antenna | 2014-01-18 → 2014-02-22 (+35d) | 2014-01-25 → 2014-03-01 (+35d) |  |  | 21d → -8d |  |
| 15 | **PLUMBING, DRAINAGE & FIRE FIGHTING WORKS** | 2013-09-17 → 2013-11-02 (+46d) | 2014-01-29 → 2014-03-03 (+33d) |  |  |  |  |
| 10 | **GROUND FLOOR** | 2013-09-17 → 2013-11-02 (+46d) | 2014-01-13 → 2014-01-09 (-4d) |  |  |  |  |
| DUKHCONP03MKPLGF4305 | Installation of Plumbing pipes & testing | 2013-09-17 → 2013-11-02 (+46d) | 2013-09-22 → 2013-11-06 (+45d) |  |  | 17d → -20d |  |
| DUKHCONP03MKPLGF4310 | Installation of Drainage pipes &testing | 2013-09-17 → 2013-11-02 (+46d) | 2013-09-22 → 2013-11-06 (+45d) |  |  | 35d → -2d |  |
| DUKHCONP03MKPLGF4315 | Sanitary Fittings & Accessories | 2013-12-31 → 2013-12-28 (-3d) | 2014-01-07 → 2014-01-04 (-3d) |  |  | 12d → 15d |  |
| DUKHCONP03MKPLGF4320 | Installation of Water Heater | 2014-01-08 → 2014-01-05 (-3d) | 2014-01-13 → 2014-01-09 (-4d) |  |  | 39d → 42d |  |
| 15 | **FIRST FLOORS** | 2013-11-02 → 2013-12-15 (+43d) | 2014-01-21 → 2014-02-23 (+33d) |  |  |  |  |
| DUKHCONP03MKPLFF4325 | Installation of Plumbing pipes & testing | 2013-11-02 → 2013-12-15 (+43d) | 2013-11-06 → 2013-12-21 (+45d) |  |  | -18d → -55d |  |
| DUKHCONP03MKPLFF4330 | Installation of Drainage pipes & testing | 2013-11-02 → 2013-12-15 (+43d) | 2013-11-06 → 2013-12-21 (+45d) |  |  | 7d → -30d |  |
| DUKHCONP03MKPLFF4335 | Sanitary Fittings & Accessories | 2014-01-08 → 2014-02-09 (+32d) | 2014-01-15 → 2014-02-17 (+33d) |  |  | 12d → -15d |  |
| DUKHCONP03MKPLFF4340 | Installation of Water Heater | 2014-01-16 → 2014-02-18 (+33d) | 2014-01-21 → 2014-02-23 (+33d) |  |  | 15d → -12d |  |
| 20 | **ROOF** | 2013-12-10 → 2014-01-23 (+44d) | 2014-01-29 → 2014-03-03 (+33d) |  |  |  |  |
| DUKHCONP03MKPLRF4345 | Installation of Plumbing pipes & fittings | 2013-12-10 → 2014-01-23 (+44d) | 2013-12-15 → 2014-01-28 (+44d) |  |  | -24d → -61d |  |
| DUKHCONP03MKPLRF4350 | Installation of Rain water Pipes | 2013-12-16 → 2014-01-29 (+44d) | 2013-12-22 → 2014-02-03 (+43d) |  |  | 41d → 4d |  |
| DUKHCONP03MKPLRF4355 | Roof Water Tank Installation & Connections | 2014-01-22 → 2014-02-24 (+33d) | 2014-01-29 → 2014-03-03 (+33d) |  |  | 15d → -12d |  |
| 20 | **AC WORKS** |  | 2014-01-16 → 2014-02-20 (+35d) |  |  |  |  |
| 10 | **GROUND FLOOR** |  | 2014-01-05 → 2014-01-01 (-4d) |  |  |  |  |
| DUKHCONP03MKACGF4605 | Fixing of Ventilation Equipments | 2013-12-25 → 2013-12-22 (-3d) | 2013-12-30 → 2013-12-26 (-4d) |  |  | 8d → 11d |  |
| DUKHCONP03MKACGF4610 | Fixing of Split AC | 2013-12-31 → 2013-12-28 (-3d) | 2014-01-05 → 2014-01-01 (-4d) |  |  | 21d → 24d |  |
| 15 | **FIRST FLOORS** | 2013-11-21 → 2013-12-30 (+39d) | 2014-01-11 → 2014-02-15 (+35d) |  |  |  |  |
| DUKHCONP03MKACFF4615 | Installation AC Pipes | 2013-11-21 → 2013-12-30 (+39d) | 2013-11-26 → 2014-01-04 (+39d) |  |  | 15d → -17d |  |
| DUKHCONP03MKACFF4620 | Fixing of Ventilation Equipments | 2013-12-31 → 2014-02-03 (+34d) | 2014-01-05 → 2014-02-08 (+34d) |  |  | 8d → -21d |  |
| DUKHCONP03MKACFF4625 | Fixing of Split AC | 2014-01-06 → 2014-02-09 (+34d) | 2014-01-11 → 2014-02-15 (+35d) |  |  | 21d → -8d |  |
| 20 | **ROOF** | 2013-12-10 → 2014-01-23 (+44d) | 2014-01-16 → 2014-02-20 (+35d) |  |  |  |  |
| DUKHCONP03MKACRF4630 | Installation of Refrigerant Pipes | 2013-12-10 → 2014-01-23 (+44d) | 2013-12-17 → 2014-01-30 (+44d) |  |  | 46d → 9d |  |
| DUKHCONP03MKACRF4635 | Installation of Condensing Unit | 2014-01-12 → 2014-02-16 (+35d) | 2014-01-16 → 2014-02-20 (+35d) |  |  | 26d → -3d |  |
| 25 | **EXTERNAL WORKS** | 2013-12-16 → 2014-01-29 (+44d) | 2014-01-13 → 2014-02-26 (+44d) |  |  |  |  |
| 10 | **MISCELLANEOUS** | 2013-12-16 → 2014-01-29 (+44d) | 2014-01-13 → 2014-02-26 (+44d) |  |  |  |  |
| DUKHCONP03MKMSEX5000 | Construction of Manholes | 2013-12-16 → 2014-01-29 (+44d) | 2013-12-24 → 2014-02-05 (+43d) |  |  | -24d → -61d |  |
| DUKHCONP03MKMSEX5005 | Construction of Soak pit, Chambers | 2013-12-25 → 2014-02-06 (+43d) | 2014-01-01 → 2014-02-15 (+45d) |  |  | -4d → -41d |  |
| DUKHCONP03MKMSEX5020 | Construction Entrance Ramp | 2013-12-31 → 2014-02-13 (+44d) | 2014-01-07 → 2014-02-20 (+44d) |  |  | -8d → -45d |  |
| DUKHCONP03MKMSEX5015 | Construction of grease Trap | 2014-01-02 → 2014-02-16 (+45d) | 2014-01-09 → 2014-02-23 (+45d) |  |  | 27d → -10d |  |
| DUKHCONP03MKMSEX5025 | SS.Handrails and Balustrades | 2014-01-08 → 2014-02-22 (+45d) | 2014-01-13 → 2014-02-26 (+44d) |  |  | 4d → -33d |  |
| 10 | **ZONE - 1 (3 Apartments)** |  | 2014-05-18 → 2014-06-30 (+43d) |  |  |  |  |
| 10 | **STRUCTURAL WORKS** |  | 2013-11-25 → 2014-01-08 (+44d) |  |  |  |  |
| 10 | **SUB STRUCTURE** |  | 2013-07-16 → 2013-08-31 (+46d) |  |  |  |  |
| 10 | **UPTO GRADE SLAB** |  | 2013-07-16 → 2013-08-31 (+46d) |  |  |  |  |
| DUKHCONP03Z1STUG1030 | Waterproofing Footing & Neck Column |  | 2013-05-23 A |  | 4% → 100% | -27d → none |  |
| DUKHCONP03Z1STUG1035 | Backfilling Upto Grade Beam Bottom | 2013-05-06 A | 2013-06-03 → 2013-06-01 A (-2d) |  | 0% → 100% | -27d → none |  |
| DUKHCONP03Z1STUG1040 | Construction of Grade Beams | 2013-05-22 → 2013-06-01 A (+10d) | 2013-06-19 → 2013-08-01 A (+43d) | 25d → 54d | 0% → 100% | -27d → none |  |
| DUKHCONP03Z1STUG1045 | Construction of slab on grade | 2013-06-18 → 2013-07-31 A (+43d) | 2013-07-16 → 2013-08-31 A (+46d) |  | 0% → 100% | -27d → none | resources CONCRETE QTY [186 Cum]; WELDED WIRE MESH [1155 Sqm]; BLINDING MASON SK [684 h]; SCREED MASON SK [684 h]; STEEL FIXERS SK [308 h]; CONCRETE MASON SK [372 h]; LABOR- SUBCONTRACTOR [1279.5 h]; BLINDING QTY [855 Sqm]; SCREED QTY [855 Sqm] → CONCRETE QTY [186 Cum]; WELDED WIRE MESH [1155 Sqm]; CONCRETE MASON SK [684 h]; SCREED MASON SK [684 h]; STEEL FIXERS SK [308 h]; CONCRETE MASON SK [372 h]; LABOR- SUBCONTRACTOR [1279.5 h]; BLINDING QTY [855 Sqm]; SCREED QTY [855 Sqm] |
| 15 | **SUPERSTRUCTURE** | 2013-07-04 → 2013-08-20 (+47d) | 2013-11-25 → 2014-01-08 (+44d) |  |  |  |  |
| 10 | **GROUND FLOOR** | 2013-07-04 → 2013-08-20 (+47d) | 2013-09-02 → 2013-10-15 (+43d) |  |  |  |  |
| DUKHCONP03Z1STGF2000 | Column-Rebar & Formwork | 2013-07-04 → 2013-08-20 A (+47d) | 2013-08-01 → 2013-09-17 A (+47d) |  | 0% → 100% | -27d → none |  |
| DUKHCONP03Z1STGF2005 | Column-Concrete | 2013-07-14 → 2013-08-29 A (+46d) | 2013-08-13 → 2013-09-25 A (+43d) |  | 0% → 100% | -27d → none |  |
| DUKHCONP03Z1STGF2010 | Beam, Stairs ,Slab-Rebar & Formwork | 2013-07-29 → 2013-09-14 A (+47d) | 2013-08-29 → 2013-10-12 A (+44d) |  | 0% → 100% | -27d → none |  |
| DUKHCONP03Z1STGF2015 | Beam, Stairs ,Slab-Concrete | 2013-08-17 → 2013-09-29 A (+43d) | 2013-09-02 → 2013-10-15 A (+43d) |  | 0% → 100% | -27d → none |  |
| 15 | **FIRST FLOORS** | 2013-08-19 → 2013-10-01 (+43d) | 2013-10-15 → 2013-11-30 (+46d) |  |  |  |  |
| DUKHCONP03Z1STFF2020 | Column-Rebar & Formwork | 2013-08-19 → 2013-10-01 A (+43d) | 2013-09-16 → 2013-10-31 A (+45d) |  | 0% → 100% | -27d → none |  |
| DUKHCONP03Z1STFF2025 | Column-Concrete | 2013-08-29 → 2013-10-12 A (+44d) | 2013-09-25 → 2013-11-10 (+46d) |  | 0% → 67% | -27d → -64d |  |
| DUKHCONP03Z1STFF2030 | Beam, Stairs ,Slab-Rebar & Formwork | 2013-09-14 → 2013-10-29 A (+45d) | 2013-10-12 → 2013-11-26 (+45d) |  | 0% → 12% | -27d → -64d |  |
| DUKHCONP03Z1STFF2035 | Beam, Stairs ,Slab-Concrete | 2013-09-29 → 2013-11-13 (+45d) | 2013-10-15 → 2013-11-30 (+46d) |  |  | -27d → -64d |  |
| 20 | **ROOF** | 2013-10-01 → 2013-11-16 (+46d) | 2013-11-25 → 2014-01-08 (+44d) |  |  |  |  |
| DUKHCONP03Z1STRF2040 | Column-Rebar & Formwork | 2013-10-01 → 2013-11-16 (+46d) | 2013-10-23 → 2013-12-05 (+43d) |  |  | -24d → -61d |  |
| DUKHCONP03Z1STRF2045 | Column-Concrete | 2013-10-05 → 2013-11-19 (+45d) | 2013-10-26 → 2013-12-08 (+43d) |  |  | -24d → -61d |  |
| DUKHCONP03Z1STRF2050 | Slab-Rebar & Formwork | 2013-10-07 → 2013-11-21 (+45d) | 2013-10-31 → 2013-12-14 (+44d) |  |  | -24d → -61d |  |
| DUKHCONP03Z1STRF2055 | Slab-Concrete | 2013-10-20 → 2013-12-02 (+43d) | 2013-11-03 → 2013-12-16 (+43d) |  |  | -24d → -61d |  |
| DUKHCONP03Z1STRF2060 | Construction of Parapets | 2013-10-22 → 2013-12-04 (+43d) | 2013-11-19 → 2014-01-02 (+44d) |  |  | -9d → -46d |  |

| ID | Task | Start | Finish | Total float |
| --- | --- | --- | --- | --- |
| DUKHCONP03Z1STRF2065 | Construction of up stands/Plinth | 2013-10-28 → 2013-12-10 (+43d) | 2013-11-25 → 2014-01-08 (+44d) | -9d → -46d |
| 15 | **FINISHING WORKS** | 2013-09-17 → 2013-11-02 (+46d) | 2014-04-19 → 2014-06-01 (+43d) |  |
| 10 | **INTERNAL FINISHES** | 2013-09-17 → 2013-11-02 (+46d) | 2014-04-19 → 2014-06-01 (+43d) |  |
| 10 | **GROUND FLOOR** | 2013-09-17 → 2013-11-02 (+46d) | 2014-03-12 → 2014-04-15 (+34d) |  |
| DUKHCONP03Z1ARGF3000 | Block work | 2013-09-17 → 2013-11-02 (+46d) | 2013-10-15 → 2013-11-30 (+46d) | 8d → -29d |
| DUKHCONP03Z1ARGF3005 | Plastering work | 2013-10-09 → 2013-11-24 (+46d) | 2013-11-09 → 2013-12-23 (+44d) | 8d → -29d |
| DUKHCONP03Z1ARGF3010 | Flooring screed | 2013-10-20 → 2013-12-02 (+43d) | 2013-11-12 → 2013-12-26 (+44d) | 16d → -21d |
| DUKHCONP03Z1ARGF3030 | Paint First coat | 2013-11-21 → 2013-12-10 (+19d) | 2013-12-21 → 2014-01-08 (+18d) | 1d → -15d |
| DUKHCONP03Z1ARGF3015 | Wet area waterproofing & Protection Screed | 2013-10-29 → 2013-12-11 (+43d) | 2013-11-14 → 2013-12-29 (+45d) | 8d → -29d |
| DUKHCONP03Z1ARGF3020 | Ceramic Wall Tiling | 2013-11-04 → 2013-12-17 (+43d) | 2013-12-02 → 2014-01-15 (+44d) | 8d → -29d |
| DUKHCONP03Z1ARGF3025 | Porcelain Tile flooring | 2013-11-10 → 2013-12-24 (+44d) | 2013-12-08 → 2014-01-21 (+44d) | 8d → -29d |
| DUKHCONP03Z1ARGF3045 | Fixing of Suspension systems | 2013-12-05 → 2014-01-11 (+37d) | 2013-12-29 → 2014-02-02 (+35d) | 1d → -29d |
| DUKHCONP03Z1ARGF3035 | Slate Tile Flooring & Skirting | 2013-11-30 → 2014-01-13 (+44d) | 2013-12-16 → 2014-01-29 (+44d) | 15d → -22d |
| DUKHCONP03Z1ARGF3055 | Aluminum tile false ceiling | 2013-12-25 → 2014-01-19 (+25d) | 2014-01-22 → 2014-02-17 (+26d) | -4d → -25d |
| DUKHCONP03Z1ARGF3040 | Cobble Tile flooring | 2013-12-07 → 2014-01-20 (+44d) | 2013-12-24 → 2014-02-05 (+43d) | 13d → -24d |
| DUKHCONP03Z1ARGF3060 | Gypsum board false ceiling | 2013-12-17 → 2014-01-22 (+36d) | 2014-01-15 → 2014-02-20 (+36d) | 1d → -29d |
| DUKHCONP03Z1ARGF3050 | Granite - Stair case flooring & Skirting | 2013-12-25 → 2014-01-28 (+34d) | 2014-01-16 → 2014-02-20 (+35d) | 5d → -24d |
| DUKHCONP03Z1ARGF3065 | Wooden door | 2014-01-08 → 2014-02-12 (+35d) | 2014-01-25 → 2014-03-01 (+35d) | 5d → -24d |
| DUKHCONP03Z1ARGF3070 | Aluminum doors | 2014-01-14 → 2014-02-18 (+35d) | 2014-01-30 → 2014-03-06 (+35d) | 5d → -24d |
| DUKHCONP03Z1ARGF3075 | Carpentry & Joinery Works | 2014-01-20 → 2014-02-24 (+35d) | 2014-02-12 → 2014-03-18 (+34d) | 5d → -24d |
| DUKHCONP03Z1ARGF3080 | Aluminum windows | 2014-01-21 → 2014-02-25 (+35d) | 2014-02-13 → 2014-03-19 (+34d) | 15d → -14d |
| DUKHCONP03Z1ARGF3085 | S.S.Balustrade | 2014-01-28 → 2014-03-04 (+35d) | 2014-02-20 → 2014-03-26 (+34d) | 10d → -19d |
| DUKHCONP03Z1ARGF3090 | Installation of Granite Counter Top | 2014-02-02 → 2014-03-09 (+35d) | 2014-02-19 → 2014-03-25 (+34d) | 5d → -24d |
| DUKHCONP03Z1ARGF3095 | Final Painting | 2014-02-12 → 2014-03-18 (+34d) | 2014-03-12 → 2014-04-15 (+34d) | 5d → -24d |
| 15 | **FIRST FLOORS** | 2013-11-02 → 2013-12-15 (+43d) | 2014-04-19 → 2014-06-01 (+43d) |  |
| DUKHCONP03Z1ARFF3300 | Block work | 2013-11-02 → 2013-12-15 (+43d) | 2013-11-28 → 2014-01-12 (+45d) | -27d → -64d |
| DUKHCONP03Z1ARFF3305 | Plastering work | 2013-11-25 → 2014-01-08 (+44d) | 2013-12-24 → 2014-02-05 (+43d) | -27d → -64d |
| DUKHCONP03Z1ARFF3310 | Flooring screed | 2013-12-03 → 2014-01-16 (+44d) | 2013-12-28 → 2014-02-09 (+43d) | -12d → -49d |
| DUKHCONP03Z1ARFF3330 | Paint First coat | 2013-12-11 → 2014-01-25 (+45d) | 2014-01-09 → 2014-02-23 (+45d) | -9d → -46d |
| DUKHCONP03Z1ARFF3315 | Wet area waterproofing | 2013-12-16 → 2014-01-29 (+44d) | 2014-01-02 → 2014-02-16 (+45d) | -27d → -64d |
| DUKHCONP03Z1ARFF3320 | Ceramic Wall Tiling | 2013-12-26 → 2014-02-08 (+44d) | 2014-01-23 → 2014-03-09 (+45d) | -27d → -64d |
| DUKHCONP03Z1ARFF3325 | Porcelain Tile flooring | 2014-01-02 → 2014-02-16 (+45d) | 2014-01-30 → 2014-03-16 (+45d) | -27d → -64d |
| DUKHCONP03Z1ARFF3345 | Fixing of Suspension systems | 2014-01-16 → 2014-03-02 (+45d) | 2014-02-08 → 2014-03-24 (+44d) | -27d → -64d |
| DUKHCONP03Z1ARFF3335 | Slate Tile Flooring & Skirting | 2014-01-20 → 2014-03-05 (+44d) | 2014-02-05 → 2014-03-22 (+45d) | -17d → -54d |
| DUKHCONP03Z1ARFF3350 | Granite - Stair case flooring & Skirting | 2014-01-23 → 2014-03-09 (+45d) | 2014-02-16 → 2014-03-31 (+43d) | -25d → -62d |
| DUKHCONP03Z1ARFF3360 | Gypsum board false ceiling | 2014-01-25 → 2014-03-10 (+44d) | 2014-02-23 → 2014-04-07 (+43d) | -27d → -64d |
| DUKHCONP03Z1ARFF3355 | Aluminum tile false ceiling | 2014-01-28 → 2014-03-13 (+44d) | 2014-02-20 → 2014-04-05 (+44d) | -25d → -62d |
| DUKHCONP03Z1ARFF3365 | Wooden door | 2014-02-09 → 2014-03-25 (+44d) | 2014-02-26 → 2014-04-10 (+43d) | -27d → -64d |
| DUKHCONP03Z1ARFF3370 | Aluminum Door | 2014-02-18 → 2014-04-02 (+43d) | 2014-03-12 → 2014-04-24 (+43d) | -27d → -64d |
| DUKHCONP03Z1ARFF3380 | Aluminum windows | 2014-02-25 → 2014-04-09 (+43d) | 2014-03-19 → 2014-05-01 (+43d) | -16d → -53d |
| DUKHCONP03Z1ARFF3375 | Carpentry & Joinery Works | 2014-02-26 → 2014-04-10 (+43d) | 2014-03-26 → 2014-05-08 (+43d) | -27d → -64d |
| DUKHCONP03Z1ARFF3385 | Handrail & Balustrade | 2014-03-10 → 2014-04-22 (+43d) | 2014-04-01 → 2014-05-14 (+43d) | -26d → -63d |
| DUKHCONP03Z1ARFF3390 | Installation of Granite Counter Top | 2014-03-12 → 2014-04-24 (+43d) | 2014-04-03 → 2014-05-17 (+44d) | -27d → -64d |
| DUKHCONP03Z1ARFF3395 | Final Painting | 2014-03-22 → 2014-05-04 (+43d) | 2014-04-19 → 2014-06-01 (+43d) | -27d → -64d |
| 20 | **ROOF** | 2013-11-19 → 2014-01-02 (+44d) | 2014-03-10 → 2014-04-19 (+40d) |  |
| DUKHCONP03Z1ARRF3600 | Block work | 2013-11-19 → 2014-01-02 (+44d) | 2013-12-11 → 2014-01-25 (+45d) | 40d → 3d |
| DUKHCONP03Z1ARRF3605 | Plastering work | 2013-11-27 → 2014-01-11 (+45d) | 2013-12-21 → 2014-02-02 (+43d) | 40d → 3d |
| DUKHCONP03Z1ARRF3610 | Flooring screed | 2013-12-11 → 2014-01-25 (+45d) | 2013-12-29 → 2014-02-10 (+43d) | 45d → 8d |
| DUKHCONP03Z1ARRF3695 | Painting | 2014-02-03 → 2014-03-16 (+41d) | 2014-02-26 → 2014-04-07 (+40d) | 7d → -27d |
| DUKHCONP03Z1ARRF3620 | Epoxy Painting | 2014-02-22 → 2014-04-02 (+39d) | 2014-03-10 → 2014-04-19 (+40d) | 7d → -27d |
| 15 | **EXTERNAL FINISHES** | 2013-11-25 → 2014-01-08 (+44d) | 2014-03-03 → 2014-04-12 (+40d) |  |
| 10 | **ROOF** | 2013-11-25 → 2014-01-08 (+44d) | 2014-02-05 → 2014-03-17 (+40d) |  |
| DUKHCONP03Z1ARRF3630 | Leveling Screed for Waterproofing | 2013-11-25 → 2014-01-08 (+44d) | 2013-12-24 → 2014-02-05 (+43d) | 35d → -2d |
| DUKHCONP03Z1ARRF3635 | Laying of Waterproofing Membrane | 2013-12-01 → 2014-01-14 (+44d) | 2013-12-30 → 2014-02-12 (+44d) | 33d → -4d |
| DUKHCONP03Z1ARRF3640 | Installation of Insulation & Protection | 2013-12-05 → 2014-01-19 (+45d) | 2014-01-04 → 2014-02-17 (+44d) | 33d → -4d |
| DUKHCONP03Z1ARRF3645 | Lime Stone Chips & Paving slab Installation | 2013-12-10 → 2014-01-23 (+44d) | 2014-01-08 → 2014-02-22 (+45d) | 33d → -4d |
| DUKHCONP03Z1ARRF3650 | Install. of Gal. Frame & Aluminum Slat Screen | 2013-12-24 → 2014-02-01 (+39d) | 2014-01-21 → 2014-03-02 (+40d) | 29d → -4d |
| DUKHCONP03Z1ARRF3655 | Installation of Pumps Protection cabinets | 2014-01-08 → 2014-02-17 (+40d) | 2014-01-30 → 2014-03-11 (+40d) | 29d → -4d |
| DUKHCONP03Z1ARRF3660 | Installation of Access Ladder | 2014-01-20 → 2014-03-01 (+40d) | 2014-02-05 → 2014-03-17 (+40d) | 34d → 1d |
| 15 | **ELEVATION** | 2013-12-23 → 2014-02-04 (+43d) | 2014-03-03 → 2014-04-12 (+40d) |  |
| DUKHCONP03Z1AREL3665 | External Plastering | 2013-12-23 → 2014-02-04 (+43d) | 2014-01-20 → 2014-03-05 (+44d) | 26d → -11d |
| DUKHCONP03Z1AREL3675 | GRC Panel Works | 2014-01-09 → 2014-02-23 (+45d) | 2014-02-01 → 2014-03-17 (+44d) | 28d → -9d |
| DUKHCONP03Z1AREL3680 | External Painting | 2014-02-08 → 2014-03-20 (+40d) | 2014-03-03 → 2014-04-12 (+40d) | 13d → -21d |
| 20 | **MEP WORKS** | 2013-06-09 → 2013-07-22 (+43d) | 2014-04-16 → 2014-05-29 (+43d) |  |
| 10 | **ELECTRICAL WORKS** | 2013-09-23 → 2013-11-07 (+45d) | 2014-04-16 → 2014-05-29 (+43d) |  |
| 10 | **GROUND FLOOR** | 2013-09-23 → 2013-11-07 (+45d) | 2014-02-18 → 2014-03-18 (+28d) |  |
| DUKHCONP03Z1ELGF4000 | Fixing of wall conduits & switch socket boxes | 2013-09-23 → 2013-11-07 (+45d) | 2013-10-23 → 2013-12-05 (+43d) | 17d → -20d |
| DUKHCONP03Z1ELGF4005 | Cable tray & trunking installation | 2013-10-07 → 2013-11-21 (+45d) | 2013-10-31 → 2013-12-14 (+44d) | 33d → -4d |
| DUKHCONP03Z1ELGF4010 | Installation of wiring & Main Cabling | 2013-10-31 → 2013-11-30 (+30d) | 2013-11-28 → 2013-12-29 (+31d) | 21d → -4d |
| DUKHCONP03Z1ELGF4015 | Install. of CAMS & Fire Fighting Accessories | 2014-01-02 → 2014-01-30 (+28d) | 2014-01-30 → 2014-03-01 (+30d) | 9d → -15d |

| ID | Task | Start | Finish | Complete | Total float |
| --- | --- | --- | --- | --- | --- |
| DUKHCONP03Z1ELGF4020 | Installation of DBS,MCCB Accessories. | 2014-01-08 → 2014-02-05 (+28d) | 2014-01-30 → 2014-03-01 (+30d) |  | -4d → -28d |
| DUKHCONP03Z1ELGF4025 | Installation of Lighting fixtures & Accessories | 2014-01-20 → 2014-02-18 (+29d) | 2014-02-18 → 2014-03-18 (+28d) |  | -3d → -27d |
| DUKHCONP03Z1ELGF4030 | Installation of Telephone System | 2014-01-20 → 2014-02-18 (+29d) | 2014-02-12 → 2014-03-12 (+28d) |  | -4d → -28d |
| 15 | **FIRST FLOORS** | 2013-11-07 → 2013-12-22 (+45d) | 2014-03-23 → 2014-05-05 (+43d) |  |  |
| DUKHCONP03Z1ELFF4035 | Fixing of wall conduits & switch socket boxes | 2013-11-07 → 2013-12-22 (+45d) | 2013-12-05 → 2014-01-19 (+45d) |  | -17d → -54d |
| DUKHCONP03Z1ELFF4040 | Cable tray & trunking installation | 2013-11-21 → 2014-01-05 (+45d) | 2013-12-14 → 2014-01-27 (+44d) |  | 3d → -34d |
| DUKHCONP03Z1ELFF4045 | Installation of wiring & Main Cabling | 2013-11-30 → 2014-01-13 (+44d) | 2013-12-29 → 2014-02-10 (+43d) |  | 3d → -34d |
| DUKHCONP03Z1ELFF4055 | Install. of CAMS & Fire Fighting Accessories | 2014-02-05 → 2014-03-22 (+45d) | 2014-03-06 → 2014-04-19 (+44d) |  | -15d → -52d |
| DUKHCONP03Z1ELFF4050 | Installation of Telephone System | 2014-02-06 → 2014-03-23 (+45d) | 2014-03-08 → 2014-04-20 (+43d) |  | -9d → -46d |
| DUKHCONP03Z1ELFF4060 | Installation of DBS,MCCB Accessories. | 2014-02-09 → 2014-03-25 (+44d) | 2014-03-04 → 2014-04-16 (+43d) |  | -26d → -63d |
| DUKHCONP03Z1ELFF4065 | Installation of Lighting fixtures & Accessories | 2014-02-23 → 2014-04-07 (+43d) | 2014-03-23 → 2014-05-05 (+43d) |  | -26d → -63d |
| 20 | **ROOF** | 2014-03-15 → 2014-04-27 (+43d) | 2014-04-16 → 2014-05-29 (+43d) |  |  |
| DUKHCONP03Z1ELRF4070 | Installation of Isolator | 2014-03-15 → 2014-04-27 (+43d) | 2014-04-03 → 2014-05-17 (+44d) |  | -25d → -62d |
| DUKHCONP03Z1ELRF4075 | Installation of TV Dish Antenna | 2014-03-22 → 2014-05-04 (+43d) | 2014-04-16 → 2014-05-29 (+43d) |  | -25d → -62d |
| 15 | **PLUMBING, DRAINAGE & FIRE FIGHTING WORKS** | 2013-06-09 → 2013-07-22 (+43d) | 2014-04-02 → 2014-05-15 (+43d) |  |  |
| 10 | **GROUND FLOOR** | 2013-06-09 → 2013-07-22 (+43d) | 2014-02-12 → 2014-03-18 (+34d) |  |  |
| DUKHCONP03Z1PLUG4300 | Drainage / Storm Pipes in Grade Slab | 2013-06-09 → 2013-07-22 A (+43d) | 2013-07-01 → 2013-08-17 A (+47d) | 0% → 100% | -27d → none |
| DUKHCONP03Z1PLGF4305 | Installation of Plumbing pipes & testing | 2013-10-03 → 2013-11-18 (+46d) | 2013-10-26 → 2013-12-08 (+43d) |  | 8d → -29d |
| DUKHCONP03Z1PLGF4310 | Installation of Drainage pipes &testing | 2013-10-03 → 2013-11-18 (+46d) | 2013-10-26 → 2013-12-08 (+43d) |  | 29d → -8d |
| DUKHCONP03Z1PLGF4315 | Sanitary Fittings & Accessories | 2014-01-14 → 2014-02-18 (+35d) | 2014-02-05 → 2014-03-12 (+35d) |  | 29d → 0d |
| DUKHCONP03Z1PLGF4320 | Installation of Water Heater | 2014-01-26 → 2014-03-02 (+35d) | 2014-02-12 → 2014-03-18 (+34d) |  | 29d → 0d |
| 15 | **FIRST FLOORS** | 2013-11-18 → 2014-01-01 (+44d) | 2014-03-16 → 2014-04-28 (+43d) |  |  |
| DUKHCONP03Z1PLFF4325 | Installation of Plumbing pipes & testing | 2013-11-18 → 2014-01-01 (+44d) | 2013-12-08 → 2014-01-21 (+44d) |  | -27d → -64d |
| DUKHCONP03Z1PLFF4330 | Installation of Drainage pipes & testing | 2013-11-18 → 2014-01-01 (+44d) | 2013-12-08 → 2014-01-21 (+44d) |  | -2d → -39d |
| DUKHCONP03Z1PLFF4335 | Sanitary Fittings & Accessories | 2014-02-16 → 2014-03-31 (+43d) | 2014-03-10 → 2014-04-22 (+43d) |  | -13d → -50d |
| DUKHCONP03Z1PLFF4340 | Installation of Water Heater | 2014-02-27 → 2014-04-12 (+44d) | 2014-03-16 → 2014-04-28 (+43d) |  | -13d → -50d |
| 20 | **ROOF** | 2013-12-16 → 2014-01-29 (+44d) | 2014-04-02 → 2014-05-15 (+43d) |  |  |
| DUKHCONP03Z1PLRF4345 | Installation of Plumbing pipes & fittings | 2013-12-16 → 2014-01-29 (+44d) | 2014-01-02 → 2014-02-16 (+45d) |  | 40d → 3d |
| DUKHCONP03Z1PLRF4350 | Installation of Rain water Pipes | 2014-01-12 → 2014-02-25 (+44d) | 2014-01-28 → 2014-03-13 (+44d) |  | 26d → -11d |
| DUKHCONP03Z1PLRF4355 | Roof Water Tank Installation & Connections | 2014-03-05 → 2014-04-17 (+43d) | 2014-04-02 → 2014-05-15 (+43d) |  | -13d → -50d |
| 20 | **AC WORKS** | 2013-11-21 → 2013-12-08 (+17d) | 2014-04-02 → 2014-05-15 (+43d) |  |  |
| 10 | **GROUND FLOOR** | 2013-11-21 → 2013-12-08 (+17d) | 2014-02-16 → 2014-03-16 (+28d) |  |  |
| DUKHCONP03Z1ACGF4600 | Installation AC Pipes | 2013-11-21 → 2013-12-08 (+17d) | 2013-12-14 → 2013-12-31 (+17d) |  | 16d → 2d |
| DUKHCONP03Z1ACGF4605 | Fixing of Ventilation Equipments | 2014-01-02 → 2014-01-30 (+28d) | 2014-01-30 → 2014-03-01 (+30d) |  | 11d → -13d |
| DUKHCONP03Z1ACGF4610 | Fixing of Split AC | 2014-01-23 → 2014-02-22 (+30d) | 2014-02-16 → 2014-03-16 (+28d) |  | 11d → -13d |
| 15 | **FIRST FLOORS** | 2013-12-09 → 2014-01-22 (+44d) | 2014-03-22 → 2014-05-04 (+43d) |  |  |
| DUKHCONP03Z1ACFF4615 | Installation AC Pipes | 2013-12-09 → 2014-01-22 (+44d) | 2014-01-01 → 2014-02-15 (+45d) |  | 5d → -32d |
| DUKHCONP03Z1ACFF4620 | Fixing of Ventilation Equipments | 2014-02-05 → 2014-03-22 (+45d) | 2014-03-06 → 2014-04-19 (+44d) |  | -18d → -55d |
| DUKHCONP03Z1ACFF4625 | Fixing of Split AC | 2014-02-27 → 2014-04-12 (+44d) | 2014-03-22 → 2014-05-04 (+43d) |  | -18d → -55d |
| 20 | **ROOF** | 2013-12-19 → 2014-02-01 (+44d) | 2014-04-02 → 2014-05-15 (+43d) |  |  |
| DUKHCONP03Z1ACRF4630 | Installation of Refrigerant Pipes | 2013-12-19 → 2014-02-01 (+44d) | 2014-01-16 → 2014-03-02 (+45d) |  | 46d → 9d |
| DUKHCONP03Z1ACRF4635 | Installation of Condensing Unit | 2014-03-05 → 2014-04-17 (+43d) | 2014-04-02 → 2014-05-15 (+43d) |  | -13d → -50d |
| 25 | **EXTERNAL WORKS** | 2013-11-03 → 2013-12-16 (+43d) | 2014-03-27 → 2014-05-10 (+44d) |  |  |
| 10 | **MISCELLANEOUS** | 2013-12-25 → 2014-02-06 (+43d) | 2014-03-08 → 2014-04-20 (+43d) |  |  |
| DUKHCONP03Z1MSEX5000 | Construction of Manholes | 2013-12-25 → 2014-02-06 (+43d) | 2014-01-22 → 2014-03-08 (+45d) |  | -24d → -61d |
| DUKHCONP03Z1MSEX5005 | Construction of Soak pit, Chambers | 2014-01-08 → 2014-02-22 (+45d) | 2014-02-05 → 2014-03-22 (+45d) |  | -9d → -46d |
| DUKHCONP03Z1MSEX5020 | Construction Entrance Ramp | 2014-01-08 → 2014-02-22 (+45d) | 2014-02-05 → 2014-03-22 (+45d) |  | -8d → -45d |
| DUKHCONP03Z1MSEX5015 | Construction of grease Trap | 2014-01-28 → 2014-03-13 (+44d) | 2014-02-20 → 2014-04-05 (+44d) |  | 12d → -25d |
| DUKHCONP03Z1MSEX5025 | SS.Handrails and Balustrades | 2014-01-28 → 2014-03-13 (+44d) | 2014-02-20 → 2014-04-05 (+44d) |  | -8d → -45d |
| DUKHCONP03Z1MSEX5010 | Telephone Cable laying | 2014-02-06 → 2014-03-23 (+45d) | 2014-03-08 → 2014-04-20 (+43d) |  | -9d → -46d |
| 15 | **DOMESTIC WATER TANK & PUMP ROOM** | 2013-11-03 → 2013-12-16 (+43d) | 2014-03-27 → 2014-05-10 (+44d) |  |  |
| DUKHCONP03Z1WTEX5030 | Excavation | 2013-11-03 → 2013-12-16 (+43d) | 2013-11-25 → 2014-01-08 (+44d) |  | 36d → -1d |
| DUKHCONP03Z1WTEX5035 | Construction of Raft & slab | 2013-11-09 → 2013-12-23 (+44d) | 2013-12-07 → 2014-01-20 (+44d) |  | 36d → -1d |
| DUKHCONP03Z1WTEX5040 | Block works & Plastering | 2013-11-18 → 2014-01-01 (+44d) | 2013-12-16 → 2014-01-29 (+44d) |  | 36d → -1d |
| DUKHCONP03Z1WTEX5070 | Domestic Water Tank Plumbings works | 2013-11-26 → 2014-01-09 (+44d) | 2013-12-25 → 2014-02-06 (+43d) |  | 36d → -1d |
| DUKHCONP03Z1WTEX5075 | Domestic Water Tank AC works | 2013-11-26 → 2014-01-09 (+44d) | 2013-12-25 → 2014-02-06 (+43d) |  | 36d → -1d |
| DUKHCONP03Z1WTEX5080 | Domestic Water Tank Electrical works | 2013-11-26 → 2014-01-09 (+44d) | 2013-12-25 → 2014-02-06 (+43d) |  | 36d → -1d |
| DUKHCONP03Z1WTEX5085 | Domestic Water Tank Firefighting works | 2013-11-26 → 2014-01-09 (+44d) | 2013-12-25 → 2014-02-06 (+43d) |  | 36d → -1d |
| DUKHCONP03Z1WTEX5045 | Flooring & Painting | 2013-12-01 → 2014-01-14 (+44d) | 2013-12-30 → 2014-02-12 (+44d) |  | 36d → -1d |
| DUKHCONP03Z1WTEX5050 | Installation of Steel Gate | 2014-02-09 → 2014-03-25 (+44d) | 2014-03-04 → 2014-04-16 (+43d) |  | -8d → -45d |
| DUKHCONP03Z1WTEX5060 | SS Shed cover installation | 2014-02-16 → 2014-03-31 (+43d) | 2014-03-16 → 2014-04-28 (+43d) |  | -8d → -45d |
| DUKHCONP03Z1WTEX5065 | Install. of Water Tank,Chiller,Pump & Meter | 2014-02-27 → 2014-04-12 (+44d) | 2014-03-27 → 2014-05-10 (+44d) |  | -8d → -45d |
| 30 | **TESTING AND COMMISSIONING** | 2014-04-20 → 2014-06-02 (+43d) | 2014-05-18 → 2014-06-30 (+43d) |  |  |
| DUKHCONP03Z1ACTC8000 | Pre-Commissioning & Testing of AC Works | 2014-04-20 → 2014-06-02 (+43d) | 2014-05-18 → 2014-06-30 (+43d) |  | -27d → -64d |
| DUKHCONP03Z1ELTC8010 | Pre-Commissioning & Testing of Electrical Works | 2014-04-20 → 2014-06-02 (+43d) | 2014-05-18 → 2014-06-30 (+43d) |  | -27d → -64d |
| DUKHCONP03Z1PLTC8005 | Pre-Commissioning & Testing of Plumbing Works | 2014-04-20 → 2014-06-02 (+43d) | 2014-05-18 → 2014-06-30 (+43d) |  | -27d → -64d |
| 15 | **ZONE - 2 (3 Apartments)** |  | 2014-06-16 → 2014-07-29 (+43d) |  |  |
| 10 | **STRUCTURAL WORKS** |  | 2013-12-31 → 2014-02-13 (+44d) |  |  |
| 10 | **SUB STRUCTURE** |  | 2013-08-18 → 2013-09-28 (+41d) |  |  |
| 10 | **UPTO GRADE SLAB** |  | 2013-08-18 → 2013-09-28 (+41d) |  |  |

| ID | Task | Start | Finish | Complete | Total float | Other |
| --- | --- | --- | --- | --- | --- | --- |
| DUKHCONP03Z2STUG1020 | Construction of foundations |  | 2013-05-18 A | 5% → 100% | -18d → none |  |
| DUKHCONP03Z2STUG1025 | Construction of neck of columns | 2013-05-05 A | 2013-06-02 → 2013-06-01 A (-1d) | 0% → 100% | -18d → none |  |
| DUKHCONP03Z2STUG1030 | Waterproofing Footing & Neck Column | 2013-05-14 A | 2013-06-11 A | 0% → 100% | -18d → none |  |
| DUKHCONP03Z2STUG1035 | Backfilling Upto Grade Beam Bottom | 2013-06-04 → 2013-06-01 A (-3d) | 2013-07-02 → 2013-06-29 A (-3d) | 0% → 100% | -27d → none |  |
| DUKHCONP03Z2STUG1040 | Construction of Grade Beams | 2013-06-20 → 2013-06-17 A (-3d) | 2013-07-18 → 2013-07-15 A (-3d) | 0% → 100% | -27d → none |  |
| DUKHCONP03Z2STUG1045 | Construction of slab on grade | 2013-07-17 → 2013-08-31 A (+45d) | 2013-08-18 → 2013-09-28 A (+41d) | 0% → 100% | -27d → none | resources BLINDING MASON SK [684 h]; SCREED MASON SK [684 h]; STEEL FIXERS SK [308 h]; CONCRETE MASON SK [372 h]; LABOR- SUBCONTRACTOR [1279.5 h]; BLINDING QTY [855 Sqm]; SCREED QTY [855 Sqm]; CONCRETE QTY [186 Cum]; WELDED WIRE MESH [1155 Sqm] → CONCRETE MASON SK [684 h]; SCREED MASON SK [684 h]; STEEL FIXERS SK [308 h]; CONCRETE MASON SK [372 h]; LABOR- SUBCONTRACTOR [1279.5 h]; BLINDING QTY [855 Sqm]; SCREED QTY [855 Sqm]; CONCRETE QTY [186 Cum]; WELDED WIRE MESH [1155 Sqm] |
| 15 | **SUPERSTRUCTURE** | 2013-08-03 → 2013-09-18 (+46d) | 2013-12-31 → 2014-02-13 (+44d) |  |  |  |
| 10 | **GROUND FLOOR** | 2013-08-03 → 2013-09-18 (+46d) | 2013-10-01 → 2013-11-16 (+46d) |  |  |  |
| DUKHCONP03Z2STGF2000 | Column-Rebar & Formwork | 2013-08-03 → 2013-09-18 A (+46d) | 2013-09-03 → 2013-10-16 A (+43d) | 0% → 100% | -27d → none |  |
| DUKHCONP03Z2STGF2005 | Column-Concrete | 2013-08-15 → 2013-09-28 A (+44d) | 2013-09-11 → 2013-10-27 A (+46d) | 0% → 100% | -27d → none |  |
| DUKHCONP03Z2STGF2010 | Beam, Stairs ,Slab-Rebar & Formwork | 2013-08-31 → 2013-10-13 A (+43d) | 2013-09-28 → 2013-11-12 (+45d) | 0% → 60% | -27d → -64d |  |
| DUKHCONP03Z2STGF2015 | Beam, Stairs ,Slab-Concrete | 2013-09-15 → 2013-10-30 A (+45d) | 2013-10-01 → 2013-11-16 (+46d) | 0% → 13% | -27d → -64d |  |
| 15 | **FIRST FLOORS** | 2013-09-17 → 2013-11-02 (+46d) | 2013-11-21 → 2014-01-05 (+45d) |  |  |  |
| DUKHCONP03Z2STFF2020 | Column-Rebar & Formwork | 2013-09-17 → 2013-11-02 (+46d) | 2013-10-15 → 2013-11-30 (+46d) |  | -27d → -64d |  |
| DUKHCONP03Z2STFF2025 | Column-Concrete | 2013-09-28 → 2013-11-12 (+45d) | 2013-10-27 → 2013-12-09 (+43d) |  | -27d → -64d |  |
| DUKHCONP03Z2STFF2030 | Beam, Stairs ,Slab-Rebar & Formwork | 2013-10-13 → 2013-11-27 (+45d) | 2013-11-12 → 2013-12-26 (+44d) |  | -27d → -64d |  |
| DUKHCONP03Z2STFF2035 | Beam, Stairs ,Slab-Concrete | 2013-11-05 → 2013-12-19 (+44d) | 2013-11-21 → 2014-01-05 (+45d) |  | -27d → -64d |  |
| 20 | **ROOF** | 2013-11-07 → 2013-12-22 (+45d) | 2013-12-31 → 2014-02-13 (+44d) |  |  |  |
| DUKHCONP03Z2STRF2040 | Column-Rebar & Formwork | 2013-11-07 → 2013-12-22 (+45d) | 2013-11-27 → 2014-01-11 (+45d) |  | 9d → -28d |  |
| DUKHCONP03Z2STRF2045 | Column-Concrete | 2013-11-11 → 2013-12-25 (+44d) | 2013-11-30 → 2014-01-13 (+44d) |  | 24d → -13d |  |
| DUKHCONP03Z2STRF2050 | Slab-Rebar & Formwork | 2013-11-13 → 2013-12-28 (+45d) | 2013-12-05 → 2014-01-19 (+45d) |  | 24d → -13d |  |
| DUKHCONP03Z2STRF2055 | Slab-Concrete | 2013-11-24 → 2014-01-07 (+44d) | 2013-12-08 → 2014-01-21 (+44d) |  | 24d → -13d |  |
| DUKHCONP03Z2STRF2060 | Construction of Parapets | 2013-11-26 → 2014-01-09 (+44d) | 2013-12-25 → 2014-02-06 (+43d) |  | 31d → -6d |  |
| DUKHCONP03Z2STRF2065 | Construction of up stands/Plinth | 2013-12-02 → 2014-01-15 (+44d) | 2013-12-31 → 2014-02-13 (+44d) |  | 31d → -6d |  |
| 15 | **FINISHING WORKS** | 2013-10-16 → 2013-12-01 (+46d) | 2014-05-18 → 2014-06-30 (+43d) |  |  |  |
| 10 | **INTERNAL FINISHES** | 2013-10-16 → 2013-12-01 (+46d) | 2014-05-18 → 2014-06-30 (+43d) |  |  |  |
| 10 | **GROUND FLOOR** | 2013-10-16 → 2013-12-01 (+46d) | 2014-04-10 → 2014-05-14 (+34d) |  |  |  |
| DUKHCONP03Z2ARGF3000 | Block work | 2013-10-16 → 2013-12-01 (+46d) | 2013-11-16 → 2013-12-30 (+44d) |  | 8d → -29d |  |
| DUKHCONP03Z2ARGF3005 | Plastering work | 2013-11-10 → 2013-12-24 (+44d) | 2013-12-08 → 2014-01-21 (+44d) |  | 8d → -29d |  |
| DUKHCONP03Z2ARGF3010 | Flooring screed | 2013-11-18 → 2014-01-01 (+44d) | 2013-12-11 → 2014-01-25 (+45d) |  | 16d → -21d |  |
| DUKHCONP03Z2ARGF3030 | Paint First coat | 2013-12-22 → 2014-01-09 (+18d) | 2014-01-19 → 2014-02-06 (+18d) |  | 1d → -15d |  |
| DUKHCONP03Z2ARGF3015 | Wet area waterproofing & Protection Screed | 2013-11-27 → 2014-01-11 (+45d) | 2013-12-14 → 2014-01-27 (+44d) |  | 8d → -29d |  |
| DUKHCONP03Z2ARGF3020 | Ceramic Wall Tiling | 2013-12-03 → 2014-01-16 (+44d) | 2014-01-01 → 2014-02-15 (+45d) |  | 8d → -29d |  |
| DUKHCONP03Z2ARGF3025 | Porcelain Tile flooring | 2013-12-09 → 2014-01-22 (+44d) | 2014-01-07 → 2014-02-20 (+44d) |  | 8d → -29d |  |
| DUKHCONP03Z2ARGF3045 | Fixing of Suspension systems | 2014-01-05 → 2014-02-09 (+35d) | 2014-01-27 → 2014-03-04 (+36d) |  | 1d → -29d |  |
| DUKHCONP03Z2ARGF3035 | Slate Tile Flooring & Skirting | 2013-12-30 → 2014-02-12 (+44d) | 2014-01-15 → 2014-03-01 (+45d) |  | 15d → -22d |  |
| DUKHCONP03Z2ARGF3055 | Aluminum tile false ceiling | 2014-01-13 → 2014-02-18 (+36d) | 2014-02-10 → 2014-03-18 (+36d) |  | 5d → -25d |  |
| DUKHCONP03Z2ARGF3040 | Cobble Tile flooring | 2014-01-06 → 2014-02-19 (+44d) | 2014-01-22 → 2014-03-08 (+45d) |  | 13d → -24d |  |
| DUKHCONP03Z2ARGF3060 | Gypsum board false ceiling | 2014-01-16 → 2014-02-22 (+37d) | 2014-02-15 → 2014-03-22 (+35d) |  | 1d → -29d |  |
| DUKHCONP03Z2ARGF3050 | Granite - Stair case flooring & Skirting | 2014-01-14 → 2014-02-27 (+44d) | 2014-02-05 → 2014-03-22 (+45d) |  | 13d → -24d |  |
| DUKHCONP03Z2ARGF3065 | Wooden door | 2014-01-28 → 2014-03-13 (+44d) | 2014-02-15 → 2014-03-30 (+43d) |  | 13d → -24d |  |
| DUKHCONP03Z2ARGF3070 | Aluminum doors | 2014-02-03 → 2014-03-19 (+44d) | 2014-02-20 → 2014-04-05 (+44d) |  | 13d → -24d |  |
| DUKHCONP03Z2ARGF3075 | Carpentry & Joinery Works | 2014-02-13 → 2014-03-25 (+40d) | 2014-03-08 → 2014-04-16 (+39d) |  | 10d → -24d |  |
| DUKHCONP03Z2ARGF3080 | Aluminum windows | 2014-02-15 → 2014-03-26 (+39d) | 2014-03-09 → 2014-04-17 (+39d) |  | 20d → -14d |  |
| DUKHCONP03Z2ARGF3085 | S.S.Balustrade | 2014-02-22 → 2014-04-02 (+39d) | 2014-03-16 → 2014-04-24 (+39d) |  | 15d → -19d |  |
| DUKHCONP03Z2ARGF3090 | Installation of Granite Counter Top | 2014-02-26 → 2014-04-07 (+40d) | 2014-03-15 → 2014-04-23 (+39d) |  | 10d → -24d |  |
| DUKHCONP03Z2ARGF3095 | Final Painting | 2014-03-13 → 2014-04-16 (+34d) | 2014-04-10 → 2014-05-14 (+34d) |  | 5d → -24d |  |
| 15 | **FIRST FLOORS** | 2013-11-30 → 2014-01-13 (+44d) | 2014-05-18 → 2014-06-30 (+43d) |  |  |  |
| DUKHCONP03Z2ARFF3300 | Block work | 2013-11-30 → 2014-01-13 (+44d) | 2013-12-29 → 2014-02-10 (+43d) |  | -27d → -64d |  |
| DUKHCONP03Z2ARFF3305 | Plastering work | 2013-12-25 → 2014-02-06 (+43d) | 2014-01-22 → 2014-03-08 (+45d) |  | -27d → -64d |  |
| DUKHCONP03Z2ARFF3310 | Flooring screed | 2014-01-02 → 2014-02-16 (+45d) | 2014-01-26 → 2014-03-11 (+44d) |  | -12d → -49d |  |
| DUKHCONP03Z2ARFF3330 | Paint First coat | 2014-01-11 → 2014-02-24 (+44d) | 2014-02-08 → 2014-03-24 (+44d) |  | -9d → -46d |  |
| DUKHCONP03Z2ARFF3315 | Wet area waterproofing | 2014-01-15 → 2014-03-01 (+45d) | 2014-02-01 → 2014-03-17 (+44d) |  | -27d → -64d |  |
| DUKHCONP03Z2ARFF3320 | Ceramic Wall Tiling | 2014-01-25 → 2014-03-10 (+44d) | 2014-02-23 → 2014-04-07 (+43d) |  | -27d → -64d |  |
| DUKHCONP03Z2ARFF3325 | Porcelain Tile flooring | 2014-02-01 → 2014-03-17 (+44d) | 2014-03-02 → 2014-04-14 (+43d) |  | -27d → -64d |  |
| DUKHCONP03Z2ARFF3345 | Fixing of Suspension systems | 2014-02-16 → 2014-03-31 (+43d) | 2014-03-10 → 2014-04-22 (+43d) |  | -27d → -64d |  |
| DUKHCONP03Z2ARFF3335 | Slate Tile Flooring & Skirting | 2014-02-19 → 2014-04-03 (+43d) | 2014-03-08 → 2014-04-20 (+43d) |  | -17d → -54d |  |
| DUKHCONP03Z2ARFF3350 | Granite - Stair case flooring & Skirting | 2014-02-23 → 2014-04-07 (+43d) | 2014-03-17 → 2014-04-29 (+43d) |  | -25d → -62d |  |
| DUKHCONP03Z2ARFF3360 | Gypsum board false ceiling | 2014-02-24 → 2014-04-08 (+43d) | 2014-03-24 → 2014-05-06 (+43d) |  | -27d → -64d |  |
| DUKHCONP03Z2ARFF3355 | Aluminum tile false ceiling | 2014-02-27 → 2014-04-12 (+44d) | 2014-03-22 → 2014-05-04 (+43d) |  | -25d → -62d |  |
| DUKHCONP03Z2ARFF3365 | Wooden door | 2014-03-11 → 2014-04-23 (+43d) | 2014-03-27 → 2014-05-10 (+44d) |  | -27d → -64d |  |
| DUKHCONP03Z2ARFF3370 | Aluminum Door | 2014-03-19 → 2014-05-01 (+43d) | 2014-04-10 → 2014-05-24 (+44d) |  | -27d → -64d |  |
| DUKHCONP03Z2ARFF3380 | Aluminum windows | 2014-03-26 → 2014-05-08 (+43d) | 2014-04-17 → 2014-05-31 (+44d) |  | -16d → -53d |  |
| DUKHCONP03Z2ARFF3375 | Carpentry & Joinery Works | 2014-03-27 → 2014-05-10 (+44d) | 2014-04-24 → 2014-06-07 (+44d) |  | -27d → -64d |  |
| DUKHCONP03Z2ARFF3385 | Handrail & Balustrade | 2014-04-08 → 2014-05-21 (+43d) | 2014-04-30 → 2014-06-12 (+43d) |  | -27d → -64d |  |
| DUKHCONP03Z2ARFF3390 | Installation of Granite Counter Top | 2014-04-10 → 2014-05-24 (+44d) | 2014-05-03 → 2014-06-15 (+43d) |  | -27d → -64d |  |
| DUKHCONP03Z2ARFF3395 | Final Painting | 2014-04-20 → 2014-06-02 (+43d) | 2014-05-18 → 2014-06-30 (+43d) |  | -27d → -64d |  |
| 20 | **ROOF** | 2013-12-19 → 2014-02-01 (+44d) | 2014-02-23 → 2014-04-07 (+43d) |  |  |  |
| DUKHCONP03Z2ARRF3600 | Block work | 2013-12-19 → 2014-02-01 (+44d) | 2014-01-11 → 2014-02-24 (+44d) |  | 40d → 3d |  |
| DUKHCONP03Z2ARRF3605 | Plastering work | 2013-12-28 → 2014-02-09 (+43d) | 2014-01-19 → 2014-03-04 (+44d) |  | 40d → 3d |  |

| ID | Task | Start | Finish | Complete | Total float |
| --- | --- | --- | --- | --- | --- |
| DUKHCONP03Z2ARRF3610 | Flooring screed | 2014-01-11 → 2014-02-24 (+44d) | 2014-01-27 → 2014-03-12 (+44d) |  | 45d → 8d |
| DUKHCONP03Z2ARRF3695 | Painting | 2014-01-19 → 2014-03-04 (+44d) | 2014-02-10 → 2014-03-26 (+44d) |  | 45d → 8d |
| DUKHCONP03Z2ARRF3620 | Epoxy Painting | 2014-02-05 → 2014-03-22 (+45d) | 2014-02-23 → 2014-04-07 (+43d) |  | 45d → 8d |
| 15 | **EXTERNAL FINISHES** | 2013-12-25 → 2014-02-06 (+43d) | 2014-03-26 → 2014-05-05 (+40d) |  |  |
| 10 | **ROOF** | 2013-12-25 → 2014-02-06 (+43d) | 2014-03-02 → 2014-04-13 (+42d) |  |  |
| DUKHCONP03Z2ARRF3630 | Leveling Screed for Waterproofing | 2013-12-25 → 2014-02-06 (+43d) | 2014-01-22 → 2014-03-08 (+45d) |  | 35d → -2d |
| DUKHCONP03Z2ARRF3635 | Laying of Waterproofing Membrane | 2013-12-29 → 2014-02-10 (+43d) | 2014-01-26 → 2014-03-11 (+44d) |  | 35d → -2d |
| DUKHCONP03Z2ARRF3640 | Installation of Insulation & Protection | 2014-01-02 → 2014-02-16 (+45d) | 2014-01-30 → 2014-03-16 (+45d) |  | 35d → -2d |
| DUKHCONP03Z2ARRF3645 | Lime Stone Chips & Paving slab Installation | 2014-01-07 → 2014-02-20 (+44d) | 2014-02-04 → 2014-03-20 (+44d) |  | 35d → -2d |
| DUKHCONP03Z2ARRF3650 | Install. of Gal. Frame & Aluminum Slat Screen | 2014-01-15 → 2014-03-01 (+45d) | 2014-02-13 → 2014-03-29 (+44d) |  | 35d → -2d |
| DUKHCONP03Z2ARRF3655 | Installation of Pumps Protection cabinets | 2014-02-01 → 2014-03-16 (+43d) | 2014-02-24 → 2014-04-07 (+42d) |  | 34d → -2d |
| DUKHCONP03Z2ARRF3660 | Installation of Access Ladder | 2014-02-13 → 2014-03-27 (+42d) | 2014-03-02 → 2014-04-13 (+42d) |  | 39d → 3d |
| 15 | **ELEVATION** | 2014-01-21 → 2014-03-06 (+44d) | 2014-03-26 → 2014-05-05 (+40d) |  |  |
| DUKHCONP03Z2AREL3665 | External Plastering | 2014-01-21 → 2014-03-06 (+44d) | 2014-02-19 → 2014-04-03 (+43d) |  | 26d → -11d |
| DUKHCONP03Z2AREL3675 | GRC Panel Works | 2014-02-08 → 2014-03-24 (+44d) | 2014-03-03 → 2014-04-15 (+43d) |  | 28d → -9d |
| DUKHCONP03Z2AREL3680 | External Painting | 2014-03-04 → 2014-04-13 (+40d) | 2014-03-26 → 2014-05-05 (+40d) |  | 18d → -16d |
| 20 | **MEP WORKS** | 2013-07-08 → 2013-07-04 (-4d) | 2014-05-15 → 2014-06-28 (+44d) |  |  |
| 10 | **ELECTRICAL WORKS** | 2013-10-24 → 2013-12-07 (+44d) | 2014-05-15 → 2014-06-28 (+44d) |  |  |
| 10 | **GROUND FLOOR** | 2013-10-24 → 2013-12-07 (+44d) | 2014-03-19 → 2014-04-16 (+28d) |  |  |
| DUKHCONP03Z2ELGF4000 | Fixing of wall conduits & switch socket boxes | 2013-10-24 → 2013-12-07 (+44d) | 2013-11-21 → 2014-01-05 (+45d) |  | 17d → -20d |
| DUKHCONP03Z2ELGF4005 | Cable tray & trunking installation | 2013-11-05 → 2013-12-19 (+44d) | 2013-11-27 → 2014-01-11 (+45d) |  | 35d → -2d |
| DUKHCONP03Z2ELGF4010 | Installation of wiring & Main Cabling | 2013-11-13 → 2013-12-28 (+45d) | 2013-12-11 → 2014-01-25 (+45d) |  | 35d → -2d |
| DUKHCONP03Z2ELGF4015 | Install. of CAMS & Fire Fighting Accessories | 2014-02-01 → 2014-03-02 (+29d) | 2014-03-02 → 2014-03-30 (+28d) |  | 9d → -15d |
| DUKHCONP03Z2ELGF4020 | Installation of DBS,MCCB Accessories. | 2014-01-30 → 2014-03-08 (+37d) | 2014-02-23 → 2014-03-30 (+35d) |  | 2d → -28d |
| DUKHCONP03Z2ELGF4025 | Installation of Lighting fixtures & Accessories | 2014-02-19 → 2014-03-19 (+28d) | 2014-03-19 → 2014-04-16 (+28d) |  | -3d → -27d |
| DUKHCONP03Z2ELGF4030 | Installation of Telephone System | 2014-02-13 → 2014-03-19 (+34d) | 2014-03-08 → 2014-04-10 (+33d) |  | 1d → -28d |
| 15 | **FIRST FLOORS** | 2013-12-05 → 2014-01-19 (+45d) | 2014-04-21 → 2014-06-03 (+43d) |  |  |
| DUKHCONP03Z2ELFF4035 | Fixing of wall conduits & switch socket boxes | 2013-12-05 → 2014-01-19 (+45d) | 2014-01-04 → 2014-02-17 (+44d) |  | -16d → -53d |
| DUKHCONP03Z2ELFF4040 | Cable tray & trunking installation | 2013-12-17 → 2014-01-30 (+44d) | 2014-01-09 → 2014-02-23 (+45d) |  | 6d → -31d |
| DUKHCONP03Z2ELFF4045 | Installation of wiring & Main Cabling | 2013-12-30 → 2014-02-12 (+44d) | 2014-01-27 → 2014-03-12 (+44d) |  | 3d → -34d |
| DUKHCONP03Z2ELFF4050 | Installation of Telephone System | 2014-03-05 → 2014-04-17 (+43d) | 2014-04-02 → 2014-05-15 (+43d) |  | -6d → -43d |
| DUKHCONP03Z2ELFF4055 | Install. of CAMS & Fire Fighting Accessories | 2014-03-08 → 2014-04-20 (+43d) | 2014-04-05 → 2014-05-18 (+43d) |  | -15d → -52d |
| DUKHCONP03Z2ELFF4060 | Installation of DBS,MCCB Accessories. | 2014-03-11 → 2014-04-23 (+43d) | 2014-04-02 → 2014-05-15 (+43d) |  | -26d → -63d |
| DUKHCONP03Z2ELFF4065 | Installation of Lighting fixtures & Accessories | 2014-03-24 → 2014-05-06 (+43d) | 2014-04-21 → 2014-06-03 (+43d) |  | -26d → -63d |
| 20 | **ROOF** | 2014-04-13 → 2014-05-26 (+43d) | 2014-05-15 → 2014-06-28 (+44d) |  |  |
| DUKHCONP03Z2ELRF4070 | Installation of Isolator | 2014-04-13 → 2014-05-26 (+43d) | 2014-05-03 → 2014-06-15 (+43d) |  | -25d → -62d |
| DUKHCONP03Z2ELRF4075 | Installation of TV Dish Antenna | 2014-04-20 → 2014-06-02 (+43d) | 2014-05-15 → 2014-06-28 (+44d) |  | -25d → -62d |
| 15 | **PLUMBING, DRAINAGE & FIRE FIGHTING WORKS** | 2013-07-08 → 2013-07-04 (-4d) | 2014-05-01 → 2014-06-14 (+44d) |  |  |
| 10 | **GROUND FLOOR** | 2013-07-08 → 2013-07-04 (-4d) | 2014-03-08 → 2014-04-16 (+39d) |  |  |
| DUKHCONP03Z2PLUG4300 | Drainage / Storm Pipes in Grade Slab | 2013-07-08 → 2013-07-04 A (-4d) | 2013-07-30 → 2013-07-27 A (-3d) | 0% → 100% | -27d → none |
| DUKHCONP03Z2PLGF4305 | Installation of Plumbing pipes & testing | 2013-11-04 → 2013-12-17 (+43d) | 2013-11-24 → 2014-01-07 (+44d) |  | 8d → -29d |
| DUKHCONP03Z2PLGF4310 | Installation of Drainage pipes &testing | 2013-11-04 → 2013-12-17 (+43d) | 2013-11-24 → 2014-01-07 (+44d) |  | 29d → -8d |
| DUKHCONP03Z2PLGF4315 | Sanitary Fittings & Accessories | 2014-02-06 → 2014-03-19 (+41d) | 2014-03-02 → 2014-04-10 (+39d) |  | 34d → 0d |
| DUKHCONP03Z2PLGF4320 | Installation of Water Heater | 2014-02-19 → 2014-03-31 (+40d) | 2014-03-08 → 2014-04-16 (+39d) |  | 34d → 0d |
| 15 | **FIRST FLOORS** | 2013-12-15 → 2014-01-28 (+44d) | 2014-04-14 → 2014-05-27 (+43d) |  |  |
| DUKHCONP03Z2PLFF4325 | Installation of Plumbing pipes & testing | 2013-12-15 → 2014-01-28 (+44d) | 2014-01-05 → 2014-02-18 (+44d) |  | -27d → -64d |
| DUKHCONP03Z2PLFF4330 | Installation of Drainage pipes & testing | 2013-12-16 → 2014-01-29 (+44d) | 2014-01-06 → 2014-02-19 (+44d) |  | -1d → -38d |
| DUKHCONP03Z2PLFF4335 | Sanitary Fittings & Accessories | 2014-03-17 → 2014-04-29 (+43d) | 2014-04-08 → 2014-05-21 (+43d) |  | -13d → -50d |
| DUKHCONP03Z2PLFF4340 | Installation of Water Heater | 2014-03-29 → 2014-05-11 (+43d) | 2014-04-14 → 2014-05-27 (+43d) |  | -13d → -50d |
| 20 | **ROOF** | 2014-01-11 → 2014-02-24 (+44d) | 2014-05-01 → 2014-06-14 (+44d) |  |  |
| DUKHCONP03Z2PLRF4345 | Installation of Plumbing pipes & fittings | 2014-01-11 → 2014-02-24 (+44d) | 2014-01-27 → 2014-03-12 (+44d) |  | 44d → 7d |
| DUKHCONP03Z2PLRF4350 | Installation of Rain water Pipes | 2014-02-10 → 2014-03-26 (+44d) | 2014-02-27 → 2014-04-12 (+44d) |  | 26d → -11d |
| DUKHCONP03Z2PLRF4355 | Roof Water Tank Installation & Connections | 2014-04-03 → 2014-05-17 (+44d) | 2014-05-01 → 2014-06-14 (+44d) |  | -13d → -50d |
| 20 | **AC WORKS** | 2013-12-15 → 2014-01-07 (+23d) | 2014-05-01 → 2014-06-14 (+44d) |  |  |
| 10 | **GROUND FLOOR** | 2013-12-15 → 2014-01-07 (+23d) | 2014-03-17 → 2014-04-14 (+28d) |  |  |
| DUKHCONP03Z2ACGF4600 | Installation AC Pipes | 2013-12-15 → 2014-01-07 (+23d) | 2014-01-07 → 2014-01-29 (+22d) |  | 21d → 2d |
| DUKHCONP03Z2ACGF4605 | Fixing of Ventilation Equipments | 2014-02-01 → 2014-03-02 (+29d) | 2014-03-02 → 2014-03-30 (+28d) |  | 11d → -13d |
| DUKHCONP03Z2ACGF4610 | Fixing of Split AC | 2014-02-23 → 2014-03-23 (+28d) | 2014-03-17 → 2014-04-14 (+28d) |  | 11d → -13d |
| 15 | **FIRST FLOORS** | 2014-01-08 → 2014-02-22 (+45d) | 2014-04-20 → 2014-06-02 (+43d) |  |  |
| DUKHCONP03Z2ACFF4615 | Installation AC Pipes | 2014-01-08 → 2014-02-22 (+45d) | 2014-01-30 → 2014-03-16 (+45d) |  | 5d → -32d |
| DUKHCONP03Z2ACFF4620 | Fixing of Ventilation Equipments | 2014-03-08 → 2014-04-20 (+43d) | 2014-04-05 → 2014-05-18 (+43d) |  | -18d → -55d |
| DUKHCONP03Z2ACFF4625 | Fixing of Split AC | 2014-03-29 → 2014-05-11 (+43d) | 2014-04-20 → 2014-06-02 (+43d) |  | -18d → -55d |
| 20 | **ROOF** | 2014-01-18 → 2014-03-03 (+44d) | 2014-05-01 → 2014-06-14 (+44d) |  |  |
| DUKHCONP03Z2ACRF4630 | Installation of Refrigerant Pipes | 2014-01-18 → 2014-03-03 (+44d) | 2014-02-16 → 2014-03-31 (+43d) |  | 46d → 9d |
| DUKHCONP03Z2ACRF4635 | Installation of Condensing Unit | 2014-04-03 → 2014-05-17 (+44d) | 2014-05-01 → 2014-06-14 (+44d) |  | -13d → -50d |
| 25 | **EXTERNAL WORKS** | 2013-11-30 → 2014-01-13 (+44d) | 2014-04-26 → 2014-06-08 (+43d) |  |  |
| 10 | **MISCELLANEOUS** | 2013-11-30 → 2014-01-13 (+44d) | 2014-03-19 → 2014-05-01 (+43d) |  |  |
| DUKHCONP03Z2MSEX5000 | Construction of Manholes | 2013-11-30 → 2014-01-13 (+44d) | 2013-12-29 → 2014-02-10 (+43d) |  | 25d → -12d |
| DUKHCONP03Z2MSEX5005 | Construction of Soak pit, Chambers | 2013-12-14 → 2014-01-27 (+44d) | 2014-01-12 → 2014-02-25 (+44d) |  | 25d → -12d |
| DUKHCONP03Z2MSEX5015 | Construction of grease Trap | 2014-01-04 → 2014-02-17 (+44d) | 2014-01-26 → 2014-03-11 (+44d) |  | 25d → -12d |

| ID | Task | Start | Finish | Complete | Total float | Other |
| --- | --- | --- | --- | --- | --- | --- |
| DUKHCONP03Z2MSEX5010 | Telephone cable laying | 2014-01-27 → 2014-03-12 (+44d) | 2014-02-25 → 2014-04-09 (+43d) |  | 25d → -12d |  |
| DUKHCONP03Z2MSEX5020 | Construction Entrance Ramp | 2014-02-06 → 2014-03-23 (+45d) | 2014-03-08 → 2014-04-20 (+43d) |  | -6d → -43d |  |
| DUKHCONP03Z2MSEX5025 | SS.Handrails and Balustrades | 2014-02-25 → 2014-04-09 (+43d) | 2014-03-19 → 2014-05-01 (+43d) |  | -6d → -43d |  |
| 15 | **DOMESTIC WATER TANK & PUMP ROOM** | 2013-12-08 → 2014-01-21 (+44d) | 2014-04-26 → 2014-06-08 (+43d) |  |  |  |
| DUKHCONP03Z2WTEX5030 | Excavation | 2013-12-08 → 2014-01-21 (+44d) | 2013-12-31 → 2014-02-13 (+44d) |  | 31d → -6d |  |
| DUKHCONP03Z2WTEX5035 | Construction of Raft | 2013-12-14 → 2014-01-27 (+44d) | 2014-01-12 → 2014-02-25 (+44d) |  | 31d → -6d |  |
| DUKHCONP03Z2WTEX5040 | Block works & Plastering | 2013-12-24 → 2014-02-05 (+43d) | 2014-01-21 → 2014-03-06 (+44d) |  | 31d → -6d |  |
| DUKHCONP03Z2WTEX5070 | Domestic Water Tank Plumbings works | 2014-01-01 → 2014-02-15 (+45d) | 2014-01-29 → 2014-03-15 (+45d) |  | 31d → -6d |  |
| DUKHCONP03Z2WTEX5075 | Domestic Water Tank AC works | 2014-01-01 → 2014-02-15 (+45d) | 2014-01-29 → 2014-03-15 (+45d) |  | 31d → -6d |  |
| DUKHCONP03Z2WTEX5080 | Domestic Water Tank Electrical works | 2014-01-01 → 2014-02-15 (+45d) | 2014-01-29 → 2014-03-15 (+45d) |  | 31d → -6d |  |
| DUKHCONP03Z2WTEX5085 | Domestic Water Tank Firefighting works | 2014-01-01 → 2014-02-15 (+45d) | 2014-01-29 → 2014-03-15 (+45d) |  | 31d → -6d |  |
| DUKHCONP03Z2WTEX5045 | Flooring & Painting | 2014-01-06 → 2014-02-19 (+44d) | 2014-02-03 → 2014-03-19 (+44d) |  | 31d → -6d |  |
| DUKHCONP03Z2WTEX5050 | Installation of Steel Gate | 2014-03-09 → 2014-04-21 (+43d) | 2014-03-31 → 2014-05-13 (+43d) |  | -6d → -43d |  |
| DUKHCONP03Z2WTEX5060 | Structural steel & SS Shed cover installation | 2014-03-17 → 2014-04-29 (+43d) | 2014-04-14 → 2014-05-27 (+43d) |  | -8d → -45d |  |
| DUKHCONP03Z2WTEX5065 | Install. of Water Tank,Chiller,Pump & Meter | 2014-03-29 → 2014-05-11 (+43d) | 2014-04-26 → 2014-06-08 (+43d) |  | -8d → -45d |  |
| 30 | **TESTING AND COMMISSIONING** | 2014-05-19 → 2014-07-01 (+43d) | 2014-06-16 → 2014-07-29 (+43d) |  |  |  |
| DUKHCONP03Z2ACTC8000 | Pre-Commissioning & Testing of AC Works | 2014-05-19 → 2014-07-01 (+43d) | 2014-06-16 → 2014-07-29 (+43d) |  | -27d → -64d |  |
| DUKHCONP03Z2ELTC8010 | Pre-Commissioning & Testing of Electrical Works | 2014-05-19 → 2014-07-01 (+43d) | 2014-06-16 → 2014-07-29 (+43d) |  | -27d → -64d |  |
| DUKHCONP03Z2PLTC8005 | Pre-Commissioning & Testing of Plumbing Works | 2014-05-19 → 2014-07-01 (+43d) | 2014-06-16 → 2014-07-29 (+43d) |  | -27d → -64d |  |
| 20 | **ZONE - 3 (3 Apartments)** |  | 2014-07-15 → 2014-08-31 (+47d) |  |  |  |
| 10 | **STRUCTURAL WORKS** |  | 2014-01-29 → 2014-03-15 (+45d) |  |  |  |
| 10 | **SUB STRUCTURE** |  | 2013-09-16 → 2013-10-29 (+43d) |  |  |  |
| 10 | **UPTO GRADE SLAB** |  | 2013-09-16 → 2013-10-29 (+43d) |  |  |  |
| DUKHCONP03Z3STUG1005 | Footing Antitermite |  | 2013-05-18 A | 17% → 100% | -9d → none |  |
| DUKHCONP03Z3STUG1010 | Footing Blinding |  | 2013-05-18 A | 17% → 100% | -6d → none |  |
| DUKHCONP03Z3STUG1015 | Footing Waterproofing & Screed |  | 2013-05-18 A | 24% → 100% | -1d → none |  |
| DUKHCONP03Z3STUG1020 | Construction of foundations | 2013-05-05 A | 2013-05-27 A | 0% → 100% | -1d → none |  |
| DUKHCONP03Z3STUG1025 | Construction of neck of columns | 2013-06-03 → 2013-06-01 A (-2d) | 2013-07-01 → 2013-06-29 A (-2d) | 0% → 100% | -18d → none |  |
| DUKHCONP03Z3STUG1030 | Waterproofing Footing & Neck Column | 2013-06-12 → 2013-06-10 A (-2d) | 2013-07-10 → 2013-07-08 A (-2d) | 0% → 100% | -18d → none |  |
| DUKHCONP03Z3STUG1035 | Backfilling Upto Grade Beam Bottom | 2013-07-03 → 2013-06-29 A (-4d) | 2013-07-31 → 2013-07-27 A (-4d) | 0% → 100% | -27d → none |  |
| DUKHCONP03Z3STUG1040 | Construction of Grade Beams | 2013-07-20 → 2013-07-15 A (-5d) | 2013-08-20 → 2013-08-15 A (-5d) | 0% → 100% | -27d → none |  |
| DUKHCONP03Z3STUG1045 | Construction of slab on grade | 2013-08-19 → 2013-09-29 A (+41d) | 2013-09-16 → 2013-10-29 A (+43d) | 0% → 100% | -27d → none | resources CONCRETE MASON SK [372 h]; LABOR- SUBCONTRACTOR [1279.5 h]; BLINDING QTY [855 Sqm]; SCREED QTY [855 Sqm]; CONCRETE QTY [186 Cum]; WELDED WIRE MESH [1155 Sqm]; BLINDING MASON SK [684 h]; SCREED MASON SK [684 h]; STEEL FIXERS SK [308 h] → CONCRETE MASON SK [372 h]; LABOR- SUBCONTRACTOR [1279.5 h]; BLINDING QTY [855 Sqm]; SCREED QTY [855 Sqm]; CONCRETE QTY [186 Cum]; WELDED WIRE MESH [1155 Sqm]; CONCRETE MASON SK [684 h]; SCREED MASON SK [684 h]; STEEL FIXERS SK [308 h] |
| 15 | **SUPERSTRUCTURE** | 2013-09-04 → 2013-10-20 (+46d) | 2014-01-29 → 2014-03-15 (+45d) |  |  |  |
| 10 | **GROUND FLOOR** | 2013-09-04 → 2013-10-20 (+46d) | 2013-11-02 → 2013-12-15 (+43d) |  |  |  |
| DUKHCONP03Z3STGF2000 | Column-Rebar & Formwork | 2013-09-04 → 2013-10-20 A (+46d) | 2013-10-02 → 2013-11-17 (+46d) | 0% → 44% | -27d → -64d |  |
| DUKHCONP03Z3STGF2005 | Column-Concrete | 2013-09-14 → 2013-10-29 A (+45d) | 2013-10-10 → 2013-11-25 (+46d) | 0% → 12% | -27d → -64d |  |
| DUKHCONP03Z3STGF2010 | Beam, Stairs ,Slab-Rebar & Formwork | 2013-09-29 → 2013-11-13 (+45d) | 2013-10-29 → 2013-12-11 (+43d) |  | -27d → -64d |  |
| DUKHCONP03Z3STGF2015 | Beam, Stairs ,Slab-Concrete | 2013-10-14 → 2013-11-28 (+45d) | 2013-11-02 → 2013-12-15 (+43d) |  | -27d → -64d |  |
| 15 | **FIRST FLOORS** | 2013-10-16 → 2013-12-01 (+46d) | 2013-12-22 → 2014-02-03 (+43d) |  |  |  |
| DUKHCONP03Z3STFF2020 | Column-Rebar & Formwork | 2013-10-16 → 2013-12-01 (+46d) | 2013-11-16 → 2013-12-30 (+44d) |  | -27d → -64d |  |
| DUKHCONP03Z3STFF2025 | Column-Concrete | 2013-10-29 → 2013-12-11 (+43d) | 2013-11-25 → 2014-01-08 (+44d) |  | -27d → -64d |  |
| DUKHCONP03Z3STFF2030 | Beam, Stairs ,Slab-Rebar & Formwork | 2013-11-13 → 2013-12-28 (+45d) | 2013-12-11 → 2014-01-25 (+45d) |  | -27d → -64d |  |
| DUKHCONP03Z3STFF2035 | Beam, Stairs ,Slab-Concrete | 2013-12-04 → 2014-01-18 (+45d) | 2013-12-22 → 2014-02-03 (+43d) |  | -27d → -64d |  |
| 20 | **ROOF** | 2013-12-07 → 2014-01-20 (+44d) | 2014-01-29 → 2014-03-15 (+45d) |  |  |  |
| DUKHCONP03Z3STRF2040 | Column-Rebar & Formwork | 2013-12-07 → 2014-01-20 (+44d) | 2013-12-28 → 2014-02-09 (+43d) |  | 2d → -35d |  |
| DUKHCONP03Z3STRF2045 | Column-Concrete | 2013-12-10 → 2014-01-23 (+44d) | 2013-12-30 → 2014-02-12 (+44d) |  | 12d → -25d |  |
| DUKHCONP03Z3STRF2050 | Slab-Rebar & Formwork | 2013-12-12 → 2014-01-26 (+45d) | 2014-01-05 → 2014-02-18 (+44d) |  | 12d → -25d |  |
| DUKHCONP03Z3STRF2055 | Slab-Concrete | 2013-12-24 → 2014-02-05 (+43d) | 2014-01-07 → 2014-02-20 (+44d) |  | 12d → -25d |  |
| DUKHCONP03Z3STRF2060 | Construction of Parapets | 2013-12-26 → 2014-02-08 (+44d) | 2014-01-23 → 2014-03-09 (+45d) |  | 31d → -6d |  |
| DUKHCONP03Z3STRF2065 | Construction of up stands/Plinth | 2014-01-01 → 2014-02-15 (+45d) | 2014-01-29 → 2014-03-15 (+45d) |  | 31d → -6d |  |
| 15 | **FINISHING WORKS** | 2013-11-17 → 2013-12-31 (+44d) | 2014-06-16 → 2014-07-29 (+43d) |  |  |  |
| 10 | **INTERNAL FINISHES** | 2013-11-17 → 2013-12-31 (+44d) | 2014-06-16 → 2014-07-29 (+43d) |  |  |  |
| 10 | **GROUND FLOOR** | 2013-11-17 → 2013-12-31 (+44d) | 2014-05-10 → 2014-06-12 (+33d) |  |  |  |
| DUKHCONP03Z3ARGF3000 | Block work | 2013-11-17 → 2013-12-31 (+44d) | 2013-12-15 → 2014-01-28 (+44d) |  | 8d → -29d |  |
| DUKHCONP03Z3ARGF3005 | Plastering work | 2013-12-09 → 2014-01-22 (+44d) | 2014-01-07 → 2014-02-20 (+44d) |  | 8d → -29d |  |
| DUKHCONP03Z3ARGF3010 | Flooring screed | 2013-12-17 → 2014-01-30 (+44d) | 2014-01-11 → 2014-02-24 (+44d) |  | 16d → -21d |  |
| DUKHCONP03Z3ARGF3030 | Paint First coat | 2014-01-20 → 2014-02-08 (+19d) | 2014-02-18 → 2014-03-09 (+19d) |  | 1d → -15d |  |
| DUKHCONP03Z3ARGF3015 | Wet area waterproofing & Protection Screed | 2013-12-28 → 2014-02-09 (+43d) | 2014-01-13 → 2014-02-26 (+44d) |  | 8d → -29d |  |
| DUKHCONP03Z3ARGF3020 | Ceramic Wall Tiling | 2014-01-02 → 2014-02-16 (+45d) | 2014-01-30 → 2014-03-16 (+45d) |  | 8d → -29d |  |
| DUKHCONP03Z3ARGF3025 | Porcelain Tile flooring | 2014-01-08 → 2014-02-22 (+45d) | 2014-02-05 → 2014-03-22 (+45d) |  | 8d → -29d |  |
| DUKHCONP03Z3ARGF3045 | Fixing of Suspension systems | 2014-02-03 → 2014-03-11 (+36d) | 2014-02-26 → 2014-04-02 (+35d) |  | 1d → -29d |  |
| DUKHCONP03Z3ARGF3035 | Slate Tile Flooring & Skirting | 2014-01-28 → 2014-03-13 (+44d) | 2014-02-15 → 2014-03-30 (+43d) |  | 15d → -22d |  |
| DUKHCONP03Z3ARGF3055 | Aluminum tile false ceiling | 2014-02-12 → 2014-03-19 (+35d) | 2014-03-12 → 2014-04-16 (+35d) |  | 4d → -26d |  |
| DUKHCONP03Z3ARGF3040 | Cobble Tile flooring | 2014-02-04 → 2014-03-20 (+44d) | 2014-02-22 → 2014-04-06 (+43d) |  | 13d → -24d |  |
| DUKHCONP03Z3ARGF3060 | Gypsum board false ceiling | 2014-02-16 → 2014-03-23 (+35d) | 2014-03-16 → 2014-04-20 (+35d) |  | 1d → -29d |  |
| DUKHCONP03Z3ARGF3050 | Granite - Stair case flooring & Skirting | 2014-02-13 → 2014-03-29 (+44d) | 2014-03-08 → 2014-04-20 (+43d) |  | 13d → -24d |  |
| DUKHCONP03Z3ARGF3065 | Wooden door | 2014-02-27 → 2014-04-12 (+44d) | 2014-03-16 → 2014-04-28 (+43d) |  | 13d → -24d |  |
| DUKHCONP03Z3ARGF3070 | Aluminum doors | 2014-03-05 → 2014-04-17 (+43d) | 2014-03-22 → 2014-05-04 (+43d) |  | 13d → -24d |  |
| DUKHCONP03Z3ARGF3075 | Carpentry & Joinery Works | 2014-03-11 → 2014-04-23 (+43d) | 2014-04-02 → 2014-05-15 (+43d) |  | 13d → -24d |  |
| DUKHCONP03Z3ARGF3080 | Aluminum windows | 2014-03-12 → 2014-04-24 (+43d) | 2014-04-03 → 2014-05-17 (+44d) |  | 23d → -14d |  |

| ID | Task | Start | Finish | Complete | Total float |
| --- | --- | --- | --- | --- | --- |
| DUKHCONP03Z3ARGF3085 | S.S.Balustrade | 2014-03-19 → 2014-05-01 (+43d) | 2014-04-10 → 2014-05-24 (+44d) |  | 18d → -19d |
| DUKHCONP03Z3ARGF3090 | Installation of Granite Counter Top | 2014-03-24 → 2014-05-06 (+43d) | 2014-04-09 → 2014-05-22 (+43d) |  | 13d → -24d |
| DUKHCONP03Z3ARGF3095 | Final Painting | 2014-04-12 → 2014-05-15 (+33d) | 2014-05-10 → 2014-06-12 (+33d) |  | 5d → -24d |
| 15 | **FIRST FLOORS** | 2013-12-30 → 2014-02-12 (+44d) | 2014-06-16 → 2014-07-29 (+43d) |  |  |
| DUKHCONP03Z3ARFF3300 | Block work | 2013-12-30 → 2014-02-12 (+44d) | 2014-01-27 → 2014-03-12 (+44d) |  | -27d → -64d |
| DUKHCONP03Z3ARFF3305 | Plastering work | 2014-01-23 → 2014-03-09 (+45d) | 2014-02-22 → 2014-04-06 (+43d) |  | -27d → -64d |
| DUKHCONP03Z3ARFF3310 | Flooring screed | 2014-02-01 → 2014-03-17 (+44d) | 2014-02-25 → 2014-04-09 (+43d) |  | -12d → -49d |
| DUKHCONP03Z3ARFF3330 | Paint First coat | 2014-02-09 → 2014-03-25 (+44d) | 2014-03-10 → 2014-04-22 (+43d) |  | -9d → -46d |
| DUKHCONP03Z3ARFF3315 | Wet area waterproofing | 2014-02-15 → 2014-03-30 (+43d) | 2014-03-03 → 2014-04-15 (+43d) |  | -27d → -64d |
| DUKHCONP03Z3ARFF3320 | Ceramic Wall Tiling | 2014-02-24 → 2014-04-08 (+43d) | 2014-03-24 → 2014-05-06 (+43d) |  | -27d → -64d |
| DUKHCONP03Z3ARFF3325 | Porcelain Tile flooring | 2014-03-03 → 2014-04-15 (+43d) | 2014-03-31 → 2014-05-13 (+43d) |  | -27d → -64d |
| DUKHCONP03Z3ARFF3345 | Fixing of Suspension systems | 2014-03-17 → 2014-04-29 (+43d) | 2014-04-08 → 2014-05-21 (+43d) |  | -27d → -64d |
| DUKHCONP03Z3ARFF3335 | Slate Tile Flooring & Skirting | 2014-03-20 → 2014-05-03 (+44d) | 2014-04-06 → 2014-05-19 (+43d) |  | -17d → -54d |
| DUKHCONP03Z3ARFF3350 | Granite - Stair case flooring & Skirting | 2014-03-24 → 2014-05-06 (+43d) | 2014-04-15 → 2014-05-28 (+43d) |  | -25d → -62d |
| DUKHCONP03Z3ARFF3360 | Gypsum board false ceiling | 2014-03-25 → 2014-05-07 (+43d) | 2014-04-22 → 2014-06-04 (+43d) |  | -27d → -64d |
| DUKHCONP03Z3ARFF3355 | Aluminum tile false ceiling | 2014-03-29 → 2014-05-11 (+43d) | 2014-04-20 → 2014-06-02 (+43d) |  | -25d → -62d |
| DUKHCONP03Z3ARFF3365 | Wooden door | 2014-04-09 → 2014-05-22 (+43d) | 2014-04-26 → 2014-06-08 (+43d) |  | -27d → -64d |
| DUKHCONP03Z3ARFF3370 | Aluminum Door | 2014-04-17 → 2014-05-31 (+44d) | 2014-05-10 → 2014-06-22 (+43d) |  | -27d → -64d |
| DUKHCONP03Z3ARFF3380 | Aluminum windows | 2014-04-24 → 2014-06-07 (+44d) | 2014-05-17 → 2014-06-29 (+43d) |  | -16d → -53d |
| DUKHCONP03Z3ARFF3375 | Carpentry & Joinery Works | 2014-04-26 → 2014-06-08 (+43d) | 2014-05-24 → 2014-07-06 (+43d) |  | -27d → -64d |
| DUKHCONP03Z3ARFF3385 | Handrail & Balustrade | 2014-05-07 → 2014-06-19 (+43d) | 2014-05-29 → 2014-07-12 (+44d) |  | -27d → -64d |
| DUKHCONP03Z3ARFF3390 | Installation of Granite Counter Top | 2014-05-10 → 2014-06-22 (+43d) | 2014-06-01 → 2014-07-14 (+43d) |  | -27d → -64d |
| DUKHCONP03Z3ARFF3395 | Final Painting | 2014-05-19 → 2014-07-01 (+43d) | 2014-06-16 → 2014-07-29 (+43d) |  | -27d → -64d |
| 20 | **ROOF** | 2014-01-18 → 2014-03-03 (+44d) | 2014-03-24 → 2014-05-06 (+43d) |  |  |
| DUKHCONP03Z3ARRF3600 | Block work | 2014-01-18 → 2014-03-03 (+44d) | 2014-02-09 → 2014-03-25 (+44d) |  | 40d → 3d |
| DUKHCONP03Z3ARRF3605 | Plastering work | 2014-01-26 → 2014-03-11 (+44d) | 2014-02-18 → 2014-04-02 (+43d) |  | 40d → 3d |
| DUKHCONP03Z3ARRF3610 | Flooring screed | 2014-02-09 → 2014-03-25 (+44d) | 2014-02-26 → 2014-04-10 (+43d) |  | 45d → 8d |
| DUKHCONP03Z3ARRF3695 | Painting | 2014-02-18 → 2014-04-02 (+43d) | 2014-03-12 → 2014-04-24 (+43d) |  | 45d → 8d |
| DUKHCONP03Z3ARRF3620 | Epoxy Painting | 2014-03-08 → 2014-04-20 (+43d) | 2014-03-24 → 2014-05-06 (+43d) |  | 45d → 8d |
| 15 | **EXTERNAL FINISHES** | 2014-01-23 → 2014-03-09 (+45d) | 2014-04-19 → 2014-05-28 (+39d) |  |  |
| 10 | **ROOF** | 2014-01-23 → 2014-03-09 (+45d) | 2014-03-30 → 2014-05-12 (+43d) |  |  |
| DUKHCONP03Z3ARRF3630 | Leveling Screed for Waterproofing | 2014-01-23 → 2014-03-09 (+45d) | 2014-02-22 → 2014-04-06 (+43d) |  | 35d → -2d |
| DUKHCONP03Z3ARRF3635 | Laying of Waterproofing Membrane | 2014-01-27 → 2014-03-12 (+44d) | 2014-02-25 → 2014-04-09 (+43d) |  | 35d → -2d |
| DUKHCONP03Z3ARRF3640 | Installation of Insulation & Protection | 2014-02-01 → 2014-03-17 (+44d) | 2014-03-02 → 2014-04-14 (+43d) |  | 35d → -2d |
| DUKHCONP03Z3ARRF3645 | Lime Stone Chips & Paving slab Installation | 2014-02-05 → 2014-03-22 (+45d) | 2014-03-06 → 2014-04-19 (+44d) |  | 35d → -2d |
| DUKHCONP03Z3ARRF3650 | Install. of Gal. Frame & Aluminum Slat Screen | 2014-02-15 → 2014-03-30 (+43d) | 2014-03-15 → 2014-04-27 (+43d) |  | 35d → -2d |
| DUKHCONP03Z3ARRF3655 | Installation of Pumps Protection cabinets | 2014-03-02 → 2014-04-14 (+43d) | 2014-03-24 → 2014-05-06 (+43d) |  | 35d → -2d |
| DUKHCONP03Z3ARRF3660 | Installation of Access Ladder | 2014-03-13 → 2014-04-26 (+44d) | 2014-03-30 → 2014-05-12 (+43d) |  | 40d → 3d |
| 15 | **ELEVATION** | 2014-02-20 → 2014-04-05 (+44d) | 2014-04-19 → 2014-05-28 (+39d) |  |  |
| DUKHCONP03Z3AREL3665 | External Plastering | 2014-02-20 → 2014-04-05 (+44d) | 2014-03-20 → 2014-05-03 (+44d) |  | 26d → -11d |
| DUKHCONP03Z3AREL3675 | GRC Panel Works | 2014-03-10 → 2014-04-22 (+43d) | 2014-04-01 → 2014-05-14 (+43d) |  | 28d → -9d |
| DUKHCONP03Z3AREL3680 | External Painting | 2014-03-27 → 2014-05-06 (+40d) | 2014-04-19 → 2014-05-28 (+39d) |  | 23d → -11d |
| 20 | **MEP WORKS** | 2013-08-06 → 2013-08-01 (-5d) | 2014-06-15 → 2014-07-28 (+43d) |  |  |
| 10 | **ELECTRICAL WORKS** | 2013-11-23 → 2014-01-06 (+44d) | 2014-06-15 → 2014-07-28 (+43d) |  |  |
| 10 | **GROUND FLOOR** | 2013-11-23 → 2014-01-06 (+44d) | 2014-04-17 → 2014-05-15 (+28d) |  |  |
| DUKHCONP03Z3ELGF4000 | Fixing of wall conduits & switch socket boxes | 2013-11-23 → 2014-01-06 (+44d) | 2013-12-22 → 2014-02-03 (+43d) |  | 17d → -20d |
| DUKHCONP03Z3ELGF4005 | Cable tray & trunking installation | 2013-12-04 → 2014-01-18 (+45d) | 2013-12-28 → 2014-02-09 (+43d) |  | 35d → -2d |
| DUKHCONP03Z3ELGF4010 | Installation of wiring & Main Cabling | 2013-12-12 → 2014-01-26 (+45d) | 2014-01-11 → 2014-02-24 (+44d) |  | 35d → -2d |
| DUKHCONP03Z3ELGF4015 | Install. of CAMS & Fire Fighting Accessories | 2014-03-03 → 2014-03-31 (+28d) | 2014-03-31 → 2014-04-28 (+28d) |  | 9d → -15d |
| DUKHCONP03Z3ELGF4020 | Installation of DBS,MCCB Accessories. | 2014-03-02 → 2014-04-06 (+35d) | 2014-03-24 → 2014-04-28 (+35d) |  | 1d → -29d |
| DUKHCONP03Z3ELGF4025 | Installation of Lighting fixtures & Accessories | 2014-03-20 → 2014-04-17 (+28d) | 2014-04-17 → 2014-05-15 (+28d) |  | -3d → -27d |
| DUKHCONP03Z3ELGF4030 | Installation of Telephone System | 2014-03-13 → 2014-04-17 (+35d) | 2014-04-05 → 2014-05-10 (+35d) |  | 1d → -29d |
| 15 | **FIRST FLOORS** | 2014-01-05 → 2014-02-18 (+44d) | 2014-05-20 → 2014-07-02 (+43d) |  |  |
| DUKHCONP03Z3ELFF4035 | Fixing of wall conduits & switch socket boxes | 2014-01-05 → 2014-02-18 (+44d) | 2014-02-02 → 2014-03-18 (+44d) |  | -16d → -53d |
| DUKHCONP03Z3ELFF4040 | Cable tray & trunking installation | 2014-01-16 → 2014-03-02 (+45d) | 2014-02-08 → 2014-03-24 (+44d) |  | 6d → -31d |
| DUKHCONP03Z3ELFF4045 | Installation of wiring & Main Cabling | 2014-01-28 → 2014-03-13 (+44d) | 2014-02-26 → 2014-04-10 (+43d) |  | 3d → -34d |
| DUKHCONP03Z3ELFF4050 | Installation of Telephone System | 2014-04-03 → 2014-05-17 (+44d) | 2014-05-01 → 2014-06-14 (+44d) |  | -7d → -44d |
| DUKHCONP03Z3ELFF4055 | Install. of CAMS & Fire Fighting Accessories | 2014-04-06 → 2014-05-19 (+43d) | 2014-05-04 → 2014-06-16 (+43d) |  | -15d → -52d |
| DUKHCONP03Z3ELFF4060 | Installation of DBS,MCCB Accessories. | 2014-04-09 → 2014-05-22 (+43d) | 2014-05-01 → 2014-06-14 (+44d) |  | -26d → -63d |
| DUKHCONP03Z3ELFF4065 | Installation of Lighting fixtures & Accessories | 2014-04-22 → 2014-06-04 (+43d) | 2014-05-20 → 2014-07-02 (+43d) |  | -26d → -63d |
| 20 | **ROOF** | 2014-05-12 → 2014-06-24 (+43d) | 2014-06-15 → 2014-07-28 (+43d) |  |  |
| DUKHCONP03Z3ELRF4070 | Installation of Isolator | 2014-05-12 → 2014-06-24 (+43d) | 2014-06-01 → 2014-07-14 (+43d) |  | -26d → -63d |
| DUKHCONP03Z3ELRF4075 | Installation of TV Dish Antenna | 2014-05-20 → 2014-07-02 (+43d) | 2014-06-15 → 2014-07-28 (+43d) |  | -26d → -63d |
| 15 | **PLUMBING, DRAINAGE & FIRE FIGHTING WORKS** | 2013-08-06 → 2013-08-01 (-5d) | 2014-05-31 → 2014-07-13 (+43d) |  |  |
| 10 | **GROUND FLOOR** | 2013-08-06 → 2013-08-01 (-5d) | 2014-04-02 → 2014-05-15 (+43d) |  |  |
| DUKHCONP03Z3PLUG4300 | Drainage / Storm Pipes in Grade Slab | 2013-08-06 → 2013-08-01 A (-5d) | 2013-09-01 → 2013-08-27 A (-5d) | 0% → 100% | -27d → none |
| DUKHCONP03Z3PLGF4305 | Installation of Plumbing pipes & testing | 2013-12-03 → 2014-01-16 (+44d) | 2013-12-24 → 2014-02-05 (+43d) |  | 8d → -29d |
| DUKHCONP03Z3PLGF4310 | Installation of Drainage pipes &testing | 2013-12-03 → 2014-01-16 (+44d) | 2013-12-24 → 2014-02-05 (+43d) |  | 29d → -8d |
| DUKHCONP03Z3PLGF4315 | Sanitary Fittings & Accessories | 2014-03-05 → 2014-04-17 (+43d) | 2014-03-27 → 2014-05-10 (+44d) |  | 37d → 0d |
| DUKHCONP03Z3PLGF4320 | Installation of Water Heater | 2014-03-17 → 2014-04-29 (+43d) | 2014-04-02 → 2014-05-15 (+43d) |  | 37d → 0d |

| ID | Task | Start | Finish | Duration | Complete | Total float | Other |
| --- | --- | --- | --- | --- | --- | --- | --- |
| 15 | **FIRST FLOORS** | 2014-01-14 → 2014-02-27 (+44d) | 2014-05-13 → 2014-06-25 (+43d) |  |  |  |  |
| DUKHCONP03Z3PLFF4325 | Installation of Plumbing pipes & testing | 2014-01-14 → 2014-02-27 (+44d) | 2014-02-03 → 2014-03-19 (+44d) |  |  | -27d → -64d |  |
| DUKHCONP03Z3PLFF4330 | Installation of Drainage pipes & testing | 2014-01-15 → 2014-03-01 (+45d) | 2014-02-04 → 2014-03-20 (+44d) |  |  | -1d → -38d |  |
| DUKHCONP03Z3PLFF4335 | Sanitary Fittings & Accessories | 2014-04-15 → 2014-05-28 (+43d) | 2014-05-07 → 2014-06-19 (+43d) |  |  | -13d → -50d |  |
| DUKHCONP03Z3PLFF4340 | Installation of Water Heater | 2014-04-27 → 2014-06-09 (+43d) | 2014-05-13 → 2014-06-25 (+43d) |  |  | -13d → -50d |  |
| 20 | **ROOF** | 2014-02-09 → 2014-03-25 (+44d) | 2014-05-31 → 2014-07-13 (+43d) |  |  |  |  |
| DUKHCONP03Z3PLRF4345 | Installation of Plumbing pipes & fittings | 2014-02-09 → 2014-03-25 (+44d) | 2014-02-26 → 2014-04-10 (+43d) |  |  | 44d → 7d |  |
| DUKHCONP03Z3PLRF4350 | Installation of Rain water Pipes | 2014-03-12 → 2014-04-24 (+43d) | 2014-03-29 → 2014-05-11 (+43d) |  |  | 26d → -11d |  |
| DUKHCONP03Z3PLRF4355 | Roof Water Tank Installation & Connections | 2014-05-03 → 2014-06-15 (+43d) | 2014-05-31 → 2014-07-13 (+43d) |  |  | -13d → -50d |  |
| 20 | **AC WORKS** | 2014-01-08 → 2014-02-05 (+28d) | 2014-05-31 → 2014-07-13 (+43d) |  |  |  |  |
| 10 | **GROUND FLOOR** | 2014-01-08 → 2014-02-05 (+28d) | 2014-04-15 → 2014-05-13 (+28d) |  |  |  |  |
| DUKHCONP03Z3ACGF4600 | Installation AC Pipes | 2014-01-08 → 2014-02-05 (+28d) | 2014-01-30 → 2014-03-01 (+30d) |  |  | 26d → 2d |  |
| DUKHCONP03Z3ACGF4605 | Fixing of Ventilation Equipments | 2014-03-03 → 2014-03-31 (+28d) | 2014-03-31 → 2014-04-28 (+28d) |  |  | 11d → -13d |  |
| DUKHCONP03Z3ACGF4610 | Fixing of Split AC | 2014-03-24 → 2014-04-21 (+28d) | 2014-04-15 → 2014-05-13 (+28d) |  |  | 11d → -13d |  |
| 15 | **FIRST FLOORS** | 2014-02-06 → 2014-03-23 (+45d) | 2014-05-19 → 2014-07-01 (+43d) |  |  |  |  |
| DUKHCONP03Z3ACFF4615 | Installation AC Pipes | 2014-02-06 → 2014-03-23 (+45d) | 2014-03-02 → 2014-04-14 (+43d) |  |  | 5d → -32d |  |
| DUKHCONP03Z3ACFF4620 | Fixing of Ventilation Equipments | 2014-04-06 → 2014-05-19 (+43d) | 2014-05-04 → 2014-06-16 (+43d) |  |  | -18d → -55d |  |
| DUKHCONP03Z3ACFF4625 | Fixing of Split AC | 2014-04-27 → 2014-06-09 (+43d) | 2014-05-19 → 2014-07-01 (+43d) |  |  | -18d → -55d |  |
| 20 | **ROOF** | 2014-02-17 → 2014-04-01 (+43d) | 2014-05-31 → 2014-07-13 (+43d) |  |  |  |  |
| DUKHCONP03Z3ACRF4630 | Installation of Refrigerant Pipes | 2014-02-17 → 2014-04-01 (+43d) | 2014-03-17 → 2014-04-29 (+43d) |  |  | 46d → 9d |  |
| DUKHCONP03Z3ACRF4635 | Installation of Condensing Unit | 2014-05-03 → 2014-06-15 (+43d) | 2014-05-31 → 2014-07-13 (+43d) |  |  | -13d → -50d |  |
| 25 | **EXTERNAL WORKS** | 2014-01-05 → 2014-02-18 (+44d) | 2014-05-25 → 2014-07-07 (+43d) |  |  |  |  |
| 10 | **MISCELLANEOUS** | 2014-01-05 → 2014-02-18 (+44d) | 2014-04-17 → 2014-05-31 (+44d) |  |  |  |  |
| DUKHCONP03Z3MSEX5000 | Construction of Manholes | 2014-01-05 → 2014-02-18 (+44d) | 2014-02-02 → 2014-03-18 (+44d) |  |  | 19d → -18d |  |
| DUKHCONP03Z3MSEX5005 | Construction of Soak pit, Chambers | 2014-01-19 → 2014-03-04 (+44d) | 2014-02-17 → 2014-04-01 (+43d) |  |  | 19d → -18d |  |
| DUKHCONP03Z3MSEX5015 | Construction of grease Trap | 2014-02-08 → 2014-03-24 (+44d) | 2014-03-03 → 2014-04-15 (+43d) |  |  | 19d → -18d |  |
| DUKHCONP03Z3MSEX5010 | Telephone cable laying | 2014-03-04 → 2014-04-16 (+43d) | 2014-04-01 → 2014-05-14 (+43d) |  |  | 19d → -18d |  |
| DUKHCONP03Z3MSEX5020 | Construction Entrance Ramp | 2014-03-09 → 2014-04-21 (+43d) | 2014-04-06 → 2014-05-19 (+43d) |  |  | -6d → -43d |  |
| DUKHCONP03Z3MSEX5025 | SS.Handrails and Balustrades | 2014-03-26 → 2014-05-08 (+43d) | 2014-04-17 → 2014-05-31 (+44d) |  |  | -6d → -43d |  |
| 15 | **DOMESTIC WATER TANK & PUMP ROOM** | 2014-01-07 → 2014-02-20 (+44d) | 2014-05-25 → 2014-07-07 (+43d) |  |  |  |  |
| DUKHCONP03Z3WTEX5030 | Excavation | 2014-01-07 → 2014-02-20 (+44d) | 2014-01-29 → 2014-03-15 (+45d) |  |  | 31d → -6d |  |
| DUKHCONP03Z3WTEX5035 | Construction of Raft | 2014-01-13 → 2014-02-26 (+44d) | 2014-02-10 → 2014-03-26 (+44d) |  |  | 31d → -6d |  |
| DUKHCONP03Z3WTEX5040 | Block works & Plastering | 2014-01-22 → 2014-03-08 (+45d) | 2014-02-20 → 2014-04-05 (+44d) |  |  | 31d → -6d |  |
| DUKHCONP03Z3WTEX5070 | Domestic Water Tank Plumbings works | 2014-01-30 → 2014-03-16 (+45d) | 2014-03-01 → 2014-04-13 (+43d) |  |  | 31d → -6d |  |
| DUKHCONP03Z3WTEX5075 | Domestic Water Tank AC works | 2014-01-30 → 2014-03-16 (+45d) | 2014-03-01 → 2014-04-13 (+43d) |  |  | 31d → -6d |  |
| DUKHCONP03Z3WTEX5080 | Domestic Water Tank Electrical works | 2014-01-30 → 2014-03-16 (+45d) | 2014-03-01 → 2014-04-13 (+43d) |  |  | 31d → -6d |  |
| DUKHCONP03Z3WTEX5085 | Domestic Water Tank Firefighting works | 2014-01-30 → 2014-03-16 (+45d) | 2014-03-01 → 2014-04-13 (+43d) |  |  | 31d → -6d |  |
| DUKHCONP03Z3WTEX5045 | Flooring & Painting | 2014-02-04 → 2014-03-20 (+44d) | 2014-03-05 → 2014-04-17 (+43d) |  |  | 31d → -6d |  |
| DUKHCONP03Z3WTEX5050 | Installation of Steel Gate | 2014-04-07 → 2014-05-20 (+43d) | 2014-04-29 → 2014-06-11 (+43d) |  |  | -6d → -43d |  |
| DUKHCONP03Z3WTEX5060 | Structural steel & SS Shed cover installation | 2014-04-15 → 2014-05-28 (+43d) | 2014-05-13 → 2014-06-25 (+43d) |  |  | -8d → -45d |  |
| DUKHCONP03Z3WTEX5065 | Install. of Water Tank,Chiller,Pump & Meter | 2014-04-27 → 2014-06-09 (+43d) | 2014-05-25 → 2014-07-07 (+43d) |  |  | -8d → -45d |  |
| 30 | **TESTING AND COMMISSIONING** | 2014-06-17 → 2014-07-30 (+43d) | 2014-07-15 → 2014-08-31 (+47d) |  |  |  |  |
| DUKHCONP03Z3ACTC8000 | Pre-Commissioning & Testing of AC Works | 2014-06-17 → 2014-07-30 (+43d) | 2014-07-15 → 2014-08-31 (+47d) |  |  | -27d → -64d |  |
| DUKHCONP03Z3ELTC8010 | Pre-Commissioning & Testing of Electrical Works | 2014-06-17 → 2014-07-30 (+43d) | 2014-07-15 → 2014-08-31 (+47d) |  |  | -27d → -64d |  |
| DUKHCONP03Z3PLTC8005 | Pre-Commissioning & Testing of Plumbing Works | 2014-06-17 → 2014-07-30 (+43d) | 2014-07-15 → 2014-08-31 (+47d) |  |  | -27d → -64d |  |
| 25 | **ZONE - 4 (3 Apartments)** |  | 2014-08-17 → 2014-09-29 (+43d) |  |  |  |  |
| 10 | **STRUCTURAL WORKS** |  | 2014-03-01 → 2014-04-13 (+43d) |  |  |  |  |
| 10 | **SUB STRUCTURE** |  | 2013-10-15 → 2013-11-27 (+43d) |  |  |  |  |
| 10 | **UPTO GRADE SLAB** |  | 2013-10-15 → 2013-11-27 (+43d) |  |  |  |  |
| DUKHCONP03Z4STUG1000 | Footing Excavation | 2013-04-27 A | 2013-05-25 A |  | 0% → 100% | 1d → none |  |
| DUKHCONP03Z4STUG1005 | Footing Antitermite | 2013-05-07 A | 2013-06-02 → 2013-06-01 A (-1d) |  | 0% → 100% | 1d → none |  |
| DUKHCONP03Z4STUG1010 | Footing Blinding | 2013-05-11 A | 2013-06-05 A |  | 0% → 100% | 1d → none |  |
| DUKHCONP03Z4STUG1015 | Footing Waterproofing & Screed | 2013-05-16 A | 2013-06-13 A |  | 0% → 100% | 1d → none |  |
| DUKHCONP03Z4STUG1020 | Construction of foundations | 2013-06-01 A | 2013-06-23 A |  | 0% → 100% | 1d → none |  |
| DUKHCONP03Z4STUG1025 | Construction of neck of columns | 2013-07-02 → 2013-06-29 A (-3d) | 2013-07-30 → 2013-07-27 A (-3d) |  | 0% → 100% | -18d → none |  |
| DUKHCONP03Z4STUG1030 | Waterproofing Footing & Neck Column | 2013-07-11 → 2013-07-08 A (-3d) | 2013-08-08 → 2013-08-05 A (-3d) |  | 0% → 100% | -18d → none |  |
| DUKHCONP03Z4STUG1035 | Backfilling Upto Grade Beam Bottom | 2013-08-01 → 2013-07-27 A (-5d) | 2013-09-02 → 2013-08-27 A (-6d) |  | 0% → 100% | -27d → none |  |
| DUKHCONP03Z4STUG1040 | Construction of Grade Beams | 2013-08-21 → 2013-08-15 A (-6d) | 2013-09-18 → 2013-09-12 A (-6d) |  | 0% → 100% | -27d → none | resources BLINDING MASON SK [180 h]; SCREED MASON SK [180 h]; STEEL FIXERS SK [1062 h]; CARPENTERS SK [1202 h]; CONCRETE MASON SK [126 h]; LABOR- SUBCONTRACTOR [1995 h]; BLINDING QTY [225 Sqm]; SCREED QTY [225 Sqm]; REINFORCEMENT BARS QTY [13269 kg]; FORMWORK QTY [601 Sqm]; CONCRETE QTY [63 Cum] → CONCRETE MASON SK [180 h]; SCREED MASON SK [180 h]; STEEL FIXERS SK [1062 h]; CARPENTERS SK [1202 h]; CONCRETE MASON SK [126 h]; LABOR- SUBCONTRACTOR [1995 h]; BLINDING QTY [225 Sqm]; SCREED QTY [225 Sqm]; REINFORCEMENT BARS QTY [13269 kg]; FORMWORK QTY [601 Sqm]; CONCRETE QTY [63 Cum] |
| DUKHCONP03Z4STUG1045 | Construction of slab on grade | 2013-09-17 → 2013-11-02 (+46d) | 2013-10-15 → 2013-11-27 (+43d) | 25d → 23d |  | -27d → -64d | resources LABOR- SUBCONTRACTOR [1279.5 h]; BLINDING QTY [855 Sqm]; SCREED QTY [855 Sqm]; CONCRETE QTY [186 Cum]; WELDED WIRE MESH [1155 Sqm]; BLINDING MASON SK [684 h]; SCREED MASON SK [684 h]; STEEL FIXERS SK [308 h]; CONCRETE MASON SK [372 h] → LABOR- SUBCONTRACTOR [1279.5 h]; BLINDING QTY [855 Sqm]; SCREED QTY [855 Sqm]; CONCRETE QTY [186 Cum]; WELDED WIRE MESH [1155 Sqm]; CONCRETE MASON SK [684 h]; SCREED MASON SK [684 h]; STEEL FIXERS SK [308 h]; CONCRETE MASON SK [372 h] |
| 15 | **SUPERSTRUCTURE** | 2013-10-03 → 2013-11-18 (+46d) | 2014-03-01 → 2014-04-13 (+43d) |  |  |  |  |
| 10 | **GROUND FLOOR** | 2013-10-03 → 2013-11-18 (+46d) | 2013-12-01 → 2014-01-14 (+44d) |  |  |  |  |
| DUKHCONP03Z4STGF2000 | Column-Rebar & Formwork | 2013-10-03 → 2013-11-18 (+46d) | 2013-11-03 → 2013-12-16 (+43d) |  |  | -27d → -64d |  |
| DUKHCONP03Z4STGF2005 | Column-Concrete | 2013-10-13 → 2013-11-27 (+45d) | 2013-11-11 → 2013-12-25 (+44d) |  |  | -27d → -64d |  |
| DUKHCONP03Z4STGF2010 | Beam, Stairs ,Slab-Rebar & Formwork | 2013-10-30 → 2013-12-12 (+43d) | 2013-11-27 → 2014-01-11 (+45d) |  |  | -27d → -64d |  |
| DUKHCONP03Z4STGF2015 | Beam, Stairs ,Slab-Concrete | 2013-11-14 → 2013-12-29 (+45d) | 2013-12-01 → 2014-01-14 (+44d) |  |  | -27d → -64d |  |
| 15 | **FIRST FLOORS** | 2013-11-17 → 2013-12-31 (+44d) | 2014-01-20 → 2014-03-05 (+44d) |  |  |  |  |
| DUKHCONP03Z4STFF2020 | Column-Rebar & Formwork | 2013-11-17 → 2013-12-31 (+44d) | 2013-12-15 → 2014-01-28 (+44d) |  |  | -27d → -64d |  |
| DUKHCONP03Z4STFF2025 | Column-Concrete | 2013-11-27 → 2014-01-11 (+45d) | 2013-12-25 → 2014-02-06 (+43d) |  |  | -27d → -64d |  |
| DUKHCONP03Z4STFF2030 | Beam, Stairs ,Slab-Rebar & Formwork | 2013-12-12 → 2014-01-26 (+45d) | 2014-01-11 → 2014-02-24 (+44d) |  |  | -27d → -64d |  |
| DUKHCONP03Z4STFF2035 | Beam, Stairs ,Slab-Concrete | 2014-01-04 → 2014-02-17 (+44d) | 2014-01-20 → 2014-03-05 (+44d) |  |  | -27d → -64d |  |

| ID | Task | Start | Finish | Total float |
| --- | --- | --- | --- | --- |
| 20 | **ROOF** | 2014-01-06 → 2014-02-19 (+44d) | 2014-03-01 → 2014-04-13 (+43d) |  |
| DUKHCONP03Z4STRF2040 | Column-Rebar & Formwork | 2014-01-06 → 2014-02-19 (+44d) | 2014-01-26 → 2014-03-11 (+44d) | -5d → -42d |
| DUKHCONP03Z4STRF2045 | Column-Concrete | 2014-01-09 → 2014-02-23 (+45d) | 2014-01-28 → 2014-03-13 (+44d) | 0d → -37d |
| DUKHCONP03Z4STRF2050 | Slab-Rebar & Formwork | 2014-01-12 → 2014-02-25 (+44d) | 2014-02-03 → 2014-03-19 (+44d) | 0d → -37d |
| DUKHCONP03Z4STRF2055 | Slab-Concrete | 2014-01-22 → 2014-03-08 (+45d) | 2014-02-05 → 2014-03-22 (+45d) | 0d → -37d |
| DUKHCONP03Z4STRF2060 | Construction of Parapets | 2014-01-25 → 2014-03-10 (+44d) | 2014-02-23 → 2014-04-07 (+43d) | 31d → -6d |
| DUKHCONP03Z4STRF2065 | Construction of up stands/Plinth | 2014-01-30 → 2014-03-16 (+45d) | 2014-03-01 → 2014-04-13 (+43d) | 31d → -6d |
| 15 | **FINISHING WORKS** | 2013-12-16 → 2014-01-29 (+44d) | 2014-07-15 → 2014-08-31 (+47d) |  |
| 10 | **INTERNAL FINISHES** | 2013-12-16 → 2014-01-29 (+44d) | 2014-07-15 → 2014-08-31 (+47d) |  |
| 10 | **GROUND FLOOR** | 2013-12-16 → 2014-01-29 (+44d) | 2014-06-08 → 2014-07-12 (+34d) |  |
| DUKHCONP03Z4ARGF3000 | Block work | 2013-12-16 → 2014-01-29 (+44d) | 2014-01-14 → 2014-02-27 (+44d) | 9d → -28d |
| DUKHCONP03Z4ARGF3005 | Plastering work | 2014-01-08 → 2014-02-22 (+45d) | 2014-02-05 → 2014-03-22 (+45d) | 9d → -28d |
| DUKHCONP03Z4ARGF3010 | Flooring screed | 2014-01-16 → 2014-03-02 (+45d) | 2014-02-09 → 2014-03-25 (+44d) | 17d → -20d |
| DUKHCONP03Z4ARGF3030 | Paint First coat | 2014-02-19 → 2014-03-10 (+19d) | 2014-03-19 → 2014-04-07 (+19d) | 2d → -14d |
| DUKHCONP03Z4ARGF3015 | Wet area waterproofing & Protection Screed | 2014-01-26 → 2014-03-11 (+44d) | 2014-02-12 → 2014-03-27 (+43d) | 9d → -28d |
| DUKHCONP03Z4ARGF3020 | Ceramic Wall Tiling | 2014-02-01 → 2014-03-17 (+44d) | 2014-03-02 → 2014-04-14 (+43d) | 9d → -28d |
| DUKHCONP03Z4ARGF3025 | Porcelain Tile flooring | 2014-02-06 → 2014-03-23 (+45d) | 2014-03-08 → 2014-04-20 (+43d) | 9d → -28d |
| DUKHCONP03Z4ARGF3045 | Fixing of Suspension systems | 2014-03-05 → 2014-04-09 (+35d) | 2014-03-27 → 2014-05-01 (+35d) | 2d → -28d |
| DUKHCONP03Z4ARGF3035 | Slate Tile Flooring & Skirting | 2014-02-27 → 2014-04-12 (+44d) | 2014-03-16 → 2014-04-28 (+43d) | 15d → -22d |
| DUKHCONP03Z4ARGF3055 | Aluminum tile false ceiling | 2014-03-13 → 2014-04-17 (+35d) | 2014-04-10 → 2014-05-15 (+35d) | 5d → -25d |
| DUKHCONP03Z4ARGF3040 | Cobble Tile flooring | 2014-03-06 → 2014-04-19 (+44d) | 2014-03-23 → 2014-05-05 (+43d) | 13d → -24d |
| DUKHCONP03Z4ARGF3060 | Gypsum board false ceiling | 2014-03-17 → 2014-04-21 (+35d) | 2014-04-14 → 2014-05-19 (+35d) | 2d → -28d |
| DUKHCONP03Z4ARGF3050 | Granite - Stair case flooring & Skirting | 2014-03-15 → 2014-04-27 (+43d) | 2014-04-06 → 2014-05-19 (+43d) | 13d → -24d |
| DUKHCONP03Z4ARGF3065 | Wooden door | 2014-03-29 → 2014-05-11 (+43d) | 2014-04-14 → 2014-05-27 (+43d) | 13d → -24d |
| DUKHCONP03Z4ARGF3070 | Aluminum doors | 2014-04-03 → 2014-05-17 (+44d) | 2014-04-20 → 2014-06-02 (+43d) | 13d → -24d |
| DUKHCONP03Z4ARGF3075 | Carpentry & Joinery Works | 2014-04-09 → 2014-05-22 (+43d) | 2014-05-01 → 2014-06-14 (+44d) | 13d → -24d |
| DUKHCONP03Z4ARGF3080 | Aluminum windows | 2014-04-10 → 2014-05-24 (+44d) | 2014-05-03 → 2014-06-15 (+43d) | 23d → -14d |
| DUKHCONP03Z4ARGF3085 | S.S.Balustrade | 2014-04-17 → 2014-05-31 (+44d) | 2014-05-10 → 2014-06-22 (+43d) | 18d → -19d |
| DUKHCONP03Z4ARGF3090 | Installation of Granite Counter Top | 2014-04-22 → 2014-06-04 (+43d) | 2014-05-08 → 2014-06-21 (+44d) | 13d → -24d |
| DUKHCONP03Z4ARGF3095 | Final Painting | 2014-05-11 → 2014-06-14 (+34d) | 2014-06-08 → 2014-07-12 (+34d) | 5d → -24d |
| 15 | **FIRST FLOORS** | 2014-01-28 → 2014-03-13 (+44d) | 2014-07-15 → 2014-08-31 (+47d) |  |
| DUKHCONP03Z4ARFF3300 | Block work | 2014-01-28 → 2014-03-13 (+44d) | 2014-02-26 → 2014-04-10 (+43d) | -27d → -64d |
| DUKHCONP03Z4ARFF3305 | Plastering work | 2014-02-23 → 2014-04-07 (+43d) | 2014-03-23 → 2014-05-05 (+43d) | -27d → -64d |
| DUKHCONP03Z4ARFF3310 | Flooring screed | 2014-03-03 → 2014-04-15 (+43d) | 2014-03-26 → 2014-05-08 (+43d) | -12d → -49d |
| DUKHCONP03Z4ARFF3330 | Paint First coat | 2014-03-11 → 2014-04-23 (+43d) | 2014-04-08 → 2014-05-21 (+43d) | -9d → -46d |
| DUKHCONP03Z4ARFF3315 | Wet area waterproofing | 2014-03-16 → 2014-04-28 (+43d) | 2014-04-01 → 2014-05-14 (+43d) | -27d → -64d |
| DUKHCONP03Z4ARFF3320 | Ceramic Wall Tiling | 2014-03-25 → 2014-05-07 (+43d) | 2014-04-22 → 2014-06-04 (+43d) | -27d → -64d |
| DUKHCONP03Z4ARFF3325 | Porcelain Tile flooring | 2014-04-01 → 2014-05-14 (+43d) | 2014-04-29 → 2014-06-11 (+43d) | -27d → -64d |
| DUKHCONP03Z4ARFF3345 | Fixing of Suspension systems | 2014-04-15 → 2014-05-28 (+43d) | 2014-05-07 → 2014-06-19 (+43d) | -27d → -64d |
| DUKHCONP03Z4ARFF3335 | Slate Tile Flooring & Skirting | 2014-04-19 → 2014-06-01 (+43d) | 2014-05-05 → 2014-06-17 (+43d) | -17d → -54d |
| DUKHCONP03Z4ARFF3350 | Granite - Stair case flooring & Skirting | 2014-04-22 → 2014-06-04 (+43d) | 2014-05-14 → 2014-06-26 (+43d) | -25d → -62d |
| DUKHCONP03Z4ARFF3360 | Gypsum board false ceiling | 2014-04-23 → 2014-06-05 (+43d) | 2014-05-21 → 2014-07-03 (+43d) | -27d → -64d |
| DUKHCONP03Z4ARFF3355 | Aluminum tile false ceiling | 2014-04-27 → 2014-06-09 (+43d) | 2014-05-19 → 2014-07-01 (+43d) | -25d → -62d |
| DUKHCONP03Z4ARFF3365 | Wooden door | 2014-05-08 → 2014-06-21 (+44d) | 2014-05-25 → 2014-07-07 (+43d) | -27d → -64d |
| DUKHCONP03Z4ARFF3370 | Aluminum Door | 2014-05-17 → 2014-06-29 (+43d) | 2014-06-08 → 2014-07-21 (+43d) | -27d → -64d |
| DUKHCONP03Z4ARFF3380 | Aluminum windows | 2014-05-24 → 2014-07-06 (+43d) | 2014-06-15 → 2014-07-28 (+43d) | -16d → -53d |
| DUKHCONP03Z4ARFF3375 | Carpentry & Joinery Works | 2014-05-25 → 2014-07-07 (+43d) | 2014-06-22 → 2014-08-07 (+46d) | -27d → -64d |
| DUKHCONP03Z4ARFF3385 | Handrail & Balustrade | 2014-06-05 → 2014-07-19 (+44d) | 2014-06-28 → 2014-08-13 (+46d) | -27d → -64d |
| DUKHCONP03Z4ARFF3390 | Installation of Granite Counter Top | 2014-06-08 → 2014-07-21 (+43d) | 2014-06-30 → 2014-08-16 (+47d) | -27d → -64d |
| DUKHCONP03Z4ARFF3395 | Final Painting | 2014-06-17 → 2014-07-30 (+43d) | 2014-07-15 → 2014-08-31 (+47d) | -27d → -64d |
| 20 | **ROOF** | 2014-02-17 → 2014-04-01 (+43d) | 2014-04-22 → 2014-06-04 (+43d) |  |
| DUKHCONP03Z4ARRF3600 | Block work | 2014-02-17 → 2014-04-01 (+43d) | 2014-03-11 → 2014-04-23 (+43d) | 40d → 3d |
| DUKHCONP03Z4ARRF3605 | Plastering work | 2014-02-25 → 2014-04-09 (+43d) | 2014-03-19 → 2014-05-01 (+43d) | 40d → 3d |
| DUKHCONP03Z4ARRF3610 | Flooring screed | 2014-03-11 → 2014-04-23 (+43d) | 2014-03-27 → 2014-05-10 (+44d) | 45d → 8d |
| DUKHCONP03Z4ARRF3695 | Painting | 2014-03-19 → 2014-05-01 (+43d) | 2014-04-10 → 2014-05-24 (+44d) | 45d → 8d |
| DUKHCONP03Z4ARRF3620 | Epoxy Painting | 2014-04-06 → 2014-05-19 (+43d) | 2014-04-22 → 2014-06-04 (+43d) | 45d → 8d |
| 15 | **EXTERNAL FINISHES** | 2014-02-23 → 2014-04-07 (+43d) | 2014-05-12 → 2014-06-24 (+43d) |  |
| 10 | **ROOF** | 2014-02-23 → 2014-04-07 (+43d) | 2014-04-28 → 2014-06-10 (+43d) |  |
| DUKHCONP03Z4ARRF3630 | Leveling Screed for Waterproofing | 2014-02-23 → 2014-04-07 (+43d) | 2014-03-23 → 2014-05-05 (+43d) | 35d → -2d |
| DUKHCONP03Z4ARRF3635 | Laying of Waterproofing Membrane | 2014-02-26 → 2014-04-10 (+43d) | 2014-03-26 → 2014-05-08 (+43d) | 35d → -2d |
| DUKHCONP03Z4ARRF3640 | Installation of Insulation & Protection | 2014-03-03 → 2014-04-15 (+43d) | 2014-03-31 → 2014-05-13 (+43d) | 35d → -2d |
| DUKHCONP03Z4ARRF3645 | Lime Stone Chips & Paving slab Installation | 2014-03-08 → 2014-04-20 (+43d) | 2014-04-05 → 2014-05-18 (+43d) | 35d → -2d |
| DUKHCONP03Z4ARRF3650 | Install. of Gal. Frame & Aluminum Slat Screen | 2014-03-16 → 2014-04-28 (+43d) | 2014-04-13 → 2014-05-26 (+43d) | 35d → -2d |
| DUKHCONP03Z4ARRF3655 | Installation of Pumps Protection cabinets | 2014-03-31 → 2014-05-13 (+43d) | 2014-04-22 → 2014-06-04 (+43d) | 35d → -2d |
| DUKHCONP03Z4ARRF3660 | Installation of Access Ladder | 2014-04-12 → 2014-05-25 (+43d) | 2014-04-28 → 2014-06-10 (+43d) | 40d → 3d |
| 15 | **ELEVATION** | 2014-03-22 → 2014-05-04 (+43d) | 2014-05-12 → 2014-06-24 (+43d) |  |
| DUKHCONP03Z4AREL3665 | External Plastering | 2014-03-22 → 2014-05-04 (+43d) | 2014-04-19 → 2014-06-01 (+43d) | 26d → -11d |
| DUKHCONP03Z4AREL3675 | GRC Panel Works | 2014-04-08 → 2014-05-21 (+43d) | 2014-04-30 → 2014-06-12 (+43d) | 28d → -9d |
| DUKHCONP03Z4AREL3680 | External Painting | 2014-04-20 → 2014-06-02 (+43d) | 2014-05-12 → 2014-06-24 (+43d) | 28d → -9d |
| 20 | **MEP WORKS** | 2013-09-08 → 2013-09-02 (-6d) | 2014-07-13 → 2014-08-28 (+46d) |  |

| ID | Task | Start | Finish | Complete | Total float |
| --- | --- | --- | --- | --- | --- |
| 10 | **ELECTRICAL WORKS** | 2013-12-23 → 2014-02-04 (+43d) | 2014-07-13 → 2014-08-28 (+46d) |  |  |
| 10 | **GROUND FLOOR** | 2013-12-23 → 2014-02-04 (+43d) | 2014-05-17 → 2014-06-14 (+28d) |  |  |
| DUKHCONP03Z4ELGF4000 | Fixing of wall conduits & switch socket boxes | 2013-12-23 → 2014-02-04 (+43d) | 2014-01-20 → 2014-03-05 (+44d) |  | 18d → -19d |
| DUKHCONP03Z4ELGF4005 | Cable tray & trunking installation | 2014-01-04 → 2014-02-17 (+44d) | 2014-01-26 → 2014-03-11 (+44d) |  | 36d → -1d |
| DUKHCONP03Z4ELGF4010 | Installation of wiring & Main Cabling | 2014-01-12 → 2014-02-25 (+44d) | 2014-02-09 → 2014-03-25 (+44d) |  | 36d → -1d |
| DUKHCONP03Z4ELGF4015 | Install. of CAMS & Fire Fighting Accessories | 2014-04-01 → 2014-04-29 (+28d) | 2014-04-29 → 2014-05-27 (+28d) |  | 9d → -15d |
| DUKHCONP03Z4ELGF4020 | Installation of DBS,MCCB Accessories. | 2014-03-31 → 2014-05-05 (+35d) | 2014-04-22 → 2014-05-27 (+35d) |  | 2d → -28d |
| DUKHCONP03Z4ELGF4025 | Installation of Lighting fixtures & Accessories | 2014-04-19 → 2014-05-17 (+28d) | 2014-05-17 → 2014-06-14 (+28d) |  | -2d → -26d |
| DUKHCONP03Z4ELGF4030 | Installation of Telephone System | 2014-04-12 → 2014-05-17 (+35d) | 2014-05-04 → 2014-06-08 (+35d) |  | 2d → -28d |
| 15 | **FIRST FLOORS** | 2014-02-03 → 2014-03-19 (+44d) | 2014-06-18 → 2014-07-31 (+43d) |  |  |
| DUKHCONP03Z4ELFF4035 | Fixing of wall conduits & switch socket boxes | 2014-02-03 → 2014-03-19 (+44d) | 2014-03-04 → 2014-04-16 (+43d) |  | -16d → -53d |
| DUKHCONP03Z4ELFF4040 | Cable tray & trunking installation | 2014-02-16 → 2014-03-31 (+43d) | 2014-03-10 → 2014-04-22 (+43d) |  | 6d → -31d |
| DUKHCONP03Z4ELFF4045 | Installation of wiring & Main Cabling | 2014-02-27 → 2014-04-12 (+44d) | 2014-03-27 → 2014-05-10 (+44d) |  | 3d → -34d |
| DUKHCONP03Z4ELFF4050 | Installation of Telephone System | 2014-05-03 → 2014-06-15 (+43d) | 2014-05-31 → 2014-07-13 (+43d) |  | -6d → -43d |
| DUKHCONP03Z4ELFF4055 | Install. of CAMS & Fire Fighting Accessories | 2014-05-05 → 2014-06-17 (+43d) | 2014-06-02 → 2014-07-15 (+43d) |  | -15d → -52d |
| DUKHCONP03Z4ELFF4060 | Installation of DBS,MCCB Accessories. | 2014-05-08 → 2014-06-21 (+44d) | 2014-05-31 → 2014-07-13 (+43d) |  | -25d → -62d |
| DUKHCONP03Z4ELFF4065 | Installation of Lighting fixtures & Accessories | 2014-05-21 → 2014-07-03 (+43d) | 2014-06-18 → 2014-07-31 (+43d) |  | -25d → -62d |
| 20 | **ROOF** | 2014-06-10 → 2014-07-23 (+43d) | 2014-07-13 → 2014-08-28 (+46d) |  |  |
| DUKHCONP03Z4ELRF4070 | Installation of Isolator | 2014-06-10 → 2014-07-23 (+43d) | 2014-06-30 → 2014-08-16 (+47d) |  | -25d → -62d |
| DUKHCONP03Z4ELRF4075 | Installation of TV Dish Antenna | 2014-06-17 → 2014-07-30 (+43d) | 2014-07-13 → 2014-08-28 (+46d) |  | -25d → -62d |
| 15 | **PLUMBING, DRAINAGE & FIRE FIGHTING WORKS** | 2013-09-08 → 2013-09-02 (-6d) | 2014-06-29 → 2014-08-14 (+46d) |  |  |
| 10 | **GROUND FLOOR** | 2013-09-08 → 2013-09-02 (-6d) | 2014-05-01 → 2014-06-14 (+44d) |  |  |
| DUKHCONP03Z4PLUG4300 | Drainage / Storm Pipes in Grade Slab | 2013-09-08 → 2013-09-02 A (-6d) | 2013-09-30 → 2013-09-24 A (-6d) | 0% → 100% | -27d → none |
| DUKHCONP03Z4PLGF4305 | Installation of Plumbing pipes & testing | 2014-01-02 → 2014-02-16 (+45d) | 2014-01-22 → 2014-03-08 (+45d) |  | 9d → -28d |
| DUKHCONP03Z4PLGF4310 | Installation of Drainage pipes &testing | 2014-01-02 → 2014-02-16 (+45d) | 2014-01-22 → 2014-03-08 (+45d) |  | 30d → -7d |
| DUKHCONP03Z4PLGF4315 | Sanitary Fittings & Accessories | 2014-04-03 → 2014-05-17 (+44d) | 2014-04-26 → 2014-06-08 (+43d) |  | 37d → 0d |
| DUKHCONP03Z4PLGF4320 | Installation of Water Heater | 2014-04-15 → 2014-05-28 (+43d) | 2014-05-01 → 2014-06-14 (+44d) |  | 37d → 0d |
| 15 | **FIRST FLOORS** | 2014-02-13 → 2014-03-29 (+44d) | 2014-06-11 → 2014-07-24 (+43d) |  |  |
| DUKHCONP03Z4PLFF4325 | Installation of Plumbing pipes & testing | 2014-02-13 → 2014-03-29 (+44d) | 2014-03-05 → 2014-04-17 (+43d) |  | -27d → -64d |
| DUKHCONP03Z4PLFF4330 | Installation of Drainage pipes & testing | 2014-02-15 → 2014-03-30 (+43d) | 2014-03-06 → 2014-04-19 (+44d) |  | -1d → -38d |
| DUKHCONP03Z4PLFF4335 | Sanitary Fittings & Accessories | 2014-05-14 → 2014-06-26 (+43d) | 2014-06-05 → 2014-07-19 (+44d) |  | -13d → -50d |
| DUKHCONP03Z4PLFF4340 | Installation of Water Heater | 2014-05-26 → 2014-07-08 (+43d) | 2014-06-11 → 2014-07-24 (+43d) |  | -13d → -50d |
| 20 | **ROOF** | 2014-03-11 → 2014-04-23 (+43d) | 2014-06-29 → 2014-08-14 (+46d) |  |  |
| DUKHCONP03Z4PLRF4345 | Installation of Plumbing pipes & fittings | 2014-03-11 → 2014-04-23 (+43d) | 2014-03-27 → 2014-05-10 (+44d) |  | 44d → 7d |
| DUKHCONP03Z4PLRF4350 | Installation of Rain water Pipes | 2014-04-10 → 2014-05-24 (+44d) | 2014-04-27 → 2014-06-09 (+43d) |  | 26d → -11d |
| DUKHCONP03Z4PLRF4355 | Roof Water Tank Installation & Connections | 2014-06-01 → 2014-07-14 (+43d) | 2014-06-29 → 2014-08-14 (+46d) |  | -13d → -50d |
| 20 | **AC WORKS** | 2014-02-01 → 2014-03-08 (+35d) | 2014-06-29 → 2014-08-14 (+46d) |  |  |
| 10 | **GROUND FLOOR** | 2014-02-01 → 2014-03-08 (+35d) | 2014-05-14 → 2014-06-11 (+28d) |  |  |
| DUKHCONP03Z4ACGF4600 | Installation AC Pipes | 2014-02-01 → 2014-03-08 (+35d) | 2014-02-24 → 2014-03-30 (+34d) |  | 32d → 3d |
| DUKHCONP03Z4ACGF4605 | Fixing of Ventilation Equipments | 2014-04-01 → 2014-04-29 (+28d) | 2014-04-29 → 2014-05-27 (+28d) |  | 11d → -13d |
| DUKHCONP03Z4ACGF4610 | Fixing of Split AC | 2014-04-22 → 2014-05-20 (+28d) | 2014-05-14 → 2014-06-11 (+28d) |  | 11d → -13d |
| 15 | **FIRST FLOORS** | 2014-03-09 → 2014-04-21 (+43d) | 2014-06-17 → 2014-07-30 (+43d) |  |  |
| DUKHCONP03Z4ACFF4615 | Installation AC Pipes | 2014-03-09 → 2014-04-21 (+43d) | 2014-03-31 → 2014-05-13 (+43d) |  | 5d → -32d |
| DUKHCONP03Z4ACFF4620 | Fixing of Ventilation Equipments | 2014-05-05 → 2014-06-17 (+43d) | 2014-06-02 → 2014-07-15 (+43d) |  | -18d → -55d |
| DUKHCONP03Z4ACFF4625 | Fixing of Split AC | 2014-05-26 → 2014-07-08 (+43d) | 2014-06-17 → 2014-07-30 (+43d) |  | -18d → -55d |
| 20 | **ROOF** | 2014-03-18 → 2014-04-30 (+43d) | 2014-06-29 → 2014-08-14 (+46d) |  |  |
| DUKHCONP03Z4ACRF4630 | Installation of Refrigerant Pipes | 2014-03-18 → 2014-04-30 (+43d) | 2014-04-15 → 2014-05-28 (+43d) |  | 46d → 9d |
| DUKHCONP03Z4ACRF4635 | Installation of Condensing Unit | 2014-06-01 → 2014-07-14 (+43d) | 2014-06-29 → 2014-08-14 (+46d) |  | -13d → -50d |
| 25 | **EXTERNAL WORKS** | 2014-02-03 → 2014-03-19 (+44d) | 2014-06-23 → 2014-08-09 (+47d) |  |  |
| 10 | **MISCELLANEOUS** | 2014-02-03 → 2014-03-19 (+44d) | 2014-05-17 → 2014-06-29 (+43d) |  |  |
| DUKHCONP03Z4MSEX5000 | Construction of Manholes | 2014-02-03 → 2014-03-19 (+44d) | 2014-03-04 → 2014-04-16 (+43d) |  | 20d → -17d |
| DUKHCONP03Z4MSEX5005 | Construction of Soak pit, Chambers | 2014-02-18 → 2014-04-02 (+43d) | 2014-03-18 → 2014-04-30 (+43d) |  | 20d → -17d |
| DUKHCONP03Z4MSEX5015 | Construction of grease Trap | 2014-03-10 → 2014-04-22 (+43d) | 2014-04-01 → 2014-05-14 (+43d) |  | 20d → -17d |
| DUKHCONP03Z4MSEX5010 | Telephone cable laying | 2014-04-02 → 2014-05-15 (+43d) | 2014-04-30 → 2014-06-12 (+43d) |  | 20d → -17d |
| DUKHCONP03Z4MSEX5020 | Construction Entrance Ramp | 2014-04-07 → 2014-05-20 (+43d) | 2014-05-05 → 2014-06-17 (+43d) |  | -6d → -43d |
| DUKHCONP03Z4MSEX5025 | SS.Handrails and Balustrades | 2014-04-24 → 2014-06-07 (+44d) | 2014-05-17 → 2014-06-29 (+43d) |  | -6d → -43d |
| 15 | **DOMESTIC WATER TANK & PUMP ROOM** | 2014-02-05 → 2014-03-22 (+45d) | 2014-06-23 → 2014-08-09 (+47d) |  |  |
| DUKHCONP03Z4WTEX5030 | Excavation | 2014-02-05 → 2014-03-22 (+45d) | 2014-03-01 → 2014-04-13 (+43d) |  | 31d → -6d |
| DUKHCONP03Z4WTEX5035 | Construction of Raft | 2014-02-12 → 2014-03-27 (+43d) | 2014-03-12 → 2014-04-24 (+43d) |  | 31d → -6d |
| DUKHCONP03Z4WTEX5040 | Block works & Plastering | 2014-02-22 → 2014-04-06 (+43d) | 2014-03-22 → 2014-05-04 (+43d) |  | 31d → -6d |
| DUKHCONP03Z4WTEX5070 | Domestic Water Tank Plumbings works | 2014-03-02 → 2014-04-14 (+43d) | 2014-03-30 → 2014-05-12 (+43d) |  | 31d → -6d |
| DUKHCONP03Z4WTEX5075 | Domestic Water Tank AC works | 2014-03-02 → 2014-04-14 (+43d) | 2014-03-30 → 2014-05-12 (+43d) |  | 31d → -6d |
| DUKHCONP03Z4WTEX5080 | Domestic Water Tank Electrical works | 2014-03-02 → 2014-04-14 (+43d) | 2014-03-30 → 2014-05-12 (+43d) |  | 31d → -6d |
| DUKHCONP03Z4WTEX5085 | Domestic Water Tank Firefighting works | 2014-03-02 → 2014-04-14 (+43d) | 2014-03-30 → 2014-05-12 (+43d) |  | 31d → -6d |
| DUKHCONP03Z4WTEX5045 | Flooring & Painting | 2014-03-06 → 2014-04-19 (+44d) | 2014-04-03 → 2014-05-17 (+44d) |  | 31d → -6d |
| DUKHCONP03Z4WTEX5050 | Installation of Steel Gate | 2014-05-06 → 2014-06-18 (+43d) | 2014-05-28 → 2014-07-10 (+43d) |  | -6d → -43d |
| DUKHCONP03Z4WTEX5060 | Structural steel & SS Shed cover installation | 2014-05-14 → 2014-06-26 (+43d) | 2014-06-11 → 2014-07-24 (+43d) |  | -8d → -45d |
| DUKHCONP03Z4WTEX5065 | Install. of Water Tank,Chiller,Pump & Meter | 2014-05-26 → 2014-07-08 (+43d) | 2014-06-23 → 2014-08-09 (+47d) |  | -8d → -45d |
| 30 | **TESTING AND COMMISSIONING** | 2014-07-16 → 2014-09-01 (+47d) | 2014-08-17 → 2014-09-29 (+43d) |  |  |
| DUKHCONP03Z4ACTC8000 | Pre-Commissioning & Testing of AC Works | 2014-07-16 → 2014-09-01 (+47d) | 2014-08-17 → 2014-09-29 (+43d) |  | -27d → -64d |

| ID | Task | Start | Finish | Duration | Complete | Total float | Predecessors | Other |
| --- | --- | --- | --- | --- | --- | --- | --- | --- |
| DUKHCONP03Z4ELTC8010 | Pre-Commissioning & Testing of Electrical Works | 2014-07-16 → 2014-09-01 (+47d) | 2014-08-17 → 2014-09-29 (+43d) |  |  | -27d → -64d |  |  |
| DUKHCONP03Z4PLTC8005 | Pre-Commissioning & Testing of Plumbing Works | 2014-07-16 → 2014-09-01 (+47d) | 2014-08-17 → 2014-09-29 (+43d) |  |  | -27d → -64d |  |  |
| 30 | **ZONE - 5 (3 Apartments)** |  | 2014-09-15 → 2014-10-30 (+45d) |  |  |  |  |  |
| 10 | **STRUCTURAL WORKS** |  | 2014-03-30 → 2014-05-12 (+43d) |  |  |  |  |  |
| 10 | **SUB STRUCTURE** |  | 2013-11-16 → 2013-12-28 (+42d) |  |  |  |  |  |
| 10 | **UPTO GRADE SLAB** |  | 2013-11-16 → 2013-12-28 (+42d) |  |  |  |  |  |
| DUKHCONP03Z5STUG1000 | Footing Excavation | 2013-05-26 A | 2013-06-23 A |  | 0% → 100% | 1d → none |  |  |
| DUKHCONP03Z5STUG1005 | Footing Antitermite | 2013-06-05 A | 2013-07-01 A |  | 0% → 100% | 1d → none |  |  |
| DUKHCONP03Z5STUG1010 | Footing Blinding | 2013-06-09 A | 2013-07-04 A |  | 0% → 100% | 1d → none |  |  |
| DUKHCONP03Z5STUG1015 | Footing Waterproofing & Screed | 2013-06-15 A | 2013-07-13 A |  | 0% → 100% | 1d → none |  |  |
| DUKHCONP03Z5STUG1020 | Construction of foundations | 2013-06-30 A | 2013-07-22 A |  | 0% → 100% | 1d → none |  |  |
| DUKHCONP03Z5STUG1025 | Construction of neck of columns | 2013-07-31 → 2013-07-27 A (-4d) | 2013-09-01 → 2013-08-27 A (-5d) |  | 0% → 100% | -18d → none |  |  |
| DUKHCONP03Z5STUG1030 | Waterproofing Footing & Neck Column | 2013-08-13 → 2013-08-05 A (-8d) | 2013-09-10 → 2013-09-05 A (-5d) |  | 0% → 100% | -18d → none |  |  |
| DUKHCONP03Z5STUG1035 | Backfilling Upto Grade Beam Bottom | 2013-09-03 → 2013-08-31 A (-3d) | 2013-10-01 → 2013-09-25 A (-6d) | 25d → 23d | 0% → 100% | -27d → none | DUKHCONP03Z5STUG1030 SS+9d, DUKHCONP03Z5STUG1030 FF+9d, DUKHCONP03Z4STUG1035 → DUKHCONP03Z5STUG1030 SS+9d, DUKHCONP03Z4STUG1035 |  |
| DUKHCONP03Z5STUG1040 | Construction of Grade Beams | 2013-09-19 → 2013-09-16 A (-3d) | 2013-10-20 → 2013-10-14 A (-6d) |  | 0% → 100% | -27d → none |  | resources BLINDING MASON SK [180 h]; SCREED MASON SK [180 h]; STEEL FIXERS SK [1062 h]; CARPENTERS SK [1202 h]; CONCRETE MASON SK [126 h]; LABOR- SUBCONTRACTOR [1995 h]; BLINDING QTY [225 Sqm]; SCREED QTY [225 Sqm]; REINFORCEMENT BARS QTY [13269 kg]; FORMWORK QTY [601 Sqm]; CONCRETE QTY [63 Cum] → CONCRETE MASON SK [180 h]; SCREED MASON SK [180 h]; STEEL FIXERS SK [1062 h]; CARPENTERS SK [1202 h]; CONCRETE MASON SK [126 h]; LABOR- SUBCONTRACTOR [1995 h]; BLINDING QTY [225 Sqm]; SCREED QTY [225 Sqm]; REINFORCEMENT BARS QTY [13269 kg]; FORMWORK QTY [601 Sqm]; CONCRETE QTY [63 Cum] |
| DUKHCONP03Z5STUG1045 | Construction of slab on grade | 2013-10-16 → 2013-11-28 (+43d) | 2013-11-16 → 2013-12-28 (+42d) |  |  | -27d → -62d |  | resources BLINDING MASON SK [684 h]; SCREED MASON SK [684 h]; STEEL FIXERS SK [308 h]; CONCRETE MASON SK [372 h]; LABOR- SUBCONTRACTOR [1279.5 h]; BLINDING QTY [855 Sqm]; SCREED QTY [855 Sqm]; CONCRETE QTY [186 Cum]; WELDED WIRE MESH [1155 Sqm] → CONCRETE MASON SK [684 h]; SCREED MASON SK [684 h]; STEEL FIXERS SK [308 h]; CONCRETE MASON SK [372 h]; LABOR- SUBCONTRACTOR [1279.5 h]; BLINDING QTY [855 Sqm]; SCREED QTY [855 Sqm]; CONCRETE QTY [186 Cum]; WELDED WIRE MESH [1155 Sqm] |
| 15 | **SUPERSTRUCTURE** | 2013-11-04 → 2013-12-17 (+43d) | 2014-03-30 → 2014-05-12 (+43d) |  |  |  |  |  |
| 10 | **GROUND FLOOR** | 2013-11-04 → 2013-12-17 (+43d) | 2013-12-31 → 2014-02-13 (+44d) |  |  |  |  |  |
| DUKHCONP03Z5STGF2000 | Column-Rebar & Formwork | 2013-11-04 → 2013-12-17 (+43d) | 2013-12-02 → 2014-01-15 (+44d) |  |  | -27d → -64d |  |  |
| DUKHCONP03Z5STGF2005 | Column-Concrete | 2013-11-13 → 2013-12-28 (+45d) | 2013-12-10 → 2014-01-23 (+44d) |  |  | -27d → -64d |  |  |
| DUKHCONP03Z5STGF2010 | Beam, Stairs ,Slab-Rebar & Formwork | 2013-11-28 → 2014-01-12 (+45d) | 2013-12-28 → 2014-02-09 (+43d) |  |  | -27d → -64d |  |  |
| DUKHCONP03Z5STGF2015 | Beam, Stairs ,Slab-Concrete | 2013-12-14 → 2014-01-27 (+44d) | 2013-12-31 → 2014-02-13 (+44d) |  |  | -27d → -64d |  |  |
| 15 | **FIRST FLOORS** | 2013-12-16 → 2014-01-29 (+44d) | 2014-02-19 → 2014-04-03 (+43d) |  |  |  |  |  |
| DUKHCONP03Z5STFF2020 | Column-Rebar & Formwork | 2013-12-16 → 2014-01-29 (+44d) | 2014-01-14 → 2014-02-27 (+44d) |  |  | -27d → -64d |  |  |
| DUKHCONP03Z5STFF2025 | Column-Concrete | 2013-12-28 → 2014-02-09 (+43d) | 2014-01-23 → 2014-03-09 (+45d) |  |  | -27d → -64d |  |  |
| DUKHCONP03Z5STFF2030 | Beam, Stairs ,Slab-Rebar & Formwork | 2014-01-12 → 2014-02-25 (+44d) | 2014-02-09 → 2014-03-25 (+44d) |  |  | -27d → -64d |  |  |
| DUKHCONP03Z5STFF2035 | Beam, Stairs ,Slab-Concrete | 2014-02-02 → 2014-03-18 (+44d) | 2014-02-19 → 2014-04-03 (+43d) |  |  | -27d → -64d |  |  |
| 20 | **ROOF** | 2014-02-04 → 2014-03-20 (+44d) | 2014-03-30 → 2014-05-12 (+43d) |  |  |  |  |  |
| DUKHCONP03Z5STRF2040 | Column-Rebar & Formwork | 2014-02-04 → 2014-03-20 (+44d) | 2014-02-25 → 2014-04-09 (+43d) |  |  | -12d → -49d |  |  |
| DUKHCONP03Z5STRF2045 | Column-Concrete | 2014-02-08 → 2014-03-24 (+44d) | 2014-02-27 → 2014-04-12 (+44d) |  |  | -12d → -49d |  |  |
| DUKHCONP03Z5STRF2050 | Slab-Rebar & Formwork | 2014-02-10 → 2014-03-26 (+44d) | 2014-03-05 → 2014-04-17 (+43d) |  |  | -12d → -49d |  |  |
| DUKHCONP03Z5STRF2055 | Slab-Concrete | 2014-02-22 → 2014-04-06 (+43d) | 2014-03-08 → 2014-04-20 (+43d) |  |  | -12d → -49d |  |  |
| DUKHCONP03Z5STRF2060 | Construction of Parapets | 2014-02-24 → 2014-04-08 (+43d) | 2014-03-24 → 2014-05-06 (+43d) |  |  | 31d → -6d |  |  |
| DUKHCONP03Z5STRF2065 | Construction of up stands/Plinth | 2014-03-02 → 2014-04-14 (+43d) | 2014-03-30 → 2014-05-12 (+43d) |  |  | 31d → -6d |  |  |
| 15 | **FINISHING WORKS** | 2014-01-15 → 2014-03-01 (+45d) | 2014-08-17 → 2014-09-29 (+43d) |  |  |  |  |  |
| 10 | **INTERNAL FINISHES** | 2014-01-15 → 2014-03-01 (+45d) | 2014-08-17 → 2014-09-29 (+43d) |  |  |  |  |  |
| 10 | **GROUND FLOOR** | 2014-01-15 → 2014-03-01 (+45d) | 2014-07-07 → 2014-08-13 (+37d) |  |  |  |  |  |
| DUKHCONP03Z5ARGF3000 | Block work | 2014-01-15 → 2014-03-01 (+45d) | 2014-02-13 → 2014-03-29 (+44d) |  |  | 13d → -24d |  |  |
| DUKHCONP03Z5ARGF3005 | Plastering work | 2014-02-06 → 2014-03-23 (+45d) | 2014-03-08 → 2014-04-20 (+43d) |  |  | 13d → -24d |  |  |
| DUKHCONP03Z5ARGF3010 | Flooring screed | 2014-02-16 → 2014-03-31 (+43d) | 2014-03-11 → 2014-04-23 (+43d) |  |  | 21d → -16d |  |  |
| DUKHCONP03Z5ARGF3030 | Paint First coat | 2014-03-20 → 2014-04-08 (+19d) | 2014-04-17 → 2014-05-06 (+19d) |  |  | 8d → -8d |  |  |
| DUKHCONP03Z5ARGF3015 | Wet area waterproofing & Protection Screed | 2014-02-25 → 2014-04-09 (+43d) | 2014-03-13 → 2014-04-26 (+44d) |  |  | 13d → -24d |  |  |
| DUKHCONP03Z5ARGF3020 | Ceramic Wall Tiling | 2014-03-03 → 2014-04-15 (+43d) | 2014-03-31 → 2014-05-13 (+43d) |  |  | 13d → -24d |  |  |
| DUKHCONP03Z5ARGF3025 | Porcelain Tile flooring | 2014-03-09 → 2014-04-21 (+43d) | 2014-04-06 → 2014-05-19 (+43d) |  |  | 13d → -24d |  |  |
| DUKHCONP03Z5ARGF3045 | Fixing of Suspension systems | 2014-04-03 → 2014-05-08 (+35d) | 2014-04-26 → 2014-05-31 (+35d) |  |  | 8d → -22d |  |  |
| DUKHCONP03Z5ARGF3035 | Slate Tile Flooring & Skirting | 2014-03-29 → 2014-05-11 (+43d) | 2014-04-14 → 2014-05-27 (+43d) |  |  | 15d → -22d |  |  |
| DUKHCONP03Z5ARGF3055 | Aluminum tile false ceiling | 2014-04-12 → 2014-05-17 (+35d) | 2014-05-10 → 2014-06-14 (+35d) |  |  | 11d → -19d |  |  |
| DUKHCONP03Z5ARGF3040 | Cobble Tile flooring | 2014-04-05 → 2014-05-18 (+43d) | 2014-04-21 → 2014-06-03 (+43d) |  |  | 13d → -24d |  |  |
| DUKHCONP03Z5ARGF3060 | Gypsum board false ceiling | 2014-04-15 → 2014-05-20 (+35d) | 2014-05-13 → 2014-06-17 (+35d) |  |  | 8d → -22d |  |  |
| DUKHCONP03Z5ARGF3050 | Granite - Stair case flooring & Skirting | 2014-04-13 → 2014-05-26 (+43d) | 2014-05-05 → 2014-06-17 (+43d) |  |  | 13d → -24d |  |  |
| DUKHCONP03Z5ARGF3065 | Wooden door | 2014-04-27 → 2014-06-09 (+43d) | 2014-05-13 → 2014-06-25 (+43d) |  |  | 13d → -24d |  |  |
| DUKHCONP03Z5ARGF3070 | Aluminum doors | 2014-05-03 → 2014-06-15 (+43d) | 2014-05-19 → 2014-07-01 (+43d) |  |  | 13d → -24d |  |  |
| DUKHCONP03Z5ARGF3075 | Carpentry & Joinery Works | 2014-05-08 → 2014-06-21 (+44d) | 2014-05-31 → 2014-07-13 (+43d) |  |  | 13d → -24d |  |  |
| DUKHCONP03Z5ARGF3080 | Aluminum windows | 2014-05-10 → 2014-06-22 (+43d) | 2014-06-01 → 2014-07-14 (+43d) |  |  | 23d → -14d |  |  |
| DUKHCONP03Z5ARGF3085 | S.S.Balustrade | 2014-05-17 → 2014-06-29 (+43d) | 2014-06-08 → 2014-07-21 (+43d) |  |  | 18d → -19d |  |  |
| DUKHCONP03Z5ARGF3090 | Installation of Granite Counter Top | 2014-05-21 → 2014-07-03 (+43d) | 2014-06-07 → 2014-07-20 (+43d) |  |  | 13d → -24d |  |  |
| DUKHCONP03Z5ARGF3095 | Final Painting | 2014-06-09 → 2014-07-13 (+34d) | 2014-07-07 → 2014-08-13 (+37d) |  |  | 5d → -24d |  |  |
| 15 | **FIRST FLOORS** | 2014-02-27 → 2014-04-12 (+44d) | 2014-08-17 → 2014-09-29 (+43d) |  |  |  |  |  |
| DUKHCONP03Z5ARFF3300 | Block work | 2014-02-27 → 2014-04-12 (+44d) | 2014-03-27 → 2014-05-10 (+44d) |  |  | -27d → -64d |  |  |
| DUKHCONP03Z5ARFF3305 | Plastering work | 2014-03-24 → 2014-05-06 (+43d) | 2014-04-21 → 2014-06-03 (+43d) |  |  | -27d → -64d |  |  |
| DUKHCONP03Z5ARFF3310 | Flooring screed | 2014-04-01 → 2014-05-14 (+43d) | 2014-04-24 → 2014-06-07 (+44d) |  |  | -12d → -49d |  |  |
| DUKHCONP03Z5ARFF3330 | Paint First coat | 2014-04-09 → 2014-05-22 (+43d) | 2014-05-07 → 2014-06-19 (+43d) |  |  | -9d → -46d |  |  |
| DUKHCONP03Z5ARFF3315 | Wet area waterproofing | 2014-04-14 → 2014-05-27 (+43d) | 2014-04-30 → 2014-06-12 (+43d) |  |  | -27d → -64d |  |  |
| DUKHCONP03Z5ARFF3320 | Ceramic Wall Tiling | 2014-04-23 → 2014-06-05 (+43d) | 2014-05-21 → 2014-07-03 (+43d) |  |  | -27d → -64d |  |  |
| DUKHCONP03Z5ARFF3325 | Porcelain Tile flooring | 2014-04-30 → 2014-06-12 (+43d) | 2014-05-28 → 2014-07-10 (+43d) |  |  | -27d → -64d |  |  |
| DUKHCONP03Z5ARFF3345 | Fixing of Suspension systems | 2014-05-14 → 2014-06-26 (+43d) | 2014-06-05 → 2014-07-19 (+44d) |  |  | -27d → -64d |  |  |
| DUKHCONP03Z5ARFF3335 | Slate Tile Flooring & Skirting | 2014-05-18 → 2014-06-30 (+43d) | 2014-06-03 → 2014-07-16 (+43d) |  |  | -15d → -52d |  |  |
| DUKHCONP03Z5ARFF3350 | Granite - Stair case flooring & Skirting | 2014-05-21 → 2014-07-03 (+43d) | 2014-06-12 → 2014-07-26 (+44d) |  |  | -23d → -60d |  |  |
| DUKHCONP03Z5ARFF3360 | Gypsum board false ceiling | 2014-05-22 → 2014-07-05 (+44d) | 2014-06-19 → 2014-08-05 (+47d) |  |  | -27d → -64d |  |  |
| DUKHCONP03Z5ARFF3355 | Aluminum tile false ceiling | 2014-05-26 → 2014-07-08 (+43d) | 2014-06-17 → 2014-07-30 (+43d) |  |  | -23d → -60d |  |  |

| ID | Task | Start | Finish | Complete | Total float |
| --- | --- | --- | --- | --- | --- |
| DUKHCONP03Z5ARFF3365 | Wooden door | 2014-06-09 → 2014-07-22 (+43d) | 2014-06-25 → 2014-08-11 (+47d) |  | -27d → -64d |
| DUKHCONP03Z5ARFF3370 | Aluminum Door | 2014-06-15 → 2014-07-28 (+43d) | 2014-07-07 → 2014-08-23 (+47d) |  | -27d → -64d |
| DUKHCONP03Z5ARFF3380 | Aluminum windows | 2014-06-22 → 2014-08-07 (+46d) | 2014-07-14 → 2014-08-30 (+47d) |  | -16d → -53d |
| DUKHCONP03Z5ARFF3375 | Carpentry & Joinery Works | 2014-06-23 → 2014-08-09 (+47d) | 2014-07-21 → 2014-09-06 (+47d) |  | -27d → -64d |
| DUKHCONP03Z5ARFF3385 | Handrail & Balustrade | 2014-07-05 → 2014-08-20 (+46d) | 2014-07-27 → 2014-09-11 (+46d) |  | -27d → -64d |
| DUKHCONP03Z5ARFF3390 | Installation of Granite Counter Top | 2014-07-08 → 2014-08-24 (+47d) | 2014-07-30 → 2014-09-15 (+47d) |  | -25d → -62d |
| DUKHCONP03Z5ARFF3395 | Final Painting | 2014-07-16 → 2014-09-01 (+47d) | 2014-08-17 → 2014-09-29 (+43d) |  | -27d → -64d |
| 20 | **ROOF** | 2014-03-18 → 2014-04-30 (+43d) | 2014-05-21 → 2014-07-03 (+43d) |  |  |
| DUKHCONP03Z5ARRF3600 | Block work | 2014-03-18 → 2014-04-30 (+43d) | 2014-04-09 → 2014-05-22 (+43d) |  | 40d → 3d |
| DUKHCONP03Z5ARRF3605 | Plastering work | 2014-03-26 → 2014-05-08 (+43d) | 2014-04-17 → 2014-05-31 (+44d) |  | 40d → 3d |
| DUKHCONP03Z5ARRF3610 | Flooring screed | 2014-04-09 → 2014-05-22 (+43d) | 2014-04-26 → 2014-06-08 (+43d) |  | 45d → 8d |
| DUKHCONP03Z5ARRF3695 | Painting | 2014-04-17 → 2014-05-31 (+44d) | 2014-05-10 → 2014-06-22 (+43d) |  | 45d → 8d |
| DUKHCONP03Z5ARRF3620 | Epoxy Painting | 2014-05-05 → 2014-06-17 (+43d) | 2014-05-21 → 2014-07-03 (+43d) |  | 45d → 8d |
| 15 | **EXTERNAL FINISHES** | 2014-03-24 → 2014-05-06 (+43d) | 2014-06-10 → 2014-07-23 (+43d) |  |  |
| 10 | **ROOF** | 2014-03-24 → 2014-05-06 (+43d) | 2014-05-27 → 2014-07-09 (+43d) |  |  |
| DUKHCONP03Z5ARRF3630 | Leveling Screed for Waterproofing | 2014-03-24 → 2014-05-06 (+43d) | 2014-04-21 → 2014-06-03 (+43d) |  | 35d → -2d |
| DUKHCONP03Z5ARRF3635 | Laying of Waterproofing Membrane | 2014-03-27 → 2014-05-10 (+44d) | 2014-04-24 → 2014-06-07 (+44d) |  | 35d → -2d |
| DUKHCONP03Z5ARRF3640 | Installation of Insulation & Protection | 2014-04-01 → 2014-05-14 (+43d) | 2014-04-29 → 2014-06-11 (+43d) |  | 35d → -2d |
| DUKHCONP03Z5ARRF3645 | Lime Stone Chips & Paving slab Installation | 2014-04-06 → 2014-05-19 (+43d) | 2014-05-04 → 2014-06-16 (+43d) |  | 35d → -2d |
| DUKHCONP03Z5ARRF3650 | Install. of Gal. Frame & Aluminum Slat Screen | 2014-04-14 → 2014-05-27 (+43d) | 2014-05-12 → 2014-06-24 (+43d) |  | 35d → -2d |
| DUKHCONP03Z5ARRF3655 | Installation of Pumps Protection cabinets | 2014-04-29 → 2014-06-11 (+43d) | 2014-05-21 → 2014-07-03 (+43d) |  | 35d → -2d |
| DUKHCONP03Z5ARRF3660 | Installation of Access Ladder | 2014-05-11 → 2014-06-23 (+43d) | 2014-05-27 → 2014-07-09 (+43d) |  | 40d → 3d |
| 15 | **ELEVATION** | 2014-04-20 → 2014-06-02 (+43d) | 2014-06-10 → 2014-07-23 (+43d) |  |  |
| DUKHCONP03Z5AREL3665 | External Plastering | 2014-04-20 → 2014-06-02 (+43d) | 2014-05-18 → 2014-06-30 (+43d) |  | 26d → -11d |
| DUKHCONP03Z5AREL3675 | GRC Panel Works | 2014-05-07 → 2014-06-19 (+43d) | 2014-05-29 → 2014-07-12 (+44d) |  | 28d → -9d |
| DUKHCONP03Z5AREL3680 | External Painting | 2014-05-19 → 2014-07-01 (+43d) | 2014-06-10 → 2014-07-23 (+43d) |  | 28d → -9d |
| 20 | **MEP WORKS** | 2013-10-07 → 2013-10-03 (-4d) | 2014-08-19 → 2014-10-01 (+43d) |  |  |
| 10 | **ELECTRICAL WORKS** | 2014-01-21 → 2014-03-06 (+44d) | 2014-08-19 → 2014-10-01 (+43d) |  |  |
| 10 | **GROUND FLOOR** | 2014-01-21 → 2014-03-06 (+44d) | 2014-06-15 → 2014-07-13 (+28d) |  |  |
| DUKHCONP03Z5ELGF4000 | Fixing of wall conduits & switch socket boxes | 2014-01-21 → 2014-03-06 (+44d) | 2014-02-19 → 2014-04-03 (+43d) |  | 22d → -15d |
| DUKHCONP03Z5ELGF4005 | Cable tray & trunking installation | 2014-02-02 → 2014-03-18 (+44d) | 2014-02-25 → 2014-04-09 (+43d) |  | 42d → 5d |
| DUKHCONP03Z5ELGF4010 | Installation of wiring & Main Cabling | 2014-02-10 → 2014-03-26 (+44d) | 2014-03-11 → 2014-04-23 (+43d) |  | 42d → 5d |
| DUKHCONP03Z5ELGF4015 | Install. of CAMS & Fire Fighting Accessories | 2014-04-30 → 2014-05-28 (+28d) | 2014-05-28 → 2014-06-25 (+28d) |  | 9d → -15d |
| DUKHCONP03Z5ELGF4020 | Installation of DBS,MCCB Accessories. | 2014-04-29 → 2014-06-03 (+35d) | 2014-05-21 → 2014-06-25 (+35d) |  | 8d → -22d |
| DUKHCONP03Z5ELGF4025 | Installation of Lighting fixtures & Accessories | 2014-05-18 → 2014-06-15 (+28d) | 2014-06-15 → 2014-07-13 (+28d) |  | 4d → -20d |
| DUKHCONP03Z5ELGF4030 | Installation of Telephone System | 2014-05-11 → 2014-06-15 (+35d) | 2014-06-02 → 2014-07-07 (+35d) |  | 8d → -22d |
| 15 | **FIRST FLOORS** | 2014-03-05 → 2014-04-17 (+43d) | 2014-07-17 → 2014-09-02 (+47d) |  |  |
| DUKHCONP03Z5ELFF4035 | Fixing of wall conduits & switch socket boxes | 2014-03-05 → 2014-04-17 (+43d) | 2014-04-02 → 2014-05-15 (+43d) |  | -16d → -53d |
| DUKHCONP03Z5ELFF4040 | Cable tray & trunking installation | 2014-03-17 → 2014-04-29 (+43d) | 2014-04-08 → 2014-05-21 (+43d) |  | 6d → -31d |
| DUKHCONP03Z5ELFF4045 | Installation of wiring & Main Cabling | 2014-03-29 → 2014-05-11 (+43d) | 2014-04-26 → 2014-06-08 (+43d) |  | 3d → -34d |
| DUKHCONP03Z5ELFF4050 | Installation of Telephone System | 2014-06-01 → 2014-07-14 (+43d) | 2014-06-29 → 2014-08-14 (+46d) |  | 0d → -37d |
| DUKHCONP03Z5ELFF4055 | Install. of CAMS & Fire Fighting Accessories | 2014-06-03 → 2014-07-16 (+43d) | 2014-07-01 → 2014-08-17 (+47d) |  | -15d → -52d |
| DUKHCONP03Z5ELFF4060 | Installation of DBS,MCCB Accessories. | 2014-06-07 → 2014-07-20 (+43d) | 2014-06-29 → 2014-08-14 (+46d) |  | -19d → -56d |
| DUKHCONP03Z5ELFF4065 | Installation of Lighting fixtures & Accessories | 2014-06-19 → 2014-08-05 (+47d) | 2014-07-17 → 2014-09-02 (+47d) |  | -19d → -56d |
| 20 | **ROOF** | 2014-07-09 → 2014-08-25 (+47d) | 2014-08-19 → 2014-10-01 (+43d) |  |  |
| DUKHCONP03Z5ELRF4070 | Installation of Isolator | 2014-07-09 → 2014-08-25 (+47d) | 2014-07-29 → 2014-09-14 (+47d) |  | -19d → -56d |
| DUKHCONP03Z5ELRF4075 | Installation of TV Dish Antenna | 2014-07-21 → 2014-09-06 (+47d) | 2014-08-19 → 2014-10-01 (+43d) |  | -19d → -56d |
| 15 | **PLUMBING, DRAINAGE & FIRE FIGHTING WORKS** | 2013-10-07 → 2013-10-03 (-4d) | 2014-07-30 → 2014-09-15 (+47d) |  |  |
| 10 | **GROUND FLOOR** | 2013-10-07 → 2013-10-03 (-4d) | 2014-05-31 → 2014-07-13 (+43d) |  |  |
| DUKHCONP03Z5PLUG4300 | Drainage / Storm Pipes in Grade Slab | 2013-10-07 → 2013-10-03 A (-4d) | 2013-10-31 → 2013-10-28 A (-3d) | 0% → 100% | -27d → none |
| DUKHCONP03Z5PLGF4305 | Installation of Plumbing pipes & testing | 2014-02-01 → 2014-03-17 (+44d) | 2014-02-22 → 2014-04-06 (+43d) |  | 13d → -24d |
| DUKHCONP03Z5PLGF4310 | Installation of Drainage pipes &testing | 2014-02-01 → 2014-03-17 (+44d) | 2014-02-22 → 2014-04-06 (+43d) |  | 34d → -3d |
| DUKHCONP03Z5PLGF4315 | Sanitary Fittings & Accessories | 2014-05-03 → 2014-06-15 (+43d) | 2014-05-25 → 2014-07-07 (+43d) |  | 37d → 0d |
| DUKHCONP03Z5PLGF4320 | Installation of Water Heater | 2014-05-14 → 2014-06-26 (+43d) | 2014-05-31 → 2014-07-13 (+43d) |  | 37d → 0d |
| 15 | **FIRST FLOORS** | 2014-03-15 → 2014-04-27 (+43d) | 2014-07-13 → 2014-08-28 (+46d) |  |  |
| DUKHCONP03Z5PLFF4325 | Installation of Plumbing pipes & testing | 2014-03-15 → 2014-04-27 (+43d) | 2014-04-03 → 2014-05-17 (+44d) |  | -27d → -64d |
| DUKHCONP03Z5PLFF4330 | Installation of Drainage pipes & testing | 2014-03-16 → 2014-04-28 (+43d) | 2014-04-05 → 2014-05-18 (+43d) |  | -1d → -38d |
| DUKHCONP03Z5PLFF4335 | Sanitary Fittings & Accessories | 2014-06-15 → 2014-07-28 (+43d) | 2014-07-07 → 2014-08-23 (+47d) |  | -15d → -52d |
| DUKHCONP03Z5PLFF4340 | Installation of Water Heater | 2014-06-26 → 2014-08-12 (+47d) | 2014-07-13 → 2014-08-28 (+46d) |  | -15d → -52d |
| 20 | **ROOF** | 2014-04-09 → 2014-05-22 (+43d) | 2014-07-30 → 2014-09-15 (+47d) |  |  |
| DUKHCONP03Z5PLRF4345 | Installation of Plumbing pipes & fittings | 2014-04-09 → 2014-05-22 (+43d) | 2014-04-26 → 2014-06-08 (+43d) |  | 44d → 7d |
| DUKHCONP03Z5PLRF4350 | Installation of Rain water Pipes | 2014-05-10 → 2014-06-22 (+43d) | 2014-05-26 → 2014-07-08 (+43d) |  | 26d → -11d |
| DUKHCONP03Z5PLRF4355 | Roof Water Tank Installation & Connections | 2014-07-02 → 2014-08-18 (+47d) | 2014-07-30 → 2014-09-15 (+47d) |  | -15d → -52d |
| 20 | **AC WORKS** | 2014-02-25 → 2014-04-06 (+40d) | 2014-07-28 → 2014-09-13 (+47d) |  |  |
| 10 | **GROUND FLOOR** | 2014-02-25 → 2014-04-06 (+40d) | 2014-06-12 → 2014-07-10 (+28d) |  |  |
| DUKHCONP03Z5ACGF4600 | Installation AC Pipes | 2014-02-25 → 2014-04-06 (+40d) | 2014-03-19 → 2014-04-28 (+40d) |  | 43d → 9d |
| DUKHCONP03Z5ACGF4605 | Fixing of Ventilation Equipments | 2014-04-30 → 2014-05-28 (+28d) | 2014-05-28 → 2014-06-25 (+28d) |  | 11d → -13d |
| DUKHCONP03Z5ACGF4610 | Fixing of Split AC | 2014-05-21 → 2014-06-18 (+28d) | 2014-06-12 → 2014-07-10 (+28d) |  | 11d → -13d |
| 15 | **FIRST FLOORS** | 2014-04-07 → 2014-05-20 (+43d) | 2014-07-16 → 2014-09-01 (+47d) |  |  |
| DUKHCONP03Z5ACFF4615 | Installation AC Pipes | 2014-04-07 → 2014-05-20 (+43d) | 2014-04-29 → 2014-06-11 (+43d) |  | 5d → -32d |

| ID | Task | Start | Finish | Total float |
| --- | --- | --- | --- | --- |
| DUKHCONP03Z5ACFF4620 | Fixing of Ventilation Equipments | 2014-06-03 → 2014-07-16 (+43d) | 2014-07-01 → 2014-08-17 (+47d) | -18d → -55d |
| DUKHCONP03Z5ACFF4625 | Fixing of Split AC | 2014-06-24 → 2014-08-10 (+47d) | 2014-07-16 → 2014-09-01 (+47d) | -18d → -55d |
| 20 | **ROOF** | 2014-04-16 → 2014-05-29 (+43d) | 2014-07-28 → 2014-09-13 (+47d) |  |
| DUKHCONP03Z5ACRF4630 | Installation of Refrigerant Pipes | 2014-04-16 → 2014-05-29 (+43d) | 2014-05-14 → 2014-06-26 (+43d) | 46d → 9d |
| DUKHCONP03Z5ACRF4635 | Installation of Condensing Unit | 2014-06-30 → 2014-08-16 (+47d) | 2014-07-28 → 2014-09-13 (+47d) | -13d → -50d |
| 25 | **EXTERNAL WORKS** | 2014-03-05 → 2014-04-17 (+43d) | 2014-07-22 → 2014-09-07 (+47d) |  |
| 10 | **MISCELLANEOUS** | 2014-03-05 → 2014-04-17 (+43d) | 2014-06-15 → 2014-07-28 (+43d) |  |
| DUKHCONP03Z5MSEX5000 | Construction of Manholes | 2014-03-05 → 2014-04-17 (+43d) | 2014-04-02 → 2014-05-15 (+43d) | 26d → -11d |
| DUKHCONP03Z5MSEX5005 | Construction of Soak pit, Chambers | 2014-03-19 → 2014-05-01 (+43d) | 2014-04-16 → 2014-05-29 (+43d) | 26d → -11d |
| DUKHCONP03Z5MSEX5015 | Construction of grease Trap | 2014-04-08 → 2014-05-21 (+43d) | 2014-04-30 → 2014-06-12 (+43d) | 26d → -11d |
| DUKHCONP03Z5MSEX5010 | Telephone cable laying | 2014-05-01 → 2014-06-14 (+44d) | 2014-05-29 → 2014-07-12 (+44d) | 26d → -11d |
| DUKHCONP03Z5MSEX5020 | Construction Entrance Ramp | 2014-05-06 → 2014-06-18 (+43d) | 2014-06-03 → 2014-07-16 (+43d) | -6d → -43d |
| DUKHCONP03Z5MSEX5025 | SS.Handrails and Balustrades | 2014-05-24 → 2014-07-06 (+43d) | 2014-06-15 → 2014-07-28 (+43d) | -6d → -43d |
| 15 | **DOMESTIC WATER TANK & PUMP ROOM** | 2014-03-08 → 2014-04-20 (+43d) | 2014-07-22 → 2014-09-07 (+47d) |  |
| DUKHCONP03Z5WTEX5030 | Excavation | 2014-03-08 → 2014-04-20 (+43d) | 2014-03-30 → 2014-05-12 (+43d) | 31d → -6d |
| DUKHCONP03Z5WTEX5035 | Construction of Raft | 2014-03-13 → 2014-04-26 (+44d) | 2014-04-10 → 2014-05-24 (+44d) | 31d → -6d |
| DUKHCONP03Z5WTEX5040 | Block works & Plastering | 2014-03-23 → 2014-05-05 (+43d) | 2014-04-20 → 2014-06-02 (+43d) | 31d → -6d |
| DUKHCONP03Z5WTEX5070 | Domestic Water Tank Plumbings works | 2014-03-31 → 2014-05-13 (+43d) | 2014-04-28 → 2014-06-10 (+43d) | 31d → -6d |
| DUKHCONP03Z5WTEX5075 | Domestic Water Tank AC works | 2014-03-31 → 2014-05-13 (+43d) | 2014-04-28 → 2014-06-10 (+43d) | 31d → -6d |
| DUKHCONP03Z5WTEX5080 | Domestic Water Tank Electrical works | 2014-03-31 → 2014-05-13 (+43d) | 2014-04-28 → 2014-06-10 (+43d) | 31d → -6d |
| DUKHCONP03Z5WTEX5085 | Domestic Water Tank Firefighting works | 2014-03-31 → 2014-05-13 (+43d) | 2014-04-28 → 2014-06-10 (+43d) | 31d → -6d |
| DUKHCONP03Z5WTEX5045 | Flooring & Painting | 2014-04-05 → 2014-05-18 (+43d) | 2014-05-03 → 2014-06-15 (+43d) | 31d → -6d |
| DUKHCONP03Z5WTEX5050 | Installation of Steel Gate | 2014-06-04 → 2014-07-17 (+43d) | 2014-06-26 → 2014-08-12 (+47d) | -6d → -43d |
| DUKHCONP03Z5WTEX5060 | Structural steel & SS Shed cover installation | 2014-06-12 → 2014-07-26 (+44d) | 2014-07-10 → 2014-08-26 (+47d) | -8d → -45d |
| DUKHCONP03Z5WTEX5065 | Install. of Water Tank,Chiller,Pump & Meter | 2014-06-24 → 2014-08-10 (+47d) | 2014-07-22 → 2014-09-07 (+47d) | -8d → -45d |
| 30 | **TESTING AND COMMISSIONING** | 2014-08-18 → 2014-09-30 (+43d) | 2014-09-15 → 2014-10-30 (+45d) |  |
| DUKHCONP03Z5ACTC8000 | Pre-Commissioning & Testing of AC Works | 2014-08-18 → 2014-09-30 (+43d) | 2014-09-15 → 2014-10-30 (+45d) | -27d → -64d |
| DUKHCONP03Z5ELTC8010 | Pre-Commissioning & Testing of Electrical Works | 2014-08-18 → 2014-09-30 (+43d) | 2014-09-15 → 2014-10-30 (+45d) | -27d → -64d |
| DUKHCONP03Z5PLTC8005 | Pre-Commissioning & Testing of Plumbing Works | 2014-08-18 → 2014-09-30 (+43d) | 2014-09-15 → 2014-10-30 (+45d) | -27d → -64d |
| L60 | **PACKAGE-3 INFRASTRUCTURE WORKS** | 2013-09-17 → 2013-11-02 (+46d) | 2014-09-01 → 2014-10-16 (+45d) |  |
| 10 | **ZONE - 1** | 2013-09-17 → 2013-11-02 (+46d) | 2014-05-20 → 2014-07-02 (+43d) |  |
| 10 | **INFRASTRUCTURE WORKS** | 2013-09-17 → 2013-11-02 (+46d) | 2014-05-20 → 2014-07-02 (+43d) |  |
| 10 | **DRAINAGE LINES** | 2013-09-17 → 2013-11-02 (+46d) | 2013-11-07 → 2013-12-22 (+45d) |  |
| DUKHCONI03Z1DRGL5115 | Excavation for Drainage line | 2013-09-17 → 2013-11-02 (+46d) | 2013-10-15 → 2013-11-30 (+46d) | -22d → -59d |
| DUKHCONI03Z1DRGL5120 | Laying of Drainage line | 2013-09-24 → 2013-11-09 (+46d) | 2013-10-24 → 2013-12-07 (+44d) | -15d → -52d |
| DUKHCONI03Z1DRGL5125 | Testing of Drainage line | 2013-10-02 → 2013-11-17 (+46d) | 2013-11-02 → 2013-12-15 (+43d) | -15d → -52d |
| DUKHCONI03Z1DRGL5130 | Backfilling Drainage line | 2013-10-22 → 2013-12-04 (+43d) | 2013-11-07 → 2013-12-22 (+45d) | -15d → -52d |
| 15 | **MANHOLES & SOAKAWAY** | 2013-10-22 → 2013-12-04 (+43d) | 2014-01-12 → 2014-02-25 (+44d) |  |
| DUKHCONI03Z1SAGL5135 | Construction of manholes Drainage | 2013-10-22 → 2013-12-04 (+43d) | 2013-11-19 → 2014-01-02 (+44d) | 40d → 3d |
| DUKHCONI03Z1SAGL5140 | Construction of soakaways | 2013-10-22 → 2013-12-04 (+43d) | 2013-11-19 → 2014-01-02 (+44d) | -13d → -50d |
| DUKHCONI03Z1SAGL5145 | Construction of Road gullies | 2013-11-20 → 2014-01-04 (+45d) | 2013-12-19 → 2014-02-01 (+44d) | -13d → -50d |
| DUKHCONI03Z1SAGL5150 | Connection with existing sewer manhole | 2013-12-21 → 2014-02-02 (+43d) | 2014-01-12 → 2014-02-25 (+44d) | 15d → -22d |
| 20 | **WATER SUPPLY SYSTEM** | 2013-11-03 → 2013-12-16 (+43d) | 2014-01-18 → 2014-03-03 (+44d) |  |
| DUKHCONI03Z1WSGL5155 | Excavation for water line | 2013-11-03 → 2013-12-16 (+43d) | 2013-12-01 → 2014-01-14 (+44d) | -13d → -50d |
| DUKHCONI03Z1WSGL5160 | Laying of water line | 2013-11-09 → 2013-12-23 (+44d) | 2013-12-07 → 2014-01-20 (+44d) | -13d → -50d |
| DUKHCONI03Z1WSGL5165 | Testing of potable water line | 2013-11-14 → 2013-12-29 (+45d) | 2013-12-12 → 2014-01-26 (+45d) | -13d → -50d |
| DUKHCONI03Z1WSGL5170 | Backfilling potable water line | 2013-11-20 → 2014-01-04 (+45d) | 2013-12-19 → 2014-02-01 (+44d) | -13d → -50d |
| DUKHCONI03Z1WSGL5175 | Construction of valve chambers & Thrust Blocks | 2013-11-26 → 2014-01-09 (+44d) | 2013-12-25 → 2014-02-06 (+43d) | 10d → -27d |
| DUKHCONI03Z1WSGL5180 | Installation of meter ,Accessories & Connection | 2013-12-26 → 2014-02-08 (+44d) | 2014-01-18 → 2014-03-03 (+44d) | 10d → -27d |
| 25 | **FIREFIGHTING LINES** | 2013-11-26 → 2014-01-09 (+44d) | 2014-01-26 → 2014-03-11 (+44d) |  |
| DUKHCONI03Z1FFGL5185 | Excavation for firefighting line | 2013-11-26 → 2014-01-09 (+44d) | 2013-12-25 → 2014-02-06 (+43d) | -13d → -50d |
| DUKHCONI03Z1FFGL5190 | Laying of firefighting line | 2013-12-04 → 2014-01-18 (+45d) | 2014-01-02 → 2014-02-16 (+45d) | -13d → -50d |
| DUKHCONI03Z1FFGL5195 | Testing of firefighting line | 2013-12-10 → 2014-01-23 (+44d) | 2014-01-08 → 2014-02-22 (+45d) | -13d → -50d |
| DUKHCONI03Z1FFGL5200 | Backfilling firefighting line | 2013-12-16 → 2014-01-29 (+44d) | 2014-01-14 → 2014-02-27 (+44d) | -13d → -50d |
| DUKHCONI03Z1FFGL5205 | Construction of valve chambers & Thrust Blocks | 2013-12-23 → 2014-02-04 (+43d) | 2014-01-20 → 2014-03-05 (+44d) | 3d → -34d |
| DUKHCONI03Z1FFGL5210 | Connection with existing Firewater System | 2013-12-29 → 2014-02-10 (+43d) | 2014-01-26 → 2014-03-11 (+44d) | 3d → -34d |
| 30 | **ELECTRICAL LINES** | 2013-12-25 → 2014-02-06 (+43d) | 2014-02-20 → 2014-04-05 (+44d) |  |
| DUKHCONI03Z1ELGL5215 | Excavation Cable Trenches & Duct Banks | 2013-12-25 → 2014-02-06 (+43d) | 2014-01-22 → 2014-03-08 (+45d) | -9d → -46d |
| DUKHCONI03Z1ELGL5220 | Laying of electrical cables | 2013-12-31 → 2014-02-13 (+44d) | 2014-01-28 → 2014-03-13 (+44d) | -8d → -45d |
| DUKHCONI03Z1ELGL5225 | Backfilling Electrical trench | 2014-01-11 → 2014-02-24 (+44d) | 2014-02-08 → 2014-03-24 (+44d) | -8d → -45d |
| DUKHCONI03Z1ELGL5230 | Construction of Submain Board & Feeder Pillar | 2014-01-22 → 2014-03-08 (+45d) | 2014-02-20 → 2014-04-05 (+44d) | 27d → -10d |
| 35 | **STREET LIGHTING** | 2013-12-25 → 2014-02-06 (+43d) | 2014-03-22 → 2014-05-04 (+43d) |  |
| DUKHCONI03Z1STGL5235 | Excavation for Street lighting | 2013-12-25 → 2014-02-06 (+43d) | 2014-01-22 → 2014-03-08 (+45d) | -9d → -46d |
| DUKHCONI03Z1STGL5240 | Construction of Duct Banks | 2013-12-31 → 2014-02-13 (+44d) | 2014-01-28 → 2014-03-13 (+44d) | -9d → -46d |
| DUKHCONI03Z1STGL5245 | Construction of Foundation | 2013-12-31 → 2014-02-13 (+44d) | 2014-01-28 → 2014-03-13 (+44d) | -9d → -46d |
| DUKHCONI03Z1STGL5250 | Backfilling Street Lighting | 2014-01-06 → 2014-02-19 (+44d) | 2014-02-03 → 2014-03-19 (+44d) | -9d → -46d |
| DUKHCONI03Z1STGL5255 | Installation of light Post | 2014-02-06 → 2014-03-23 (+45d) | 2014-03-08 → 2014-04-20 (+43d) | 32d → -5d |
| DUKHCONI03Z1STGL5260 | Electrical Works | 2014-02-22 → 2014-04-06 (+43d) | 2014-03-22 → 2014-05-04 (+43d) | 27d → -10d |
| 40 | **IRRIGATION LINES** | 2014-02-09 → 2014-03-25 (+44d) | 2014-04-16 → 2014-05-29 (+43d) |  |
| DUKHCONI03Z1IRGL5265 | Excavation for irrigation line | 2014-02-09 → 2014-03-25 (+44d) | 2014-03-10 → 2014-04-22 (+43d) | 0d → -37d |

| ID | Task | Start | Finish | Total float |
| --- | --- | --- | --- | --- |
| DUKHCONI03Z1IRGL5270 | Laying of irrigationline | 2014-02-16 → 2014-03-31 (+43d) | 2014-03-16 → 2014-04-28 (+43d) | 0d → -37d |
| DUKHCONI03Z1IRGL5275 | Testing of irrigation line | 2014-02-22 → 2014-04-06 (+43d) | 2014-03-22 → 2014-05-04 (+43d) | 0d → -37d |
| DUKHCONI03Z1IRGL5280 | Backfilling irrigation line | 2014-02-27 → 2014-04-12 (+44d) | 2014-03-27 → 2014-05-10 (+44d) | 0d → -37d |
| DUKHCONI03Z1IRGL5285 | Construction of Thrust Blocks,Pull boxes | 2014-03-11 → 2014-04-23 (+43d) | 2014-04-08 → 2014-05-21 (+43d) | 10d → -27d |
| DUKHCONI03Z1IRGL5290 | Irrigation Fittings (Nozzle,Values) | 2014-03-19 → 2014-05-01 (+43d) | 2014-04-16 → 2014-05-29 (+43d) | 10d → -27d |
| 45 | **TELECOMMUNICATION LINES** | 2014-01-18 → 2014-03-03 (+44d) | 2014-05-20 → 2014-07-02 (+43d) |  |
| DUKHCONI03Z1TCGL5295 | Excavation Telecommunication trenches | 2014-01-18 → 2014-03-03 (+44d) | 2014-02-09 → 2014-03-25 (+44d) | -9d → -46d |
| DUKHCONI03Z1TCGL5300 | Laying of cables | 2014-01-23 → 2014-03-09 (+45d) | 2014-02-16 → 2014-03-31 (+43d) | -9d → -46d |
| DUKHCONI03Z1TCGL5305 | Backfilling telecommunication trench | 2014-01-29 → 2014-03-15 (+45d) | 2014-02-22 → 2014-04-06 (+43d) | -9d → -46d |
| DUKHCONI03Z1TCGL5310 | Connection & Installation | 2014-04-28 → 2014-06-10 (+43d) | 2014-05-20 → 2014-07-02 (+43d) | 1d → -36d |
| 50 | **BOUNDARY WALL** | 2014-01-18 → 2014-03-03 (+44d) | 2014-03-04 → 2014-04-16 (+43d) |  |
| DUKHCONI03Z1BWGL5315 | Construction of Boundary Wall (Ht-3m) | 2014-01-18 → 2014-03-03 (+44d) | 2014-02-16 → 2014-03-31 (+43d) | 32d → -5d |
| DUKHCONI03Z1BWGL5320 | Install.Steel Gate,Entance Barrier (3m Wall) | 2014-02-03 → 2014-03-19 (+44d) | 2014-03-04 → 2014-04-16 (+43d) | 32d → -5d |
| 55 | **ROAD WORKS** | 2014-02-10 → 2014-03-26 (+44d) | 2014-04-27 → 2014-06-09 (+43d) |  |
| DUKHCONI03Z1RWGL6000 | Excavation & Earth Filling | 2014-02-10 → 2014-03-26 (+44d) | 2014-02-22 → 2014-04-06 (+43d) | -9d → -46d |
| DUKHCONI03Z1RWGL6005 | Laying of Sub Grade | 2014-02-23 → 2014-04-07 (+43d) | 2014-03-23 → 2014-05-05 (+43d) | -9d → -46d |
| DUKHCONI03Z1RWGL6010 | Laying of Precast Kerbs | 2014-03-06 → 2014-04-19 (+44d) | 2014-04-03 → 2014-05-17 (+44d) | -9d → -46d |
| DUKHCONI03Z1RWGL6015 | Laying of Granular Sub Base Coarse | 2014-03-18 → 2014-04-30 (+43d) | 2014-04-09 → 2014-05-22 (+43d) | -9d → -46d |
| DUKHCONI03Z1RWGL6020 | Laying of Road Base Asphalt Concrete | 2014-04-10 → 2014-05-24 (+44d) | 2014-04-15 → 2014-05-28 (+43d) | 1d → -36d |
| DUKHCONI03Z1RWGL6025 | Laying of Asphalt Wearing Coarse | 2014-04-16 → 2014-05-29 (+43d) | 2014-04-21 → 2014-06-03 (+43d) | 16d → -21d |
| DUKHCONI03Z1RWGL6030 | Traffic Signage & Road Marking | 2014-04-22 → 2014-06-04 (+43d) | 2014-04-27 → 2014-06-09 (+43d) | 16d → -21d |
| 60 | **PARKING SHED** | 2014-03-24 → 2014-05-06 (+43d) | 2014-05-20 → 2014-07-02 (+43d) |  |
| DUKHCONI03Z1PSGL7000 | Excavation | 2014-03-24 → 2014-05-06 (+43d) | 2014-04-09 → 2014-05-22 (+43d) | 6d → -31d |
| DUKHCONI03Z1PSGL7005 | Foundation casting | 2014-04-05 → 2014-05-18 (+43d) | 2014-04-21 → 2014-06-03 (+43d) | 1d → -36d |
| DUKHCONI03Z1PSGL7010 | Column, Frame& Fabrics Erection | 2014-04-16 → 2014-05-29 (+43d) | 2014-05-14 → 2014-06-26 (+43d) | 1d → -36d |
| DUKHCONI03Z1PSGL7015 | Electrical Works-Parking Shed | 2014-04-22 → 2014-06-04 (+43d) | 2014-05-20 → 2014-07-02 (+43d) | 1d → -36d |
| 65 | **HARD LANDSCAPING** | 2014-02-10 → 2014-03-26 (+44d) | 2014-05-03 → 2014-06-15 (+43d) |  |
| DUKHCONI03Z1HDGL7020 | Precast Concrete Kerbs works | 2014-02-10 → 2014-03-26 (+44d) | 2014-03-05 → 2014-04-17 (+43d) | 11d → -26d |
| DUKHCONI03Z1HDGL7025 | Interlocking for Walkways | 2014-02-23 → 2014-04-07 (+43d) | 2014-03-23 → 2014-05-05 (+43d) | 11d → -26d |
| DUKHCONI03Z1HDGL7030 | Construction of Retaining wall | 2014-03-06 → 2014-04-19 (+44d) | 2014-04-03 → 2014-05-17 (+44d) | 11d → -26d |
| DUKHCONI03Z1HDGL7035 | Construction of Wash Stone Boulders | 2014-03-06 → 2014-04-19 (+44d) | 2014-04-03 → 2014-05-17 (+44d) | 11d → -26d |
| DUKHCONI03Z1HDGL7040 | Construction of Speed Humps | 2014-04-22 → 2014-06-04 (+43d) | 2014-05-03 → 2014-06-15 (+43d) | 36d → -1d |
| 70 | **SOFT LANDSCAPING** | 2014-03-19 → 2014-05-01 (+43d) | 2014-05-10 → 2014-06-22 (+43d) |  |
| DUKHCONI03Z1SLGL7200 | Excavation | 2014-03-19 → 2014-05-01 (+43d) | 2014-04-16 → 2014-05-29 (+43d) | 10d → -27d |
| DUKHCONI03Z1SLGL7205 | Sweet Soil Laying | 2014-03-31 → 2014-05-13 (+43d) | 2014-04-28 → 2014-06-10 (+43d) | 10d → -27d |
| DUKHCONI03Z1SLGL7210 | Plantation works | 2014-04-12 → 2014-05-25 (+43d) | 2014-05-10 → 2014-06-22 (+43d) | 30d → -7d |
| 15 | **ZONE- 2** | 2013-11-09 → 2013-12-23 (+44d) | 2014-07-09 → 2014-08-25 (+47d) |  |
| 10 | **INFRASTRUCTURE WORKS** | 2013-11-09 → 2013-12-23 (+44d) | 2014-07-09 → 2014-08-25 (+47d) |  |
| 10 | **DRAINAGE LINES** | 2013-11-09 → 2013-12-23 (+44d) | 2013-12-29 → 2014-02-10 (+43d) |  |
| DUKHCONI03Z2DRGL5115 | Excavation for Drainage line | 2013-11-09 → 2013-12-23 (+44d) | 2013-12-07 → 2014-01-20 (+44d) | -15d → -52d |
| DUKHCONI03Z2DRGL5120 | Laying of Drainage line | 2013-11-16 → 2013-12-30 (+44d) | 2013-12-14 → 2014-01-27 (+44d) | -15d → -52d |
| DUKHCONI03Z2DRGL5125 | Testing of Drainage line | 2013-11-24 → 2014-01-07 (+44d) | 2013-12-23 → 2014-02-04 (+43d) | -15d → -52d |
| DUKHCONI03Z2DRGL5130 | Backfilling Drainage line | 2013-12-11 → 2014-01-25 (+45d) | 2013-12-29 → 2014-02-10 (+43d) | -15d → -52d |
| 15 | **MANHOLES & SOAKAWAY** | 2013-12-11 → 2014-01-25 (+45d) | 2014-03-04 → 2014-04-16 (+43d) |  |
| DUKHCONI03Z2SAGL5135 | Construction of manholes Drainage | 2013-12-11 → 2014-01-25 (+45d) | 2014-01-09 → 2014-02-23 (+45d) | 37d → 0d |
| DUKHCONI03Z2SAGL5140 | Construction of soakaways | 2013-12-11 → 2014-01-25 (+45d) | 2014-01-09 → 2014-02-23 (+45d) | -14d → -51d |
| DUKHCONI03Z2SAGL5145 | Construction of Road gullies | 2014-01-11 → 2014-02-24 (+44d) | 2014-02-08 → 2014-03-24 (+44d) | -14d → -51d |
| DUKHCONI03Z2SAGL5150 | Connection with existing sewer manhole | 2014-02-09 → 2014-03-25 (+44d) | 2014-03-04 → 2014-04-16 (+43d) | 12d → -25d |
| 20 | **WATER SUPPLY SYSTEM** | 2013-12-24 → 2014-02-05 (+43d) | 2014-03-10 → 2014-04-22 (+43d) |  |
| DUKHCONI03Z2WSGL5155 | Excavation for water line | 2013-12-24 → 2014-02-05 (+43d) | 2014-01-21 → 2014-03-06 (+44d) | -14d → -51d |
| DUKHCONI03Z2WSGL5160 | Laying of water line | 2013-12-30 → 2014-02-12 (+44d) | 2014-01-27 → 2014-03-12 (+44d) | -14d → -51d |
| DUKHCONI03Z2WSGL5165 | Testing of potable water line | 2014-01-05 → 2014-02-18 (+44d) | 2014-02-02 → 2014-03-18 (+44d) | -14d → -51d |
| DUKHCONI03Z2WSGL5170 | Backfilling potable water line | 2014-01-11 → 2014-02-24 (+44d) | 2014-02-08 → 2014-03-24 (+44d) | -14d → -51d |
| DUKHCONI03Z2WSGL5175 | Construction of valve chambers & Thrust Blocks | 2014-01-16 → 2014-03-02 (+45d) | 2014-02-15 → 2014-03-30 (+43d) | 7d → -30d |
| DUKHCONI03Z2WSGL5180 | Installation of meter ,Accessories & Connection | 2014-02-16 → 2014-03-31 (+43d) | 2014-03-10 → 2014-04-22 (+43d) | 7d → -30d |
| 25 | **FIREFIGHTING LINES** | 2014-01-16 → 2014-03-02 (+45d) | 2014-03-18 → 2014-04-30 (+43d) |  |
| DUKHCONI03Z2FFGL5185 | Excavation for firefighting line | 2014-01-16 → 2014-03-02 (+45d) | 2014-02-15 → 2014-03-30 (+43d) | -14d → -51d |
| DUKHCONI03Z2FFGL5190 | Laying of firefighting line | 2014-01-25 → 2014-03-10 (+44d) | 2014-02-23 → 2014-04-07 (+43d) | -14d → -51d |
| DUKHCONI03Z2FFGL5195 | Testing of firefighting line | 2014-01-30 → 2014-03-16 (+45d) | 2014-03-01 → 2014-04-13 (+43d) | -14d → -51d |
| DUKHCONI03Z2FFGL5200 | Backfilling firefighting line | 2014-02-05 → 2014-03-22 (+45d) | 2014-03-06 → 2014-04-19 (+44d) | -14d → -51d |
| DUKHCONI03Z2FFGL5205 | Construction of valve chambers & Thrust Blocks | 2014-02-12 → 2014-03-27 (+43d) | 2014-03-12 → 2014-04-24 (+43d) | 0d → -37d |
| DUKHCONI03Z2FFGL5210 | Connection with existing Firewater System | 2014-02-18 → 2014-04-02 (+43d) | 2014-03-18 → 2014-04-30 (+43d) | 0d → -37d |
| 30 | **ELECTRICAL LINES** | 2014-02-15 → 2014-03-30 (+43d) | 2014-04-09 → 2014-05-22 (+43d) |  |
| DUKHCONI03Z2ELGL5215 | Excavation Cable Trenches & Duct Banks | 2014-02-15 → 2014-03-30 (+43d) | 2014-03-15 → 2014-04-27 (+43d) | -12d → -49d |
| DUKHCONI03Z2ELGL5220 | Laying of electrical cables | 2014-02-20 → 2014-04-05 (+44d) | 2014-03-20 → 2014-05-03 (+44d) | -9d → -46d |
| DUKHCONI03Z2ELGL5225 | Backfilling Electrical trench | 2014-03-01 → 2014-04-13 (+43d) | 2014-03-29 → 2014-05-11 (+43d) | -9d → -46d |
| DUKHCONI03Z2ELGL5230 | Construction of Submain Board & Feeder Pillar | 2014-03-12 → 2014-04-24 (+43d) | 2014-04-09 → 2014-05-22 (+43d) | 31d → -6d |
| 35 | **STREET LIGHTING** | 2014-02-15 → 2014-03-30 (+43d) | 2014-05-08 → 2014-06-21 (+44d) |  |
| DUKHCONI03Z2STGL5235 | Excavation for Street lighting | 2014-02-15 → 2014-03-30 (+43d) | 2014-03-15 → 2014-04-27 (+43d) | -12d → -49d |
| DUKHCONI03Z2STGL5240 | Construction of Duct Banks | 2014-02-20 → 2014-04-05 (+44d) | 2014-03-20 → 2014-05-03 (+44d) | -12d → -49d |

| ID | Task | Start | Finish | Total float |
| --- | --- | --- | --- | --- |
| DUKHCONI03Z2STGL5245 | Construction of Foundation | 2014-02-20 → 2014-04-05 (+44d) | 2014-03-20 → 2014-05-03 (+44d) | -12d → -49d |
| DUKHCONI03Z2STGL5250 | Backfilling Street Lighting | 2014-02-26 → 2014-04-10 (+43d) | 2014-03-26 → 2014-05-08 (+43d) | -12d → -49d |
| DUKHCONI03Z2STGL5255 | Installation of light Post | 2014-03-10 → 2014-04-22 (+43d) | 2014-04-07 → 2014-05-20 (+43d) | 51d → 14d |
| DUKHCONI03Z2STGL5260 | Electrical Works | 2014-04-10 → 2014-05-24 (+44d) | 2014-05-08 → 2014-06-21 (+44d) | 31d → -6d |
| 40 | **IRRIGATION LINES** | 2014-03-30 → 2014-05-12 (+43d) | 2014-06-03 → 2014-07-16 (+43d) |  |
| DUKHCONI03Z2IRGL5265 | Excavation for irrigation line | 2014-03-30 → 2014-05-12 (+43d) | 2014-04-27 → 2014-06-09 (+43d) | -1d → -38d |
| DUKHCONI03Z2IRGL5270 | Laying of irrigationline | 2014-04-05 → 2014-05-18 (+43d) | 2014-05-03 → 2014-06-15 (+43d) | -1d → -38d |
| DUKHCONI03Z2IRGL5275 | Testing of irrigation line | 2014-04-10 → 2014-05-24 (+44d) | 2014-05-08 → 2014-06-21 (+44d) | -1d → -38d |
| DUKHCONI03Z2IRGL5280 | Backfilling irrigation line | 2014-04-16 → 2014-05-29 (+43d) | 2014-05-14 → 2014-06-26 (+43d) | -1d → -38d |
| DUKHCONI03Z2IRGL5285 | Construction of Thrust Blocks,Pull boxes | 2014-04-28 → 2014-06-10 (+43d) | 2014-05-26 → 2014-07-08 (+43d) | 4d → -33d |
| DUKHCONI03Z2IRGL5290 | Irrigation Fittings (Nozzle,Values) | 2014-05-06 → 2014-06-18 (+43d) | 2014-06-03 → 2014-07-16 (+43d) | 4d → -33d |
| 45 | **TELECOMMUNICATION LINES** | 2014-03-10 → 2014-04-22 (+43d) | 2014-06-12 → 2014-07-26 (+44d) |  |
| DUKHCONI03Z2TCGL5295 | Excavation Telecommunication trenches | 2014-03-10 → 2014-04-22 (+43d) | 2014-04-01 → 2014-05-14 (+43d) | -12d → -49d |
| DUKHCONI03Z2TCGL5300 | Laying of cables | 2014-03-16 → 2014-04-28 (+43d) | 2014-04-07 → 2014-05-20 (+43d) | -12d → -49d |
| DUKHCONI03Z2TCGL5305 | Backfilling telecommunication trench | 2014-03-22 → 2014-05-04 (+43d) | 2014-04-13 → 2014-05-26 (+43d) | -12d → -49d |
| DUKHCONI03Z2TCGL5310 | Connection & Installation | 2014-05-21 → 2014-07-03 (+43d) | 2014-06-12 → 2014-07-26 (+44d) | 1d → -36d |
| 50 | **BOUNDARY WALL** | 2014-03-10 → 2014-04-22 (+43d) | 2014-04-23 → 2014-06-05 (+43d) |  |
| DUKHCONI03Z2BWGL5315 | Construction of Boundary Wall (Ht-3m) | 2014-03-10 → 2014-04-22 (+43d) | 2014-04-07 → 2014-05-20 (+43d) | 14d → -23d |
| DUKHCONI03Z2BWGL5320 | Install.Steel Gate,Entance Barrier (3m Wall) | 2014-03-26 → 2014-05-08 (+43d) | 2014-04-23 → 2014-06-05 (+43d) | 14d → -23d |
| 55 | **ROAD WORKS** | 2014-04-02 → 2014-05-15 (+43d) | 2014-06-16 → 2014-07-29 (+43d) |  |
| DUKHCONI03Z2RWGL6000 | Excavation & Earth Filling | 2014-04-02 → 2014-05-15 (+43d) | 2014-04-13 → 2014-05-26 (+43d) | -12d → -49d |
| DUKHCONI03Z2RWGL6005 | Laying of Sub Grade | 2014-04-14 → 2014-05-27 (+43d) | 2014-05-12 → 2014-06-24 (+43d) | -12d → -49d |
| DUKHCONI03Z2RWGL6010 | Laying of Precast Kerbs | 2014-04-26 → 2014-06-08 (+43d) | 2014-05-24 → 2014-07-06 (+43d) | -12d → -49d |
| DUKHCONI03Z2RWGL6015 | Laying of Granular Sub Base Coarse | 2014-05-07 → 2014-06-19 (+43d) | 2014-05-29 → 2014-07-12 (+44d) | -12d → -49d |
| DUKHCONI03Z2RWGL6020 | Laying of Road Base Asphalt Concrete | 2014-05-31 → 2014-07-13 (+43d) | 2014-06-04 → 2014-07-17 (+43d) | 3d → -34d |
| DUKHCONI03Z2RWGL6025 | Laying of Asphalt Wearing Coarse | 2014-06-05 → 2014-07-19 (+44d) | 2014-06-10 → 2014-07-23 (+43d) | 18d → -19d |
| DUKHCONI03Z2RWGL6030 | Traffic Signage & Road Marking | 2014-06-11 → 2014-07-24 (+43d) | 2014-06-16 → 2014-07-29 (+43d) | 18d → -19d |
| 60 | **PARKING SHED** | 2014-05-13 → 2014-06-25 (+43d) | 2014-07-09 → 2014-08-25 (+47d) |  |
| DUKHCONI03Z2PSGL7000 | Excavation | 2014-05-13 → 2014-06-25 (+43d) | 2014-05-29 → 2014-07-12 (+44d) | 8d → -29d |
| DUKHCONI03Z2PSGL7005 | Foundation casting | 2014-05-25 → 2014-07-07 (+43d) | 2014-06-10 → 2014-07-23 (+43d) | 3d → -34d |
| DUKHCONI03Z2PSGL7010 | Column, Frame& Fabrics Erection | 2014-06-05 → 2014-07-19 (+44d) | 2014-07-03 → 2014-08-19 (+47d) | 3d → -34d |
| DUKHCONI03Z2PSGL7015 | Electrical Works-Parking Shed | 2014-06-11 → 2014-07-24 (+43d) | 2014-07-09 → 2014-08-25 (+47d) | 3d → -34d |
| 65 | **HARD LANDSCAPING** | 2014-04-02 → 2014-05-15 (+43d) | 2014-06-22 → 2014-08-07 (+46d) |  |
| DUKHCONI03Z2HDGL7020 | Precast Concrete Kerbs works | 2014-04-02 → 2014-05-15 (+43d) | 2014-04-24 → 2014-06-07 (+44d) | 3d → -34d |
| DUKHCONI03Z2HDGL7025 | Interlocking for Walkways | 2014-04-14 → 2014-05-27 (+43d) | 2014-05-12 → 2014-06-24 (+43d) | 3d → -34d |
| DUKHCONI03Z2HDGL7030 | Construction of Retaining wall | 2014-04-26 → 2014-06-08 (+43d) | 2014-05-24 → 2014-07-06 (+43d) | 3d → -34d |
| DUKHCONI03Z2HDGL7035 | Construction of Wash Stone Boulders | 2014-04-26 → 2014-06-08 (+43d) | 2014-05-24 → 2014-07-06 (+43d) | 3d → -34d |
| DUKHCONI03Z2HDGL7040 | Construction of Speed Humps | 2014-06-11 → 2014-07-24 (+43d) | 2014-06-22 → 2014-08-07 (+46d) | 33d → -4d |
| 70 | **SOFT LANDSCAPING** | 2014-05-07 → 2014-06-19 (+43d) | 2014-06-28 → 2014-08-13 (+46d) |  |
| DUKHCONI03Z2SLGL7200 | Excavation | 2014-05-07 → 2014-06-19 (+43d) | 2014-06-04 → 2014-07-17 (+43d) | 3d → -34d |
| DUKHCONI03Z2SLGL7205 | Sweet Soil Laying | 2014-05-19 → 2014-07-01 (+43d) | 2014-06-16 → 2014-07-29 (+43d) | 3d → -34d |
| DUKHCONI03Z2SLGL7210 | Plantation works | 2014-05-31 → 2014-07-13 (+43d) | 2014-06-28 → 2014-08-13 (+46d) | 13d → -24d |
| 20 | **ZONE - 3** | 2013-12-30 → 2014-02-12 (+44d) | 2014-09-01 → 2014-10-16 (+45d) |  |
| 10 | **INFRASTRUCTURE WORKS** | 2013-12-30 → 2014-02-12 (+44d) | 2014-09-01 → 2014-10-16 (+45d) |  |
| 10 | **DRAINAGE LINES** | 2013-12-30 → 2014-02-12 (+44d) | 2014-02-18 → 2014-04-02 (+43d) |  |
| DUKHCONI03Z3DRGL5115 | Excavation for Drainage line | 2013-12-30 → 2014-02-12 (+44d) | 2014-01-27 → 2014-03-12 (+44d) | -15d → -52d |
| DUKHCONI03Z3DRGL5120 | Laying of Drainage line | 2014-01-06 → 2014-02-19 (+44d) | 2014-02-03 → 2014-03-19 (+44d) | -15d → -52d |
| DUKHCONI03Z3DRGL5125 | Testing of Drainage line | 2014-01-14 → 2014-02-27 (+44d) | 2014-02-12 → 2014-03-27 (+43d) | -15d → -52d |
| DUKHCONI03Z3DRGL5130 | Backfilling Drainage line | 2014-02-01 → 2014-03-17 (+44d) | 2014-02-18 → 2014-04-02 (+43d) | -15d → -52d |
| 15 | **MANHOLES & SOAKAWAY** | 2014-02-01 → 2014-03-17 (+44d) | 2014-04-23 → 2014-06-05 (+43d) |  |
| DUKHCONI03Z3SAGL5135 | Construction of manholes Drainage | 2014-02-01 → 2014-03-17 (+44d) | 2014-03-02 → 2014-04-14 (+43d) | 34d → -3d |
| DUKHCONI03Z3SAGL5140 | Construction of soakaways | 2014-02-01 → 2014-03-17 (+44d) | 2014-03-02 → 2014-04-14 (+43d) | -15d → -52d |
| DUKHCONI03Z3SAGL5145 | Construction of Road gullies | 2014-03-03 → 2014-04-15 (+43d) | 2014-03-31 → 2014-05-13 (+43d) | -15d → -52d |
| DUKHCONI03Z3SAGL5150 | Connection with existing sewer manhole | 2014-04-01 → 2014-05-14 (+43d) | 2014-04-23 → 2014-06-05 (+43d) | 9d → -28d |
| 20 | **WATER SUPPLY SYSTEM** | 2014-02-13 → 2014-03-29 (+44d) | 2014-04-29 → 2014-06-11 (+43d) |  |
| DUKHCONI03Z3WSGL5155 | Excavation for water line | 2014-02-13 → 2014-03-29 (+44d) | 2014-03-13 → 2014-04-26 (+44d) | -15d → -52d |
| DUKHCONI03Z3WSGL5160 | Laying of water line | 2014-02-19 → 2014-04-03 (+43d) | 2014-03-19 → 2014-05-01 (+43d) | -15d → -52d |
| DUKHCONI03Z3WSGL5165 | Testing of potable water line | 2014-02-25 → 2014-04-09 (+43d) | 2014-03-25 → 2014-05-07 (+43d) | -15d → -52d |
| DUKHCONI03Z3WSGL5170 | Backfilling potable water line | 2014-03-03 → 2014-04-15 (+43d) | 2014-03-31 → 2014-05-13 (+43d) | -15d → -52d |
| DUKHCONI03Z3WSGL5175 | Construction of valve chambers & Thrust Blocks | 2014-03-09 → 2014-04-21 (+43d) | 2014-04-06 → 2014-05-19 (+43d) | 4d → -33d |
| DUKHCONI03Z3WSGL5180 | Installation of meter ,Accessories & Connection | 2014-04-07 → 2014-05-20 (+43d) | 2014-04-29 → 2014-06-11 (+43d) | 4d → -33d |
| 25 | **FIREFIGHTING LINES** | 2014-03-09 → 2014-04-21 (+43d) | 2014-05-07 → 2014-06-19 (+43d) |  |
| DUKHCONI03Z3FFGL5185 | Excavation for firefighting line | 2014-03-09 → 2014-04-21 (+43d) | 2014-04-06 → 2014-05-19 (+43d) | -15d → -52d |
| DUKHCONI03Z3FFGL5190 | Laying of firefighting line | 2014-03-17 → 2014-04-29 (+43d) | 2014-04-14 → 2014-05-27 (+43d) | -15d → -52d |
| DUKHCONI03Z3FFGL5195 | Testing of firefighting line | 2014-03-23 → 2014-05-05 (+43d) | 2014-04-20 → 2014-06-02 (+43d) | -15d → -52d |
| DUKHCONI03Z3FFGL5200 | Backfilling firefighting line | 2014-03-29 → 2014-05-11 (+43d) | 2014-04-26 → 2014-06-08 (+43d) | -15d → -52d |
| DUKHCONI03Z3FFGL5205 | Construction of valve chambers & Thrust Blocks | 2014-04-03 → 2014-05-17 (+44d) | 2014-05-01 → 2014-06-14 (+44d) | -3d → -40d |
| DUKHCONI03Z3FFGL5210 | Connection with existing Firewater System | 2014-04-09 → 2014-05-22 (+43d) | 2014-05-07 → 2014-06-19 (+43d) | -3d → -40d |
| 30 | **ELECTRICAL LINES** | 2014-04-06 → 2014-05-19 (+43d) | 2014-05-29 → 2014-07-12 (+44d) |  |
| DUKHCONI03Z3ELGL5215 | Excavation Cable Trenches & Duct Banks | 2014-04-06 → 2014-05-19 (+43d) | 2014-05-04 → 2014-06-16 (+43d) | -15d → -52d |

| ID | Task | Start | Finish | Total float | Other |
| --- | --- | --- | --- | --- | --- |
| DUKHCONI03Z3ELGL5220 | Laying of electrical cables | 2014-04-12 → 2014-05-25 (+43d) | 2014-05-10 → 2014-06-22 (+43d) | -12d → -49d |  |
| DUKHCONI03Z3ELGL5225 | Backfilling Electrical trench | 2014-04-20 → 2014-06-02 (+43d) | 2014-05-18 → 2014-06-30 (+43d) | -12d → -49d |  |
| DUKHCONI03Z3ELGL5230 | Construction of Submain Board & Feeder Pillar | 2014-05-01 → 2014-06-14 (+44d) | 2014-05-29 → 2014-07-12 (+44d) | 13d → -24d |  |
| 35 | **STREET LIGHTING** | 2014-04-06 → 2014-05-19 (+43d) | 2014-06-28 → 2014-08-13 (+46d) |  |  |
| DUKHCONI03Z3STGL5235 | Excavation for Street lighting | 2014-04-06 → 2014-05-19 (+43d) | 2014-05-04 → 2014-06-16 (+43d) | -15d → -52d |  |
| DUKHCONI03Z3STGL5240 | Construction of Duct Banks | 2014-04-12 → 2014-05-25 (+43d) | 2014-05-10 → 2014-06-22 (+43d) | -15d → -52d |  |
| DUKHCONI03Z3STGL5245 | Construction of Foundation | 2014-04-12 → 2014-05-25 (+43d) | 2014-05-10 → 2014-06-22 (+43d) | -15d → -52d |  |
| DUKHCONI03Z3STGL5250 | Backfilling Street Lighting | 2014-04-17 → 2014-05-31 (+44d) | 2014-05-15 → 2014-06-28 (+44d) | -15d → -52d |  |
| DUKHCONI03Z3STGL5255 | Installation of light Post | 2014-04-29 → 2014-06-11 (+43d) | 2014-05-27 → 2014-07-09 (+43d) | 33d → -4d |  |
| DUKHCONI03Z3STGL5260 | Electrical Works | 2014-05-31 → 2014-07-13 (+43d) | 2014-06-28 → 2014-08-13 (+46d) | 13d → -24d |  |
| 40 | **IRRIGATION LINES** | 2014-05-19 → 2014-07-01 (+43d) | 2014-07-23 → 2014-09-08 (+47d) |  |  |
| DUKHCONI03Z3IRGL5265 | Excavation for irrigation line | 2014-05-19 → 2014-07-01 (+43d) | 2014-06-16 → 2014-07-29 (+43d) | -4d → -41d |  |
| DUKHCONI03Z3IRGL5270 | Laying of irrigationline | 2014-05-25 → 2014-07-07 (+43d) | 2014-06-22 → 2014-08-07 (+46d) | -4d → -41d |  |
| DUKHCONI03Z3IRGL5275 | Testing of irrigation line | 2014-05-31 → 2014-07-13 (+43d) | 2014-06-28 → 2014-08-13 (+46d) | -4d → -41d |  |
| DUKHCONI03Z3IRGL5280 | Backfilling irrigation line | 2014-06-05 → 2014-07-19 (+44d) | 2014-07-03 → 2014-08-19 (+47d) | -4d → -41d |  |
| DUKHCONI03Z3IRGL5285 | Construction of Thrust Blocks,Pull boxes | 2014-06-17 → 2014-07-30 (+43d) | 2014-07-15 → 2014-08-31 (+47d) | -4d → -41d |  |
| DUKHCONI03Z3IRGL5290 | Irrigation Fittings (Nozzle,Values) | 2014-06-25 → 2014-08-11 (+47d) | 2014-07-23 → 2014-09-08 (+47d) | -4d → -41d |  |
| 45 | **TELECOMMUNICATION LINES** | 2014-04-29 → 2014-06-11 (+43d) | 2014-07-06 → 2014-08-21 (+46d) |  |  |
| DUKHCONI03Z3TCGL5295 | Excavation Telecommunication trenches | 2014-04-29 → 2014-06-11 (+43d) | 2014-05-21 → 2014-07-03 (+43d) | -15d → -52d |  |
| DUKHCONI03Z3TCGL5300 | Laying of cables | 2014-05-05 → 2014-06-17 (+43d) | 2014-05-27 → 2014-07-09 (+43d) | -15d → -52d |  |
| DUKHCONI03Z3TCGL5305 | Backfilling telecommunication trench | 2014-05-11 → 2014-06-23 (+43d) | 2014-06-02 → 2014-07-15 (+43d) | -15d → -52d |  |
| DUKHCONI03Z3TCGL5310 | Connection & Installation | 2014-06-14 → 2014-07-27 (+43d) | 2014-07-06 → 2014-08-21 (+46d) | 1d → -36d |  |
| 50 | **BOUNDARY WALL** | 2014-04-29 → 2014-06-11 (+43d) | 2014-06-12 → 2014-07-26 (+44d) |  |  |
| DUKHCONI03Z3BWGL5315 | Construction of Boundary Wall (Ht-3m) | 2014-04-29 → 2014-06-11 (+43d) | 2014-05-27 → 2014-07-09 (+43d) | -4d → -41d |  |
| DUKHCONI03Z3BWGL5320 | Install.Steel Gate,Entance Barrier (3m Wall) | 2014-05-15 → 2014-06-28 (+44d) | 2014-06-12 → 2014-07-26 (+44d) | -4d → -41d |  |
| 55 | **ROAD WORKS** | 2014-05-22 → 2014-07-05 (+44d) | 2014-08-09 → 2014-09-21 (+43d) |  |  |
| DUKHCONI03Z3RWGL6000 | Excavation & Earth Filling | 2014-05-22 → 2014-07-05 (+44d) | 2014-06-02 → 2014-07-15 (+43d) | -15d → -52d |  |
| DUKHCONI03Z3RWGL6005 | Laying of Sub Grade | 2014-06-03 → 2014-07-16 (+43d) | 2014-07-01 → 2014-08-17 (+47d) | -15d → -52d |  |
| DUKHCONI03Z3RWGL6010 | Laying of Precast Kerbs | 2014-06-15 → 2014-07-28 (+43d) | 2014-07-13 → 2014-08-28 (+46d) | -15d → -52d |  |
| DUKHCONI03Z3RWGL6015 | Laying of Granular Sub Base Coarse | 2014-06-26 → 2014-08-12 (+47d) | 2014-07-19 → 2014-09-03 (+46d) | -15d → -52d |  |
| DUKHCONI03Z3RWGL6020 | Laying of Road Base Asphalt Concrete | 2014-07-20 → 2014-09-04 (+46d) | 2014-07-24 → 2014-09-09 (+47d) | -15d → -52d |  |
| DUKHCONI03Z3RWGL6025 | Laying of Asphalt Wearing Coarse | 2014-07-26 → 2014-09-10 (+46d) | 2014-07-30 → 2014-09-15 (+47d) | 0d → -37d |  |
| DUKHCONI03Z3RWGL6030 | Traffic Signage & Road Marking | 2014-07-31 → 2014-09-16 (+47d) | 2014-08-09 → 2014-09-21 (+43d) | 0d → -37d |  |
| 60 | **PARKING SHED** | 2014-07-02 → 2014-08-18 (+47d) | 2014-09-01 → 2014-10-16 (+45d) |  |  |
| DUKHCONI03Z3PSGL7000 | Excavation | 2014-07-02 → 2014-08-18 (+47d) | 2014-07-19 → 2014-09-03 (+46d) | -10d → -47d |  |
| DUKHCONI03Z3PSGL7005 | Foundation casting | 2014-07-14 → 2014-08-30 (+47d) | 2014-07-30 → 2014-09-15 (+47d) | -15d → -52d |  |
| DUKHCONI03Z3PSGL7010 | Column, Frame& Fabrics Erection | 2014-07-26 → 2014-09-10 (+46d) | 2014-08-26 → 2014-10-08 (+43d) | -15d → -52d |  |
| DUKHCONI03Z3PSGL7015 | Electrical Works-Parking Shed | 2014-07-31 → 2014-09-16 (+47d) | 2014-09-01 → 2014-10-16 (+45d) | -15d → -52d |  |
| 65 | **HARD LANDSCAPING** | 2014-05-22 → 2014-07-05 (+44d) | 2014-08-14 → 2014-09-27 (+44d) |  |  |
| DUKHCONI03Z3HDGL7020 | Precast Concrete Kerbs works | 2014-05-22 → 2014-07-05 (+44d) | 2014-06-14 → 2014-07-27 (+43d) | -5d → -42d |  |
| DUKHCONI03Z3HDGL7025 | Interlocking for Walkways | 2014-06-03 → 2014-07-16 (+43d) | 2014-07-01 → 2014-08-17 (+47d) | -5d → -42d |  |
| DUKHCONI03Z3HDGL7030 | Construction of Retaining wall | 2014-06-15 → 2014-07-28 (+43d) | 2014-07-13 → 2014-08-28 (+46d) | -5d → -42d |  |
| DUKHCONI03Z3HDGL7035 | Construction of Wash Stone Boulders | 2014-06-15 → 2014-07-28 (+43d) | 2014-07-13 → 2014-08-28 (+46d) | -5d → -42d |  |
| DUKHCONI03Z3HDGL7040 | Construction of Speed Humps | 2014-07-31 → 2014-09-16 (+47d) | 2014-08-14 → 2014-09-27 (+44d) | 0d → -37d |  |
| 70 | **SOFT LANDSCAPING** | 2014-06-26 → 2014-08-12 (+47d) | 2014-08-20 → 2014-10-02 (+43d) |  |  |
| DUKHCONI03Z3SLGL7200 | Excavation for Landscaping | 2014-06-26 → 2014-08-12 (+47d) | 2014-07-24 → 2014-09-09 (+47d) | -5d → -42d |  |
| DUKHCONI03Z3SLGL7205 | Sweet Soil Laying | 2014-07-08 → 2014-08-24 (+47d) | 2014-08-09 → 2014-09-21 (+43d) | -5d → -42d |  |
| DUKHCONI03Z3SLGL7210 | Plantation works | 2014-07-20 → 2014-09-04 (+46d) | 2014-08-20 → 2014-10-02 (+43d) | -5d → -42d |  |
| 25 | **SECONDARY BUILDINGS** | 2014-03-09 → 2014-04-21 (+43d) | 2014-08-28 → 2014-10-13 (+46d) |  |  |
| 10 | **INFRASTRUCTURE WORKS** | 2014-03-09 → 2014-04-21 (+43d) | 2014-08-28 → 2014-10-13 (+46d) |  |  |
| 10 | **IRRIGATION WATER TANK & PUMP ROOM** | 2014-03-09 → 2014-04-21 (+43d) | 2014-08-28 → 2014-10-13 (+46d) |  |  |
| DUKHCONI03SBIWGL7400 | Excavation | 2014-03-09 → 2014-04-21 (+43d) | 2014-03-25 → 2014-05-07 (+43d) | -12d → -49d |  |
| DUKHCONI03SBIWGL7405 | Blinding & base waterproofing | 2014-03-26 → 2014-05-08 (+43d) | 2014-04-06 → 2014-05-19 (+43d) | -12d → -49d | resources BLINDING MASON SK [128 h]; LABOR- SUBCONTRACTOR [96 h]; LABOR- SUBCONTRACTOR [48 h]; BLINDING QTY [156 Sqm]; WATERPROOFING QTY [156 Sqm]; WATERPROOFING SPECIALIST SK [128 h] → CONCRETE MASON SK [128 h]; LABOR- SUBCONTRACTOR [96 h]; LABOR- SUBCONTRACTOR [48 h]; BLINDING QTY [156 Sqm]; WATERPROOFING QTY [156 Sqm]; WATERPROOFING SPECIALIST SK [128 h] |
| DUKHCONI03SBIWGL7410 | Construction of Raft slab | 2014-04-07 → 2014-05-20 (+43d) | 2014-04-17 → 2014-05-31 (+44d) | -12d → -49d |  |
| DUKHCONI03SBIWGL7415 | Construction of RCC Wall | 2014-04-19 → 2014-06-01 (+43d) | 2014-05-17 → 2014-06-29 (+43d) | -12d → -49d |  |
| DUKHCONI03SBIWGL7420 | Construction of Roof Slab | 2014-05-18 → 2014-06-30 (+43d) | 2014-06-09 → 2014-07-22 (+43d) | -12d → -49d |  |
| DUKHCONI03SBIWGL7425 | Waterproofing & Backfilling | 2014-06-10 → 2014-07-23 (+43d) | 2014-06-26 → 2014-08-12 (+47d) | -6d → -43d |  |
| DUKHCONI03SBIWGL7950 | Laying of Interlock | 2014-06-28 → 2014-08-13 (+46d) | 2014-07-08 → 2014-08-24 (+47d) | 9d → -28d |  |
| DUKHCONI03SBIWGL7430 | Floor screed | 2014-07-05 → 2014-08-20 (+46d) | 2014-07-09 → 2014-08-25 (+47d) | -12d → -49d |  |
| DUKHCONI03SBIWGL7435 | Installation of Boundary Fences | 2014-07-09 → 2014-08-25 (+47d) | 2014-07-26 → 2014-09-10 (+46d) | 9d → -28d |  |
| DUKHCONI03SBIWGL7440 | Plumbing , Drainage & Firefighting works | 2014-07-10 → 2014-08-26 (+47d) | 2014-08-11 → 2014-09-23 (+43d) | -12d → -49d |  |
| DUKHCONI03SBIWGL7445 | AC Works | 2014-07-10 → 2014-08-26 (+47d) | 2014-08-11 → 2014-09-23 (+43d) | -12d → -49d |  |
| DUKHCONI03SBIWGL7450 | Electrical Works | 2014-07-10 → 2014-08-26 (+47d) | 2014-08-11 → 2014-09-23 (+43d) | -12d → -49d |  |
| DUKHCONI03SBIWGL7455 | Internal epoxy coating & Painting | 2014-08-12 → 2014-09-24 (+43d) | 2014-08-17 → 2014-09-29 (+43d) | -12d → -49d |  |
| DUKHCONI03SBIWGL7460 | Installation of Steel Ladder | 2014-08-18 → 2014-09-30 (+43d) | 2014-08-23 → 2014-10-05 (+43d) | -12d → -49d |  |
| DUKHCONI03SBIWGL7465 | Installation of G.I Handrails | 2014-08-24 → 2014-10-06 (+43d) | 2014-08-28 → 2014-10-13 (+46d) | -12d → -49d |  |
| 15 | **TELECOMMUNICATION ROOM** | 2014-03-26 → 2014-05-08 (+43d) | 2014-08-13 → 2014-09-25 (+43d) |  |  |
| DUKHCONI03SBTRGL7600 | Excavation | 2014-03-26 → 2014-05-08 (+43d) | 2014-04-06 → 2014-05-19 (+43d) | -2d → -39d |  |
| DUKHCONI03SBTRGL7605 | Construction of foundation & Grade slab | 2014-04-07 → 2014-05-20 (+43d) | 2014-04-29 → 2014-06-11 (+43d) | 8d → -29d |  |
| DUKHCONI03SBTRGL7610 | Construction Column,Beams & Roof Slab | 2014-04-30 → 2014-06-12 (+43d) | 2014-05-22 → 2014-07-05 (+44d) | 8d → -29d |  |

| ID | Task | Start | Finish | Total float |
| --- | --- | --- | --- | --- |
| DUKHCONI03SBTRGL7615 | Finishing Works | 2014-06-17 → 2014-07-30 (+43d) | 2014-07-15 → 2014-08-31 (+47d) | 8d → -29d |
| DUKHCONI03SBTRGL7620 | Plumbing , Drainage & Firefighting works | 2014-06-29 → 2014-08-14 (+46d) | 2014-07-27 → 2014-09-11 (+46d) | 8d → -29d |
| DUKHCONI03SBTRGL7625 | AC Works | 2014-06-29 → 2014-08-14 (+46d) | 2014-07-27 → 2014-09-11 (+46d) | 8d → -29d |
| DUKHCONI03SBTRGL7630 | Electrical Works-Telecom Room | 2014-07-07 → 2014-08-23 (+47d) | 2014-08-07 → 2014-09-20 (+44d) | 1d → -36d |
| DUKHCONI03SBTRGL7635 | Final Paintings | 2014-08-09 → 2014-09-21 (+43d) | 2014-08-13 → 2014-09-25 (+43d) | 1d → -36d |
| 20 | **GUARD HOUSE** | 2014-04-07 → 2014-05-20 (+43d) | 2014-08-17 → 2014-09-29 (+43d) |  |
| DUKHCONI03SBGHGL7800 | Excavation | 2014-04-07 → 2014-05-20 (+43d) | 2014-04-17 → 2014-05-31 (+44d) | -2d → -39d |
| DUKHCONI03SBGHGL7805 | Construction of foundation & Grade slab | 2014-04-19 → 2014-06-01 (+43d) | 2014-05-11 → 2014-06-23 (+43d) | -2d → -39d |
| DUKHCONI03SBGHGL7810 | Construction Column,Beams & Roof Slab | 2014-05-12 → 2014-06-24 (+43d) | 2014-06-03 → 2014-07-16 (+43d) | -2d → -39d |
| DUKHCONI03SBGHGL7815 | Finishing Works | 2014-06-29 → 2014-08-14 (+46d) | 2014-07-27 → 2014-09-11 (+46d) | -2d → -39d |
| DUKHCONI03SBGHGL7820 | Plumbing , Drainage & Firefighting works | 2014-07-10 → 2014-08-26 (+47d) | 2014-08-11 → 2014-09-23 (+43d) | -2d → -39d |
| DUKHCONI03SBGHGL7825 | AC Works | 2014-07-10 → 2014-08-26 (+47d) | 2014-08-11 → 2014-09-23 (+43d) | -2d → -39d |
| DUKHCONI03SBGHGL7830 | Electrical Works-Telecom Room | 2014-07-10 → 2014-08-26 (+47d) | 2014-08-11 → 2014-09-23 (+43d) | -2d → -39d |
| DUKHCONI03SBGHGL7835 | Final Paintings | 2014-08-12 → 2014-09-24 (+43d) | 2014-08-17 → 2014-09-29 (+43d) | -2d → -39d |
| 25 | **GAZEBO** | 2014-04-26 → 2014-06-08 (+43d) | 2014-06-22 → 2014-08-07 (+46d) |  |
| DUKHCONI03SBGZGL7900 | Construction of Concrete structure | 2014-04-26 → 2014-06-08 (+43d) | 2014-05-18 → 2014-06-30 (+43d) | 3d → -34d |
| DUKHCONI03SBGZGL7905 | Installation of Wooden Works | 2014-05-07 → 2014-06-19 (+43d) | 2014-06-04 → 2014-07-17 (+43d) | 3d → -34d |
| DUKHCONI03SBGZGL7915 | Park Benches Installation | 2014-05-07 → 2014-06-19 (+43d) | 2014-06-04 → 2014-07-17 (+43d) | 3d → -34d |
| DUKHCONI03SBGZGL7910 | Electrical Works-Gazebo | 2014-06-05 → 2014-07-19 (+44d) | 2014-06-22 → 2014-08-07 (+46d) | 3d → -34d |
| 30 | **PLAY GROUND** | 2014-05-19 → 2014-07-01 (+43d) | 2014-07-27 → 2014-09-11 (+46d) |  |
| DUKHCONI03SBPGGL7940 | Intial Work Play Ground Works | 2014-05-19 → 2014-07-01 (+43d) | 2014-06-22 → 2014-08-07 (+46d) | 13d → -24d |
| DUKHCONI03SBPGGL7945 | Final Work Play Ground Works | 2014-06-23 → 2014-08-09 (+47d) | 2014-07-27 → 2014-09-11 (+46d) | 13d → -24d |
| K35 | **COMMISSIONING & HANDING OVER** | 2014-08-31 → 2014-09-07 (+7d) | 2015-04-28 → 2015-06-28 (+61d) |  |
| L20 | **PACKAGE-1A** | 2015-01-13 → 2015-03-16 (+62d) | 2015-04-28 → 2015-06-28 (+61d) |  |
| DUKHHANP1AGNACTC9000 | Submission & Clearance of Punch list,Final Testing & Commissioning of AC Works | 2015-01-13 → 2015-03-16 (+62d) | 2015-02-17 → 2015-04-19 (+61d) | -24d → -76d |
| DUKHHANP1AGNELTC9010 | Submission & Clearance Punch list,Final Testing & Commissioning of Electrical Works | 2015-01-13 → 2015-03-16 (+62d) | 2015-02-17 → 2015-04-19 (+61d) | -24d → -76d |
| DUKHHANP1AGNPLTC9005 | Submission & Clearance of Punch list, Final Testing &Commissioning of Plumbing/Drainage | 2015-01-13 → 2015-03-16 (+62d) | 2015-02-17 → 2015-04-19 (+61d) | -24d → -76d |
| DUKHHANP1AGNAB009015 | Submission & Approval of As-Built Drawings & O&M Manuals | 2015-02-05 → 2015-04-08 (+62d) | 2015-03-01 → 2015-04-30 (+60d) | -24d → -76d |
| DUKHHANP1AGNDM009020 | Demobilization & Handing Over | 2015-02-18 → 2015-04-20 (+61d) | 2015-04-28 → 2015-06-28 (+61d) | -24d → -76d |
| L25 | **PACKAGE-1B** | 2014-12-29 → 2015-01-21 (+23d) | 2015-04-13 → 2015-05-06 (+23d) |  |
| DUKHHANP1BGNACTC9000 | Submission & Clearance of Punch list,Final Testing & Commissioning of AC Works | 2014-12-29 → 2015-01-21 (+23d) | 2015-02-01 → 2015-02-25 (+24d) | -11d → -31d |
| DUKHHANP1BGNELTC9010 | Submission & Clearance Punch list,Final Testing & Commissioning of Electrical Works | 2014-12-29 → 2015-01-21 (+23d) | 2015-02-01 → 2015-02-25 (+24d) | -11d → -31d |
| DUKHHANP1BGNPLTC9005 | Submission & Clearance of Punch list, Final Testing &Commissioning of Plumbing/Drainage | 2014-12-29 → 2015-01-21 (+23d) | 2015-02-01 → 2015-02-25 (+24d) | -11d → -31d |
| DUKHHANP1BGNAB009015 | Submission & Approval of As-Built Drawings & O&M Manuals | 2015-01-21 → 2015-02-15 (+25d) | 2015-02-14 → 2015-03-09 (+23d) | -11d → -31d |
| DUKHHANP1BGNDM009020 | Demobilization & Handing Over | 2015-02-02 → 2015-02-26 (+24d) | 2015-04-13 → 2015-05-06 (+23d) | -11d → -31d |
| L35 | **PACKAGE-2A** | 2014-08-31 → 2014-09-13 (+13d) | 2014-12-15 → 2014-12-29 (+14d) |  |
| DUKHHANP2AGNACTC9000 | Submission & Clearance of Punch list,Final Testing & Commissioning of AC Works | 2014-08-31 → 2014-09-13 (+13d) | 2014-10-04 → 2014-10-19 (+15d) | -63d → -74d |
| DUKHHANP2AGNELTC9010 | Submission & Clearance Punch list,Final Testing & Commissioning of Electrical Works | 2014-08-31 → 2014-09-13 (+13d) | 2014-10-04 → 2014-10-19 (+15d) | -63d → -74d |
| DUKHHANP2AGNPLTC9005 | Submission & Clearance of Punch list, Final Testing &Commissioning of Plumbing/Drainage | 2014-08-31 → 2014-09-13 (+13d) | 2014-10-04 → 2014-10-19 (+15d) | -63d → -74d |
| DUKHHANP2AGNAB009015 | Submission & Approval of As-Built Drawings & O&M Manuals | 2014-09-23 → 2014-10-06 (+13d) | 2014-10-18 → 2014-10-30 (+12d) | -63d → -74d |
| DUKHHANP2AGNDM009020 | Demobilization & Handing Over | 2014-10-05 → 2014-10-20 (+15d) | 2014-12-15 → 2014-12-29 (+14d) | -63d → -74d |
| L45 | **PACKAGE-3** | 2014-09-16 → 2014-11-01 (+46d) | 2015-01-01 → 2015-02-15 (+45d) |  |
| DUKHHANP03GNACTC9000 | Submission & Clearance of Punch list,Final Testing & Commissioning of AC Works | 2014-09-16 → 2014-11-01 (+46d) | 2014-10-22 → 2014-12-04 (+43d) | -27d → -64d |
| DUKHHANP03GNELTC9010 | Submission & Clearance Punch list,Final Testing & Commissioning of Electrical Works | 2014-09-16 → 2014-11-01 (+46d) | 2014-10-22 → 2014-12-04 (+43d) | -27d → -64d |
| DUKHHANP03GNPLTC9005 | Submission & Clearance of Punch list, Final Testing &Commissioning of Plumbing/Drainage | 2014-09-16 → 2014-11-01 (+46d) | 2014-10-22 → 2014-12-04 (+43d) | -27d → -64d |
| DUKHHANP03GNAB009015 | Submission & Approval of As-Built Drawings & O&M Manuals | 2014-10-12 → 2014-11-24 (+43d) | 2014-11-03 → 2014-12-16 (+43d) | -27d → -64d |
| DUKHHANP03GNDM009020 | Demobilization & Handing Over | 2014-10-23 → 2014-12-06 (+44d) | 2015-01-01 → 2015-02-15 (+45d) | -27d → -64d |
